# ENABLING WORKS WORK PACKAGE STRATEGY P10 : AREA CENTRAL

Schedule from Primavera P6, 2016-11-14 to 2023-01-13, data date 2017-09-16, costs in GBP, A marks actual dates.

## Calendars

- HS2 - 8h x 5d Workweek (No Holidays): Mon-Fri 08:00-12:00, 13:00-17:00; Sat-Sun off. Exceptions (off unless hours are given): 2017-06-21 08:00-16:00.
- HS2 - 8h x 7d Workweek (No Holidays): Mon-Sun 08:00-16:00.
- HS2 - 8h x 5d Workweek (Nonwork: Bank Holidays & 1w Xmas) [upto 2034] DEFAULT: Mon-Fri 08:00-16:00; Sat-Sun off. Exceptions (off unless hours are given): 2016-12-26 to 2016-12-30, 2017-01-02, 2017-04-14, 2017-04-17, 2017-05-01, 2017-05-29, 2017-08-28, 2017-12-25 to 2017-12-29, 2018-01-01, 2018-03-30, 2018-04-02, 2018-05-07, 2018-05-28, 2018-08-27, 2018-12-25 to 2018-12-28, 2018-12-31 to 2019-01-01, 2019-04-19, 2019-04-22, 2019-05-06, 2019-05-27, 2019-08-26, 2019-12-25 to 2019-12-27, 2019-12-30 to 2020-01-01, 2020-04-10, 2020-04-13, 2020-05-04, 2020-05-25, 2020-08-31, 2020-12-25, 2020-12-28 to 2021-01-01, 2021-04-02, 2021-04-05, 2021-05-03, 2021-05-31, 2021-08-30, 2021-12-27 to 2021-12-31, 2022-01-03, 2022-04-15, 2022-04-18, 2022-05-02, 2022-05-30, 2022-08-29, 2022-12-26 to 2022-12-30, 2023-01-02.
- HS2 - 8h x 5d Workweek (No Holidays) [upto 2034]: Mon-Fri 08:00-16:00; Sat-Sun off.

## Resources

| Resource | Group | Rate | Notes |
| --- | --- | --- | --- |
| Area Wide Support Team | equipment | 1 | ï»¿ |
| Information Technology & Digital Integration | equipment | 1 | ï»¿ |
| Accomodation | equipment | 1 | ï»¿ |
| Area Wide Surveys | equipment | 1 | ï»¿ |
| Habitat Creation & Translocation | equipment | 1 | ï»¿ |
| Landscape Planting Installation | equipment | 1 | ï»¿ |
| Preliminary Floodplain Storage Design & Fluvial/Hydrological Modelling Work | equipment | 1 | ï»¿ |
| Invasive Species Surveys, Treatment & Control | equipment | 1 | ï»¿ |
| Site Clearance | equipment | 1 | ï»¿ |
| Ground Remediation | equipment | 1 | ï»¿ |
| Area Wide HERDS | equipment | 1 | ï»¿ |
| Highway & Civil Works - Scheme Design | equipment | 1 | ï»¿ |
| Utilities - Scheme Design | equipment | 1 | ï»¿ |
| TBM Power Supply - Detailed Design & Construction | equipment | 1 | ï»¿ |
| Highway & Civil Works - Detailed Design & Construction | equipment | 1 | ï»¿ |
| Utilities - Detailed Design & Construction | equipment | 1 | ï»¿ |
| Stoke Mandeville & Princes Risborough Scheme Design | equipment | 1 | ï»¿ |
| Calvert Area Works Scheme Design | equipment | 1 | ï»¿ |
| Highways & civils Works Scheme Design | equipment | 1 | ï»¿ |
| Stoke Mandeville & Princes Risborough Detailed Design & construction | equipment | 1 | ï»¿ |
| Calvert Area Works Detailed Design & Construction | equipment | 1 | ï»¿ |
| Highways & Civils Detailed Design & Construction | equipment | 1 | ï»¿ |
| A413 Roundabouts & Haul Road | equipment | 1 | ï»¿ |
| Chipping Warden, A361 Junction, Wardington A361 Safety Works & sulgrave Junction - Scheme Design | equipment | 1 | ï»¿ |
| Wills Pastures Road & Junction - Scheme Design | equipment | 1 | ï»¿ |
| M40 J11 - Scheme Design | equipment | 1 | ï»¿ |
| Utilities Scheme Design | equipment | 1 | ï»¿ |
| Turweston Haul Road - scheme Design | equipment | 1 | ï»¿ |
| Chipping Warden, A361 Junction, Wardington A361 Safety Works & sulgrave Junction - Detailed Design and Construction | equipment | 1 | ï»¿ |
| Wills Pastures Road & Junction - Detailed Design and Construction | equipment | 1 | ï»¿ |
| M40 J11 - Detailed Design and Construction | equipment | 1 | ï»¿ |
| Turweston Haul Road - Detailed Design and Construction | equipment | 1 | ï»¿ |
| Demolition Works. | equipment | 1 | ï»¿ |
| TBM Power Supply - Scheme Design | equipment | 1 | ï»¿ |
| Area Wide Support Team | equipment | 1 | ï»¿ |
| Area Wide Surveys | equipment | 1 | ï»¿ |
| Landscape Planting Installation | equipment | 1 | ï»¿ |
| Preliminary Floodplain Storage Design & Fluvial/Hydrological Modelling Work | equipment | 1 | ï»¿ |
| Site Clearance | equipment | 1 | ï»¿ |
| Ground Remediation | equipment | 1 | ï»¿ |
| Area Wide HERDS | equipment | 1 | ï»¿ |
| TBM Power Supply - Detailed Design & Construction | equipment | 1 | ï»¿ |
| Highway & Civil Works - Detailed Design & Construction | equipment | 1 | ï»¿ |
| Utilities - Detailed Design & Construction | equipment | 1 | ï»¿ |
| Calvert Area Works Detailed Design & Construction | equipment | 1 | ï»¿ |
| Highways & Civils Detailed Design & Construction | equipment | 1 | ï»¿ |
| A413 Roundabouts & Haul Road | equipment | 1 | ï»¿ |
| Chipping Warden, A361 Junction, Wardington A361 Safety Works & sulgrave Junction - Detailed Design and Construction | equipment | 1 | ï»¿ |
| Wills Pastures Road & Junction - Detailed Design and Construction | equipment | 1 | ï»¿ |
| M40 J11 - Detailed Design and Construction | equipment | 1 | ï»¿ |
| Turweston Haul Road - Detailed Design and Construction | equipment | 1 | ï»¿ |
| Demolition Works. | equipment | 1 | ï»¿ |
| TBM Power Supply - Scheme Design | equipment | 1 | ï»¿ |
| Highway & Civil Works - Scheme Design | equipment | 1 | ï»¿ |
| Utilities - Scheme Design | equipment | 1 | ï»¿ |
| Calvert Area Works Scheme Design | equipment | 1 | ï»¿ |
| Highways & civils Works Scheme Design | equipment | 1 | ï»¿ |
| Chipping Warden, A361 Junction, Wardington A361 Safety Works & sulgrave Junction - Scheme Design | equipment | 1 | ï»¿ |
| Wills Pastures Road & Junction - Scheme Design | equipment | 1 | ï»¿ |
| M40 J11 - Scheme Design | equipment | 1 | ï»¿ |
| Utilities Scheme Design | equipment | 1 | ï»¿ |
| Turweston Haul Road - scheme Design | equipment | 1 | ï»¿ |
| Urgent Works | equipment | 1 | ï»¿ |
| Pre-constn Director | labor | 158.26 | ï»¿ |
| Construction Director | labor | 158.26 | ï»¿ |
| Snr Commercial Mgr | labor | 83.81 | ï»¿ |
| Snr Commercial Mgr | labor | 83.81 | ï»¿ |
| Estimating Manager | labor | 77.42 | ï»¿ |
| People cost controller | labor | 86.55 | ï»¿ |
| Contract Administrator | labor | 54.4 | ï»¿ |
| Risk Manager | labor | 67.27 | ï»¿ |
| Finance Mgr | labor | 57.57 | ï»¿ |
| Digital Integration Director | labor | 151.11 | ï»¿ |
| Cyber security/ IT implementation Mgr | labor | 123.64 | ï»¿ |
| BIM Information Mgr | labor | 92.73 | ï»¿ |
| Project Information Mgr | labor | 92.73 | ï»¿ |
| Office Administrator | labor | 28.83 | ï»¿ |
| Document Controller | labor | 29.66 | ï»¿ |
| Document Controller | labor | 29.66 | ï»¿ |
| Document Controller | labor | 29.66 | ï»¿ |
| Senior Document Controller | labor | 29.66 | ï»¿ |
| Lead Planner | labor | 78.99 | ï»¿ |
| Planner | labor | 66.83 | ï»¿ |
| Proj Controls Mgr | labor | 86.55 | ï»¿ |
| EWC programme manager | labor | 86.55 | ï»¿ |
| Assis Proj Controls Mgr | labor | 70.62 | ï»¿ |
| Assis Proj Controls Mgr | labor | 70.62 | ï»¿ |
| Integration Manager | labor | 126.03 | ï»¿ |
| 3rd Party Consents Mgr | labor | 60.2 | ï»¿ |
| 3rd party stakeholder Mgr | labor | 87.92 | ï»¿ |
| Integrated approvals Mgr | labor | 105.79 | ï»¿ |
| Asst consents Mgr | labor | 52.4 | ï»¿ |
| Asst consents Mgr | labor | 52.4 | ï»¿ |
| U&A Mgr | labor | 81.6 | ï»¿ |
| Data Integration systems Mgr | labor | 70.75 | ï»¿ |
| Data Integration | labor | 51.52 | ï»¿ |
| Data Integration system consultant | labor | 123.64 | ï»¿ |
| Data Integration | labor | 51.52 | ï»¿ |
| Data Int Asst | labor | 51.52 | ï»¿ |
| Data Int Asst | labor | 51.52 | ï»¿ |
| Data Int Asst | labor | 38.47 | ï»¿ |
| Doc Control | labor | 38.47 | ï»¿ |
| Stakeholder Co | labor | 81.6 | ï»¿ |
| Stakeholder Co | labor | 81.6 | ï»¿ |
| Stakeholder Co | labor | 81.6 | ï»¿ |
| Town planner | labor | 109.9 | ï»¿ |
| Supply Chain Manager | labor | 131.04 | ï»¿ |
| Assis H&S Manager | labor | 35.49 | ï»¿ |
| Wellbeing Occup Health manager | labor | 123.64 | ï»¿ |
| Occupational nurse | labor | 68.69 | ï»¿ |
| Occupational hygienists | labor | 68.69 | ï»¿ |
| Doctor (occupational health physician) | labor | 219.8 | ï»¿ |
| D&A technician | labor | 45.33 | ï»¿ |
| D&A equipment | labor |  | ï»¿ |
| Assurance Manager | labor | 85.81 | ï»¿ |
| HSEQ lead | labor | 93.42 | ï»¿ |
| Quality Advisor | labor | 51.76 | ï»¿ |
| Quality Advisor | labor | 51.76 | ï»¿ |
| HS & W Cord | labor | 61.54 | ï»¿ |
| Envi & Sus Co | labor | 57.15 | ï»¿ |
| Responsible procurement mgr | labor | 82.43 | ï»¿ |
| Community engagement asst | labor | 32.97 | ï»¿ |
| Community liaison officer C1 | labor | 40.79 | ï»¿ |
| Community liaison officer C2 | labor | 40.79 | ï»¿ |
| Community liaison officer C3 | labor | 40.79 | ï»¿ |
| EDI Advisor | labor | 35.17 | ï»¿ |
| SEE Planner | labor | 40.79 | ï»¿ |
| SEE Ambassador | labor | 40.79 | ï»¿ |
| Land Access Mgr | labor | 87.92 | ï»¿ |
| Assist Land Acc Mgr | labor | 76.93 | ï»¿ |
| Assist Land Acc Mgr | labor | 76.93 | ï»¿ |
| Back office land access support team | labor | 54.95 | ï»¿ |
| C1 Land Agric Liason | labor | 65.94 | ï»¿ |
| C2 Land Agric Liason | labor | 65.94 | ï»¿ |
| C3 Land Agric Liason | labor | 65.94 | ï»¿ |
| Land access co-ordinator | labor | 38.47 | ï»¿ |
| Land Support officer | labor | 49.46 | ï»¿ |
| Land Support officer | labor | 49.46 | ï»¿ |
| Land Support officer | labor | 49.46 | ï»¿ |
| Communications Mgr | labor | 60.2 | ï»¿ |
| Change Mgr | labor | 57.57 | ï»¿ |
| Project Director | labor | 144.23 | ï»¿ |
| Project Manager (Work Package Co-Ordinator) | labor | 73.01 | ï»¿ |
| Commercial Manager | labor | 74.51 | ï»¿ |
| Engineering Manager | labor | 114.81 | ï»¿ |
| Project Controls Manager | labor | 78.75 | ï»¿ |
| Consents Manager | labor | 44.9 | ï»¿ |
| Community Liaison Manager | labor | 27.1 | ï»¿ |
| Environment & Sustainability Manager | labor | 56.53 | ï»¿ |
| Health & Safety Manager | labor | 59.4 | ï»¿ |
| Skills & Employment Manager | labor | 37.12 | ï»¿ |
| Office Manager | labor | 30.47 | ï»¿ |
| Team Administrator | labor | 26.23 | ï»¿ |
| Quality Manager | labor | 47.1 | ï»¿ |
| Logistics Manager | labor | 54.93 | ï»¿ |
| Security Manager | labor | 64.69 | ï»¿ |
| Business Continuity Manager | labor | 36.5 | ï»¿ |
| EDI Manager | labor | 36.82 | ï»¿ |
| Site Manager | labor | 78.08 | ï»¿ |
| Assistant Commercial Manager | labor | 52.38 | ï»¿ |
| Assistant Community Liaison Manager | labor | 28.64 | ï»¿ |
| Assistant Health & Safety Manager | labor | 32.29 | ï»¿ |
| Assistant Quality Manager | labor | 36.34 | ï»¿ |
| Document Controller | labor | 26.99 | ï»¿ |
| Assistant Consent Manager | labor | 47.68 | ï»¿ |
| Assistant Consent Manager | labor | 47.68 | ï»¿ |
| Digital Integration Manager | labor | 43.25 | ï»¿ |
| Lead Planner | labor | 71.87 | ï»¿ |
| Assistant Project Controls Manager | labor | 78.75 | ï»¿ |
| Risk Manager | labor | 61.21 | ï»¿ |
| Project Engineer | labor | 35.25 | ï»¿ |
| Senior Project Manager | labor | 82.09 | ï»¿ |
| Supply Chain Manager | labor | 67.39 | ï»¿ |
| Sustainability Manager | labor | 54.78 | ï»¿ |
| CMO Staff | equipment | 1 | ï»¿ |
| Accomodation | equipment | 1 | ï»¿ |
| Information Technology & Digital Integration | equipment | 1 | ï»¿ |
| Civils Framework - Design & Build | equipment | 1 | ï»¿ |
| Habitat Creation & Translocation | equipment | 1 | ï»¿ |

## Schedule

| ID | WBS | Activity | Duration | Start | Finish | Predecessors | Complete | Remaining | Planned start | Planned finish | Total float | Free float | Constraint | Expected finish | Resources | Cost | Actual cost | HS2 Filter | COST LOADED | Fusion - WPS |
| --- | --- | --- | --- | --- | --- | --- | --- | --- | --- | --- | --- | --- | --- | --- | --- | --- | --- | --- | --- | --- |
|  | HS2-P1-CS-EWC-C-F | **HS2 Phase 1 - Central - Enabling Works Contract** |  | 2016-11-14 | 2023-01-13 |  |  |  |  |  |  |  |  |  |  |  |  |  |  |  |
|  | 1 | **Cost Loaded Activities** |  | 2016-11-14 | 2021-01-01 |  |  |  |  |  |  |  |  |  |  |  |  |  |  |  |
| COST-2260 |  | CMO-2017 | 259.5d | 2016-11-14 A | 2017-11-10 |  | 85% | 39.5d | 2017-11-13 | 2018-11-09 | 572d | 0.5d |  |  | CMO Staff [2173691 h] | 2,173,691.08 | 1,729,075.56 | y | UDF_G2 |  |
| COST-1060 |  | AW4-(1.WPI) | 683722d | 2017-02-21 A | 2017-11-30 |  | 100% | 54d | 2017-02-23 |  | 1336d | 0d |  | 2017-11-30 | Accomodation [30366 h] | 30,366 |  | y | UDF_G2 | AW4 |
| COST-1840 |  | AW1-(2.Delivery) | 683353d | 2017-03-20 A | 2017-11-17 |  | 100% | 45d | 2018-07-25 |  | 1345d | 0d |  | 2017-11-17 | Area Wide Support Team [3383387 h] | 3,383,386.97 | 2,326,759.14 | y | UDF_G2 | AW1 |
| COST-2250 |  | UW1-(2.Delivery) | 683495d | 2017-03-27 A | 2017-11-03 |  | 100% | 35d | 2018-01-05 |  | 1355d | 0d |  | 2017-11-03 | Urgent Works [9920000 h] | 9,920,000 | 8,624,005.99 | y | UDF_G2 | UW1 |
| COST-1230 |  | DC2A-(1.WPI) | 119747d | 2017-03-30 A | 2017-09-18 |  | 100% | 0d | 2017-02-23 |  | 1390d | 0d |  | 2017-08-24 | Stoke Mandeville & Princes Risborough Scheme Design [119747 h] | 119,746.78 | 117,415.88 | y | UDF_G2 | DC2A |
| COST-1570 |  | DC1B-(1.WPI) | 115667d | 2017-04-12 A | 2017-08-04 A |  | 100% |  | 2017-03-30 |  |  |  |  |  | TBM Power Supply - Scheme Design [115667 h] | 115,667.15 | 105,562.98 | y | UDF_G2 | DC1B |
| COST-1300 |  | DC3A-(1.WPI) | 71904.5d | 2017-05-23 A | 2017-10-06 |  | 100% | 15d | 2017-02-23 |  | 1375d | 0d | start on or after 2017-05-23 | 2017-10-06 | Chipping Warden, A361 Junction, Wardington A361 Safety Works & sulgrave Junction - Scheme Design [71904.5 h] | 71,904.51 | 69,931.12 | y | UDF_G2 | DC3A |
| COST-1310 |  | DC3B-(1.WPI) | 67202.3d | 2017-05-23 A | 2017-10-06 |  | 100% | 15d | 2017-02-23 |  | 1375d | 0d |  | 2017-10-06 | Wills Pastures Road & Junction - Scheme Design [67202.3 h] | 67,202.27 | 65,630.27 | y | UDF_G2 | DC3B |
| COST-1320 |  | DC3C-(1.WPI) | 62668.7d | 2017-05-23 A | 2017-10-06 |  | 100% | 15d | 2017-02-23 |  | 1375d | 0d |  | 2017-10-06 | M40 J11 - Scheme Design [62668.7 h] | 62,668.7 | 60,798.77 | y | UDF_G2 | DC3C |
| COST-1080 |  | AWE1-(1.WPI) | 149057d | 2017-05-31 A | 2017-11-06 |  | 100% | 36d | 2017-02-23 |  | 1354d | 0d |  | 2017-11-06 | Habitat Creation & Translocation [149057 h] | 149,056.94 | 139,196.4 | y | UDF_G2 | AWE1 |
| COST-2400 |  | AW4-(2.Delivery) | 778.5d | 2017-06-01 A | 2020-09-10 |  |  | 778.5d | 2017-09-18 | 2020-09-10 | 611.5d |  |  |  | Accomodation [4441294 h] | 4,441,294 | 1,087,037.23 | y | UDF_G2 | AW4 |
| COST-1070 |  | AWS-(1.WPI) | 166609d | 2017-06-05 A | 2017-12-01 |  | 100% | 55d | 2017-02-23 |  | 1335d | 0d |  | 2017-12-01 | Area Wide Surveys [166609 h] | 166,609.11 | 111,926.06 | y | UDF_G2 | AWS |
| COST-1100 |  | AWE3-(1.WPI) | 66889.7d | 2017-06-05 A | 2017-09-29 |  | 100% | 10d | 2017-02-23 |  | 1380d | 0d |  | 2017-09-29 | Preliminary Floodplain Storage Design & Fluvial/Hydrological Modelling Work [66889.7 h] | 66,889.7 | 53,866.99 | y | UDF_G2 | AWE3 |
| COST-2140 |  | DC1B-(2.Delivery) | 305015d | 2017-06-05 A | 2017-09-18 |  | 100% | 0d | 2017-08-21 |  | 1390d | 0d |  | 2017-08-22 | TBM Power Supply - Scheme Design [305015 h] | 305,014.63 | 353,279.19 | y | UDF_G2 | DC1B |
| COST-1240 |  | DC2B-(1.WPI) | 149002d | 2017-06-13 A | 2017-10-13 |  | 100% | 20d | 2017-02-23 |  | 1370d | 0d |  | 2017-10-13 | Calvert Area Works Scheme Design [149002 h] | 149,002 | 149,676.15 | y | UDF_G2 | DC2B |
| COST-1000 |  | AW1-(1.WPI) | 0d | 2017-06-13 A | 2017-09-15 A |  | 100% |  | 2017-05-29 | 2017-05-29 |  |  |  |  | Area Wide Support Team |  |  | y | UDF_G2 | AW1 |
| COST-1110 |  | AWE4-(1.WPI) | 165948d | 2017-07-10 A | 2017-12-15 |  | 100% | 65d | 2017-02-23 |  | 1325d | 0d |  | 2017-12-15 | Invasive Species Surveys, Treatment & Control [165948 h] | 165,948.23 | 102,313.88 | y | UDF_G2 | AWE4 |
| COST-1170 |  | DC1D-(1.WPI) | 100020d | 2017-07-11 A | 2017-12-01 |  | 100% | 55d | 2017-02-23 |  | 1335d | 0d |  | 2017-12-01 | Highway & Civil Works - Scheme Design [100020 h] | 100,020 | 89,358.46 | y | UDF_G2 | DC1D |
| COST-1180 |  | DC1E-(1.WPI) | 117275d | 2017-07-12 A | 2017-12-15 |  | 100% | 65d | 2017-02-23 |  | 1325d | 0d |  | 2017-12-15 | Utilities - Scheme Design [117275 h] | 117,274.86 | 78,537.52 | y | UDF_G2 | DC1E |
| UNINSTRUCTED |  | Uninstructed Cost | 129.75d | 2017-08-01 A | 2017-08-31 A |  | 100% |  | 2017-10-02 | 2018-03-30 |  |  |  |  | Information Technology & Digital Integration |  | 441,418.92 | y | UDF_G2 |  |
| COST-1140 |  | AWH-(1.WPI) | 525163d | 2017-08-04 A | 2017-12-01 |  | 100% | 55d | 2017-02-23 |  | 1335d | 0d |  | 2017-12-01 | Area Wide HERDS [525163 h] | 525,163.24 | 161,763.68 | y | UDF_G2 | AWH |
| COST-1200 |  | DC1G-(1.WPI) | 99217.8d | 2017-08-14 A | 2017-12-01 |  | 100% | 55d | 2017-07-25 |  | 1335d | 0d |  | 2017-12-01 | TBM Power Supply - Detailed Design & Construction [99217.8 h] | 99,217.75 | 99,217.41 | y | UDF_G2 | DC1G |
| COST-1090 |  | AWE2-(1.WPI) | 115000d | 2017-09-08 A | 2018-02-22 |  | 100% | 114d | 2017-02-23 |  | 1276d | 0d |  | 2018-02-22 | Landscape Planting Installation [115000 h] | 115,000 | 35,087 | y | UDF_G2 | AWE2 |
| COST-1010 |  | AW2-(1.WPI) | 75d | 2017-09-18 | 2017-12-29 |  |  |  |  |  | 796d | 0d | start on or after 2017-08-25 | 2017-12-29 | Information Technology & Digital Integration [103098 h] | 103,098.08 |  | y | UDF_G2 | AW2 |
| COST-1260 |  | DC2D-(1.WPI) | 195d | 2017-09-18 | 2018-06-15 |  |  |  |  |  | 1195d | 0d | start on or after 2017-09-15 | 2018-06-15 | Stoke Mandeville & Princes Risborough Detailed Design & construction |  |  | y | UDF_G2 | DC2D |
| COST-1290 |  | DC2G-(1.WPI) | 187.12d | 2017-09-19 | 2018-06-07 |  |  |  |  |  | 1201d | 0d | start on or after 2017-09-19 | 2018-06-07 | A413 Roundabouts & Haul Road [166735 h] | 166,735 |  | y | UDF_G2 | DC2G |
| COST-2420 |  | AW6-(1.WPI) | 129.75d | 2017-10-02 | 2018-03-30 |  |  |  |  |  | 1250.25d |  | start on or after 2017-10-02 |  | Civils Framework - Design & Build [48687 h] | 48,687 |  | y | UDF_G2 |  |
| COST-1250 |  | DC2C-(1.WPI) | 75.12d | 2017-10-03 | 2018-01-16 |  |  |  |  |  | 1303d | 0d | start on or after 2017-10-03 | 2018-01-16 | Highways & civils Works Scheme Design |  |  | y | UDF_G2 | DC2C |
| COST-2180 |  | DC2B2-(2.Delivery) - AW Diversion ( Design and Delivery) | 107d | 2017-10-13 | 2018-03-12 |  |  |  |  |  | 1264d | 0d | start on or after 2017-10-13 | 2018-03-12 | Calvert Area Works Scheme Design [313273 h] | 313,273 |  | y | UDF_G2 | DC2B |
| COST-2200 |  | DC3A-(2.Delivery) | 91d | 2017-10-13 | 2018-02-16 |  |  |  |  |  | 1280d | 0d | start on or after 2017-10-13 | 2018-02-16 | Chipping Warden, A361 Junction, Wardington A361 Safety Works & sulgrave Junction - Scheme Design [522447 h] | 522,447 |  | y | UDF_G2 | DC3A |
| COST-2210 |  | DC3B-(2.Delivery) | 120d | 2017-10-13 | 2018-03-29 |  |  |  |  |  | 1251d | 0d | start on or after 2017-10-13 | 2018-03-29 | Wills Pastures Road & Junction - Scheme Design [121275 h] | 121,275 |  | y | UDF_G2 | DC3B |
| COST-2220 |  | DC3C-(2.Delivery) | 126d | 2017-10-13 | 2018-04-06 |  |  |  |  |  | 1245d | 0d | start on or after 2017-10-13 | 2018-04-06 | M40 J11 - Scheme Design [35009 h] | 35,009 |  | y | UDF_G2 | DC3C |
| COST-2510 |  | DC2B1-(2.Delivery) - School Hill UTX (Scheme and Detailed Design) | 157d | 2017-10-13 | 2018-05-21 |  |  |  |  |  | 1214d | 0d | start on or after 2017-10-13 | 2018-05-21 | Calvert Area Works Scheme Design [274000 h] | 274,000 |  | y | UDF_G2 | DC2B |
| COST-1120 |  | AWE5-(1.WPI) | 75.12d | 2017-10-13 | 2018-01-26 |  |  |  |  |  | 1295d | 0d | start on or after 2017-10-13 | 2018-01-26 | Site Clearance |  |  | y | UDF_G2 | AWE5 |
| COST-1130 |  | AWE6-(1.WPI) | 75.12d | 2017-10-13 | 2018-01-26 |  |  |  |  |  | 1295d | 0d | start on or after 2017-10-13 | 2018-01-26 | Ground Remediation |  |  | y | UDF_G2 | AWE6 |
| COST-1330 |  | DC3D-(1.WPI) | 75.12d | 2017-10-13 | 2018-01-26 |  |  |  |  |  | 1295d | 0d | start on or after 2017-10-13 | 2018-01-26 | Utilities Scheme Design |  |  | y | UDF_G2 | DC3D |
| COST-1340 |  | DC3E-(1.WPI) | 75.12d | 2017-10-13 | 2018-01-26 |  |  |  |  |  | 1295d | 0d | start on or after 2017-10-13 | 2018-01-26 | Turweston Haul Road - scheme Design |  |  | y | UDF_G2 | DC3E |
| COST-1940 |  | AWE3-(2.Delivery) | 250.12d | 2017-10-13 | 2018-09-28 |  |  |  |  |  | 1120d | 0d | start on or after 2017-10-13 | 2018-09-28 | Preliminary Floodplain Storage Design & Fluvial/Hydrological Modelling Work [770719 h] | 770,719 |  | y | UDF_G2 | AWE3 |
| COST-2440 |  | AWE1-(2.Delivery) - Package 2 | 108d | 2017-11-01 | 2018-03-30 |  |  |  |  |  | 1250d | 0d | start on or after 2017-11-01 | 2018-03-30 | Habitat Creation & Translocation [2360461 h] | 2,360,461.33 |  | y | UDF_G2 | AWE1 |
| COST-1910 |  | AWS-(2.Delivery) | 491.12d | 2017-11-10 | 2019-09-30 |  |  |  |  |  | 859d | 0d | start on or after 2017-11-10 | 2019-09-30 | Area Wide Surveys [23765671 h] | 23,765,670.8 |  | y | UDF_G2 | AWS |
| COST-2370 |  | CMO-2018 | 259.5d | 2017-11-13 | 2018-11-09 | COST-2360, COST-2260 |  |  |  |  | 571.5d | 0d |  |  | CMO Staff [4500000 h] | 4,500,000 |  | y | UDF_G2 |  |
| COST-2000 |  | DC1G-(2.Delivery) - Detailed Design | 191d | 2017-12-08 | 2018-08-31 |  |  |  |  |  | 1140d | 0d | start on or after 2017-12-08 | 2018-08-31 | TBM Power Supply - Detailed Design & Construction [1871363 h] | 1,871,363 |  | y | UDF_G2 | DC1G |
| COST-2150 |  | DC1D-(2.Delivery) | 80d | 2017-12-08 | 2018-03-29 |  |  |  |  |  | 1251d | 0d | start on or after 2017-12-08 | 2018-03-29 | Highway & Civil Works - Scheme Design [819248 h] | 819,248 |  | y | UDF_G2 | DC1D |
| COST-1980 |  | AWH-(2.Delivery) - Geophys | 75d | 2017-12-18 | 2018-03-30 |  |  |  |  |  | 1250d | 0d | start on or after 2017-12-16 | 2018-03-30 | Area Wide HERDS [3570000 h] | 3,570,000 |  | y | UDF_G2 | AWH |
| COST-2480 |  | AWH-(2.Delivery) - TT | 228d | 2017-12-18 | 2018-10-31 |  |  |  |  |  | 1097d | 0d | start on or after 2017-12-16 | 2018-10-31 | Area Wide HERDS [10260000 h] | 10,260,000 |  | y | UDF_G2 | AWH |
| COST-1350 |  | DC3F-(1.WPI) | 74.12d | 2017-12-18 | 2018-03-30 |  |  |  |  |  | 1250d | 0d | start on or after 2017-12-18 | 2018-03-30 | Chipping Warden, A361 Junction, Wardington A361 Safety Works & sulgrave Junction - Detailed Design and Construction [115000 h] | 115,000 |  | y | UDF_G2 | DC3F |
| COST-1370 |  | DC3H-(1.WPI) | 74.12d | 2017-12-21 | 2018-04-04 |  |  |  |  |  | 1247d | 0d | start on or after 2017-12-21 | 2018-04-04 | M40 J11 - Detailed Design and Construction [115000 h] | 115,000 |  | y | UDF_G2 | DC3H |
| COST-2160 |  | DC1E-(2.Delivery) | 50d | 2017-12-22 | 2018-03-01 |  |  |  |  |  | 1271d | 0d | start on or after 2017-12-22 | 2018-03-01 | Utilities - Scheme Design [182523 h] | 182,523 |  | y | UDF_G2 | DC1E |
| COST-1400 |  | DC3K-(1.WPI) | 75.12d | 2017-12-29 | 2018-04-13 |  |  |  |  |  | 1240d | 0d | start on or after 2017-12-29 | 2018-04-13 | Demolition Works. |  |  | y | UDF_G2 | DC3K |
| COST-2410 |  | AW2-(2.Delivery) | 519d | 2018-01-01 | 2019-12-26 | COST-1010 |  |  |  |  | 796d | 0d |  | 2017-12-29 | Information Technology & Digital Integration [2000000 h] | 2,000,000 |  | y | UDF_G2 | AW2 |
| COST-2430 |  | AWE1-(2.Delivery) - Package 1 Mitigation Sites | 108d | 2018-01-01 | 2018-05-30 |  |  |  |  |  | 1207d | 0d | start on or after 2018-01-01 | 2018-05-30 | Habitat Creation & Translocation [15223982 h] | 15,223,981.61 |  | y | UDF_G2 | AWE1 |
| COST-1360 |  | DC3G-(1.WPI) | 74.12d | 2018-01-05 | 2018-04-19 |  |  |  |  |  | 1236d | 0d | start on or after 2018-01-05 | 2018-04-19 | Wills Pastures Road & Junction - Detailed Design and Construction [115000 h] | 115,000 |  | y | UDF_G2 | DC3G |
| COST-2190 |  | DC2C-(2.Delivery) | 86d | 2018-01-23 | 2018-05-22 |  |  |  |  |  | 1213d | 0d | start on or after 2018-01-23 | 2018-05-22 | Highways & civils Works Scheme Design |  |  | y | UDF_G2 | DC2C |
| COST-1960 |  | AWE5-(2.Delivery) | 760d | 2018-02-02 | 2020-12-31 |  |  |  |  |  | 531d | 0d | start on or after 2018-02-02 | 2020-12-31 | Site Clearance |  |  | y | UDF_G2 | AWE5 |
| COST-2230 |  | DC3D-(2.Delivery) | 109d | 2018-02-02 | 2018-07-04 |  |  |  |  |  | 1182d | 0d | start on or after 2018-02-02 | 2018-07-04 | Utilities Scheme Design |  |  | y | UDF_G2 | DC3D |
| COST-2240 |  | DC3E-(2.Delivery) | 109d | 2018-02-02 | 2018-07-04 |  |  |  |  |  | 1182d | 0d | start on or after 2018-02-02 | 2018-07-04 | Turweston Haul Road - scheme Design |  |  | y | UDF_G2 | DC3E |
| COST-1970 |  | AWE6-(2.Delivery) | 288.12d | 2018-02-02 | 2019-03-13 |  |  |  |  |  | 1002d | 0d | start on or after 2018-02-02 | 2019-03-13 | Ground Remediation |  |  | y | UDF_G2 | AWE6 |
| COST-1210 |  | DC1I-(1.WPI) | 79.12d | 2018-02-22 | 2018-06-13 |  |  |  |  |  | 1197d | 0d | start on or after 2018-02-22 | 2018-06-13 | Highway & Civil Works - Detailed Design & Construction [115000 h] | 115,000 |  | y | UDF_G2 | DC1I |
| COST-1930 |  | AWE2-(2.Delivery) | 543.62d | 2018-03-01 | 2020-03-31 |  |  |  |  |  | 728d | 0d | start on or after 2018-03-01 | 2020-03-31 | Landscape Planting Installation [2974688 h] | 2,974,688 |  | y | UDF_G2 | AWE2 |
| COST-1270 |  | DC2E-(1.WPI) | 99.12d | 2018-03-14 | 2018-07-31 |  |  |  |  |  | 1163d | 0d | start on or after 2018-03-14 | 2018-07-31 | Calvert Area Works Detailed Design & Construction [115000 h] | 115,000 |  | y | UDF_G2 | DC2E |
| COST-2060 |  | DC2G-(2.Delivery) | 236.12d | 2018-03-15 | 2019-02-08 |  |  |  |  |  | 1025d | 0d | start on or after 2018-03-15 | 2019-02-08 | A413 Roundabouts & Haul Road [3661441 h] | 3,661,441 |  | y | UDF_G2 | DC2G |
| COST-1220 |  | DC1J-(1.WPI) | 46.12d | 2018-03-21 | 2018-05-24 |  |  |  |  |  | 1211d | 0d | start on or after 2018-03-21 | 2018-05-24 | Utilities - Detailed Design & Construction [115000 h] | 115,000 |  | y | UDF_G2 | DC1J |
| COST-2010 |  | DC1I-(2.Delivery) | 249.12d | 2018-04-04 | 2019-03-19 |  |  |  |  |  | 998d | 0d | start on or after 2018-04-04 | 2019-03-19 | Highway & Civil Works - Detailed Design & Construction [13043112 h] | 13,043,112 |  | y | UDF_G2 | DC1I |
| COST-2070 |  | DC3F-(2.Delivery) | 320.12d | 2018-04-06 | 2019-06-28 |  |  |  |  |  | 925d | 0d | start on or after 2018-04-06 | 2019-06-28 | Chipping Warden, A361 Junction, Wardington A361 Safety Works & sulgrave Junction - Detailed Design and Construction [10183745 h] | 10,183,745 |  | y | UDF_G2 | DC3F |
| COST-2090 |  | DC3H-(2.Delivery) | 252.12d | 2018-04-11 | 2019-03-29 |  |  |  |  |  | 990d | 0d | start on or after 2018-04-11 | 2019-03-29 | M40 J11 - Detailed Design and Construction [553138 h] | 553,138 |  | y | UDF_G2 | DC3H |
| COST-1280 |  | DC2F-(1.WPI) | 62.12d | 2018-04-18 | 2018-07-13 |  |  |  |  |  | 1175d | 0d | start on or after 2018-04-18 | 2018-07-13 | Highways & Civils Detailed Design & Construction |  |  | y | UDF_G2 | DC2F |
| COST-2080 |  | DC3G-(2.Delivery) | 241.12d | 2018-04-26 | 2019-03-29 |  |  |  |  |  | 990d | 0d | start on or after 2018-04-26 | 2019-03-29 | Wills Pastures Road & Junction - Detailed Design and Construction [1780464 h] | 1,780,464 |  | y | UDF_G2 | DC3G |
| COST-1950 |  | AWE4-(2.Delivery) | 699d | 2018-05-01 | 2021-01-01 |  |  |  |  |  | 530d | 0d | start on or after 2018-05-01 | 2021-01-01 |  |  |  | y | UDF_G2 | AWE4 |

| ID | WBS | Activity | Duration | Start | Finish | Predecessors | Total float | Free float | Constraint | Expected finish | Resources | Cost | HS2 Filter | COST LOADED | Fusion - WPS |
| --- | --- | --- | --- | --- | --- | --- | --- | --- | --- | --- | --- | --- | --- | --- | --- |
| COST-2470 |  | AWE1-(2.Delivery) - Package 1 Maintenance | 654d | 2018-05-01 | 2020-10-30 |  | 575d | 0d | start on or after 2018-05-01 | 2020-10-30 | Habitat Creation & Translocation [2000000 h] | 2,000,000 | y | UDF_G2 | AWE1 |
| COST-2040 |  | DC2E-(2.Delivery) | 325.12d | 2018-05-15 | 2019-08-13 |  | 893d | 0d | start on or after 2018-05-15 | 2019-08-13 | Calvert Area Works Detailed Design & Construction [5366749 h] | 5,366,749 | y | UDF_G2 | DC2E |
| COST-1380 |  | DC3I-(1.WPI) | 74.12d | 2018-05-31 | 2018-09-12 |  | 1132d | 0d | start on or after 2018-05-31 | 2018-09-12 |  |  | y | UDF_G2 | DC3I |
| COST-1390 |  | DC3J-(1.WPI) | 74.12d | 2018-05-31 | 2018-09-12 |  | 1132d | 0d | start on or after 2018-05-31 | 2018-09-12 | Turweston Haul Road - Detailed Design and Construction |  | y | UDF_G2 | DC3J |
| COST-2120 |  | DC3K-(2.Delivery) | 180.12d | 2018-06-01 | 2019-02-08 |  | 1025d | 0d | start on or after 2018-06-01 | 2019-02-08 | Demolition Works. [23540 h] | 23,540 | y | UDF_G2 | DC3K |
| COST-2500 |  | DC1G-(2.Delivery) - Construction | 175d | 2018-07-02 | 2019-03-01 |  | 1010d | 0d | start on or after 2018-07-01 | 2019-03-01 | TBM Power Supply - Detailed Design & Construction [16842267 h] | 16,842,267.04 | y | UDF_G2 | DC1G |
| COST-2020 |  | DC1J-(2.Delivery) | 557.12d | 2018-07-17 | 2020-09-03 |  | 616d | 0d | start on or after 2018-07-17 | 2020-09-03 | Utilities - Detailed Design & Construction [3115007 h] | 3,115,007 | y | UDF_G2 | DC1J |
| COST-2450 |  | AWE1-(2.Delivery) - Package 3 | 327d | 2018-08-01 | 2019-10-31 |  | 836d | 0d | start on or after 2018-08-01 | 2019-10-31 | Habitat Creation & Translocation [20069747 h] | 20,069,747.33 | y | UDF_G2 | AWE1 |
| COST-2490 |  | AWH-(2.Delivery) - Mitigation | 597d | 2018-08-01 | 2020-11-12 |  | 566d | 0d | start on or after 2018-08-01 | 2020-11-12 | Area Wide HERDS [36170000 h] | 36,170,000 | y | UDF_G2 | AWH |
| COST-2050 |  | DC2F-(2.Delivery) | 115.12d | 2018-08-07 | 2019-01-15 |  | 1043d | 0d | start on or after 2018-08-07 | 2019-01-15 | Highways & Civils Detailed Design & Construction |  | y | UDF_G2 | DC2F |
| COST-2100 |  | DC3I-(2.Delivery) | 268.12d | 2018-09-19 | 2019-09-30 |  | 859d | 0d | start on or after 2018-09-19 | 2019-09-30 |  |  | y | UDF_G2 | DC3I |
| COST-2110 |  | DC3J-(2.Delivery) | 195.12d | 2018-09-19 | 2019-06-19 |  | 932d | 0d | start on or after 2018-09-19 | 2019-06-19 | Turweston Haul Road - Detailed Design and Construction |  | y | UDF_G2 | DC3J |
| COST-2380 |  | CMO-2019 | 259.5d | 2018-11-09 | 2019-11-07 | COST-2370 | 571.5d | 0d |  |  | CMO Staff [4500000 h] | 4,500,000 | y | UDF_G2 |  |
| COST-2460 |  | AWE1-(2.Delivery) - Package 1 Wetland | 43d | 2019-01-01 | 2019-02-28 |  | 1011d | 0d | start on or after 2019-01-01 | 2019-02-28 | Habitat Creation & Translocation [574133 h] | 574,132.72 | y | UDF_G2 | AWE1 |
| COST-2390 |  | CMO-2020 | 259.5d | 2019-11-08 | 2020-11-05 | COST-2380 | 571.5d |  |  |  | CMO Staff [3826311 h] | 3,826,311 | y | UDF_G2 |  |
|  | 1 | **Staff** |  | 2017-09-18 | 2017-11-17 |  |  |  |  |  |  |  |  |  |  |
|  | 1 | **AW1** |  | 2017-10-02 | 2017-11-17 |  |  |  |  |  |  |  |  |  |  |
| COST-2280 |  | AW1-week n. 40 | 5d | 2017-10-02 | 2017-10-06 |  | 1345d | 0d | start on or after 2017-10-02 |  | Pre-constn Director [30.48 h]; Construction Director [30.48 h]; Snr Commercial Mgr [30.48 h]; Estimating Manager [30.48 h]; People cost controller [30.48 h]; Contract Administrator [30.48 h]; Risk Manager [30.48 h]; Finance Mgr [30.48 h]; Digital Integration Director [12.19 h]; Cyber security/ IT implementation Mgr [30.48 h]; BIM Information Mgr [30.48 h]; Project Information Mgr [30.48 h]; Office Administrator [30.48 h]; Document Controller [30.48 h]; Senior Document Controller [30.48 h]; Lead Planner [30.48 h]; Planner [30.48 h]; Proj Controls Mgr [30.48 h]; EWC programme manager [30.48 h]; Assis Proj Controls Mgr [30.48 h]; Integration Manager [30.48 h]; 3rd Party Consents Mgr [30.48 h]; 3rd party stakeholder Mgr [30.48 h]; Integrated approvals Mgr [30.48 h]; Asst consents Mgr [30.48 h]; U&A Mgr [30.48 h]; Data Integration systems Mgr [30.48 h]; Data Integration [30.48 h]; Data Integration system consultant; Data Int Asst [30.48 h]; Doc Control [30.48 h]; Stakeholder Co [30.48 h]; Town planner [18.29 h]; Supply Chain Manager [30.48 h]; Assis H&S Manager [30.48 h]; Wellbeing Occup Health manager [30.48 h]; Occupational nurse; Occupational hygienists; Doctor (occupational health physician); D&A technician; D&A equipment; Assurance Manager [30.48 h]; HSEQ lead [30.48 h]; Quality Advisor [30.48 h]; HS & W Cord [30.48 h]; Envi & Sus Co [30.48 h]; Responsible procurement mgr [30.48 h]; Community engagement asst [30.48 h]; Community liaison officer C1 [30.48 h]; Community liaison officer C2 [30.48 h]; Community liaison officer C3 [30.48 h]; EDI Advisor [30.48 h]; SEE Planner [30.48 h]; SEE Ambassador [30.48 h]; Land Access Mgr [30.48 h]; Assist Land Acc Mgr [30.48 h]; Back office land access support team [30.48 h]; C1 Land Agric Liason [30.48 h]; C2 Land Agric Liason [30.48 h]; C3 Land Agric Liason [30.48 h]; Land access co-ordinator [30.48 h]; Land Support officer [30.48 h]; Communications Mgr [30.48 h]; Change Mgr [30.48 h] | 148,762.86 | y | UDF_G2 | AW1 |
| COST-2290 |  | AW1-week n. 41 | 5d | 2017-10-09 | 2017-10-13 | COST-2280 | 1345d | 0d |  |  | Pre-constn Director [30.48 h]; Construction Director [30.48 h]; Snr Commercial Mgr [30.48 h]; Estimating Manager [30.48 h]; People cost controller [30.48 h]; Contract Administrator [30.48 h]; Risk Manager [30.48 h]; Finance Mgr [30.48 h]; Digital Integration Director [12.19 h]; Cyber security/ IT implementation Mgr [30.48 h]; BIM Information Mgr [30.48 h]; Project Information Mgr [30.48 h]; Office Administrator [30.48 h]; Document Controller [30.48 h]; Senior Document Controller [30.48 h]; Lead Planner [30.48 h]; Planner [30.48 h]; Proj Controls Mgr [30.48 h]; EWC programme manager [30.48 h]; Assis Proj Controls Mgr [30.48 h]; Integration Manager [30.48 h]; 3rd Party Consents Mgr [30.48 h]; 3rd party stakeholder Mgr [30.48 h]; Integrated approvals Mgr [30.48 h]; Asst consents Mgr [30.48 h]; U&A Mgr [30.48 h]; Data Integration systems Mgr [30.48 h]; Data Integration [30.48 h]; Data Integration system consultant; Data Int Asst [30.48 h]; Doc Control [30.48 h]; Stakeholder Co [30.48 h]; Town planner [18.29 h]; Supply Chain Manager [30.48 h]; Assis H&S Manager [30.48 h]; Wellbeing Occup Health manager [30.48 h]; Occupational nurse; Occupational hygienists; Doctor (occupational health physician); D&A technician; D&A equipment; Assurance Manager [30.48 h]; HSEQ lead [30.48 h]; Quality Advisor [30.48 h]; HS & W Cord [30.48 h]; Envi & Sus Co [30.48 h]; Responsible procurement mgr [30.48 h]; Community engagement asst [30.48 h]; Community liaison officer C1 [30.48 h]; Community liaison officer C2 [30.48 h]; Community liaison officer C3 [30.48 h]; EDI Advisor [30.48 h]; SEE Planner [30.48 h]; SEE Ambassador [30.48 h]; Land Access Mgr [30.48 h]; Assist Land Acc Mgr [30.48 h]; Back office land access support team [30.48 h]; C1 Land Agric Liason [30.48 h]; C2 Land Agric Liason [30.48 h]; C3 Land Agric Liason [30.48 h]; Land access co-ordinator [30.48 h]; Land Support officer [30.48 h]; Communications Mgr [30.48 h]; Change Mgr [30.48 h] | 148,762.86 | y | UDF_G2 | AW1 |
| COST-2300 |  | AW1-week n. 42 | 5d | 2017-10-16 | 2017-10-20 | COST-2290 | 1345d | 0d |  |  | Pre-constn Director [30.48 h]; Construction Director [30.48 h]; Snr Commercial Mgr [30.48 h]; Estimating Manager [30.48 h]; People cost controller [30.48 h]; Contract Administrator [30.48 h]; Risk Manager [30.48 h]; Finance Mgr [30.48 h]; Digital Integration Director [12.19 h]; Cyber security/ IT implementation Mgr [30.48 h]; BIM Information Mgr [30.48 h]; Project Information Mgr [30.48 h]; Office Administrator [30.48 h]; Document Controller [30.48 h]; Senior Document Controller [30.48 h]; Lead Planner [30.48 h]; Planner [30.48 h]; Proj Controls Mgr [30.48 h]; EWC programme manager [30.48 h]; Assis Proj Controls Mgr [30.48 h]; Integration Manager [30.48 h]; 3rd Party Consents Mgr [30.48 h]; 3rd party stakeholder Mgr [30.48 h]; Integrated approvals Mgr [30.48 h]; Asst consents Mgr [30.48 h]; U&A Mgr [30.48 h]; Data Integration systems Mgr [30.48 h]; Data Integration [30.48 h]; Data Integration system consultant; Data Int Asst [30.48 h]; Doc Control [30.48 h]; Stakeholder Co [30.48 h]; Town planner [18.29 h]; Supply Chain Manager [30.48 h]; Assis H&S Manager [30.48 h]; Wellbeing Occup Health manager [30.48 h]; Occupational nurse; Occupational hygienists; Doctor (occupational health physician); D&A technician; D&A equipment; Assurance Manager [30.48 h]; HSEQ lead [30.48 h]; Quality Advisor [30.48 h]; HS & W Cord [30.48 h]; Envi & Sus Co [30.48 h]; Responsible procurement mgr [30.48 h]; Community engagement asst [30.48 h]; Community liaison officer C1 [30.48 h]; Community liaison officer C2 [30.48 h]; Community liaison officer C3 [30.48 h]; EDI Advisor [30.48 h]; SEE Planner [30.48 h]; SEE Ambassador [30.48 h]; Land Access Mgr [30.48 h]; Assist Land Acc Mgr [30.48 h]; Back office land access support team [30.48 h]; C1 Land Agric Liason [30.48 h]; C2 Land Agric Liason [30.48 h]; C3 Land Agric Liason [30.48 h]; Land access co-ordinator [30.48 h]; Land Support officer [30.48 h]; Communications Mgr [30.48 h]; Change Mgr [30.48 h] | 148,762.86 | y | UDF_G2 | AW1 |
| COST-2310 |  | AW1-week n. 43 | 5d | 2017-10-23 | 2017-10-27 | COST-2300 | 1345d | 0d |  |  | Pre-constn Director [30.48 h]; Construction Director [30.48 h]; Snr Commercial Mgr [30.48 h]; Estimating Manager [30.48 h]; People cost controller [30.48 h]; Contract Administrator [30.48 h]; Risk Manager [30.48 h]; Finance Mgr [30.48 h]; Digital Integration Director [12.19 h]; Cyber security/ IT implementation Mgr [30.48 h]; BIM Information Mgr [30.48 h]; Project Information Mgr [30.48 h]; Office Administrator [30.48 h]; Document Controller [30.48 h]; Senior Document Controller [30.48 h]; Lead Planner [30.48 h]; Planner [30.48 h]; Proj Controls Mgr [30.48 h]; EWC programme manager [30.48 h]; Assis Proj Controls Mgr [30.48 h]; Integration Manager [30.48 h]; 3rd Party Consents Mgr [30.48 h]; 3rd party stakeholder Mgr [30.48 h]; Integrated approvals Mgr [30.48 h]; Asst consents Mgr [30.48 h]; U&A Mgr [30.48 h]; Data Integration systems Mgr [30.48 h]; Data Integration [30.48 h]; Data Integration system consultant; Data Int Asst [30.48 h]; Doc Control [30.48 h]; Stakeholder Co [30.48 h]; Town planner [18.29 h]; Supply Chain Manager [30.48 h]; Assis H&S Manager [30.48 h]; Wellbeing Occup Health manager [30.48 h]; Occupational nurse; Occupational hygienists; Doctor (occupational health physician); D&A technician; D&A equipment; Assurance Manager [30.48 h]; HSEQ lead [30.48 h]; Quality Advisor [30.48 h]; HS & W Cord [30.48 h]; Envi & Sus Co [30.48 h]; Responsible procurement mgr [30.48 h]; Community engagement asst [30.48 h]; Community liaison officer C1 [30.48 h]; Community liaison officer C2 [30.48 h]; Community liaison officer C3 [30.48 h]; EDI Advisor [30.48 h]; SEE Planner [30.48 h]; SEE Ambassador [30.48 h]; Land Access Mgr [30.48 h]; Assist Land Acc Mgr [30.48 h]; Back office land access support team [30.48 h]; C1 Land Agric Liason [30.48 h]; C2 Land Agric Liason [30.48 h]; C3 Land Agric Liason [30.48 h]; Land access co-ordinator [30.48 h]; Land Support officer [30.48 h]; Communications Mgr [30.48 h]; Change Mgr [30.48 h] | 148,762.86 | y | UDF_G2 | AW1 |
| COST-2320 |  | AW1-week n. 44 | 5d | 2017-10-30 | 2017-11-03 | COST-2310 | 1345d | 0d |  |  | Pre-constn Director [30.48 h]; Construction Director [30.48 h]; Snr Commercial Mgr [30.48 h]; Estimating Manager [30.48 h]; People cost controller [30.48 h]; Contract Administrator [30.48 h]; Risk Manager [30.48 h]; Finance Mgr [30.48 h]; Digital Integration Director [12.19 h]; Cyber security/ IT implementation Mgr [30.48 h]; BIM Information Mgr [30.48 h]; Project Information Mgr [30.48 h]; Office Administrator [30.48 h]; Document Controller [30.48 h]; Senior Document Controller [30.48 h]; Lead Planner [30.48 h]; Planner [30.48 h]; Proj Controls Mgr [30.48 h]; EWC programme manager [30.48 h]; Assis Proj Controls Mgr [30.48 h]; Integration Manager [30.48 h]; 3rd Party Consents Mgr [30.48 h]; 3rd party stakeholder Mgr [30.48 h]; Integrated approvals Mgr [30.48 h]; Asst consents Mgr [30.48 h]; U&A Mgr [30.48 h]; Data Integration systems Mgr [30.48 h]; Data Integration [30.48 h]; Data Integration system consultant; Data Int Asst [30.48 h]; Doc Control [30.48 h]; Stakeholder Co [30.48 h]; Town planner [18.29 h]; Supply Chain Manager [30.48 h]; Assis H&S Manager [30.48 h]; Wellbeing Occup Health manager [30.48 h]; Occupational nurse [15.24 h]; Occupational hygienists [15.24 h]; Doctor (occupational health physician) [7.62 h]; D&A technician [30.48 h]; D&A equipment; Assurance Manager [30.48 h]; HSEQ lead [30.48 h]; Quality Advisor [30.48 h]; HS & W Cord [30.48 h]; Envi & Sus Co [30.48 h]; Responsible procurement mgr [30.48 h]; Community engagement asst [30.48 h]; Community liaison officer C1 [30.48 h]; Community liaison officer C2 [30.48 h]; Community liaison officer C3 [30.48 h]; EDI Advisor [30.48 h]; SEE Planner [30.48 h]; SEE Ambassador [30.48 h]; Land Access Mgr [30.48 h]; Assist Land Acc Mgr [30.48 h]; Back office land access support team [30.48 h]; C1 Land Agric Liason [30.48 h]; C2 Land Agric Liason [30.48 h]; C3 Land Agric Liason [30.48 h]; Land access co-ordinator [30.48 h]; Land Support officer [30.48 h]; Communications Mgr [30.48 h]; Change Mgr [30.48 h] | 153,913.07 | y | UDF_G2 | AW1 |
| COST-2330 |  | AW1-week n. 45 | 5d | 2017-11-06 | 2017-11-10 | COST-2320 | 1345d | 0d |  |  | Pre-constn Director [30.48 h]; Construction Director [30.48 h]; Snr Commercial Mgr [30.48 h]; Estimating Manager [30.48 h]; People cost controller [30.48 h]; Contract Administrator [30.48 h]; Risk Manager [30.48 h]; Finance Mgr [30.48 h]; Digital Integration Director [12.19 h]; Cyber security/ IT implementation Mgr [30.48 h]; BIM Information Mgr [30.48 h]; Project Information Mgr [30.48 h]; Office Administrator [30.48 h]; Document Controller [30.48 h]; Senior Document Controller [30.48 h]; Lead Planner [30.48 h]; Planner [30.48 h]; Proj Controls Mgr [30.48 h]; EWC programme manager [30.48 h]; Assis Proj Controls Mgr [30.48 h]; Integration Manager [30.48 h]; 3rd Party Consents Mgr [30.48 h]; 3rd party stakeholder Mgr [30.48 h]; Integrated approvals Mgr [30.48 h]; Asst consents Mgr [30.48 h]; U&A Mgr [30.48 h]; Data Integration systems Mgr [30.48 h]; Data Integration [30.48 h]; Data Integration system consultant; Data Int Asst [30.48 h]; Doc Control [30.48 h]; Stakeholder Co [30.48 h]; Town planner [18.29 h]; Supply Chain Manager [30.48 h]; Assis H&S Manager [30.48 h]; Wellbeing Occup Health manager [30.48 h]; Occupational nurse [15.24 h]; Occupational hygienists [15.24 h]; Doctor (occupational health physician) [7.62 h]; D&A technician [30.48 h]; D&A equipment; Assurance Manager [30.48 h]; HSEQ lead [30.48 h]; Quality Advisor [30.48 h]; HS & W Cord [30.48 h]; Envi & Sus Co [30.48 h]; Responsible procurement mgr [30.48 h]; Community engagement asst [30.48 h]; Community liaison officer C1 [30.48 h]; Community liaison officer C2 [30.48 h]; Community liaison officer C3 [30.48 h]; EDI Advisor [30.48 h]; SEE Planner [30.48 h]; SEE Ambassador [30.48 h]; Land Access Mgr [30.48 h]; Assist Land Acc Mgr [30.48 h]; Back office land access support team [30.48 h]; C1 Land Agric Liason [30.48 h]; C2 Land Agric Liason [30.48 h]; C3 Land Agric Liason [30.48 h]; Land access co-ordinator [30.48 h]; Land Support officer [30.48 h]; Communications Mgr [30.48 h]; Change Mgr [30.48 h] | 153,913.07 | y | UDF_G2 | AW1 |
| COST-2340 |  | AW1-week n. 46 | 5d | 2017-11-13 | 2017-11-17 | COST-2330 | 1345d |  |  |  | Pre-constn Director [30.48 h]; Construction Director [30.48 h]; Snr Commercial Mgr [30.48 h]; Estimating Manager [30.48 h]; People cost controller [30.48 h]; Contract Administrator [30.48 h]; Risk Manager [30.48 h]; Finance Mgr [30.48 h]; Digital Integration Director [12.19 h]; Cyber security/ IT implementation Mgr [30.48 h]; BIM Information Mgr [30.48 h]; Project Information Mgr [30.48 h]; Office Administrator [30.48 h]; Document Controller [30.48 h]; Senior Document Controller [30.48 h]; Lead Planner [30.48 h]; Planner [30.48 h]; Proj Controls Mgr [30.48 h]; EWC programme manager [30.48 h]; Assis Proj Controls Mgr [30.48 h]; Integration Manager [30.48 h]; 3rd Party Consents Mgr [30.48 h]; 3rd party stakeholder Mgr [30.48 h]; Integrated approvals Mgr [30.48 h]; Asst consents Mgr [30.48 h]; U&A Mgr [30.48 h]; Data Integration systems Mgr [30.48 h]; Data Integration [30.48 h]; Data Integration system consultant; Data Int Asst [30.48 h]; Doc Control [30.48 h]; Stakeholder Co [30.48 h]; Town planner [18.29 h]; Supply Chain Manager [30.48 h]; Assis H&S Manager [30.48 h]; Wellbeing Occup Health manager [30.48 h]; Occupational nurse [15.24 h]; Occupational hygienists [15.24 h]; Doctor (occupational health physician) [7.62 h]; D&A technician [30.48 h]; D&A equipment; Assurance Manager [30.48 h]; HSEQ lead [30.48 h]; Quality Advisor [30.48 h]; HS & W Cord [30.48 h]; Envi & Sus Co [30.48 h]; Responsible procurement mgr [30.48 h]; Community engagement asst [30.48 h]; Community liaison officer C1 [30.48 h]; Community liaison officer C2 [30.48 h]; Community liaison officer C3 [30.48 h]; EDI Advisor [30.48 h]; SEE Planner [30.48 h]; SEE Ambassador [30.48 h]; Land Access Mgr [30.48 h]; Assist Land Acc Mgr [30.48 h]; Back office land access support team [30.48 h]; C1 Land Agric Liason [30.48 h]; C2 Land Agric Liason [30.48 h]; C3 Land Agric Liason [30.48 h]; Land access co-ordinator [30.48 h]; Land Support officer [30.48 h]; Communications Mgr [30.48 h]; Change Mgr [30.48 h] | 153,913.07 | y | UDF_G2 | AW1 |

| ID | WBS | Activity | Type | Duration | Start | Finish | Predecessors | Complete | Total float | Free float | Constraint | Calendar | Resources | Cost | HS2 Filter | COST LOADED |
| --- | --- | --- | --- | --- | --- | --- | --- | --- | --- | --- | --- | --- | --- | --- | --- | --- |
|  | 2 | **CMO** |  |  | 2017-09-18 | 2017-11-10 |  |  |  |  |  |  |  |  |  |  |
| COST-2350 |  | CMO-Month n. 11 |  | 20d | 2017-09-18 | 2017-10-13 |  |  | 571.5d | 0d |  |  | Project Director [106.3 h]; Project Manager (Work Package Co-Ordinator) [106.3 h]; Commercial Manager [106.3 h]; Engineering Manager [106.3 h]; Project Controls Manager [106.3 h]; Consents Manager [106.3 h]; Community Liaison Manager [106.3 h]; Environment & Sustainability Manager [106.3 h]; Health & Safety Manager [106.3 h]; Skills & Employment Manager [106.3 h]; Office Manager [106.3 h]; Team Administrator [106.3 h]; Quality Manager [106.3 h]; Logistics Manager [53.15 h]; Security Manager [53.15 h]; Business Continuity Manager [5.93 h]; EDI Manager [106.3 h]; Site Manager; Assistant Commercial Manager [106.3 h]; Assistant Community Liaison Manager; Assistant Health & Safety Manager; Assistant Quality Manager; Document Controller [106.3 h]; Assistant Consent Manager; Digital Integration Manager [53.15 h]; Lead Planner [26.7 h]; Assistant Project Controls Manager; Risk Manager; Project Engineer; Senior Project Manager; Supply Chain Manager [85.04 h]; Sustainability Manager [26.57 h] | 116,874.47 | y | UDF_G2 |
| COST-2360 |  | CMO-Month n. 12 |  | 20d | 2017-10-16 | 2017-11-10 | COST-2350, COST-2350 FF, COST-2350 SS |  | 571.5d | 0d |  |  | Project Director [106.3 h]; Project Manager (Work Package Co-Ordinator) [106.3 h]; Commercial Manager [106.3 h]; Engineering Manager [106.3 h]; Project Controls Manager [106.3 h]; Consents Manager [106.3 h]; Community Liaison Manager [106.3 h]; Environment & Sustainability Manager [106.3 h]; Health & Safety Manager [106.3 h]; Skills & Employment Manager [106.3 h]; Office Manager [106.3 h]; Team Administrator [106.3 h]; Quality Manager [106.3 h]; Logistics Manager [53.15 h]; Security Manager [53.15 h]; Business Continuity Manager [5.93 h]; EDI Manager [106.3 h]; Site Manager; Assistant Commercial Manager [106.3 h]; Assistant Community Liaison Manager; Assistant Health & Safety Manager; Assistant Quality Manager; Document Controller [106.3 h]; Assistant Consent Manager; Digital Integration Manager [53.15 h]; Lead Planner [26.7 h]; Assistant Project Controls Manager; Risk Manager; Project Engineer; Senior Project Manager; Supply Chain Manager [85.04 h]; Sustainability Manager [26.57 h] | 116,874.47 | y | UDF_G2 |
|  | KM | **Key Milestones** |  |  | 2016-11-17 | 2023-01-13 |  |  |  |  |  |  |  |  |  |  |
|  | CM | **Contract Milestones** |  |  | 2016-11-17 | 2023-01-13 |  |  |  |  |  |  |  |  |  |  |
| P1EWCC-KM-CM-1000 |  | Contract Date |  | 1d | 2016-11-17 A | 2016-11-17 A |  | 100% |  |  | start on 2016-11-17 |  |  |  |  |  |
| P1EWCC-KM-CM-1010 |  | Starting Date |  | 1d | 2016-11-17 A | 2016-11-17 A | P1EWCC-KM-CM-1000 FF, P1EWCC-KM-CM-1000 SS | 100% |  |  | start on 2016-11-17 |  |  |  |  |  |
| P1EWCC-KM-CM-1020 |  | Start of Year 2 |  | 1d | 2017-11-16 | 2017-11-16 | P1EWCC-KM-CM-1010 FS+259d, P1EWCC-PWP01-5110 |  | 41d |  |  |  |  |  |  |  |
| P1EWCC-KM-CM-1030 |  | Start of Year 3 |  | 1d | 2019-01-14 | 2019-01-14 | P1EWCC-KM-CM-1020 FS+260d, P1EWCC-PWP06-3360 |  | 0d |  |  |  |  |  |  |  |
| P1EWCC-KM-CM-1040 |  | Start of Year 4 |  | 1d | 2020-01-13 | 2020-01-13 | P1EWCC-KM-CM-1030 FS+259d |  | 0d |  |  |  |  |  |  |  |
| P1EWCC-KM-CM-1050 |  | Start of Year 5 |  | 1d | 2021-01-13 | 2021-01-13 | P1EWCC-KM-CM-1040 FS+261d |  | 0d |  |  |  |  |  |  |  |
| P1EWCC-KM-CM-1060 |  | Start of Year 6 |  | 1d | 2022-01-13 | 2022-01-13 | P1EWCC-KM-CM-1050 FS+260d |  | 0d |  |  |  |  |  |  |  |
| P1EWCC-KM-CM-1070 |  | End of Year 6 (Contract Completion) |  | 1d | 2023-01-13 | 2023-01-13 | P1EWCC-KM-CM-1060 FS+260d |  | 0d |  | start on or after 2022-09-16 |  |  |  |  |  |
|  | 1 | **Fusion Target Completion Milestone (MWCC Access Date)** |  |  | 2019-01-11 | 2020-12-02 |  |  |  |  |  |  |  |  |  |  |
|  | 1 | **C1** |  |  | 2019-01-11 | 2020-12-02 |  |  |  |  |  |  |  |  |  |  |
| P1EWCC-KM-FTM-1050 |  | Ch34.100 - Ch34.140 (034-S1 - Chiltern Tunnel - Chalfont St Peter vent shaft) | milestone | 0d | 2019-01-11 | 2019-01-11 | P1EWCC-PWP06-1820, P1EWCC-PWP02-3810, P1EWCC-PWP08-1230, P1EWCC-FWP01-1350, P1EWCC-FWP01-1360, P1EWCC-FWP01-1370 |  | -71d | 1463d | finish on 2018-11-01 | HS2 - 8h x 7d Workweek (No Holidays) |  |  |  |  |
| P1EWCC-KM-FTM-1040 |  | Ch31.050 - Ch31.163 (031-L1 - Chiltern Tunnel - South Cutting) | milestone | 0d | 2019-03-05 | 2019-03-05 | P1EWCC-PWP06-3310, P1EWCC-PWP02-6380, P1EWCC-EWP02-1350, P1EWCC-EWP02-1360, P1EWCC-FWP02-1130, P1EWCC-FWP01-1310, P1EWCC-FWP01-1320, P1EWCC-FWP01-1330, P1EWCC-FWP01-1340 |  | -124d | 1410d | finish on 2018-11-01 | HS2 - 8h x 7d Workweek (No Holidays) |  |  |  |  |
| P1EWCC-KM-FTM-1060 |  | Ch37.400 - Ch37.440 (037-S1 - Chiltern Tunnel - Chalfont St Giles vent shaft) | milestone | 0d | 2019-04-16 | 2019-04-16 | P1EWCC-PWP06-3510, P1EWCC-PWP02-6390, P1EWCC-EWP02-1550, P1EWCC-EWP02-1470, P1EWCC-EWP02-1480, P1EWCC-EWP02-1540, P1EWCC-FWP02-1160, P1EWCC-PWP013-1020, P1EWCC-FWP01-1380, P1EWCC-FWP01-1390, P1EWCC-FWP01-1400, P1EWCC-FWP01-1410 |  | 0d | 1368d | finish on 2019-04-16 | HS2 - 8h x 7d Workweek (No Holidays) |  |  |  |  |
| P1EWCC-KM-FTM-1045 |  | Ch31.050 - Ch31.163 (031-L1 - Chiltern Tunnel - South Cutting) TBM Completion Date | milestone | 0d | 2019-05-02 | 2019-05-02 | P1EWCC-EWP19-1010 |  | 0d | 1352d | finish on 2019-05-02 | HS2 - 8h x 7d Workweek (No Holidays) |  |  |  |  |
| P1EWCC-KM-FTM-1070 |  | Ch40.100- Ch40.140 (040-S1 - Chiltern Tunnel - Amersham vent shaft) | milestone | 0d | 2019-05-30 | 2019-05-30 | P1EWCC-PWP06-3570, P1EWCC-PWP02-6400, P1EWCC-PWP03-1210, P1EWCC-EWP02-1650, P1EWCC-EWP02-1640, P1EWCC-FWP01-1420, P1EWCC-FWP01-1430, P1EWCC-FWP01-1450 |  | 0d | 1324d | finish on 2019-05-30 | HS2 - 8h x 7d Workweek (No Holidays) |  |  |  |  |
| P1EWCC-KM-FTM-1020 |  | Ch29.650 - Ch30.360 (029-L2 - Tilehouse Lane Cutting) | milestone | 0d | 2019-08-14 | 2019-08-14 | P1EWCC-PWP06-2030, P1EWCC-PWP02-4980, P1EWCC-EWP01-1250, P1EWCC-EWP01-1410, P1EWCC-FWP01-1100, P1EWCC-FWP01-1240, P1EWCC-FWP01-1270, P1EWCC-FWP01-1250 |  | 0d | 1248d | finish on 2019-08-14 | HS2 - 8h x 7d Workweek (No Holidays) |  |  |  |  |
| P1EWCC-KM-FTM-1000 |  | Ch25.800 - Ch29.360 (025-L1 - Colne Valley South Embankment to 025-L2 - Colne Valley Viaduct) | milestone | 0d | 2019-11-05 | 2019-11-05 | P1EWCC-PWP06-3070, P1EWCC-PWP02-6330, P1EWCC-PWP06-2120, P1EWCC-PWP02-4890, P1EWCC-EWP01-1000, P1EWCC-EWP01-1290, P1EWCC-EWP01-1480, P1EWCC-EWP01-1020, P1EWCC-EWP01-1030, P1EWCC-EWP01-1040, P1EWCC-EWP01-1050, P1EWCC-PWP02-12590, P1EWCC-PWP02-14320, P1EWCC-PWP02-4840, P1EWCC-PWP02-12750, P1EWCC-FWP01-1150, P1EWCC-FWP01-1160, P1EWCC-FWP01-1170, P1EWCC-FWP01-1180, P1EWCC-FWP01-1190, P1EWCC-FWP01-1200, P1EWCC-FWP01-1260 |  | -10.75d | 1165.25d | finish on 2019-10-25 | HS2 - 8h x 7d Workweek (No Holidays) |  |  |  |  |
| P1EWCC-KM-FTM-1030 |  | Ch30.360 - Ch31.050 (030-L1 - West Hyde Embankment) | milestone | 0d | 2020-02-24 | 2020-02-24 | P1EWCC-PWP06-3230, P1EWCC-PWP02-6370, P1EWCC-PWP02-12810, P1EWCC-FWP01-1290, P1EWCC-FWP01-1280, P1EWCC-FWP01-1300 |  | 0d | 1054d | finish on 2020-02-24 | HS2 - 8h x 7d Workweek (No Holidays) |  |  |  |  |
| P1EWCC-KM-FTM-1080 |  | Ch43.000 - Ch43.040 (043-S1 - Chiltern Tunnel - Little Missenden Vent shaft) | milestone | 0d | 2020-03-09 | 2020-03-09 | P1EWCC-PWP06-3630, P1EWCC-PWP02-6410, P1EWCC-EWP02-1710, P1EWCC-FWP01-1460, P1EWCC-FWP01-1470, P1EWCC-FWP01-1480, P1EWCC-FWP01-1490 |  | 0d | 1040d | finish on 2020-03-09 | HS2 - 8h x 7d Workweek (No Holidays) |  |  |  |  |
| P1EWCC-KM-FTM-1010 |  | Ch29.360 - Ch29.650 (029-L1 - Colne Valley North Embankment) | milestone | 0d | 2020-08-13 | 2020-08-13 | P1EWCC-PWP06-3150, P1EWCC-PWP02-6340, P1EWCC-EWP01-1270, P1EWCC-FWP01-1210, P1EWCC-FWP01-1220, P1EWCC-FWP01-1230 |  | 0d | 883d | finish on 2020-08-13 | HS2 - 8h x 7d Workweek (No Holidays) |  |  |  |  |
| P1EWCC-KM-FTM-1090 |  | Ch46.130 - Ch46.240 (046-S6 - Chiltern Tunnel - Chesham Road Vent Shaft) | milestone | 0d | 2020-12-02 | 2020-12-02 | P1EWCC-PWP06-3750, P1EWCC-EWP02-1750, P1EWCC-PWP02-6460, P1EWCC-FWP02-1230, P1EWCC-FWP01-1500, P1EWCC-FWP01-1510, P1EWCC-FWP01-1520, P1EWCC-FWP01-1530 |  | 0d | 772d | finish on 2020-12-02 | HS2 - 8h x 7d Workweek (No Holidays) |  |  |  |  |

| ID | WBS | Activity | Type | Duration | Start | Finish | Predecessors | Total float | Free float | Constraint | Calendar |
| --- | --- | --- | --- | --- | --- | --- | --- | --- | --- | --- | --- |
|  | 2 | **C2** |  |  | 2019-03-01 | 2020-03-02 |  |  |  |  |  |
| P1EWCC-KM-FTM-1140 |  | Ch64.300 to Ch65.450 (064-L1 - Thame Valley South Embankment - 065-L1 - Thame Valley North Embankment) | milestone | 0d | 2019-03-01 | 2019-03-01 | P1EWCC-PWP06-4700, P1EWCC-PWP02-7250, P1EWCC-PWP06-6050, P1EWCC-PWP02-7280, P1EWCC-PWP06-4820, P1EWCC-PWP02-7360, P1EWCC-PWP04-2200, P1EWCC-FWP01-2200, P1EWCC-FWP01-2240, P1EWCC-FWP01-2250, P1EWCC-FWP01-2280 | 0d | 1414d | finish on 2019-03-01 | HS2 - 8h x 7d Workweek (No Holidays) |
| P1EWCC-KM-FTM-1230 |  | Ch82.245 to Ch84.425 (082-L1 - Twyford Viaduct to 083-L2 - Godington East Embankment) | milestone | 0d | 2019-03-01 | 2019-03-01 | P1EWCC-PWP06-5240, P1EWCC-PWP02-7810, P1EWCC-FWP04-6020, P1EWCC-PWP04-1460, P1EWCC-FWP04-6050, P1EWCC-PWP06-5300, P1EWCC-PWP02-7880, P1EWCC-PWP02-7920, P1EWCC-FWP04-6150, P1EWCC-PWP06-1890, P1EWCC-PWP02-4280, P1EWCC-PWP02-7950, P1EWCC-FWP03-1230, P1EWCC-PWP06-5360, P1EWCC-PWP02-7960, P1EWCC-PWP06-5430, P1EWCC-PWP02-8070, P1EWCC-FWP03-5910, P1EWCC-FWP01-2780, P1EWCC-FWP01-2820, P1EWCC-FWP01-2830, P1EWCC-FWP01-2850, P1EWCC-FWP01-2860, P1EWCC-FWP01-2870, P1EWCC-FWP01-2900, P1EWCC-FWP01-2940, P1EWCC-FWP01-2950 | 0d | 1414d | finish on 2019-03-01 | HS2 - 8h x 7d Workweek (No Holidays) |
| P1EWCC-KM-FTM-1260 |  | Ch92.550 to Ch95.340 (092-L2 - Westbury Viaduct to 093-L1 - Turweston Cutting ) | milestone | 0d | 2019-03-01 | 2019-03-01 | P1EWCC-PWP06-2610, P1EWCC-PWP02-5800, P1EWCC-PWP06-5920, P1EWCC-PWP02-8540, P1EWCC-PWP06-5980, P1EWCC-PWP02-8580, P1EWCC-PWP02-8640, P1EWCC-FWP01-3340, P1EWCC-FWP01-3350, P1EWCC-FWP01-3380, P1EWCC-FWP01-3410, P1EWCC-FWP01-3420, P1EWCC-FWP01-3430 | 0d | 1414d | finish on 2019-03-01 | HS2 - 8h x 7d Workweek (No Holidays) |
| P1EWCC-KM-FTM-1100 |  | Ch47.205 to Ch55.045 (044-L1 - Chiltern Tunnel - North Portal to 053-L2 - Wendover Green Tunnel ) | milestone | 0d | 2019-04-01 | 2019-04-01 | P1EWCC-PWP06-3690, P1EWCC-PWP02-6450, P1EWCC-PWP03-3700, P1EWCC-PWP06-1840, P1EWCC-PWP06-1200, P1EWCC-PWP02-3880, P1EWCC-PWP02-8750, P1EWCC-PWP02-9190, P1EWCC-FWP02-1040, P1EWCC-PWP06-3900, P1EWCC-PWP02-6530, P1EWCC-PWP02-6590, P1EWCC-FWP03-1420, P1EWCC-PWP06-3960, P1EWCC-FWP03-5080, P1EWCC-PWP02-6600, P1EWCC-PWP02-6650, P1EWCC-PWP06-4020, P1EWCC-PWP02-6660, P1EWCC-PWP06-4080, P1EWCC-PWP02-6710, P1EWCC-PWP06-4140, P1EWCC-FWP03-5190, P1EWCC-PWP02-6760, P1EWCC-PWP02-6810, P1EWCC-PWP06-4200, P1EWCC-FWP03-5250, P1EWCC-PWP02-6830, P1EWCC-PWP06-4260, P1EWCC-PWP02-6880, P1EWCC-PWP02-6930, P1EWCC-PWP06-4320, P1EWCC-FWP03-5340, P1EWCC-PWP02-6950, P1EWCC-FWP03-5400, P1EWCC-EWP02-1800, P1EWCC-FWP01-1550, P1EWCC-FWP01-1560, P1EWCC-FWP01-1570, P1EWCC-FWP01-1580, P1EWCC-FWP01-1600, P1EWCC-FWP01-1640, P1EWCC-FWP01-1650, P1EWCC-FWP01-1680, P1EWCC-FWP01-1690, P1EWCC-FWP01-1710, P1EWCC-FWP01-1720, P1EWCC-FWP01-1730, P1EWCC-FWP01-1750, P1EWCC-FWP01-1760, P1EWCC-FWP01-1790, P1EWCC-FWP01-1800, P1EWCC-FWP01-1840, P1EWCC-FWP01-1850, P1EWCC-FWP01-1870, P1EWCC-FWP01-1880, P1EWCC-FWP01-1890, P1EWCC-FWP01-1900 | -30.38d | 1383.62d | finish on 2019-03-01 | HS2 - 8h x 7d Workweek (No Holidays) |
| P1EWCC-KM-FTM-1160 |  | Ch68.300 to Ch69.850 (068-L1 - Waddesdon South Cutting) | milestone | 0d | 2019-04-03 | 2019-04-03 | P1EWCC-PWP06-4940, P1EWCC-PWP02-7480, P1EWCC-PWP02-7520, P1EWCC-FWP01-2380, P1EWCC-FWP01-2390, P1EWCC-FWP01-2400 | 0d | 1381d | finish on 2019-04-03 | HS2 - 8h x 7d Workweek (No Holidays) |
| P1EWCC-KM-FTM-1190 |  | Ch73.850 to Ch74.300 (073-L1 - Woodlands Cutting) | milestone | 0d | 2019-04-11 | 2019-04-11 | P1EWCC-PWP06-5120, P1EWCC-PWP02-7670, P1EWCC-PWP02-7710, P1EWCC-FWP04-5270, P1EWCC-FWP04-5910, P1EWCC-FWP01-2620, P1EWCC-FWP01-2630, P1EWCC-FWP01-2640 | 0d | 1373d | finish on 2019-04-11 | HS2 - 8h x 7d Workweek (No Holidays) |
| P1EWCC-KM-FTM-1240 |  | Ch84.425 to Ch91.300 (084-L1 - Chetwode Embankment to 087-L2 - Barton to Mixbury Cutting) | milestone | 0d | 2019-05-14 | 2019-05-14 | P1EWCC-PWP06-1910, P1EWCC-PWP02-4420, P1EWCC-FWP05-1260, P1EWCC-FWP03-1500, P1EWCC-PWP06-5500, P1EWCC-PWP02-8150, P1EWCC-PWP02-8200, P1EWCC-FWP05-6250, P1EWCC-FWP05-6280, P1EWCC-PWP06-5560, P1EWCC-PWP02-8220, P1EWCC-FWP05-6380, P1EWCC-PWP06-5620, P1EWCC-PWP02-8290, P1EWCC-FWP05-6490, P1EWCC-FWP05-6450, P1EWCC-PWP06-5680, P1EWCC-PWP02-8360, P1EWCC-PWP02-9010, P1EWCC-FWP05-6530, P1EWCC-PWP06-2540, P1EWCC-PWP02-5690, P1EWCC-PWP17-6770, P1EWCC-FWP04-6480, P1EWCC-FWP05-6780, P1EWCC-FWP01-2980, P1EWCC-FWP01-2990, P1EWCC-FWP01-3010, P1EWCC-FWP01-3020, P1EWCC-FWP01-3030, P1EWCC-FWP01-3060, P1EWCC-FWP01-3070, P1EWCC-FWP01-3090, P1EWCC-FWP01-3100, P1EWCC-FWP01-3110, P1EWCC-FWP01-3130, P1EWCC-FWP01-3140, P1EWCC-FWP01-3150, P1EWCC-FWP01-3170, P1EWCC-FWP01-3180, P1EWCC-FWP01-3190 | 0d | 1340d | finish on 2019-05-14 | HS2 - 8h x 7d Workweek (No Holidays) |
| P1EWCC-KM-FTM-1220 |  | Ch81.450 to Ch82.245 (080-L1 - Twyford Embankment) | milestone | 0d | 2019-06-12 | 2019-06-12 | P1EWCC-PWP06-5180, P1EWCC-PWP02-7740, P1EWCC-PWP02-7780, P1EWCC-PWP04-1440, P1EWCC-FWP04-5950, P1EWCC-FWP01-2730, P1EWCC-FWP01-2740, P1EWCC-FWP01-2750 | 0d | 1311d | finish on 2019-06-12 | HS2 - 8h x 7d Workweek (No Holidays) |
| P1EWCC-KM-FTM-1210 |  | Ch77.300 to Ch81.450 (077-L1 - Calvert Cutting) | milestone | 0d | 2019-08-13 | 2019-08-13 | P1EWCC-PWP06-6040, P1EWCC-PWP02-8660, P1EWCC-PWP02-8700, P1EWCC-PWP02-9120, P1EWCC-FWP04-6300, P1EWCC-FWP04-6370, P1EWCC-PWP04-1510, P1EWCC-EWP02-1770, P1EWCC-EWP04-5730, P1EWCC-EWP04-6460, P1EWCC-EWP04-5690, P1EWCC-FWP04-6250, P1EWCC-FWP01-2700, P1EWCC-FWP01-2710, P1EWCC-FWP01-2720, P1EWCC-EWP02-1820 | -84d | 1249d | finish on 2019-05-21 | HS2 - 8h x 7d Workweek (No Holidays) |
| P1EWCC-KM-FTM-1110 |  | Ch55.045 to Ch58.400 (055-L1 - Wendover North Cutting to 056-L1 - Stoke Mandeville South Embankment ) | milestone | 0d | 2019-09-25 | 2019-09-25 | P1EWCC-PWP06-4380, P1EWCC-FWP03-5480, P1EWCC-PWP02-6980, P1EWCC-PWP02-7020, P1EWCC-PWP06-1850, P1EWCC-PWP02-4010, P1EWCC-PWP02-5050, P1EWCC-PWP02-9180, P1EWCC-FWP01-1910, P1EWCC-FWP01-1920, P1EWCC-FWP01-1930, P1EWCC-FWP01-1940, P1EWCC-FWP01-1950, P1EWCC-FWP01-1960, P1EWCC-FWP01-1970 | -123.38d | 1206.62d | finish on 2019-05-24 | HS2 - 8h x 7d Workweek (No Holidays) |
| P1EWCC-KM-FTM-1170 |  | Ch69.850 to Ch71.850 (069-L1 - Waddesdon Embankment to 070-L2 - Quainton South Embankment) | milestone | 0d | 2019-10-30 | 2019-10-30 | P1EWCC-PWP06-2260, P1EWCC-PWP06-5000, P1EWCC-PWP02-7540, P1EWCC-PWP02-7580, P1EWCC-PWP06-2330, P1EWCC-FWP04-1200, P1EWCC-PWP02-5350, P1EWCC-PWP02-5400, P1EWCC-FWP04-4920, P1EWCC-FWP04-4940, P1EWCC-FWP03-6050, P1EWCC-FWP03-6060, P1EWCC-FWP01-2430, P1EWCC-FWP01-2440, P1EWCC-FWP01-2470, P1EWCC-FWP01-2480, P1EWCC-FWP01-2500, P1EWCC-FWP01-2510, P1EWCC-FWP01-2520 | 0d | 1171d | finish on 2019-10-30 | HS2 - 8h x 7d Workweek (No Holidays) |
| P1EWCC-KM-FTM-1120 |  | Ch58.400 to Ch61.700 (058-L1 - Aylesbury South Cutting to 060-L1 - Aylesbury Embankment ) | milestone | 0d | 2019-11-08 | 2019-11-08 | P1EWCC-PWP02-3700, P1EWCC-PWP02-9170, P1EWCC-PWP06-4520, P1EWCC-PWP02-7040, P1EWCC-PWP02-7090, P1EWCC-FWP01-1990, P1EWCC-FWP01-2000, P1EWCC-FWP01-2010, P1EWCC-FWP01-2030, P1EWCC-FWP01-2040, P1EWCC-FWP01-2050 | 0d | 1162d | finish on 2019-11-08 | HS2 - 8h x 7d Workweek (No Holidays) |
| P1EWCC-KM-FTM-1150 |  | Ch65.450 to Ch68.300 (065-L2 - Putlowes Cutting to 066-L1 - Bicester Road Embankment) | milestone | 0d | 2019-11-08 | 2019-11-08 | P1EWCC-PWP06-4880, P1EWCC-PWP02-7420, P1EWCC-PWP06-1870, P1EWCC-PWP02-4150, P1EWCC-PWP02-5210, P1EWCC-PWP02-7470, P1EWCC-FWP03-1200, P1EWCC-FWP01-2320, P1EWCC-FWP01-2330, P1EWCC-FWP01-2350, P1EWCC-FWP01-2360, P1EWCC-FWP01-2370 | 0d | 1162d | finish on 2019-11-08 | HS2 - 8h x 7d Workweek (No Holidays) |
| P1EWCC-KM-FTM-1250 |  | Ch91.300 to Ch92.550 (091-L1 - Mixbury Embankment to 092-L1 - Westbury Embankment) | milestone | 0d | 2019-11-08 | 2019-11-08 | P1EWCC-PWP06-5740, P1EWCC-PWP02-8430, P1EWCC-PWP02-8480, P1EWCC-PWP02-9130, P1EWCC-FWP05-6600, P1EWCC-PWP06-5800, P1EWCC-PWP06-5860, P1EWCC-PWP02-8500, P1EWCC-FWP05-6670, P1EWCC-FWP01-3220, P1EWCC-FWP01-3230, P1EWCC-FWP01-3250, P1EWCC-FWP01-3260, P1EWCC-FWP01-3270, P1EWCC-FWP01-3300, P1EWCC-FWP01-3310 | 0d | 1162d | finish on 2019-11-08 | HS2 - 8h x 7d Workweek (No Holidays) |
| P1EWCC-KM-FTM-1180 |  | Ch71.850 to Ch73.850 (071-L1 - Quainton Cutting to 072-L1 - Doddershall Embankment ) | milestone | 0d | 2019-11-15 | 2019-11-15 | P1EWCC-PWP06-5060, P1EWCC-PWP02-7600, P1EWCC-PWP02-7640, P1EWCC-FWP04-5120, P1EWCC-FWP04-5170, P1EWCC-PWP06-2400, P1EWCC-PWP02-5470, P1EWCC-FWP04-5000, P1EWCC-PWP04-1540, P1EWCC-FWP01-2540, P1EWCC-FWP01-2550, P1EWCC-FWP01-2560, P1EWCC-FWP01-2590, P1EWCC-FWP01-2600 | -70.38d | 1155.62d | finish on 2019-09-05 | HS2 - 8h x 7d Workweek (No Holidays) |
| P1EWCC-KM-FTM-1130 |  | Ch61.700 to Ch64.300 (061-L3 - Aylesbury North Cutting to 063-L2 - Whaddon Hill Cutting) | milestone | 0d | 2020-01-13 | 2020-01-13 | P1EWCC-PWP02-5140, P1EWCC-PWP06-2190, P1EWCC-PWP04-1420, P1EWCC-PWP02-7170, P1EWCC-PWP06-4640, P1EWCC-PWP06-4580, P1EWCC-FWP03-5780, P1EWCC-FWP03-5770, P1EWCC-PWP02-7100, P1EWCC-PWP02-7140, P1EWCC-FWP03-5710, P1EWCC-FWP03-6020, P1EWCC-FWP03-5990, P1EWCC-FWP03-5960, P1EWCC-FWP01-2070, P1EWCC-FWP01-2080, P1EWCC-FWP01-2090, P1EWCC-FWP01-2110, P1EWCC-FWP01-2120, P1EWCC-FWP01-2130, P1EWCC-FWP01-2150, P1EWCC-FWP01-2160, P1EWCC-FWP01-2170 | 0d | 1096d | finish on 2020-01-13 | HS2 - 8h x 7d Workweek (No Holidays) |
| P1EWCC-KM-FTM-1200 |  | Ch74.300 to Ch77.300 (074-L5 - Grendon Underwood Embankment) | milestone | 0d | 2020-03-02 | 2020-03-02 | P1EWCC-PWP06-2470, P1EWCC-PWP02-5580, P1EWCC-PWP02-8770, P1EWCC-FWP04-6400, P1EWCC-FWP04-6450, P1EWCC-FWP04-1560, P1EWCC-PWP02-13400, P1EWCC-PWP02-13460, P1EWCC-FWP01-2660, P1EWCC-FWP01-2670, P1EWCC-FWP01-2680 | 0d | 1047d | finish on 2020-03-02 | HS2 - 8h x 7d Workweek (No Holidays) |
|  | 3 | **C3** |  |  | 2019-03-01 | 2020-04-16 |  |  |  |  |  |
| P1EWCC-KM-FTM-1310 |  | Ch101.950 - Ch104.800 (102-L1 - Greatworth Green Tunnel to 104-L1 - Thorpe Mandeville Cutting) | milestone | 0d | 2019-03-01 | 2019-03-01 | P1EWCC-PWP06-6550, P1EWCC-PWP02-9590, P1EWCC-EWP06-7040, P1EWCC-PWP06-6610, P1EWCC-PWP02-9640, P1EWCC-FWP01-3720, P1EWCC-FWP01-3730, P1EWCC-FWP01-3740, P1EWCC-FWP01-3760, P1EWCC-FWP01-3770 | 0d | 1414d | finish on 2019-03-01 | HS2 - 8h x 7d Workweek (No Holidays) |
| P1EWCC-KM-FTM-1340 |  | Ch108.900 - Ch112.880 (109-L1 - Chipping Warden Green Tunnel to 112-L2 - Aston le Walls Embankment) | milestone | 0d | 2019-03-01 | 2019-03-01 | P1EWCC-PWP06-7270, P1EWCC-PWP02-10290, P1EWCC-EWP06-5900, P1EWCC-FWP06-1290, P1EWCC-EWP06-7070, P1EWCC-EWP06-7080, P1EWCC-EWP06-7090, P1EWCC-EWP06-7100, P1EWCC-PWP04-1880, P1EWCC-PWP06-7330, P1EWCC-PWP02-10340, P1EWCC-FWP01-4140, P1EWCC-FWP01-4160, P1EWCC-FWP01-4170, P1EWCC-FWP01-4180, P1EWCC-FWP01-4190 | 0d | 1414d | finish on 2019-03-01 | HS2 - 8h x 7d Workweek (No Holidays) |
| P1EWCC-KM-FTM-1400 |  | Ch120.590 - Ch124.700 (120-L4 - Ladbroke Grove Cutting to 122-L3 - Ladbroke Cutting ) | milestone | 0d | 2019-09-05 | 2019-09-05 | P1EWCC-EWP07-5100, P1EWCC-PWP02-6190, P1EWCC-PWP06-2960, P1EWCC-PWP02-11230, P1EWCC-PWP06-8110, P1EWCC-PWP02-11190, P1EWCC-PWP02-11110, P1EWCC-PWP06-8050, P1EWCC-FWP01-4390, P1EWCC-FWP01-4400, P1EWCC-FWP01-4580, P1EWCC-FWP01-4730 | 0d | 1226d | finish on 2019-09-05 | HS2 - 8h x 7d Workweek (No Holidays) |
| P1EWCC-KM-FTM-1380 |  | Ch115.300 - Ch117.720 (115-L1 - Boddington Cutting) | milestone | 0d | 2019-09-24 | 2019-09-24 | P1EWCC-PWP06-2820, P1EWCC-PWP02-6020, P1EWCC-PWP02-10620, P1EWCC-FWP01-4260, P1EWCC-FWP01-4270, P1EWCC-FWP01-4280 | 0d | 1207d | finish on 2019-09-24 | HS2 - 8h x 7d Workweek (No Holidays) |
| P1EWCC-KM-FTM-1330 |  | Ch105.440 - Ch108.900 (105-L3 - Lower Thorpe South Cutting to 108-L3 - Edgcote North Embankment) | milestone | 0d | 2019-11-08 | 2019-11-08 | P1EWCC-PWP02-10230, P1EWCC-PWP06-7210, P1EWCC-PWP02-10120, P1EWCC-PWP06-7150, P1EWCC-PWP02-10080, P1EWCC-PWP02-10020, P1EWCC-PWP06-7090, P1EWCC-PWP02-9960, P1EWCC-PWP06-7030, P1EWCC-PWP02-9920, P1EWCC-PWP06-6970, P1EWCC-PWP02-9870, P1EWCC-PWP06-6910, P1EWCC-PWP02-9810, P1EWCC-PWP06-6850, P1EWCC-PWP02-4710, P1EWCC-PWP06-1950, P1EWCC-PWP02-9780, P1EWCC-PWP06-6790, P1EWCC-FWP01-3910, P1EWCC-FWP01-3920, P1EWCC-FWP01-3940, P1EWCC-FWP01-3950, P1EWCC-FWP01-3980, P1EWCC-FWP01-4070, P1EWCC-FWP01-4090, P1EWCC-FWP01-4110 | 0d | 1162d | finish on 2019-11-08 | HS2 - 8h x 7d Workweek (No Holidays) |
| P1EWCC-KM-FTM-1360 |  | Ch113.520 - Ch114.150 (113-L2 - Lower Boddington Cutting | milestone | 0d | 2019-11-08 | 2019-11-08 | P1EWCC-PWP06-7510, P1EWCC-PWP02-10500 | 0d | 1162d | finish on 2019-11-08 | HS2 - 8h x 7d Workweek (No Holidays) |
| P1EWCC-KM-FTM-1300 |  | Ch99.350 - Ch101.950 (099-L1 - Greatworth South Embankment to 101-L2 - Greatworth North Cutting) | milestone | 0d | 2019-11-18 | 2019-11-18 | P1EWCC-PWP02-9550, P1EWCC-PWP06-6490, P1EWCC-PWP02-9500, P1EWCC-PWP06-6430, P1EWCC-PWP02-5960, P1EWCC-PWP06-2750, P1EWCC-PWP02-9460, P1EWCC-PWP06-6370, P1EWCC-FWP01-3610, P1EWCC-FWP01-3620, P1EWCC-FWP01-3630, P1EWCC-FWP01-3640, P1EWCC-FWP01-3650, P1EWCC-FWP01-3660, P1EWCC-FWP01-3680 | 0d | 1152d | finish on 2019-11-18 | HS2 - 8h x 7d Workweek (No Holidays) |
| P1EWCC-KM-FTM-1430 |  | Ch96.270 - Ch98.720 A43 Oxford Road OB (096-L1 - Brackley South Cutting) | milestone | 0d | 2019-11-22 | 2019-11-22 | P1EWCC-PWP06-6190, P1EWCC-FWP01-3500, P1EWCC-FWP01-3490, P1EWCC-FWP01-3480, P1EWCC-EWP06-5800, P1EWCC-EWP06-7020, P1EWCC-PWP02-9260 | -127d | 1148d | finish on 2019-07-18 | HS2 - 8h x 7d Workweek (No Holidays) |
| P1EWCC-KM-FTM-1290 |  | Ch98.010 - Ch99.350 (098-L1 - Brackley North Cutting) | milestone | 0d | 2020-01-21 | 2020-01-21 | P1EWCC-PWP06-6310, P1EWCC-PWP02-9420, P1EWCC-FWP01-3570, P1EWCC-FWP01-3590 | 0d | 1088d | finish on 2020-01-21 | HS2 - 8h x 7d Workweek (No Holidays) |
| P1EWCC-KM-FTM-1270 |  | Ch95.340 - Ch96.270 (095-L1 - Turweston Embankment to 095-L3 - Helmdon Embankment ) | milestone | 0d | 2020-02-24 | 2020-02-24 | P1EWCC-PWP06-6130, P1EWCC-PWP02-9200, P1EWCC-EWP06-5780, P1EWCC-PWP06-8520, P1EWCC-PWP02-11570, P1EWCC-PWP06-2680, P1EWCC-PWP02-5900, P1EWCC-PWP04-2210, P1EWCC-PWP04-2220, P1EWCC-FWP01-3450, P1EWCC-FWP01-3470 | 0d | 1054d | finish on 2020-02-24 | HS2 - 8h x 7d Workweek (No Holidays) |
| P1EWCC-KM-FTM-1350 |  | Ch112.800 - Ch113.520 (112-L3 - Highfurlong Brook Viaduct to 113-L1 - Highfurlong Brook Embankment) | milestone | 0d | 2020-02-24 | 2020-02-24 | P1EWCC-PWP02-10460, P1EWCC-PWP06-7450, P1EWCC-PWP04-1900, P1EWCC-PWP02-10400, P1EWCC-PWP06-7390, P1EWCC-FWP01-4200, P1EWCC-FWP01-4220, P1EWCC-FWP01-4230, P1EWCC-FWP01-4240 | 0d | 1054d | finish on 2020-02-24 | HS2 - 8h x 7d Workweek (No Holidays) |
| P1EWCC-KM-FTM-1420 |  | Ch126.330 - Ch126.540 (126-L1 - Mill Pond Embankment to 126-L3 - Leamington Road Embankment ) | milestone | 0d | 2020-02-24 | 2020-02-24 | P1EWCC-PWP02-11480, P1EWCC-PWP06-8350, P1EWCC-PWP02-11440, P1EWCC-PWP06-8290, P1EWCC-PWP02-11370, P1EWCC-PWP04-2240, P1EWCC-FWP01-4670, P1EWCC-FWP01-4700 | 0d | 1054d | finish on 2020-02-24 | HS2 - 8h x 7d Workweek (No Holidays) |
| P1EWCC-KM-FTM-1320 |  | Ch104.800 - Ch105.440 (104-L2 - Thorpe Mandeville Embankment to 105-L2 - Lower Thorpe South Embankment) | milestone | 0d | 2020-03-09 | 2020-03-09 | P1EWCC-PWP02-9750, P1EWCC-PWP06-6730, P1EWCC-PWP04-1700, P1EWCC-PWP02-9700, P1EWCC-PWP06-6670, P1EWCC-PWP02-4570, P1EWCC-PWP06-1930, P1EWCC-PWP04-2230, P1EWCC-FWP01-3780, P1EWCC-FWP01-3790, P1EWCC-FWP01-3800, P1EWCC-FWP01-3810, P1EWCC-FWP01-3820, P1EWCC-FWP01-3830 | 0d | 1040d | finish on 2020-03-09 | HS2 - 8h x 7d Workweek (No Holidays) |
| P1EWCC-KM-FTM-1280 |  | Ch96.270 - Ch98.010 (096-L1 - Brackley South Cutting to 097-L1 - Brackley Embankment ) | milestone | 0d | 2020-04-16 | 2020-04-16 | P1EWCC-PWP02-9370, P1EWCC-PWP06-6250, P1EWCC-EWP06-7020, P1EWCC-EWP06-5800, P1EWCC-PWP02-9330, P1EWCC-PWP02-9260, P1EWCC-PWP06-6190, P1EWCC-FWP01-3480, P1EWCC-FWP01-3490, P1EWCC-FWP01-3500, P1EWCC-FWP01-3540 | 0d | 1002d | finish on 2020-04-16 | HS2 - 8h x 7d Workweek (No Holidays) |
| P1EWCC-KM-FTM-1370 |  | Ch114.150 - Ch115.300 (114-L1 - Lower Boddington Embankment) | milestone | 0d | 2020-04-16 | 2020-04-16 | P1EWCC-PWP06-7570, P1EWCC-PWP02-10560, P1EWCC-PWP04-1960, P1EWCC-FWP01-4410, P1EWCC-FWP01-4430 | 0d | 1002d | finish on 2020-04-16 | HS2 - 8h x 7d Workweek (No Holidays) |
| P1EWCC-KM-FTM-1390 |  | Ch117.720 - Ch120.590 (117-L1 - Oxford Canal South Embankment to 120-L2 - Lower Radbourne North Viaduct ) | milestone | 0d | 2020-04-16 | 2020-04-16 | P1EWCC-PWP02-10950, P1EWCC-PWP06-7930, P1EWCC-PWP02-6110, P1EWCC-PWP06-2890, P1EWCC-EWP07-7170, P1EWCC-PWP06-7870, P1EWCC-PWP04-2020, P1EWCC-PWP02-10870, P1EWCC-PWP06-7810, P1EWCC-EWP06-7160, P1EWCC-PWP02-10800, P1EWCC-PWP06-7750, P1EWCC-FWP07-6520, P1EWCC-PWP02-10730, P1EWCC-PWP06-7690, P1EWCC-FWP07-10730, P1EWCC-PWP02-10660, P1EWCC-PWP06-7630, P1EWCC-PWP02-11030, P1EWCC-FWP01-4300, P1EWCC-FWP01-4310, P1EWCC-FWP01-4360, P1EWCC-FWP01-4370, P1EWCC-FWP01-4460, P1EWCC-FWP01-4490, P1EWCC-FWP01-4520, P1EWCC-FWP01-4550, P1EWCC-PWP06-7990 | 0d | 1002d | finish on 2020-04-16 | HS2 - 8h x 7d Workweek (No Holidays) |
| P1EWCC-KM-FTM-1410 |  | Ch124.700 - Ch126.330 (124-L1 - Southam Embankment to 125-L1 - Southam Cutting ) | milestone | 0d | 2020-04-16 | 2020-04-16 | P1EWCC-PWP02-6250, P1EWCC-PWP06-3030, P1EWCC-PWP02-11300, P1EWCC-PWP06-8170, P1EWCC-FWP01-4610, P1EWCC-FWP01-4640, P1EWCC-FWP01-4620 | 0d | 1002d | finish on 2020-04-16 | HS2 - 8h x 7d Workweek (No Holidays) |

| ID | WBS | Activity | Type | Duration | Start | Finish | Predecessors | Complete | Planned start | Planned finish | Total float | Free float | Calendar | EWC WI Ref | HS2 Filter | Fusion - WPS |
| --- | --- | --- | --- | --- | --- | --- | --- | --- | --- | --- | --- | --- | --- | --- | --- | --- |
|  | CMO | **Contract Management Office (CMO)** |  |  | 2016-11-18 | 2018-11-29 |  |  |  |  |  |  |  |  |  |  |
|  | 3 | **CMO CORE SERVICES** |  |  | 2016-11-18 | 2018-05-30 |  |  |  |  |  |  |  |  |  |  |
|  | 1 | **WORK PACKAGE STRATEGY (WPS)** |  |  | 2016-11-18 | 2017-05-03 |  |  |  |  |  |  |  |  |  |  |
| P1EWCC-PWP02-1000 |  | Develop Work Package Strategy (WPS) |  | 85d | 2016-11-18 A | 2017-04-03 A | P1EWCC-KM-CM-1010 | 100% | 2016-11-18 | 2017-03-16 |  |  |  | WI0300 3.3.1 |  |  |
| P1EWCC-PWP02-1010 |  | Issue Work Package Strategy (WPS) to PM for acceptance | milestone | 0d | 2017-04-03 A | 2017-04-03 A | P1EWCC-PWP02-1000 | 100% | 2017-03-24 | 2017-03-24 |  |  |  | WI0300 3.3.1 |  |  |
| P1EWCC-PWP02-1020 |  | PM Acceptance Period for Work Package Strategy (WPS) |  | 14d | 2017-04-04 A | 2017-05-03 A | P1EWCC-PWP02-1010 | 100% | 2017-03-25 | 2017-04-07 |  |  | HS2 - 8h x 7d Workweek (No Holidays) | WI0300 3.3.1 |  |  |
|  | 2 | **DRAFT CMO WORK PACKAGE INSTRUCTION & QUOTATIONS** |  |  | 2017-01-03 | 2018-05-30 |  |  |  |  |  |  |  |  |  |  |
|  | 39 | **Area Wide Packages** |  |  | 2017-01-03 | 2017-10-13 |  |  |  |  |  |  |  |  |  |  |
|  | 3 | **AW1 - Area Wide Support Team** |  |  | 2017-04-11 | 2017-06-12 |  |  |  |  |  |  |  |  |  |  |
| P1EWCC-PWP01-4200 |  | PM Issues Draft CMO Work Package Instruction | milestone | 0d | 2017-04-11 A | 2017-04-11 A |  | 100% | 2017-03-27 | 2017-03-27 |  |  |  |  | y | AW1 |
| P1EWCC-PWP01-4210 |  | Develop Quote for CMO Work Package Instruction |  | 10d | 2017-04-11 A | 2017-04-26 A | P1EWCC-PWP01-4200 | 100% | 2017-03-27 | 2017-04-07 |  |  |  |  | y | AW1 |
| P1EWCC-PWP01-4230 |  | Issue Quote for CMO Work Package Instruction to PM for Acceptance | milestone | 0d | 2017-04-26 A | 2017-04-26 A | P1EWCC-PWP01-4210 | 100% | 2017-04-07 | 2017-04-07 |  |  |  |  | y | AW1 |
| P1EWCC-PWP01-4260 |  | PM Acceptance Period for CMO Work Package Instruction Price |  | 14d | 2017-04-27 A | 2017-06-12 A | P1EWCC-PWP01-4230 | 100% | 2017-05-20 | 2017-06-02 |  |  | HS2 - 8h x 7d Workweek (No Holidays) |  | y | AW1 |
| P1EWCC-PWP01-4270 |  | PM Instruction to Commence Work Package Plan | milestone | 0d | 2017-06-12 A | 2017-06-12 A | P1EWCC-PWP01-4260 | 100% | 2017-05-26 | 2017-05-26 |  |  | HS2 - 8h x 7d Workweek (No Holidays) |  | y | AW1 |
|  | 4 | **AW2 - Information Technology & Digital Integration** |  |  | 2017-02-02 | 2017-09-15 |  |  |  |  |  |  |  |  |  |  |
| P1EWCC-PWP01-4290 |  | PM Issues Draft CMO Work Package Instruction | milestone | 0d | 2017-02-02 A | 2017-02-02 A |  | 100% |  |  |  |  |  |  | y | AW2 |
| P1EWCC-PWP01-4300 |  | Develop Quote for CMO Work Package Instruction |  | 31d | 2017-02-02 A | 2017-03-29 A | P1EWCC-PWP01-4290 | 100% | 2017-02-02 | 2017-03-16 |  |  |  |  | y | AW2 |
| P1EWCC-PWP01-4340 |  | Issue Quote for CMO Work Package Instruction to PM for Acceptance | milestone | 0d | 2017-03-29 A | 2017-03-29 A | P1EWCC-PWP01-4300 | 100% | 2017-03-16 | 2017-03-16 |  |  |  |  | y | AW2 |
| P1EWCC-PWP01-4380 |  | PM Acceptance Period for CMO Work Package Instruction Price |  | 14d | 2017-03-30 A | 2017-09-15 A | P1EWCC-PWP01-4340 | 100% | 2017-03-17 | 2017-03-30 |  |  | HS2 - 8h x 7d Workweek (No Holidays) |  | y | AW2 |
| P1EWCC-PWP01-4390 |  | PM Instruction to Commence Work Package Plan | milestone | 0d | 2017-09-15 A | 2017-09-15 A | P1EWCC-PWP01-4380 | 100% | 2017-09-16 | 2017-09-16 |  |  | HS2 - 8h x 7d Workweek (No Holidays) |  | y | AW2 |
|  | 8 | **AW3.A - #beHighSpeed Onboarding Programme** |  |  | 2017-09-18 | 2017-10-13 |  |  |  |  |  |  |  |  |  |  |
| P1EWCC-PWP01-9970 |  | PM Issues Draft CMO Work Package Instruction | milestone | 0d | 2017-09-18 | 2017-09-18 | P1EWCC-PWP02-1020 |  |  |  | 1290d | 0d |  |  | y |  |
| P1EWCC-PWP01-9980 |  | Develop Quote for CMO Work Package Instruction |  | 10d | 2017-09-18 | 2017-09-29 | P1EWCC-PWP01-9970 |  |  |  | 1290d | 0d |  |  | y |  |
| P1EWCC-PWP01-9990 |  | Issue Quote for CMO Work Package Instruction to PM for Acceptance | milestone | 0d | 2017-09-29 | 2017-09-29 | P1EWCC-PWP01-9980 |  |  |  | 1290d | 0d |  |  | y |  |
| P1EWCC-PWP01-10000 |  | PM Acceptance Period for CMO Work Package Instruction Price |  | 14d | 2017-09-30 | 2017-10-13 | P1EWCC-PWP01-9990 |  |  |  | 1808d | 0d | HS2 - 8h x 7d Workweek (No Holidays) |  | y |  |
| P1EWCC-PWP01-10010 |  | PM Instruction to Commence Work Package Plan | milestone | 0d | 2017-10-13 | 2017-10-13 | P1EWCC-PWP01-10000 |  |  |  | 1808d | 0d | HS2 - 8h x 7d Workweek (No Holidays) |  | y |  |

| ID | WBS | Activity | Type | Duration | Start | Finish | Predecessors | Complete | Planned start | Planned finish | Total float | Free float | Calendar | HS2 Filter | Fusion - WPS |
| --- | --- | --- | --- | --- | --- | --- | --- | --- | --- | --- | --- | --- | --- | --- | --- |
|  | 10 | **AW3.B - Transformational Hub** |  |  | 2017-09-18 | 2017-10-13 |  |  |  |  |  |  |  |  |  |
| P1EWCC-PWP01-10020 |  | PM Issues Draft CMO Work Package Instruction | milestone | 0d | 2017-09-18 | 2017-09-18 |  |  |  |  | 1290d | 0d |  | y |  |
| P1EWCC-PWP01-10030 |  | Develop Quote for CMO Work Package Instruction |  | 10d | 2017-09-18 | 2017-09-29 | P1EWCC-PWP01-10020 |  |  |  | 1290d | 0d |  | y |  |
| P1EWCC-PWP01-10040 |  | Issue Quote for CMO Work Package Instruction to PM for Acceptance | milestone | 0d | 2017-09-29 | 2017-09-29 | P1EWCC-PWP01-10030 |  |  |  | 1290d | 0d |  | y |  |
| P1EWCC-PWP01-10050 |  | PM Acceptance Period for CMO Work Package Instruction Price |  | 14d | 2017-09-30 | 2017-10-13 | P1EWCC-PWP01-10040 |  |  |  | 1808d | 0d | HS2 - 8h x 7d Workweek (No Holidays) | y |  |
| P1EWCC-PWP01-10060 |  | PM Instruction to Commence Work Package Plan | milestone | 0d | 2017-10-13 | 2017-10-13 | P1EWCC-PWP01-10050 |  |  |  | 1808d | 0d | HS2 - 8h x 7d Workweek (No Holidays) | y |  |
|  | 11 | **AW3.C - LIFE Programme** |  |  | 2017-09-18 | 2017-10-13 |  |  |  |  |  |  |  |  |  |
| P1EWCC-PWP01-10070 |  | PM Issues Draft CMO Work Package Instruction | milestone | 0d | 2017-09-18 | 2017-09-18 |  |  |  |  | 1290d | 0d |  | y |  |
| P1EWCC-PWP01-10080 |  | Develop Quote for CMO Work Package Instruction |  | 10d | 2017-09-18 | 2017-09-29 | P1EWCC-PWP01-10070 |  |  |  | 1290d | 0d |  | y |  |
| P1EWCC-PWP01-10090 |  | Issue Quote for CMO Work Package Instruction to PM for Acceptance | milestone | 0d | 2017-09-29 | 2017-09-29 | P1EWCC-PWP01-10080 |  |  |  | 1290d | 0d |  | y |  |
| P1EWCC-PWP01-10100 |  | PM Acceptance Period for CMO Work Package Instruction Price |  | 14d | 2017-09-30 | 2017-10-13 | P1EWCC-PWP01-10090 |  |  |  | 1808d | 0d | HS2 - 8h x 7d Workweek (No Holidays) | y |  |
| P1EWCC-PWP01-10110 |  | PM Instruction to Commence Work Package Plan | milestone | 0d | 2017-10-13 | 2017-10-13 | P1EWCC-PWP01-10100 |  |  |  | 1808d | 0d | HS2 - 8h x 7d Workweek (No Holidays) | y |  |
|  | 12 | **AW3.D - Collaborative Mobilisation Team** |  |  | 2017-09-18 | 2017-10-13 |  |  |  |  |  |  |  |  |  |
| P1EWCC-PWP01-10120 |  | PM Issues Draft CMO Work Package Instruction | milestone | 0d | 2017-09-18 | 2017-09-18 |  |  |  |  | 1290d | 0d |  | y |  |
| P1EWCC-PWP01-10130 |  | Develop Quote for CMO Work Package Instruction |  | 10d | 2017-09-18 | 2017-09-29 | P1EWCC-PWP01-10120 |  |  |  | 1290d | 0d |  | y |  |
| P1EWCC-PWP01-10140 |  | Issue Quote for CMO Work Package Instruction to PM for Acceptance | milestone | 0d | 2017-09-29 | 2017-09-29 | P1EWCC-PWP01-10130 |  |  |  | 1290d | 0d |  | y |  |
| P1EWCC-PWP01-10150 |  | PM Acceptance Period for CMO Work Package Instruction Price |  | 14d | 2017-09-30 | 2017-10-13 | P1EWCC-PWP01-10140 |  |  |  | 1808d | 0d | HS2 - 8h x 7d Workweek (No Holidays) | y |  |
| P1EWCC-PWP01-10160 |  | PM Instruction to Commence Work Package Plan | milestone | 0d | 2017-10-13 | 2017-10-13 | P1EWCC-PWP01-10150 |  |  |  | 1808d | 0d | HS2 - 8h x 7d Workweek (No Holidays) | y |  |
|  | 6 | **AW4 - Accomodation** |  |  | 2017-01-03 | 2017-02-20 |  |  |  |  |  |  |  |  |  |
| P1EWCC-PWP01-4460 |  | PM Issues Draft CMO Work Package Instruction | milestone | 0d | 2017-01-03 A | 2017-01-03 A |  | 100% | 2017-05-22 | 2017-05-22 |  |  |  | y | AW4 |
| P1EWCC-PWP01-4510 |  | Develop Quote for CMO Work Package Instruction |  | 10d | 2017-01-03 A | 2017-01-26 A | P1EWCC-PWP01-4460 | 100% | 2017-05-22 | 2017-06-02 |  |  |  | y | AW4 |
| P1EWCC-PWP01-4530 |  | Issue Quote for CMO Work Package Instruction to PM for Acceptance | milestone | 0d | 2017-01-26 A | 2017-01-26 A | P1EWCC-PWP01-4510 | 100% | 2017-06-02 | 2017-06-02 |  |  |  | y | AW4 |
| P1EWCC-PWP01-4540 |  | PM Acceptance Period for CMO Work Package Instruction Price |  | 14d | 2017-01-27 A | 2017-02-20 A | P1EWCC-PWP01-4530 | 100% | 2017-06-03 | 2017-06-16 |  |  | HS2 - 8h x 7d Workweek (No Holidays) | y | AW4 |
| P1EWCC-PWP01-4550 |  | PM Instruction to Commence Work Package Plan | milestone | 0d | 2017-02-20 A | 2017-02-20 A | P1EWCC-PWP01-4540 | 100% | 2017-06-16 | 2017-06-16 |  |  | HS2 - 8h x 7d Workweek (No Holidays) | y | AW4 |

| ID | WBS | Activity | Type | Duration | Start | Finish | Predecessors | Complete | Remaining | Planned start | Planned finish | Total float | Free float | Expected finish | Calendar | HS2 Filter | Fusion - WPS |
| --- | --- | --- | --- | --- | --- | --- | --- | --- | --- | --- | --- | --- | --- | --- | --- | --- | --- |
|  | 1 | **AWS - Area Wide Surveys** |  |  | 2017-05-05 | 2017-06-02 |  |  |  |  |  |  |  |  |  |  |  |
| P1EWCC-PWP01-100 |  | Develop Quote for CMO Work Package Instruction |  | 10d | 2017-05-05 A | 2017-05-19 A | P1EWCC-PWP01-110 | 100% |  | 2017-04-03 | 2017-04-14 |  |  |  |  | y | AWS |
| P1EWCC-PWP01-110 |  | PM Issues Draft CMO Work Package Instruction | milestone | 0d | 2017-05-05 A | 2017-05-05 A |  | 100% |  | 2017-04-03 | 2017-04-03 |  |  |  |  | y | AWS |
| P1EWCC-PWP01-120 |  | Issue Quote for CMO Work Package Instruction to PM for Acceptance | milestone | 0d | 2017-05-19 A | 2017-05-19 A | P1EWCC-PWP01-100 | 100% |  | 2017-04-14 | 2017-04-14 |  |  |  |  | y | AWS |
| P1EWCC-PWP01-130 |  | PM Acceptance Period for CMO Work Package Instruction Price |  | 14d | 2017-05-20 A | 2017-06-02 A | P1EWCC-PWP01-120 | 100% |  |  |  |  |  |  | HS2 - 8h x 7d Workweek (No Holidays) | y | AWS |
| P1EWCC-PWP01-140 |  | PM Instruction to Commence Work Package Plan | milestone | 0d | 2017-06-02 A | 2017-06-02 A | P1EWCC-PWP01-130 | 100% |  |  |  |  |  |  | HS2 - 8h x 7d Workweek (No Holidays) | y | AWS |
|  | 9 | **AWE 1 - Habitat Creation & Translocation** |  |  | 2017-04-11 | 2017-05-30 |  |  |  |  |  |  |  |  |  |  |  |
| P1EWCC-PWP02-100 |  | PM Issues Draft CMO Work Package Instruction | milestone | 0d | 2017-04-11 A | 2017-04-11 A |  | 100% |  | 2017-03-27 | 2017-03-27 |  |  |  |  | y | AWE1 |
| P1EWCC-PWP02-110 |  | Develop Quote for CMO Work Package Instruction |  | 10d | 2017-04-12 A | 2017-04-26 A | P1EWCC-PWP02-100 | 100% |  | 2017-03-27 | 2017-04-07 |  |  |  |  | y | AWE1 |
| P1EWCC-PWP02-120 |  | Issue Quote for CMO Work Package Instruction to PM for Acceptance | milestone | 0d | 2017-04-26 A | 2017-04-26 A | P1EWCC-PWP02-110 | 100% |  | 2017-04-07 | 2017-04-07 |  |  |  |  | y | AWE1 |
| P1EWCC-PWP02-130 |  | PM Acceptance Period for CMO Work Package Instruction Price |  | 14d | 2017-04-27 A | 2017-05-30 A | P1EWCC-PWP02-120 | 100% |  | 2017-04-08 | 2017-04-21 |  |  |  | HS2 - 8h x 7d Workweek (No Holidays) | y | AWE1 |
| P1EWCC-PWP02-140 |  | PM Instruction to Commence Work Package Plan | milestone | 0d | 2017-05-30 A | 2017-05-30 A | P1EWCC-PWP02-130 | 100% |  |  |  |  |  |  | HS2 - 8h x 7d Workweek (No Holidays) | y | AWE1 |
|  | 13 | **AWE 2 - Landscape Planting Installation** |  |  | 2017-07-04 | 2017-10-05 |  |  |  |  |  |  |  |  |  |  |  |
| P1EWCC-PWP02-11770 |  | PM Issues Draft CMO Work Package Instruction | milestone | 0d | 2017-07-04 A | 2017-07-04 A | P1EWCC-PWP02-1020 | 100% |  |  |  |  |  |  |  | y | AWE2 |
| P1EWCC-PWP02-11780 |  | Develop Quote for CMO Work Package Instruction |  | 45d | 2017-07-05 A | 2017-09-21 | P1EWCC-PWP02-11770 | 91% | 3.88d | 2017-07-05 | 2017-09-05 | -109.75d | 0d | 2017-09-21 |  | y | AWE2 |
| P1EWCC-PWP02-11790 |  | Issue Quote for CMO Work Package Instruction to PM for Acceptance | milestone | 0d | 2017-09-21 | 2017-09-21 | P1EWCC-PWP02-11780 |  |  |  |  | -109.75d | 0.12d |  |  | y | AWE2 |
| P1EWCC-PWP02-11800 |  | PM Acceptance Period for CMO Work Package Instruction Price |  | 14d | 2017-09-22 | 2017-10-05 | P1EWCC-PWP02-11790 |  |  |  |  | -153.88d | 0d |  | HS2 - 8h x 7d Workweek (No Holidays) | y | AWE2 |
| P1EWCC-PWP02-11810 |  | PM Instruction to Commence Work Package Plan | milestone | 0d | 2017-10-05 | 2017-10-05 | P1EWCC-PWP02-11800 |  |  |  |  | -153.88d | 0d |  | HS2 - 8h x 7d Workweek (No Holidays) | y | AWE2 |
|  | 14 | **AWE 3 - Preliminary Floodplain Storage Design & Fluvial/Hydrological Modelling Work** |  |  | 2017-05-03 | 2017-06-02 |  |  |  |  |  |  |  |  |  |  |  |
| P1EWCC-PWP02-11920 |  | PM Issues Draft CMO Work Package Instruction | milestone | 0d | 2017-05-03 A | 2017-05-03 A |  | 100% |  | 2017-04-17 | 2017-04-17 |  |  |  |  | y | AWE3 |
| P1EWCC-PWP02-11930 |  | Develop Quote for CMO Work Package Instruction |  | 10d | 2017-05-04 A | 2017-05-18 A | P1EWCC-PWP02-11920 | 100% |  | 2017-04-17 | 2017-04-28 |  |  |  |  | y | AWE3 |
| P1EWCC-PWP02-11940 |  | Issue Quote for CMO Work Package Instruction to PM for Acceptance | milestone | 0d | 2017-05-18 A | 2017-05-18 A | P1EWCC-PWP02-11930 | 100% |  | 2017-04-28 | 2017-04-28 |  |  |  |  | y | AWE3 |
| P1EWCC-PWP02-11950 |  | PM Acceptance Period for CMO Work Package Instruction Price |  | 14d | 2017-05-19 A | 2017-06-02 A | P1EWCC-PWP02-11940 | 100% |  | 2017-04-29 | 2017-05-12 |  |  |  | HS2 - 8h x 7d Workweek (No Holidays) | y | AWE3 |
| P1EWCC-PWP02-11960 |  | PM Instruction to Commence Work Package Plan | milestone | 0d | 2017-06-02 A | 2017-06-02 A | P1EWCC-PWP02-11950 | 100% |  |  |  |  |  |  | HS2 - 8h x 7d Workweek (No Holidays) | y | AWE3 |

| ID | WBS | Activity | Type | Duration | Start | Finish | Predecessors | Complete | Planned start | Planned finish | Total float | Free float | Calendar | HS2 Filter | Fusion - WPS |
| --- | --- | --- | --- | --- | --- | --- | --- | --- | --- | --- | --- | --- | --- | --- | --- |
|  | 15 | **AWE 4 - Invasive Species Surveys, Treatment & Control** |  |  | 2017-06-07 | 2017-07-07 |  |  |  |  |  |  |  |  |  |
| P1EWCC-PWP02-12070 |  | PM Issues Draft CMO Work Package Instruction | milestone | 0d | 2017-06-07 A | 2017-06-07 A | P1EWCC-PWP02-1020 | 100% |  |  |  |  |  | y | AWE4 |
| P1EWCC-PWP02-12080 |  | Develop Quote for CMO Work Package Instruction |  | 10d | 2017-06-08 A | 2017-06-21 A | P1EWCC-PWP02-12070 | 100% |  |  |  |  |  | y | AWE4 |
| P1EWCC-PWP02-12090 |  | Issue Quote for CMO Work Package Instruction to PM for Acceptance | milestone | 0d | 2017-06-21 A | 2017-06-21 A | P1EWCC-PWP02-12080 | 100% |  |  |  |  |  | y | AWE4 |
| P1EWCC-PWP02-12100 |  | PM Acceptance Period for CMO Work Package Instruction Price |  | 14d | 2017-06-22 A | 2017-07-07 A | P1EWCC-PWP02-12090 | 100% | 2017-06-22 | 2017-07-05 |  |  | HS2 - 8h x 7d Workweek (No Holidays) | y | AWE4 |
| P1EWCC-PWP02-12110 |  | PM Instruction to Commence Work Package Plan | milestone | 0d | 2017-07-07 A | 2017-07-07 A | P1EWCC-PWP02-12100 | 100% |  |  |  |  | HS2 - 8h x 7d Workweek (No Holidays) | y | AWE4 |
|  | 16 | **AWE 5 - Site Clearance** |  |  | 2017-09-18 | 2017-10-13 |  |  |  |  |  |  |  |  |  |
| P1EWCC-PWP02-12220 |  | PM Issues Draft CMO Work Package Instruction | milestone | 0d | 2017-09-18 | 2017-09-18 | P1EWCC-PWP02-1020 |  |  |  | -59.62d | 0d |  | y | AWE5 |
| P1EWCC-PWP02-12230 |  | Develop Quote for CMO Work Package Instruction |  | 10d | 2017-09-18 | 2017-09-29 | P1EWCC-PWP02-12220 |  |  |  | -59.62d | 0d |  | y | AWE5 |
| P1EWCC-PWP02-12240 |  | Issue Quote for CMO Work Package Instruction to PM for Acceptance | milestone | 0d | 2017-09-29 | 2017-09-29 | P1EWCC-PWP02-12230 |  |  |  | -59.62d | 0d |  | y | AWE5 |
| P1EWCC-PWP02-12250 |  | PM Acceptance Period for CMO Work Package Instruction Price |  | 14d | 2017-09-30 | 2017-10-13 | P1EWCC-PWP02-12240 |  |  |  | -81.62d | 0d | HS2 - 8h x 7d Workweek (No Holidays) | y | AWE5 |
| P1EWCC-PWP02-12260 |  | PM Instruction to Commence Work Package Plan | milestone | 0d | 2017-10-13 | 2017-10-13 | P1EWCC-PWP02-12250 |  |  |  | -81.62d | 0d | HS2 - 8h x 7d Workweek (No Holidays) | y | AWE5 |
|  | 7 | **AWE6 - Ground Remediation** |  |  | 2017-09-18 | 2017-10-13 |  |  |  |  |  |  |  |  |  |
| P1EWCC-PWP02-11620 |  | PM Issues Draft CMO Work Package Instruction | milestone | 0d | 2017-09-18 | 2017-09-18 | P1EWCC-PWP02-1020 |  |  |  | -117.88d | 0d |  | y | AWE6 |
| P1EWCC-PWP02-11630 |  | Develop Quote for CMO Work Package Instruction |  | 10d | 2017-09-18 | 2017-09-29 | P1EWCC-PWP02-11620 |  |  |  | -117.88d | 0d |  | y | AWE6 |
| P1EWCC-PWP02-11640 |  | Issue Quote for CMO Work Package Instruction to PM for Acceptance | milestone | 0d | 2017-09-29 | 2017-09-29 | P1EWCC-PWP02-11630 |  |  |  | -117.88d | 0d |  | y | AWE6 |
| P1EWCC-PWP02-11650 |  | PM Acceptance Period for CMO Work Package Instruction Price |  | 14d | 2017-09-30 | 2017-10-13 | P1EWCC-PWP02-11640 |  |  |  | -163.88d | 0d | HS2 - 8h x 7d Workweek (No Holidays) | y | AWE6 |
| P1EWCC-PWP02-11660 |  | PM Instruction to Commence Work Package Plan | milestone | 0d | 2017-10-13 | 2017-10-13 | P1EWCC-PWP02-11650 |  |  |  | -163.88d | 0d | HS2 - 8h x 7d Workweek (No Holidays) | y | AWE6 |
|  | 2 | **AWH - Area Wide HERDS** |  |  | 2017-05-25 | 2017-08-03 |  |  |  |  |  |  |  |  |  |
| P1EWCC-PWP05-100 |  | PM Issues Draft CMO Work Package Instruction | milestone | 0d | 2017-05-25 A | 2017-05-25 A | P1EWCC-PWP02-1020 | 100% | 2017-05-26 | 2017-05-26 |  |  |  | y | AWH |
| P1EWCC-PWP05-110 |  | Develop Quote for CMO Work Package Instruction |  | 16d | 2017-05-25 A | 2017-06-16 A | P1EWCC-PWP05-100 | 100% | 2017-05-26 | 2017-06-16 |  |  |  | y | AWH |
| P1EWCC-PWP05-120 |  | Issue Quote for CMO Work Package Instruction to PM for Acceptance | milestone | 0d | 2017-06-16 A | 2017-06-16 A | P1EWCC-PWP05-110 | 100% |  |  |  |  |  | y | AWH |
| P1EWCC-PWP05-130 |  | PM Acceptance Period for CMO Work Package Instruction Price |  | 14d | 2017-06-17 A | 2017-08-03 A | P1EWCC-PWP05-120 | 100% | 2017-06-17 | 2017-06-30 |  |  | HS2 - 8h x 7d Workweek (No Holidays) | y | AWH |
| P1EWCC-PWP05-140 |  | PM Instruction to Commence Work Package Plan | milestone | 0d | 2017-08-03 A | 2017-08-03 A | P1EWCC-PWP05-130 | 100% | 2017-07-24 | 2017-07-24 |  |  | HS2 - 8h x 7d Workweek (No Holidays) | y | AWH |

| ID | WBS | Activity | Type | Duration | Start | Finish | Predecessors | Complete | Planned start | Planned finish | Calendar | HS2 Filter | Fusion - WPS |
| --- | --- | --- | --- | --- | --- | --- | --- | --- | --- | --- | --- | --- | --- |
|  | 17 | **Design & Construction Packages** |  |  | 2017-03-08 | 2018-05-30 |  |  |  |  |  |  |  |
|  | 2 | **DC1** |  |  | 2017-03-08 | 2018-03-20 |  |  |  |  |  |  |  |
|  | 3 | **DC1A - HOAC - Scheme Design** |  |  |  |  |  |  |  |  |  |  |  |
|  | 1 | **DC1B - TBM Power Supply - Scheme Design** |  |  | 2017-03-08 | 2017-04-11 |  |  |  |  |  |  |  |
| P1EWCC-PWP01-4020 |  | PM Issues Draft CMO Work Package Instruction | milestone | 0d | 2017-03-08 A | 2017-03-08 A |  | 100% |  |  |  | y | DC1B |
| P1EWCC-PWP01-4030 |  | Develop Quote for CMO Work Package Instruction |  | 11d | 2017-03-08 A | 2017-03-23 A | P1EWCC-PWP01-4020 | 100% | 2017-03-08 | 2017-03-22 |  | y | DC1B |
| P1EWCC-PWP01-4040 |  | Issue Quote for CMO Work Package Instruction to PM for Acceptance | milestone | 0d | 2017-03-23 A | 2017-03-23 A | P1EWCC-PWP01-4030 | 100% | 2017-03-22 | 2017-03-22 |  | y | DC1B |
| P1EWCC-PWP01-4050 |  | PM Acceptance Period for CMO Work Package Instruction Price |  | 7d | 2017-03-24 A | 2017-04-11 A | P1EWCC-PWP01-4040 | 100% | 2017-03-23 | 2017-03-29 | HS2 - 8h x 7d Workweek (No Holidays) | y | DC1B |
| P1EWCC-PWP01-4060 |  | PM Instruction to Commence Work Package Plan | milestone | 0d | 2017-04-11 A | 2017-04-11 A | P1EWCC-PWP01-4050 | 100% | 2017-03-29 | 2017-03-29 | HS2 - 8h x 7d Workweek (No Holidays) | y | DC1B |
|  | 5 | **DC1D - Highway & Civil Works - Scheme Design** |  |  | 2017-06-07 | 2017-07-10 |  |  |  |  |  |  |  |
| P1EWCC-PWP01-6100 |  | PM Issues Draft CMO Work Package Instruction | milestone | 0d | 2017-06-07 A | 2017-06-07 A | P1EWCC-PWP02-1020 | 100% | 2017-06-08 | 2017-06-08 |  | y | DC1D |
| P1EWCC-PWP01-6110 |  | Develop Quote for CMO Work Package Instruction |  | 10d | 2017-06-07 A | 2017-06-21 A | P1EWCC-PWP01-6100 | 100% | 2017-06-08 | 2017-06-21 |  | y | DC1D |
| P1EWCC-PWP01-6120 |  | Issue Quote for CMO Work Package Instruction to PM for Acceptance | milestone | 0d | 2017-06-21 A | 2017-06-21 A | P1EWCC-PWP01-6110 | 100% |  |  |  | y | DC1D |
| P1EWCC-PWP01-6130 |  | PM Acceptance Period for CMO Work Package Instruction Price |  | 14d | 2017-06-22 A | 2017-07-10 A | P1EWCC-PWP01-6120 | 100% | 2017-06-24 | 2017-07-07 | HS2 - 8h x 7d Workweek (No Holidays) | y | DC1D |
| P1EWCC-PWP01-6140 |  | PM Instruction to Commence Work Package Plan | milestone | 0d | 2017-07-10 A | 2017-07-10 A | P1EWCC-PWP01-6130 | 100% |  |  | HS2 - 8h x 7d Workweek (No Holidays) | y | DC1D |
|  | 8 | **DC1E - Utilities - Scheme Design** |  |  | 2017-05-30 | 2017-07-11 |  |  |  |  |  |  |  |
| P1EWCC-PWP01-6670 |  | PM Issues Draft CMO Work Package Instruction | milestone | 0d | 2017-05-30 A | 2017-05-30 A | P1EWCC-PWP02-1020 | 100% | 2017-05-31 | 2017-05-31 |  | y | DC1E |
| P1EWCC-PWP01-6680 |  | Develop Quote for CMO Work Package Instruction |  | 10d | 2017-05-30 A | 2017-06-13 A | P1EWCC-PWP01-6670 | 100% | 2017-05-31 | 2017-06-13 |  | y | DC1E |
| P1EWCC-PWP01-6690 |  | Issue Quote for CMO Work Package Instruction to PM for Acceptance | milestone | 0d | 2017-06-13 A | 2017-06-13 A | P1EWCC-PWP01-6680 | 100% | 2017-06-23 | 2017-06-23 |  | y | DC1E |
| P1EWCC-PWP01-6700 |  | PM Acceptance Period for CMO Work Package Instruction Price |  | 14d | 2017-06-14 A | 2017-07-11 A | P1EWCC-PWP01-6690 | 100% | 2017-06-24 | 2017-07-07 | HS2 - 8h x 7d Workweek (No Holidays) | y | DC1E |
| P1EWCC-PWP01-6710 |  | PM Instruction to Commence Work Package Plan | milestone | 0d | 2017-07-11 A | 2017-07-11 A | P1EWCC-PWP01-6700 | 100% |  |  | HS2 - 8h x 7d Workweek (No Holidays) | y | DC1E |
|  | 2 | **DC1F - HOAC - Detailed Design & Construction** |  |  |  |  |  |  |  |  |  |  |  |
|  | 6 | **DC1G - TBM Power Supply - Detailed Design & Construction** |  |  | 2017-05-30 | 2017-08-11 |  |  |  |  |  |  |  |
| P1EWCC-PWP01-10720 |  | PM Issues Draft CMO Work Package Instruction | milestone | 0d | 2017-05-30 A | 2017-05-30 A | P1EWCC-PWP02-1020 | 100% |  |  |  | y | DC1G |
| P1EWCC-PWP01-10730 |  | Develop Quote for CMO Work Package Instruction |  | 10d | 2017-05-30 A | 2017-07-05 A | P1EWCC-PWP01-10720 | 100% | 2017-05-30 | 2017-06-12 |  | y | DC1G |
| P1EWCC-PWP01-10740 |  | Issue Quote for CMO Work Package Instruction to PM for Acceptance | milestone | 0d | 2017-07-05 A | 2017-07-05 A | P1EWCC-PWP01-10730 | 100% |  |  |  | y | DC1G |
| P1EWCC-PWP01-10750 |  | PM Acceptance Period for CMO Work Package Instruction Price |  | 14d | 2017-07-06 A | 2017-08-11 A | P1EWCC-PWP01-10740 | 100% | 2017-07-06 | 2017-07-19 | HS2 - 8h x 7d Workweek (No Holidays) | y | DC1G |
| P1EWCC-PWP01-10760 |  | PM Instruction to Commence Work Package Plan | milestone | 0d | 2017-08-11 A | 2017-08-11 A | P1EWCC-PWP01-10750 | 100% | 2017-07-24 | 2017-07-24 | HS2 - 8h x 7d Workweek (No Holidays) | y | DC1G |

| ID | WBS | Activity | Type | Duration | Start | Finish | Predecessors | Complete | Planned start | Planned finish | Total float | Free float | Constraint | Calendar | HS2 Filter | Fusion - WPS |
| --- | --- | --- | --- | --- | --- | --- | --- | --- | --- | --- | --- | --- | --- | --- | --- | --- |
|  | 10 | **DC1I - Highway & Civil Works - Detailed Design & Construction** |  |  | 2018-01-25 | 2018-02-21 |  |  |  |  |  |  |  |  |  |  |
| P1EWCC-PWP01-10670 |  | PM Issues Draft CMO Work Package Instruction | milestone | 0d | 2018-01-25 | 2018-01-25 | P1EWCC-PWP02-1020 |  |  |  | -28d | 0d | as late as possible |  | y | DC1I |
| P1EWCC-PWP01-10680 |  | Develop Quote for CMO Work Package Instruction |  | 10d | 2018-01-25 | 2018-02-07 | P1EWCC-PWP01-10670 |  |  |  | -28d | 0d | as late as possible |  | y | DC1I |
| P1EWCC-PWP01-10690 |  | Issue Quote for CMO Work Package Instruction to PM for Acceptance | milestone | 0d | 2018-02-07 | 2018-02-07 | P1EWCC-PWP01-10680 |  |  |  | -28d | 0d | as late as possible |  | y | DC1I |
| P1EWCC-PWP01-10700 |  | PM Acceptance Period for CMO Work Package Instruction Price |  | 14d | 2018-02-08 | 2018-02-21 | P1EWCC-PWP01-10690 |  |  |  | -38d | 0d | as late as possible | HS2 - 8h x 7d Workweek (No Holidays) | y | DC1I |
| P1EWCC-PWP01-10710 |  | PM Instruction to Commence Work Package Plan | milestone | 0d | 2018-02-21 | 2018-02-21 | P1EWCC-PWP01-10700 |  |  |  | -38d | 0d | as late as possible | HS2 - 8h x 7d Workweek (No Holidays) | y | DC1I |
|  | 9 | **DC1J - Utilities - Detailed Design & Construction** |  |  | 2018-02-21 | 2018-03-20 |  |  |  |  |  |  |  |  |  |  |
| P1EWCC-PWP01-10770 |  | PM Issues Draft CMO Work Package Instruction | milestone | 0d | 2018-02-21 | 2018-02-21 | P1EWCC-PWP02-1020 |  |  |  | -132d | 0d | as late as possible |  | y | DC1J |
| P1EWCC-PWP01-10780 |  | Develop Quote for CMO Work Package Instruction |  | 10d | 2018-02-21 | 2018-03-06 | P1EWCC-PWP01-10770 |  |  |  | -132d | 0d | as late as possible |  | y | DC1J |
| P1EWCC-PWP01-10790 |  | Issue Quote for CMO Work Package Instruction to PM for Acceptance | milestone | 0d | 2018-03-06 | 2018-03-06 | P1EWCC-PWP01-10780 |  |  |  | -132d | 0d | as late as possible |  | y | DC1J |
| P1EWCC-PWP01-10800 |  | PM Acceptance Period for CMO Work Package Instruction Price |  | 14d | 2018-03-07 | 2018-03-20 | P1EWCC-PWP01-10790 |  |  |  | -184d | 0d | as late as possible | HS2 - 8h x 7d Workweek (No Holidays) | y | DC1J |
| P1EWCC-PWP01-10810 |  | PM Instruction to Commence Work Package Plan | milestone | 0d | 2018-03-20 | 2018-03-20 | P1EWCC-PWP01-10800 |  |  |  | -184d | 0d | as late as possible | HS2 - 8h x 7d Workweek (No Holidays) | y | DC1J |
|  | 4 | **DC2** |  |  | 2017-03-08 | 2018-04-17 |  |  |  |  |  |  |  |  |  |  |
|  | 1 | **DC2A - Stoke Mandeville & Princes Risborough Scheme Design** |  |  | 2017-03-08 | 2017-03-29 |  |  |  |  |  |  |  |  |  |  |
| P1EWCC-PWP01-5230 |  | PM Issues Draft CMO Work Package Instruction | milestone | 0d | 2017-03-08 A | 2017-03-08 A |  | 100% |  |  |  |  |  |  | y | DC2A |
| P1EWCC-PWP01-5240 |  | Develop Quote for CMO Work Package Instruction |  | 11d | 2017-03-08 A | 2017-03-23 A | P1EWCC-PWP01-5230 | 100% | 2017-03-08 | 2017-03-22 |  |  |  |  | y | DC2A |
| P1EWCC-PWP01-5250 |  | Issue Quote for CMO Work Package Instruction to PM for Acceptance | milestone | 0d | 2017-03-23 A | 2017-03-23 A | P1EWCC-PWP01-5240 | 100% | 2017-03-22 | 2017-03-22 |  |  |  |  | y | DC2A |
| P1EWCC-PWP01-5260 |  | PM Acceptance Period for CMO Work Package Instruction Price |  | 14d | 2017-03-24 A | 2017-03-29 A | P1EWCC-PWP01-5250 | 100% | 2017-03-23 | 2017-04-05 |  |  |  | HS2 - 8h x 7d Workweek (No Holidays) | y | DC2A |
| P1EWCC-PWP01-5270 |  | PM Instruction to Commence Work Package Plan | milestone | 0d | 2017-03-29 A | 2017-03-29 A | P1EWCC-PWP01-5260 | 100% | 2017-04-05 | 2017-04-05 |  |  |  | HS2 - 8h x 7d Workweek (No Holidays) | y | DC2A |
|  | 3 | **DC2B - Calvert Cutting Scheme Design** |  |  | 2017-05-03 | 2017-06-12 |  |  |  |  |  |  |  |  |  |  |
| P1EWCC-PWP01-7120 |  | PM Issues Draft CMO Work Package Instruction | milestone | 0d | 2017-05-03 A | 2017-05-03 A |  | 100% | 2017-04-03 | 2017-04-03 |  |  |  |  | y | DC2B |
| P1EWCC-PWP01-7130 |  | Develop Quote for CMO Work Package Instruction |  | 10d | 2017-05-04 A | 2017-05-18 A | P1EWCC-PWP01-7120 | 100% | 2017-04-03 | 2017-04-14 |  |  |  |  | y | DC2B |
| P1EWCC-PWP01-7140 |  | Issue Quote for CMO Work Package Instruction to PM for Acceptance | milestone | 0d | 2017-05-18 A | 2017-05-18 A | P1EWCC-PWP01-7130 | 100% | 2017-04-14 | 2017-04-14 |  |  |  |  | y | DC2B |
| P1EWCC-PWP01-7150 |  | PM Acceptance Period for CMO Work Package Instruction Price |  | 14d | 2017-05-19 A | 2017-06-12 A | P1EWCC-PWP01-7140 | 100% | 2017-04-15 | 2017-04-28 |  |  |  | HS2 - 8h x 7d Workweek (No Holidays) | y | DC2B |
| P1EWCC-PWP01-7160 |  | PM Instruction to Commence Work Package Plan | milestone | 0d | 2017-06-12 A | 2017-06-12 A | P1EWCC-PWP01-7150 | 100% |  |  |  |  |  | HS2 - 8h x 7d Workweek (No Holidays) | y | DC2B |

| ID | WBS | Activity | Type | Duration | Start | Finish | Predecessors | Complete | Remaining | Planned start | Planned finish | Total float | Free float | Constraint | Expected finish | Calendar | HS2 Filter | Fusion - WPS |
| --- | --- | --- | --- | --- | --- | --- | --- | --- | --- | --- | --- | --- | --- | --- | --- | --- | --- | --- |
|  | 5 | **DC2C - Highways & Civils Works Scheme Design** |  |  | 2017-09-05 | 2017-10-03 |  |  |  |  |  |  |  |  |  |  |  |  |
| P1EWCC-PWP01-7420 |  | PM Issues Draft CMO Work Package Instruction | milestone | 0d | 2017-09-05 A | 2017-09-05 A | P1EWCC-PWP02-1020 | 100% |  | 2017-09-18 | 2017-09-18 |  |  |  |  |  | y | DC2C |
| P1EWCC-PWP01-7430 |  | Develop Quote for CMO Work Package Instruction |  | 10d | 2017-09-06 A | 2017-09-19 | P1EWCC-PWP01-7420 | 81% | 1.88d | 2017-09-18 | 2017-09-29 | -157.12d | 0d |  | 2017-09-19 |  | y | DC2C |
| P1EWCC-PWP01-7440 |  | Issue Quote for CMO Work Package Instruction to PM for Acceptance | milestone | 0d | 2017-09-19 | 2017-09-19 | P1EWCC-PWP01-7430 |  |  |  |  | -157.12d | 0.12d |  |  |  | y | DC2C |
| P1EWCC-PWP01-7450 |  | PM Acceptance Period for CMO Work Package Instruction Price |  | 14d | 2017-09-20 | 2017-10-03 | P1EWCC-PWP01-7440 |  |  |  |  | -221.12d | 0d |  |  | HS2 - 8h x 7d Workweek (No Holidays) | y | DC2C |
| P1EWCC-PWP01-7460 |  | PM Instruction to Commence Work Package Plan | milestone | 0d | 2017-10-03 | 2017-10-03 | P1EWCC-PWP01-7450 |  |  |  |  | -221.12d | 0d |  |  | HS2 - 8h x 7d Workweek (No Holidays) | y | DC2C |
|  | 2 | **DC2D - Stoke Mandeville & Princes Risborough Detailed Design & Construction** |  |  |  |  |  |  |  |  |  |  |  |  |  |  |  |  |
|  | 4 | **DC2E - Calvert Cutting Detailed Design & Construction** |  |  | 2018-02-14 | 2018-03-13 |  |  |  |  |  |  |  |  |  |  |  |  |
| P1EWCC-PWP01-7170 |  | PM Issues Draft CMO Work Package Instruction | milestone | 0d | 2018-02-14 | 2018-02-14 | P1EWCC-PWP02-1020 |  |  |  |  | 50d | 0d | as late as possible |  |  | y | DC2E |
| P1EWCC-PWP01-7180 |  | Develop Quote for CMO Work Package Instruction |  | 10d | 2018-02-14 | 2018-02-27 | P1EWCC-PWP01-7170 |  |  |  |  | 50d | 0d | as late as possible |  |  | y | DC2E |
| P1EWCC-PWP01-7190 |  | Issue Quote for CMO Work Package Instruction to PM for Acceptance | milestone | 0d | 2018-02-27 | 2018-02-27 | P1EWCC-PWP01-7180 |  |  |  |  | 50d | 0d | as late as possible |  |  | y | DC2E |
| P1EWCC-PWP01-7200 |  | PM Acceptance Period for CMO Work Package Instruction Price |  | 14d | 2018-02-28 | 2018-03-13 | P1EWCC-PWP01-7190 |  |  |  |  | 70d | 0d | as late as possible |  | HS2 - 8h x 7d Workweek (No Holidays) | y | DC2E |
| P1EWCC-PWP01-7210 |  | PM Instruction to Commence Work Package Plan | milestone | 0d | 2018-03-13 | 2018-03-13 | P1EWCC-PWP01-7200 |  |  |  |  | 70d | 0d | as late as possible |  | HS2 - 8h x 7d Workweek (No Holidays) | y | DC2E |
|  | 8 | **DC2F - Highways & Civils Detailed Design & Construction** |  |  | 2018-03-21 | 2018-04-17 |  |  |  |  |  |  |  |  |  |  |  |  |
| P1EWCC-PWP01-7870 |  | PM Issues Draft CMO Work Package Instruction | milestone | 0d | 2018-03-21 | 2018-03-21 | P1EWCC-PWP02-1020 |  |  |  |  | -157.25d | 0d | as late as possible |  |  | y | DC2F |
| P1EWCC-PWP01-7880 |  | Develop Quote for CMO Work Package Instruction |  | 10d | 2018-03-21 | 2018-04-03 | P1EWCC-PWP01-7870 |  |  |  |  | -157.25d | 0d | as late as possible |  |  | y | DC2F |
| P1EWCC-PWP01-7890 |  | Issue Quote for CMO Work Package Instruction to PM for Acceptance | milestone | 0d | 2018-04-03 | 2018-04-03 | P1EWCC-PWP01-7880 |  |  |  |  | -157.25d | 0d | as late as possible |  |  | y | DC2F |
| P1EWCC-PWP01-7900 |  | PM Acceptance Period for CMO Work Package Instruction Price |  | 14d | 2018-04-04 | 2018-04-17 | P1EWCC-PWP01-7890 |  |  |  |  | -221.12d | 0d | as late as possible |  | HS2 - 8h x 7d Workweek (No Holidays) | y | DC2F |
| P1EWCC-PWP01-7910 |  | PM Instruction to Commence Work Package Plan | milestone | 0d | 2018-04-17 | 2018-04-17 | P1EWCC-PWP01-7900 |  |  |  |  | -221.12d | 0d | as late as possible |  | HS2 - 8h x 7d Workweek (No Holidays) | y | DC2F |
|  | 6 | **DC2G - A413 Roundabouts & Haul Road** |  |  | 2017-06-19 | 2017-09-19 |  |  |  |  |  |  |  |  |  |  |  |  |
| P1EWCC-PWP01-11540 |  | PM Issues Draft CMO Work Package Instruction | milestone | 0d | 2017-06-19 A | 2017-06-19 A |  | 100% |  | 2018-01-04 | 2018-01-04 |  |  |  |  |  | y | DC2G |
| P1EWCC-PWP01-11550 |  | Develop Quote for CMO Work Package Instruction |  | 10d | 2017-06-20 A | 2017-08-02 A | P1EWCC-PWP01-11540 | 100% |  | 2018-01-04 | 2018-01-17 |  |  |  |  |  | y | DC2G |
| P1EWCC-PWP01-11560 |  | Issue Quote for CMO Work Package Instruction to PM for Acceptance | milestone | 0d | 2017-08-02 A | 2017-08-02 A | P1EWCC-PWP01-11550 | 100% |  | 2017-07-31 | 2017-07-31 |  |  |  |  |  | y | DC2G |
| P1EWCC-PWP01-11570 |  | PM Acceptance Period for CMO Work Package Instruction Price |  | 14d | 2017-08-03 A | 2017-09-19 | P1EWCC-PWP01-11560 | 71% | 4d | 2017-08-01 | 2017-08-14 | 35d | 0d |  | 2017-09-19 | HS2 - 8h x 7d Workweek (No Holidays) | y | DC2G |
| P1EWCC-PWP01-11580 |  | PM Instruction to Commence Work Package Plan | milestone | 0d | 2017-09-19 | 2017-09-19 | P1EWCC-PWP01-11570 |  |  |  |  | 35d | 0d |  |  | HS2 - 8h x 7d Workweek (No Holidays) | y | DC2G |

| ID | WBS | Activity | Type | Duration | Start | Finish | Predecessors | Complete | Planned start | Planned finish | Total float | Free float | Calendar | HS2 Filter | Fusion - WPS |
| --- | --- | --- | --- | --- | --- | --- | --- | --- | --- | --- | --- | --- | --- | --- | --- |
|  | 3 | **DC3** |  |  | 2017-04-03 | 2018-05-30 |  |  |  |  |  |  |  |  |  |
|  | 2 | **DC3A - Chipping Warden, A361 Junction, Wardington A361 Safety Works & Sulgrave Junction - S. Design** |  |  | 2017-04-03 | 2017-05-22 |  |  |  |  |  |  |  |  |  |
| P1EWCC-PWP01-5880 |  | PM Issues Draft CMO Work Package Instruction | milestone | 0d | 2017-04-03 A | 2017-04-03 A |  | 100% | 2017-03-27 | 2017-03-27 |  |  |  | y | DC3A |
| P1EWCC-PWP01-5890 |  | Develop Quote for CMO Work Package Instruction |  | 10d | 2017-04-04 A | 2017-04-20 A | P1EWCC-PWP01-5880 | 100% | 2017-03-27 | 2017-04-07 |  |  |  | y | DC3A |
| P1EWCC-PWP01-5900 |  | Issue Quote for CMO Work Package Instruction to PM for Acceptance | milestone | 0d | 2017-04-20 A | 2017-04-20 A | P1EWCC-PWP01-5890 | 100% | 2017-04-07 | 2017-04-07 |  |  |  | y | DC3A |
| P1EWCC-PWP01-5910 |  | PM Acceptance Period for CMO Work Package Instruction Price |  | 14d | 2017-04-21 A | 2017-05-22 A | P1EWCC-PWP01-5900 | 100% | 2017-04-08 | 2017-04-21 |  |  | HS2 - 8h x 7d Workweek (No Holidays) | y | DC3A |
| P1EWCC-PWP01-5920 |  | PM Instruction to Commence Work Package Plan | milestone | 0d | 2017-05-22 A | 2017-05-22 A | P1EWCC-PWP01-5910 | 100% |  |  |  |  | HS2 - 8h x 7d Workweek (No Holidays) | y | DC3A |
|  | 4 | **DC3B - Wills Pastures Road & Junction - Scheme Design** |  |  | 2017-04-03 | 2017-05-22 |  |  |  |  |  |  |  |  |  |
| P1EWCC-PWP01-5930 |  | PM Issues Draft CMO Work Package Instruction | milestone | 0d | 2017-04-03 A | 2017-04-03 A | P1EWCC-PWP02-1020 | 100% | 2017-05-08 | 2017-05-08 |  |  |  | y | DC3B |
| P1EWCC-PWP01-5940 |  | Develop Quote for CMO Work Package Instruction |  | 10d | 2017-04-04 A | 2017-04-20 A | P1EWCC-PWP01-5930 | 100% | 2017-05-08 | 2017-05-19 |  |  |  | y | DC3B |
| P1EWCC-PWP01-5950 |  | Issue Quote for CMO Work Package Instruction to PM for Acceptance | milestone | 0d | 2017-04-20 A | 2017-04-20 A | P1EWCC-PWP01-5940 | 100% | 2017-05-19 | 2017-05-19 |  |  |  | y | DC3B |
| P1EWCC-PWP01-5960 |  | PM Acceptance Period for CMO Work Package Instruction Price |  | 14d | 2017-04-21 A | 2017-05-22 A | P1EWCC-PWP01-5950 | 100% | 2017-05-20 | 2017-06-02 |  |  | HS2 - 8h x 7d Workweek (No Holidays) | y | DC3B |
| P1EWCC-PWP01-5970 |  | PM Instruction to Commence Work Package Plan | milestone | 0d | 2017-05-22 A | 2017-05-22 A | P1EWCC-PWP01-5960 | 100% |  |  |  |  | HS2 - 8h x 7d Workweek (No Holidays) | y | DC3B |
|  | 1 | **DC3C - M40 J11 - Scheme Design** |  |  | 2017-04-03 | 2017-05-22 |  |  |  |  |  |  |  |  |  |
| P1EWCC-PWP01-8470 |  | PM Issues Draft CMO Work Package Instruction | milestone | 0d | 2017-04-03 A | 2017-04-03 A | P1EWCC-PWP02-1020 | 100% | 2017-04-10 | 2017-04-10 |  |  |  | y | DC3C |
| P1EWCC-PWP01-8480 |  | Develop Quote for CMO Work Package Instruction |  | 10d | 2017-04-04 A | 2017-04-20 A | P1EWCC-PWP01-8470 | 100% | 2017-04-10 | 2017-04-21 |  |  |  | y | DC3C |
| P1EWCC-PWP01-8490 |  | Issue Quote for CMO Work Package Instruction to PM for Acceptance | milestone | 0d | 2017-04-20 A | 2017-04-20 A | P1EWCC-PWP01-8480 | 100% | 2017-04-21 | 2017-04-21 |  |  |  | y | DC3C |
| P1EWCC-PWP01-8500 |  | PM Acceptance Period for CMO Work Package Instruction Price |  | 14d | 2017-04-21 A | 2017-05-22 A | P1EWCC-PWP01-8490 | 100% | 2017-04-22 | 2017-05-05 |  |  | HS2 - 8h x 7d Workweek (No Holidays) | y | DC3C |
| P1EWCC-PWP01-8510 |  | PM Instruction to Commence Work Package Plan | milestone | 0d | 2017-05-22 A | 2017-05-22 A | P1EWCC-PWP01-8500 | 100% |  |  |  |  | HS2 - 8h x 7d Workweek (No Holidays) | y | DC3C |
|  | 10 | **DC3D - Utilities - Scheme Design** |  |  | 2017-09-18 | 2017-10-13 |  |  |  |  |  |  |  |  |  |
| P1EWCC-PWP01-9520 |  | PM Issues Draft CMO Work Package Instruction | milestone | 0d | 2017-09-18 | 2017-09-18 | P1EWCC-PWP02-1020 |  |  |  | -132d | 0d |  | y | DC3D |
| P1EWCC-PWP01-9530 |  | Develop Quote for CMO Work Package Instruction |  | 10d | 2017-09-18 | 2017-09-29 | P1EWCC-PWP01-9520 |  |  |  | -132d | 0d |  | y | DC3D |
| P1EWCC-PWP01-9540 |  | Issue Quote for CMO Work Package Instruction to PM for Acceptance | milestone | 0d | 2017-09-29 | 2017-09-29 | P1EWCC-PWP01-9530 |  |  |  | -132d | 0d |  | y | DC3D |
| P1EWCC-PWP01-9550 |  | PM Acceptance Period for CMO Work Package Instruction Price |  | 14d | 2017-09-30 | 2017-10-13 | P1EWCC-PWP01-9540 |  |  |  | -184d | 0d | HS2 - 8h x 7d Workweek (No Holidays) | y | DC3D |
| P1EWCC-PWP01-9560 |  | PM Instruction to Commence Work Package Plan | milestone | 0d | 2017-10-13 | 2017-10-13 | P1EWCC-PWP01-9550 |  |  |  | -184d | 0d | HS2 - 8h x 7d Workweek (No Holidays) | y | DC3D |

| ID | WBS | Activity | Type | Duration | Start | Finish | Predecessors | Total float | Free float | Constraint | Calendar | HS2 Filter | Fusion - WPS |
| --- | --- | --- | --- | --- | --- | --- | --- | --- | --- | --- | --- | --- | --- |
|  | 12 | **DC3E - Turweston Haul Road - Scheme Design** |  |  | 2017-09-18 | 2017-10-13 |  |  |  |  |  |  |  |
| P1EWCC-PWP01-9820 |  | PM Issues Draft CMO Work Package Instruction | milestone | 0d | 2017-09-18 | 2017-09-18 | P1EWCC-PWP02-1020 | -58.5d | 0d |  |  | y | DC3E |
| P1EWCC-PWP01-9830 |  | Develop Quote for CMO Work Package Instruction |  | 10d | 2017-09-18 | 2017-09-29 | P1EWCC-PWP01-9820 | -58.5d | 0d |  |  | y | DC3E |
| P1EWCC-PWP01-9840 |  | Issue Quote for CMO Work Package Instruction to PM for Acceptance | milestone | 0d | 2017-09-29 | 2017-09-29 | P1EWCC-PWP01-9830 | -58.5d | 0d |  |  | y | DC3E |
| P1EWCC-PWP01-9850 |  | PM Acceptance Period for CMO Work Package Instruction Price |  | 14d | 2017-09-30 | 2017-10-13 | P1EWCC-PWP01-9840 | -80.38d | 0d |  | HS2 - 8h x 7d Workweek (No Holidays) | y | DC3E |
| P1EWCC-PWP01-9860 |  | PM Instruction to Commence Work Package Plan | milestone | 0d | 2017-10-13 | 2017-10-13 | P1EWCC-PWP01-9850 | -80.38d | 0d |  | HS2 - 8h x 7d Workweek (No Holidays) | y | DC3E |
|  | 3 | **DC3F - Chipping Warden, A361 Junction, Wardington A361 Safety Works & Sulgrave Junction - DD & Con** |  |  | 2017-11-20 | 2017-12-17 |  |  |  |  |  |  |  |
| P1EWCC-PWP01-8620 |  | PM Issues Draft CMO Work Package Instruction | milestone | 0d | 2017-11-20 | 2017-11-20 | P1EWCC-PWP02-1020 | -52d | 0d | as late as possible |  | y | DC3F |
| P1EWCC-PWP01-8630 |  | Develop Quote for CMO Work Package Instruction |  | 10d | 2017-11-20 | 2017-12-01 | P1EWCC-PWP01-8620 | -52d | 0d | as late as possible |  | y | DC3F |
| P1EWCC-PWP01-8640 |  | Issue Quote for CMO Work Package Instruction to PM for Acceptance | milestone | 0d | 2017-12-01 | 2017-12-01 | P1EWCC-PWP01-8630 | -52d | 0d | as late as possible |  | y | DC3F |
| P1EWCC-PWP01-8650 |  | PM Acceptance Period for CMO Work Package Instruction Price |  | 14d | 2017-12-04 | 2017-12-17 | P1EWCC-PWP01-8640 | -74d | 0d | as late as possible | HS2 - 8h x 7d Workweek (No Holidays) | y | DC3F |
| P1EWCC-PWP01-8660 |  | PM Instruction to Commence Work Package Plan | milestone | 0d | 2017-12-17 | 2017-12-17 | P1EWCC-PWP01-8650 | -74d | 0d | as late as possible | HS2 - 8h x 7d Workweek (No Holidays) | y | DC3F |
|  | 5 | **DC3G - Wills Pastures Road & Junction - DD & Con** |  |  | 2017-12-08 | 2018-01-04 |  |  |  |  |  |  |  |
| P1EWCC-PWP01-8770 |  | PM Issues Draft CMO Work Package Instruction | milestone | 0d | 2017-12-08 | 2017-12-08 | P1EWCC-PWP02-1020 | 32d | 0d | as late as possible |  | y | DC3G |
| P1EWCC-PWP01-8780 |  | Develop Quote for CMO Work Package Instruction |  | 10d | 2017-12-08 | 2017-12-21 | P1EWCC-PWP01-8770 | 32d | 0d | as late as possible |  | y | DC3G |
| P1EWCC-PWP01-8790 |  | Issue Quote for CMO Work Package Instruction to PM for Acceptance | milestone | 0d | 2017-12-21 | 2017-12-21 | P1EWCC-PWP01-8780 | 32d | 0d | as late as possible |  | y | DC3G |
| P1EWCC-PWP01-8800 |  | PM Acceptance Period for CMO Work Package Instruction Price |  | 14d | 2017-12-22 | 2018-01-04 | P1EWCC-PWP01-8790 | 46d | 0d | as late as possible | HS2 - 8h x 7d Workweek (No Holidays) | y | DC3G |
| P1EWCC-PWP01-8810 |  | PM Instruction to Commence Work Package Plan | milestone | 0d | 2018-01-04 | 2018-01-04 | P1EWCC-PWP01-8800 | 46d | 0d | as late as possible | HS2 - 8h x 7d Workweek (No Holidays) | y | DC3G |
|  | 6 | **DC3H - M40 J11 - DD & Con** |  |  | 2017-11-23 | 2017-12-20 |  |  |  |  |  |  |  |
| P1EWCC-PWP01-8920 |  | PM Issues Draft CMO Work Package Instruction | milestone | 0d | 2017-11-23 | 2017-11-23 | P1EWCC-PWP02-1020 | 84d | 0d | as late as possible |  | y | DC3H |
| P1EWCC-PWP01-8930 |  | Develop Quote for CMO Work Package Instruction |  | 10d | 2017-11-23 | 2017-12-06 | P1EWCC-PWP01-8920 | 84d | 0d | as late as possible |  | y | DC3H |
| P1EWCC-PWP01-8940 |  | Issue Quote for CMO Work Package Instruction to PM for Acceptance | milestone | 0d | 2017-12-06 | 2017-12-06 | P1EWCC-PWP01-8930 | 84d | 0d | as late as possible |  | y | DC3H |
| P1EWCC-PWP01-8950 |  | PM Acceptance Period for CMO Work Package Instruction Price |  | 14d | 2017-12-07 | 2017-12-20 | P1EWCC-PWP01-8940 | 118d | 0d | as late as possible | HS2 - 8h x 7d Workweek (No Holidays) | y | DC3H |
| P1EWCC-PWP01-8960 |  | PM Instruction to Commence Work Package Plan | milestone | 0d | 2017-12-20 | 2017-12-20 | P1EWCC-PWP01-8950 | 118d | 0d | as late as possible | HS2 - 8h x 7d Workweek (No Holidays) | y | DC3H |

| ID | WBS | Activity | Type | Duration | Start | Finish | Predecessors | Complete | Planned start | Planned finish | Total float | Free float | Constraint | Calendar | HS2 Filter | Fusion - WPS |
| --- | --- | --- | --- | --- | --- | --- | --- | --- | --- | --- | --- | --- | --- | --- | --- | --- |
|  | 9 | **DC3I - Utilities DD & Con** |  |  | 2018-05-03 | 2018-05-30 |  |  |  |  |  |  |  |  |  |  |
| P1EWCC-PWP01-9370 |  | PM Issues Draft CMO Work Package Instruction | milestone | 0d | 2018-05-03 | 2018-05-03 | P1EWCC-PWP02-1020 |  |  |  | -132d | 0d | as late as possible |  | y | DC3I |
| P1EWCC-PWP01-9380 |  | Develop Quote for CMO Work Package Instruction |  | 10d | 2018-05-03 | 2018-05-16 | P1EWCC-PWP01-9370 |  |  |  | -132d | 0d | as late as possible |  | y | DC3I |
| P1EWCC-PWP01-9390 |  | Issue Quote for CMO Work Package Instruction to PM for Acceptance | milestone | 0d | 2018-05-16 | 2018-05-16 | P1EWCC-PWP01-9380 |  |  |  | -132d | 0d | as late as possible |  | y | DC3I |
| P1EWCC-PWP01-9400 |  | PM Acceptance Period for CMO Work Package Instruction Price |  | 14d | 2018-05-17 | 2018-05-30 | P1EWCC-PWP01-9390 |  |  |  | -184d | 0d | as late as possible | HS2 - 8h x 7d Workweek (No Holidays) | y | DC3I |
| P1EWCC-PWP01-9410 |  | PM Instruction to Commence Work Package Plan | milestone | 0d | 2018-05-30 | 2018-05-30 | P1EWCC-PWP01-9400 |  |  |  | -184d | 0d | as late as possible | HS2 - 8h x 7d Workweek (No Holidays) | y | DC3I |
|  | 11 | **DC3J - Turweston Haul Road - DD & Con** |  |  | 2017-12-04 | 2017-12-29 |  |  |  |  |  |  |  |  |  |  |
| P1EWCC-PWP01-9670 |  | PM Issues Draft CMO Work Package Instruction | milestone | 0d | 2017-12-04 | 2017-12-04 | P1EWCC-PWP02-1020 |  |  |  | 0.25d | 0d | as late as possible |  | y | DC3J |
| P1EWCC-PWP01-9680 |  | Develop Quote for CMO Work Package Instruction |  | 10d | 2017-12-04 | 2017-12-15 | P1EWCC-PWP01-9670 |  |  |  | 0.25d | 0d | as late as possible |  | y | DC3J |
| P1EWCC-PWP01-9690 |  | Issue Quote for CMO Work Package Instruction to PM for Acceptance | milestone | 0d | 2017-12-15 | 2017-12-15 | P1EWCC-PWP01-9680 |  |  |  | 0.25d | 0d | as late as possible |  | y | DC3J |
| P1EWCC-PWP01-9700 |  | PM Acceptance Period for CMO Work Package Instruction Price |  | 14d | 2017-12-16 | 2017-12-29 | P1EWCC-PWP01-9690 |  |  |  | 2.25d | 0d | as late as possible | HS2 - 8h x 7d Workweek (No Holidays) | y | DC3J |
| P1EWCC-PWP01-9710 |  | PM Instruction to Commence Work Package Plan | milestone | 0d | 2017-12-29 | 2017-12-29 | P1EWCC-PWP01-9700 |  |  |  | 2.25d | 0d | as late as possible | HS2 - 8h x 7d Workweek (No Holidays) | y | DC3J |
|  | 7 | **DC3K - Demolition Works** |  |  | 2017-12-04 | 2017-12-29 |  |  |  |  |  |  |  |  |  |  |
| P1EWCC-PWP01-11440 |  | PM Issues Draft CMO Work Package Instruction | milestone | 0d | 2017-12-04 | 2017-12-04 | P1EWCC-PWP02-1020 |  |  |  | 0.25d | 0d | start on or after 2017-12-04 |  | y | DC3K |
| P1EWCC-PWP01-11450 |  | Develop Quote for CMO Work Package Instruction |  | 10d | 2017-12-04 | 2017-12-15 | P1EWCC-PWP01-11440 |  |  |  | 0.25d | 0d |  |  | y | DC3K |
| P1EWCC-PWP01-11460 |  | Issue Quote for CMO Work Package Instruction to PM for Acceptance | milestone | 0d | 2017-12-15 | 2017-12-15 | P1EWCC-PWP01-11450 |  |  |  | 0.25d | 0d |  |  | y | DC3K |
| P1EWCC-PWP01-11470 |  | PM Acceptance Period for CMO Work Package Instruction Price |  | 14d | 2017-12-16 | 2017-12-29 | P1EWCC-PWP01-11460 |  |  |  | 2.25d | 0d |  | HS2 - 8h x 7d Workweek (No Holidays) | y | DC3K |
| P1EWCC-PWP01-11480 |  | PM Instruction to Commence Work Package Plan | milestone | 0d | 2017-12-29 | 2017-12-29 | P1EWCC-PWP01-11470 |  |  |  | 2.25d | 0d |  | HS2 - 8h x 7d Workweek (No Holidays) | y | DC3K |
|  | 1 | **CMO WORK PACKAGE SERVICES** |  |  | 2017-02-21 | 2018-11-29 |  |  |  |  |  |  |  |  |  |  |
|  | 4 | **WORK PACKAGE PLAN (WPP)** |  |  | 2017-02-21 | 2018-07-04 |  |  |  |  |  |  |  |  |  |  |
|  | 39 | **Area Wide Packages** |  |  | 2017-02-21 | 2017-12-14 |  |  |  |  |  |  |  |  |  |  |
|  | 3 | **AW1 - Area Wide Support Team** |  |  | 2017-06-13 | 2017-09-15 |  |  |  |  |  |  |  |  |  |  |
| P1EWCC-PWP01-4560 |  | Development of Work Package Plan (WPP) |  | 15d | 2017-06-13 A | 2017-06-21 A | P1EWCC-PWP01-4270 | 100% | 2017-05-29 | 2017-06-16 |  |  |  |  | y | AW1 |
| P1EWCC-PWP01-4590 |  | Issue Work Package Plan (WPP) to PM for Acceptance | milestone | 0d | 2017-06-21 A | 2017-06-21 A | P1EWCC-PWP01-4560 | 100% | 2017-06-26 | 2017-06-26 |  |  |  |  | y | AW1 |
| P1EWCC-PWP01-4610 |  | PM Acceptance Period for Work Package Plan (WPP) |  | 14d | 2017-06-22 A | 2017-09-15 A | P1EWCC-PWP01-4590 | 100% | 2017-06-26 | 2017-07-09 |  |  |  | HS2 - 8h x 7d Workweek (No Holidays) | y | AW1 |
| P1EWCC-PWP01-4630 |  | PM Instruction to Commence Work Package Price | milestone | 0d | 2017-09-15 A | 2017-09-15 A | P1EWCC-PWP01-4610 | 100% | 2017-09-16 | 2017-09-16 |  |  |  | HS2 - 8h x 7d Workweek (No Holidays) | y | AW1 |

| ID | WBS | Activity | Type | Duration | Start | Finish | Predecessors | Total float | Free float | Calendar | HS2 Filter | Fusion - WPS |
| --- | --- | --- | --- | --- | --- | --- | --- | --- | --- | --- | --- | --- |
|  | 4 | **AW2 - Information Technology & Digital Integration** |  |  | 2017-09-18 | 2017-10-20 |  |  |  |  |  |  |
| P1EWCC-PWP01-4660 |  | Development of Work Package Plan (WPP) |  | 15d | 2017-09-18 | 2017-10-06 | P1EWCC-PWP01-4390 | 1310d | 0d |  | y | AW2 |
| P1EWCC-PWP01-4670 |  | Issue Work Package Plan (WPP) to PM for Acceptance | milestone | 0d | 2017-10-06 | 2017-10-06 | P1EWCC-PWP01-4660 | 1310d | 0d |  | y | AW2 |
| P1EWCC-PWP01-4690 |  | PM Acceptance Period for Work Package Plan (WPP) |  | 14d | 2017-10-07 | 2017-10-20 | P1EWCC-PWP01-4670 | 1836d | 0d | HS2 - 8h x 7d Workweek (No Holidays) | y | AW2 |
| P1EWCC-PWP01-4700 |  | PM Instruction to Commence Work Package Price | milestone | 0d | 2017-10-20 | 2017-10-20 | P1EWCC-PWP01-4690 | 1836d | 0d | HS2 - 8h x 7d Workweek (No Holidays) | y | AW2 |
|  | 8 | **AW3.A - #beHighSpeed Onboarding Programme** |  |  | 2017-10-13 | 2017-11-17 |  |  |  |  |  |  |
| P1EWCC-PWP01-10170 |  | Development of Work Package Plan (WPP) |  | 15d | 2017-10-13 | 2017-11-03 | P1EWCC-PWP01-10010 | 1290.12d | 0d |  | y |  |
| P1EWCC-PWP01-10180 |  | Issue Work Package Plan (WPP) to PM for Acceptance | milestone | 0d | 2017-11-03 | 2017-11-03 | P1EWCC-PWP01-10170 | 1290.12d | 0.12d |  | y |  |
| P1EWCC-PWP01-10190 |  | PM Acceptance Period for Work Package Plan (WPP) |  | 14d | 2017-11-04 | 2017-11-17 | P1EWCC-PWP01-10180 | 1808d | 0d | HS2 - 8h x 7d Workweek (No Holidays) | y |  |
| P1EWCC-PWP01-10200 |  | PM Instruction to Commence Work Package Price | milestone | 0d | 2017-11-17 | 2017-11-17 | P1EWCC-PWP01-10190 | 1808d | 0d | HS2 - 8h x 7d Workweek (No Holidays) | y |  |
|  | 9 | **AW3.B - Transformational Hub** |  |  | 2017-10-13 | 2017-11-17 |  |  |  |  |  |  |
| P1EWCC-PWP01-10210 |  | Development of Work Package Plan (WPP) |  | 15d | 2017-10-13 | 2017-11-03 | P1EWCC-PWP01-10060 | 1290.12d | 0d |  | y |  |
| P1EWCC-PWP01-10220 |  | Issue Work Package Plan (WPP) to PM for Acceptance | milestone | 0d | 2017-11-03 | 2017-11-03 | P1EWCC-PWP01-10210 | 1290.12d | 0.12d |  | y |  |
| P1EWCC-PWP01-10230 |  | PM Acceptance Period for Work Package Plan (WPP) |  | 14d | 2017-11-04 | 2017-11-17 | P1EWCC-PWP01-10220 | 1808d | 0d | HS2 - 8h x 7d Workweek (No Holidays) | y |  |
| P1EWCC-PWP01-10240 |  | PM Instruction to Commence Work Package Price | milestone | 0d | 2017-11-17 | 2017-11-17 | P1EWCC-PWP01-10230 | 1808d | 0d | HS2 - 8h x 7d Workweek (No Holidays) | y |  |
|  | 10 | **AW3.C - LIFE Programme** |  |  | 2017-10-13 | 2017-11-17 |  |  |  |  |  |  |
| P1EWCC-PWP01-10250 |  | Development of Work Package Plan (WPP) |  | 15d | 2017-10-13 | 2017-11-03 | P1EWCC-PWP01-10110 | 1290.12d | 0d |  | y |  |
| P1EWCC-PWP01-10260 |  | Issue Work Package Plan (WPP) to PM for Acceptance | milestone | 0d | 2017-11-03 | 2017-11-03 | P1EWCC-PWP01-10250 | 1290.12d | 0.12d |  | y |  |
| P1EWCC-PWP01-10270 |  | PM Acceptance Period for Work Package Plan (WPP) |  | 14d | 2017-11-04 | 2017-11-17 | P1EWCC-PWP01-10260 | 1808d | 0d | HS2 - 8h x 7d Workweek (No Holidays) | y |  |
| P1EWCC-PWP01-10280 |  | PM Instruction to Commence Work Package Price | milestone | 0d | 2017-11-17 | 2017-11-17 | P1EWCC-PWP01-10270 | 1808d | 0d | HS2 - 8h x 7d Workweek (No Holidays) | y |  |
|  | 11 | **AW3.D - Collaboration Mobilisation Team** |  |  | 2017-10-13 | 2017-11-17 |  |  |  |  |  |  |
| P1EWCC-PWP01-10290 |  | Development of Work Package Plan (WPP) |  | 15d | 2017-10-13 | 2017-11-03 | P1EWCC-PWP01-10160 | 1290.12d | 0d |  | y |  |
| P1EWCC-PWP01-10300 |  | Issue Work Package Plan (WPP) to PM for Acceptance | milestone | 0d | 2017-11-03 | 2017-11-03 | P1EWCC-PWP01-10290 | 1290.12d | 0.12d |  | y |  |
| P1EWCC-PWP01-10310 |  | PM Acceptance Period for Work Package Plan (WPP) |  | 14d | 2017-11-04 | 2017-11-17 | P1EWCC-PWP01-10300 | 1808d | 0d | HS2 - 8h x 7d Workweek (No Holidays) | y |  |
| P1EWCC-PWP01-10320 |  | PM Instruction to Commence Work Package Price | milestone | 0d | 2017-11-17 | 2017-11-17 | P1EWCC-PWP01-10310 | 1808d | 0d | HS2 - 8h x 7d Workweek (No Holidays) | y |  |

| ID | WBS | Activity | Type | Duration | Start | Finish | Predecessors | Complete | Remaining | Planned start | Planned finish | Total float | Free float | Constraint | Expected finish | Calendar | HS2 Filter | Fusion - WPS |
| --- | --- | --- | --- | --- | --- | --- | --- | --- | --- | --- | --- | --- | --- | --- | --- | --- | --- | --- |
|  | 6 | **AW4 - Accomodation** |  |  | 2017-02-21 | 2017-06-20 |  |  |  |  |  |  |  |  |  |  |  |  |
| P1EWCC-PWP01-4780 |  | Development of Work Package Plan (WPP) |  | 15d | 2017-02-21 A | 2017-05-15 A | P1EWCC-PWP01-4550 | 100% |  | 2017-06-19 | 2017-07-07 |  |  |  |  |  | y | AW4 |
| P1EWCC-PWP01-4790 |  | Issue Work Package Plan (WPP) to PM for Acceptance | milestone | 0d | 2017-05-15 A | 2017-05-15 A | P1EWCC-PWP01-4780 | 100% |  | 2017-07-07 | 2017-07-07 |  |  |  |  |  | y | AW4 |
| P1EWCC-PWP01-4890 |  | PM Acceptance Period for Work Package Plan (WPP) |  | 14d | 2017-05-16 A | 2017-06-20 A | P1EWCC-PWP01-4790 | 100% |  | 2017-07-08 | 2017-07-21 |  |  |  |  | HS2 - 8h x 7d Workweek (No Holidays) | y | AW4 |
| P1EWCC-PWP01-4900 |  | PM Instruction to Commence Work Package Price | milestone | 0d | 2017-06-20 A | 2017-06-20 A | P1EWCC-PWP01-4890 | 100% |  | 2017-06-26 | 2017-06-26 |  |  |  |  | HS2 - 8h x 7d Workweek (No Holidays) | y | AW4 |
|  | 1 | **AWS - Area Wide Surveys** |  |  | 2017-06-05 | 2017-09-22 |  |  |  |  |  |  |  |  |  |  |  |  |
| P1EWCC-PWP01-150 |  | Development of Work Package Plan (WPP) |  | 20d | 2017-06-05 A | 2017-07-14 A | P1EWCC-PWP01-140 | 100% |  | 2017-06-05 | 2017-06-30 |  |  |  |  |  | y | AWS |
| P1EWCC-PWP01-160 |  | Issue Work Package Plan (WPP) to PM for Acceptance | milestone | 0d | 2017-07-14 A | 2017-07-14 A | P1EWCC-PWP01-150 | 100% |  |  |  |  |  |  |  |  | y | AWS |
| P1EWCC-PWP01-170 |  | PM Acceptance Period for Work Package Plan (WPP) |  | 14d | 2017-07-15 A | 2017-09-22 | P1EWCC-PWP01-160 | 50% | 7d | 2017-07-15 | 2017-07-28 | -243d | 0d |  | 2017-09-22 | HS2 - 8h x 7d Workweek (No Holidays) | y | AWS |
| P1EWCC-PWP01-180 |  | PM Instruction to Commence Work Package Price | milestone | 0d | 2017-09-22 | 2017-09-22 | P1EWCC-PWP01-170 |  |  |  |  | -243d | 0d |  |  | HS2 - 8h x 7d Workweek (No Holidays) | y | AWS |
|  | 16 | **AWE1 - Habitat Creation & Translocation** |  |  | 2017-05-31 | 2017-08-18 |  |  |  |  |  |  |  |  |  |  |  |  |
| P1EWCC-PWP02-150 |  | Development of Work Package Plan (WPP) |  | 15d | 2017-05-31 A | 2017-06-21 A | P1EWCC-PWP02-140 | 100% |  | 2017-05-31 | 2017-06-20 |  |  |  |  |  | y | AWE1 |
| P1EWCC-PWP02-160 |  | Issue Work Package Plan (WPP) to PM for Acceptance | milestone | 0d | 2017-06-21 A | 2017-06-21 A | P1EWCC-PWP02-150 | 100% |  | 2017-06-26 | 2017-06-26 |  |  |  |  |  | y | AWE1 |
| P1EWCC-PWP02-170 |  | PM Acceptance Period for Work Package Plan (WPP) |  | 14d | 2017-06-22 A | 2017-08-18 A | P1EWCC-PWP02-160 | 100% |  | 2017-06-26 | 2017-07-09 |  |  |  |  | HS2 - 8h x 7d Workweek (No Holidays) | y | AWE1 |
| P1EWCC-PWP02-180 |  | PM Instruction to Commence Work Package Price | milestone | 0d | 2017-08-18 A | 2017-08-18 A | P1EWCC-PWP02-170 | 100% |  | 2017-07-24 | 2017-07-24 |  |  |  |  | HS2 - 8h x 7d Workweek (No Holidays) | y | AWE1 |
|  | 12 | **AWE2 - Landscape Planting Installation** |  |  | 2017-10-05 | 2017-12-14 |  |  |  |  |  |  |  |  |  |  |  |  |
|  | 1 | **Review of EDP Advanced Landscape Crtical Designs (2017 - 2018 planting)** |  |  | 2017-10-05 | 2017-11-16 |  |  |  |  |  |  |  |  |  |  |  |  |
| P1EWCC-PWP02-14440 |  | HS2 issue all docs regarding EDP critical designs | milestone | 0d | 2017-10-05 | 2017-10-05 | P1EWCC-PWP02-11810 |  |  |  |  | -135.88d | 0d | as late as possible |  | HS2 - 8h x 7d Workweek (No Holidays) | y | AWE2 |
| P1EWCC-PWP02-14450 |  | Fusion review EDP critical designs |  | 30d | 2017-10-05 | 2017-11-16 | P1EWCC-PWP02-14440 |  |  |  |  | -99.75d | 10.12d |  |  |  | y | AWE2 |
|  | 12 | **Development of other WPP documents** |  |  | 2017-10-05 | 2017-11-02 |  |  |  |  |  |  |  |  |  |  |  |  |
| P1EWCC-PWP02-14550 |  | Development of WPP documents |  | 20d | 2017-10-05 | 2017-11-02 | P1EWCC-PWP02-11810 |  |  |  |  | -89.75d | 20.12d |  |  |  | y | AWE2 |
|  | 2 | **Development of Consents Register** |  |  | 2017-10-05 | 2017-11-16 |  |  |  |  |  |  |  |  |  |  |  |  |
| P1EWCC-PWP02-14350 |  | Development of Consents Register |  | 30d | 2017-10-05 | 2017-11-16 | P1EWCC-PWP02-11810 |  |  |  |  | -99.75d | 10.12d |  |  |  | y | AWE2 |
|  | 3 | **Review EDP Designs for UW1 conflict** |  |  | 2017-10-05 | 2017-10-19 |  |  |  |  |  |  |  |  |  |  |  |  |
| P1EWCC-PWP02-14360 |  | Review EDP Designs for UW1 conflict |  | 10d | 2017-10-05 | 2017-10-19 | P1EWCC-PWP02-11810 |  |  |  |  | -79.75d | 30.12d |  |  |  | y | AWE2 |
| P1EWCC-PWP02-14370 |  | Review Employers Habitat Translocation for UW1 Conflict |  | 10d | 2017-10-05 | 2017-10-19 | P1EWCC-PWP02-11810 |  |  |  |  | -79.75d | 30.12d |  |  |  | y | AWE2 |

| ID | WBS | Activity | Type | Duration | Start | Finish | Predecessors | Complete | Remaining | Planned start | Planned finish | Total float | Free float | Constraint | Expected finish | Calendar | HS2 Filter | Fusion - WPS |
| --- | --- | --- | --- | --- | --- | --- | --- | --- | --- | --- | --- | --- | --- | --- | --- | --- | --- | --- |
|  | 4 | **Consider Opportunities for SUDS at each site** |  |  | 2017-10-05 | 2017-11-16 |  |  |  |  |  |  |  |  |  |  |  |  |
| P1EWCC-PWP02-14380 |  | Consider Opportunities for SUDS at each site |  | 30d | 2017-10-05 | 2017-11-16 | P1EWCC-PWP02-11810 |  |  |  |  | -99.75d | 10.12d |  |  |  | y | AWE2 |
|  | 5 | **Stakeholder Consultant Period** |  |  | 2017-10-05 | 2017-11-30 |  |  |  |  |  |  |  |  |  |  |  |  |
| P1EWCC-PWP02-14390 |  | Stakeholder Consultant Period inc U&A's |  | 40d | 2017-10-05 | 2017-11-30 | P1EWCC-PWP02-11810 |  |  |  |  | -109.75d | 0.12d |  |  |  | y | AWE2 |
|  | 6 | **Veteran Oak Tree Feasibility Study for Translocation** |  |  |  |  |  |  |  |  |  |  |  |  |  |  |  |  |
|  | 7 | **Land Boundary and Access Requirements inc dates** |  |  | 2017-10-05 | 2017-11-16 |  |  |  |  |  |  |  |  |  |  |  |  |
| P1EWCC-PWP02-14410 |  | Land Boundary and Access Requirements inc dates |  | 30d | 2017-10-05 | 2017-11-16 | P1EWCC-PWP02-11810 |  |  |  |  | -99.75d | 10.12d |  |  |  | y | AWE2 |
|  | 8 | **Team Organogram** |  |  | 2017-10-05 | 2017-11-16 |  |  |  |  |  |  |  |  |  |  |  |  |
| P1EWCC-PWP02-14420 |  | Team Organogram |  | 30d | 2017-10-05 | 2017-11-16 | P1EWCC-PWP02-11810 |  |  |  |  | -99.75d | 10.12d |  |  |  | y | AWE2 |
|  | 9 | **Management Plans** |  |  | 2017-10-05 | 2017-11-16 |  |  |  |  |  |  |  |  |  |  |  |  |
| P1EWCC-PWP02-14430 |  | Management Plans |  | 30d | 2017-10-05 | 2017-11-16 | P1EWCC-PWP02-11810 |  |  |  |  | -99.75d | 10.12d |  |  |  | y | AWE2 |
|  | 10 | **Production of Detailed Programme** |  |  | 2017-10-05 | 2017-11-16 |  |  |  |  |  |  |  |  |  |  |  |  |
| P1EWCC-PWP02-14340 |  | Production of Detailed Programme |  | 30d | 2017-10-05 | 2017-11-16 | P1EWCC-PWP02-11810 |  |  |  |  | -99.75d | 10.12d |  |  |  | y | AWE2 |
|  | 11 | **HS2 Acceptance** |  |  | 2017-11-30 | 2017-12-14 |  |  |  |  |  |  |  |  |  |  |  |  |
| P1EWCC-PWP02-11830 |  | Issue Work Package Plan (WPP) to PM for Acceptance | milestone | 0d | 2017-11-30 | 2017-11-30 | P1EWCC-PWP02-14340, P1EWCC-PWP02-14350, P1EWCC-PWP02-14360, P1EWCC-PWP02-14370, P1EWCC-PWP02-14380, P1EWCC-PWP02-14410 FF, P1EWCC-PWP02-14420, P1EWCC-PWP02-14430, P1EWCC-PWP02-14390, P1EWCC-PWP02-14550, P1EWCC-PWP02-14450 |  |  |  |  | -109.88d | 0d | as late as possible |  |  | y | AWE2 |
| P1EWCC-PWP02-11840 |  | PM Acceptance Period for Work Package Plan (WPP) |  | 14d | 2017-12-01 | 2017-12-14 | P1EWCC-PWP02-11830 |  |  |  |  | -149.88d | 0d | as late as possible |  | HS2 - 8h x 7d Workweek (No Holidays) | y | AWE2 |
| P1EWCC-PWP02-11850 |  | PM Instruction to Commence Work Package Price | milestone | 0d | 2017-12-14 | 2017-12-14 | P1EWCC-PWP02-11840 |  |  |  |  | -149.88d | 0d | as late as possible |  | HS2 - 8h x 7d Workweek (No Holidays) | y | AWE2 |
|  | 13 | **AWE3 - Preliminary Floodplain Storage Design & Fluvial/Hydrological Modelling Work** |  |  | 2017-06-05 | 2017-07-25 |  |  |  |  |  |  |  |  |  |  |  |  |
| P1EWCC-PWP02-11970 |  | Development of Work Package Plan (WPP) |  | 20d | 2017-06-05 A | 2017-06-30 A | P1EWCC-PWP02-11960 | 100% |  |  |  |  |  |  |  |  | y | AWE3 |
| P1EWCC-PWP02-12370 |  | Urgent Works Gap Analysis Undertaken |  | 20d | 2017-06-05 A | 2017-06-30 A | P1EWCC-PWP02-11950 | 100% |  |  |  |  |  |  |  |  | y | AWE3 |
| P1EWCC-PWP02-11980 |  | Issue Work Package Plan (WPP) to PM for Acceptance | milestone | 0d | 2017-06-30 A | 2017-06-30 A | P1EWCC-PWP02-11970 | 100% |  |  |  |  |  |  |  |  | y | AWE3 |
| P1EWCC-PWP02-11990 |  | PM Acceptance Period for Work Package Plan (WPP) |  | 14d | 2017-07-01 A | 2017-07-25 A | P1EWCC-PWP02-11980 | 100% |  | 2017-07-01 | 2017-07-14 |  |  |  |  | HS2 - 8h x 7d Workweek (No Holidays) | y | AWE3 |
| P1EWCC-PWP02-12000 |  | PM Instruction to Commence Work Package Price | milestone | 0d | 2017-07-25 A | 2017-07-25 A | P1EWCC-PWP02-11990 | 100% |  | 2017-07-24 | 2017-07-24 |  |  |  |  | HS2 - 8h x 7d Workweek (No Holidays) | y | AWE3 |
|  | 14 | **AWE4 - Invasive Species surveys, Treatment & Control** |  |  | 2017-07-10 | 2017-10-06 |  |  |  |  |  |  |  |  |  |  |  |  |
| P1EWCC-PWP02-12120 |  | Development of Work Package Plan (WPP) |  | 20d | 2017-07-10 A | 2017-08-04 A | P1EWCC-PWP02-12110 | 100% |  |  |  |  |  |  |  |  | y | AWE4 |
| P1EWCC-PWP02-12130 |  | Issue Work Package Plan (WPP) to PM for Acceptance | milestone | 0d | 2017-08-04 A | 2017-08-04 A | P1EWCC-PWP02-12120 | 100% |  |  |  |  |  |  |  |  | y | AWE4 |
| P1EWCC-PWP02-12140 |  | PM Acceptance Period for Work Package Plan (WPP) |  | 14d | 2017-08-05 A | 2017-10-06 | P1EWCC-PWP02-12130 |  | 21d | 2017-08-05 | 2017-08-18 | 229d | 0d |  | 2017-10-06 | HS2 - 8h x 7d Workweek (No Holidays) | y | AWE4 |
| P1EWCC-PWP02-12150 |  | PM Instruction to Commence Work Package Price | milestone | 0d | 2017-10-06 | 2017-10-06 | P1EWCC-PWP02-12140 |  |  |  |  | 229d | 0d |  |  | HS2 - 8h x 7d Workweek (No Holidays) | y | AWE4 |

| ID | WBS | Activity | Type | Duration | Start | Finish | Predecessors | Complete | Remaining | Planned start | Planned finish | Total float | Free float | Expected finish | Calendar | HS2 Filter | Fusion - WPS |
| --- | --- | --- | --- | --- | --- | --- | --- | --- | --- | --- | --- | --- | --- | --- | --- | --- | --- |
|  | 15 | **AWE5 - Site Clearance** |  |  | 2017-10-13 | 2017-11-17 |  |  |  |  |  |  |  |  |  |  |  |
| P1EWCC-PWP02-12270 |  | Development of Work Package Plan (WPP) |  | 15d | 2017-10-13 | 2017-11-03 | P1EWCC-PWP02-12260 |  |  |  |  | -59.5d | 0d |  |  | y | AWE5 |
| P1EWCC-PWP02-12280 |  | Issue Work Package Plan (WPP) to PM for Acceptance | milestone | 0d | 2017-11-03 | 2017-11-03 | P1EWCC-PWP02-12270 |  |  |  |  | -59.5d | 0.12d |  |  | y | AWE5 |
| P1EWCC-PWP02-12290 |  | PM Acceptance Period for Work Package Plan (WPP) |  | 14d | 2017-11-04 | 2017-11-17 | P1EWCC-PWP02-12280 |  |  |  |  | -81.62d | 0d |  | HS2 - 8h x 7d Workweek (No Holidays) | y | AWE5 |
| P1EWCC-PWP02-12300 |  | PM Instruction to Commence Work Package Price | milestone | 0d | 2017-11-17 | 2017-11-17 | P1EWCC-PWP02-12290 |  |  |  |  | -81.62d | 0d |  | HS2 - 8h x 7d Workweek (No Holidays) | y | AWE5 |
|  | 7 | **AWE6 - Ground Remediation** |  |  | 2017-10-13 | 2017-11-17 |  |  |  |  |  |  |  |  |  |  |  |
| P1EWCC-PWP02-11670 |  | Development of Work Package Plan (WPP) |  | 15d | 2017-10-13 | 2017-11-03 | P1EWCC-PWP02-11660 |  |  |  |  | -117.75d | 0d |  |  | y | AWE6 |
| P1EWCC-PWP02-11680 |  | Issue Work Package Plan (WPP) to PM for Acceptance | milestone | 0d | 2017-11-03 | 2017-11-03 | P1EWCC-PWP02-11670 |  |  |  |  | -117.75d | 0.12d |  |  | y | AWE6 |
| P1EWCC-PWP02-11690 |  | PM Acceptance Period for Work Package Plan (WPP) |  | 14d | 2017-11-04 | 2017-11-17 | P1EWCC-PWP02-11680 |  |  |  |  | -163.88d | 0d |  | HS2 - 8h x 7d Workweek (No Holidays) | y | AWE6 |
| P1EWCC-PWP02-11700 |  | PM Instruction to Commence Work Package Price | milestone | 0d | 2017-11-17 | 2017-11-17 | P1EWCC-PWP02-11690 |  |  |  |  | -163.88d | 0d |  | HS2 - 8h x 7d Workweek (No Holidays) | y | AWE6 |
|  | 2 | **AWH - Area Wide HERDS** |  |  | 2017-08-04 | 2017-10-06 |  |  |  |  |  |  |  |  |  |  |  |
| P1EWCC-PWP05-150 |  | Development of Work Package Plan (WPP) |  | 35d | 2017-08-04 A | 2017-09-22 | P1EWCC-PWP05-140 | 86% | 4.88d | 2017-08-21 | 2017-10-06 | -168.88d | 0d | 2017-09-22 |  | y | AWH |
| P1EWCC-PWP05-160 |  | Issue Work Package Plan (WPP) to PM for Acceptance | milestone | 0d | 2017-09-22 | 2017-09-22 | P1EWCC-PWP05-150 |  |  |  |  | -168.88d | 0.12d |  |  | y | AWH |
| P1EWCC-PWP05-170 |  | PM Acceptance Period for Work Package Plan (WPP) |  | 14d | 2017-09-23 | 2017-10-06 | P1EWCC-PWP05-160 |  |  |  |  | -235d | 0d |  | HS2 - 8h x 7d Workweek (No Holidays) | y | AWH |
| P1EWCC-PWP05-180 |  | PM Instruction to Commence Work Package Price | milestone | 0d | 2017-10-06 | 2017-10-06 | P1EWCC-PWP05-170 |  |  |  |  | -235d | 0d |  | HS2 - 8h x 7d Workweek (No Holidays) | y | AWH |
|  | 18 | **Design & Construction Packages** |  |  | 2017-03-30 | 2018-07-04 |  |  |  |  |  |  |  |  |  |  |  |
|  | 2 | **DC1** |  |  | 2017-04-12 | 2018-05-01 |  |  |  |  |  |  |  |  |  |  |  |
|  | 3 | **DC1A - HOAC - Scheme Design** |  |  |  |  |  |  |  |  |  |  |  |  |  |  |  |
|  | 1 | **DC1B - TBM Power Supply - Scheme Design** |  |  | 2017-04-12 | 2017-08-04 |  |  |  |  |  |  |  |  |  |  |  |
| P1EWCC-PWP01-4070 |  | Development of Work Package Plan (WPP) |  | 27d | 2017-04-12 A | 2017-06-02 A | P1EWCC-PWP01-4060 | 100% |  | 2017-03-30 | 2017-05-05 |  |  |  |  | y | DC1B |
| P1EWCC-PWP01-4080 |  | Issue Work Package Plan (WPP) to PM for Acceptance | milestone | 0d | 2017-06-02 A | 2017-06-02 A | P1EWCC-PWP01-4070 | 100% |  |  |  |  |  |  |  | y | DC1B |
| P1EWCC-PWP01-4090 |  | PM Acceptance Period for Work Package Plan (WPP) |  | 14d | 2017-06-03 A | 2017-08-04 A | P1EWCC-PWP01-4080 | 100% |  | 2017-06-03 | 2017-06-16 |  |  |  | HS2 - 8h x 7d Workweek (No Holidays) | y | DC1B |
| P1EWCC-PWP01-4100 |  | PM Instruction to Commence Work Package | milestone | 0d | 2017-08-04 A | 2017-08-04 A | P1EWCC-PWP01-4090 | 100% |  | 2017-07-24 | 2017-07-24 |  |  |  | HS2 - 8h x 7d Workweek (No Holidays) | y | DC1B |
|  | 5 | **DC1D - Highway & Civil Works - Scheme Design** |  |  | 2017-07-11 | 2017-09-22 |  |  |  |  |  |  |  |  |  |  |  |
| P1EWCC-PWP01-6150 |  | Development of Work Package Plan (WPP) |  | 20d | 2017-07-11 A | 2017-08-07 A | P1EWCC-PWP01-6140 | 100% |  |  |  |  |  |  |  | y | DC1D |
| P1EWCC-PWP01-6280 |  | Issue Work Package Plan (WPP) to PM for Acceptance | milestone | 0d | 2017-08-07 A | 2017-08-07 A | P1EWCC-PWP01-6150 | 100% |  |  |  |  |  |  |  | y | DC1D |
| P1EWCC-PWP01-6290 |  | PM Acceptance Period for Work Package Plan (WPP) |  | 14d | 2017-08-08 A | 2017-09-22 | P1EWCC-PWP01-6280 | 50% | 7d | 2017-08-08 | 2017-08-21 | -38d | 0d | 2017-09-22 | HS2 - 8h x 7d Workweek (No Holidays) | y | DC1D |
| P1EWCC-PWP01-6300 |  | PM Instruction to Commence Work Package Price | milestone | 0d | 2017-09-22 | 2017-09-22 | P1EWCC-PWP01-6290 |  |  |  |  | -38d | 0d |  | HS2 - 8h x 7d Workweek (No Holidays) | y | DC1D |

| ID | WBS | Activity | Type | Duration | Start | Finish | Predecessors | Complete | Remaining | Planned start | Planned finish | Total float | Free float | Constraint | Expected finish | Calendar | HS2 Filter | Fusion - WPS |
| --- | --- | --- | --- | --- | --- | --- | --- | --- | --- | --- | --- | --- | --- | --- | --- | --- | --- | --- |
|  | 8 | **DC1E - Utilities - Scheme Design** |  |  | 2017-07-12 | 2017-10-06 |  |  |  |  |  |  |  |  |  |  |  |  |
| P1EWCC-PWP01-6720 |  | Development of Work Package Plan (WPP) |  | 20d | 2017-07-12 A | 2017-08-08 A | P1EWCC-PWP01-6710 | 100% |  |  |  |  |  |  |  |  | y | DC1E |
| P1EWCC-PWP01-6730 |  | Issue Work Package Plan (WPP) to PM for Acceptance | milestone | 0d | 2017-08-08 A | 2017-08-08 A | P1EWCC-PWP01-6720 | 100% |  |  |  |  |  |  |  |  | y | DC1E |
| P1EWCC-PWP01-6740 |  | PM Acceptance Period for Work Package Plan (WPP) |  | 14d | 2017-08-09 A | 2017-10-06 | P1EWCC-PWP01-6730 |  | 21d | 2017-08-09 | 2017-08-22 | -184d | 0d |  | 2017-10-06 | HS2 - 8h x 7d Workweek (No Holidays) | y | DC1E |
| P1EWCC-PWP01-6750 |  | PM Instruction to Commence Work Package Price | milestone | 0d | 2017-10-06 | 2017-10-06 | P1EWCC-PWP01-6740 |  |  |  |  | -184d | 0d |  |  | HS2 - 8h x 7d Workweek (No Holidays) | y | DC1E |
|  | 2 | **DC1F - HOAC - Detailed Design & Construction** |  |  |  |  |  |  |  |  |  |  |  |  |  |  |  |  |
|  | 6 | **DC1G - TBM Power Supply - Detailed Design & Construction** |  |  | 2017-08-14 | 2017-09-22 |  |  |  |  |  |  |  |  |  |  |  |  |
| P1EWCC-PWP01-10940 |  | Development of Work Package Plan (WPP) |  | 30d | 2017-08-14 A | 2017-09-08 A | P1EWCC-PWP01-10760, P1EWCC-PWP18-1000 FS-10d | 100% |  | 2017-07-25 | 2017-09-04 |  |  |  |  |  | y | DC1G |
| P1EWCC-PWP01-10950 |  | Issue Work Package Plan (WPP) to PM for Acceptance | milestone | 0d | 2017-09-08 A | 2017-09-08 A | P1EWCC-PWP01-10940 | 100% |  | 2017-09-18 | 2017-09-18 |  |  |  |  |  | y | DC1G |
| P1EWCC-PWP01-10960 |  | PM Acceptance Period for Work Package Plan (WPP) |  | 14d | 2017-09-09 A | 2017-09-22 | P1EWCC-PWP01-10950 | 50% | 7d | 2017-09-18 | 2017-10-01 | 2d | 0d |  | 2017-09-22 | HS2 - 8h x 7d Workweek (No Holidays) | y | DC1G |
| P1EWCC-PWP01-10970 |  | PM Instruction to Commence Work Package Price | milestone | 0d | 2017-09-22 | 2017-09-22 | P1EWCC-PWP01-10960 |  |  |  |  | 2d | 0d |  |  | HS2 - 8h x 7d Workweek (No Holidays) | y | DC1G |
|  | 9 | **DC1I - Highway & Civil Works - Detailed Design & Construction** |  |  | 2018-02-22 | 2018-04-04 |  |  |  |  |  |  |  |  |  |  |  |  |
| P1EWCC-PWP01-10900 |  | Development of Work Package Plan (WPP) |  | 20d | 2018-02-22 | 2018-03-21 | P1EWCC-PWP01-10710 |  |  |  |  | -28d | 0d | as late as possible |  |  | y | DC1I |
| P1EWCC-PWP01-10910 |  | Issue Work Package Plan (WPP) to PM for Acceptance | milestone | 0d | 2018-03-21 | 2018-03-21 | P1EWCC-PWP01-10900 |  |  |  |  | -28d | 0d | as late as possible |  |  | y | DC1I |
| P1EWCC-PWP01-10920 |  | PM Acceptance Period for Work Package Plan (WPP) |  | 14d | 2018-03-22 | 2018-04-04 | P1EWCC-PWP01-10910 |  |  |  |  | -38d | 0d | as late as possible |  | HS2 - 8h x 7d Workweek (No Holidays) | y | DC1I |
| P1EWCC-PWP01-10930 |  | PM Instruction to Commence Work Package Price | milestone | 0d | 2018-04-04 | 2018-04-04 | P1EWCC-PWP01-10920 |  |  |  |  | -38d | 0d | as late as possible |  | HS2 - 8h x 7d Workweek (No Holidays) | y | DC1I |
|  | 7 | **DC1J - Utilities - Detailed Design & Construction** |  |  | 2018-03-21 | 2018-05-01 |  |  |  |  |  |  |  |  |  |  |  |  |
| P1EWCC-PWP01-10980 |  | Development of Work Package Plan (WPP) |  | 20d | 2018-03-21 | 2018-04-17 | P1EWCC-PWP01-10810 |  |  |  |  | -132d | 0d | as late as possible |  |  | y | DC1J |
| P1EWCC-PWP01-10990 |  | Issue Work Package Plan (WPP) to PM for Acceptance | milestone | 0d | 2018-04-17 | 2018-04-17 | P1EWCC-PWP01-10980 |  |  |  |  | -132d | 0d | as late as possible |  |  | y | DC1J |
| P1EWCC-PWP01-11000 |  | PM Acceptance Period for Work Package Plan (WPP) |  | 14d | 2018-04-18 | 2018-05-01 | P1EWCC-PWP01-10990 |  |  |  |  | -184d | 0d | as late as possible |  | HS2 - 8h x 7d Workweek (No Holidays) | y | DC1J |
| P1EWCC-PWP01-11010 |  | PM Instruction to Commence Work Package Price | milestone | 0d | 2018-05-01 | 2018-05-01 | P1EWCC-PWP01-11000 |  |  |  |  | -184d | 0d | as late as possible |  | HS2 - 8h x 7d Workweek (No Holidays) | y | DC1J |
|  | 1 | **DC2** |  |  | 2017-03-30 | 2018-05-22 |  |  |  |  |  |  |  |  |  |  |  |  |
|  | 1 | **DC2A - Stoke Mandeville & Princes Risborough Scheme Design** |  |  | 2017-03-30 | 2017-05-03 |  |  |  |  |  |  |  |  |  |  |  |  |
| P1EWCC-PWP01-5130 |  | Development of Work Package Plan (WPP) |  | 15d | 2017-03-30 A | 2017-04-19 A | P1EWCC-PWP01-5270 | 100% |  | 2017-04-06 | 2017-04-26 |  |  |  |  |  | y | DC2A |
| P1EWCC-PWP01-5140 |  | Issue Work Package Plan (WPP) to PM for Acceptance | milestone | 0d | 2017-04-19 A | 2017-04-19 A | P1EWCC-PWP01-5130 | 100% |  | 2017-04-26 | 2017-04-26 |  |  |  |  |  | y | DC2A |
| P1EWCC-PWP01-5150 |  | PM Acceptance Period for Work Package Plan (WPP) |  | 14d | 2017-04-27 A | 2017-05-03 A | P1EWCC-PWP01-5140 | 100% |  | 2017-04-27 | 2017-05-10 |  |  |  |  | HS2 - 8h x 7d Workweek (No Holidays) | y | DC2A |
| P1EWCC-PWP01-5160 |  | PM Instruction to Commence Work Package Price | milestone | 0d | 2017-05-03 A | 2017-05-03 A | P1EWCC-PWP01-5150 | 100% |  | 2017-05-10 | 2017-05-10 |  |  |  |  | HS2 - 8h x 7d Workweek (No Holidays) | y | DC2A |

| ID | WBS | Activity | Type | Duration | Start | Finish | Predecessors | Complete | Planned start | Planned finish | Total float | Free float | Constraint | Calendar | HS2 Filter | Fusion - WPS |
| --- | --- | --- | --- | --- | --- | --- | --- | --- | --- | --- | --- | --- | --- | --- | --- | --- |
|  | 3 | **DC2B - Calvert Cutting Scheme Design** |  |  | 2017-06-13 | 2017-08-01 |  |  |  |  |  |  |  |  |  |  |
| P1EWCC-PWP01-7220 |  | Development of Work Package Plan (WPP) |  | 20d | 2017-06-13 A | 2017-07-10 A | P1EWCC-PWP01-7160 | 100% |  |  |  |  |  |  | y | DC2B |
| P1EWCC-PWP01-7230 |  | Issue Work Package Plan (WPP) to PM for Acceptance | milestone | 0d | 2017-07-19 A | 2017-07-19 A | P1EWCC-PWP01-7220 | 100% | 2017-07-10 | 2017-07-10 |  |  |  |  | y | DC2B |
| P1EWCC-PWP01-7240 |  | PM Acceptance Period for Work Package Plan (WPP) |  | 14d | 2017-07-20 A | 2017-08-01 A | P1EWCC-PWP01-7230 | 100% | 2017-07-11 | 2017-07-24 |  |  |  | HS2 - 8h x 7d Workweek (No Holidays) | y | DC2B |
| P1EWCC-PWP01-7250 |  | PM Instruction to Commence Work Package Price | milestone | 0d | 2017-08-01 A | 2017-08-01 A | P1EWCC-PWP01-7240 | 100% | 2017-09-01 | 2017-09-01 |  |  |  | HS2 - 8h x 7d Workweek (No Holidays) | y | DC2B |
|  | 5 | **DC2C - Highway & Civils Works - Scheme Design** |  |  | 2017-10-03 | 2017-11-07 |  |  |  |  |  |  |  |  |  |  |
| P1EWCC-PWP01-7470 |  | Development of Work Package Plan (WPP) |  | 15d | 2017-10-03 | 2017-10-24 | P1EWCC-PWP01-7460 |  |  |  | -157.12d | 0d |  |  | y | DC2C |
| P1EWCC-PWP01-7480 |  | Issue Work Package Plan (WPP) to PM for Acceptance | milestone | 0d | 2017-10-24 | 2017-10-24 | P1EWCC-PWP01-7470 |  |  |  | -157.12d | 0.12d |  |  | y | DC2C |
| P1EWCC-PWP01-7490 |  | PM Acceptance Period for Work Package Plan (WPP) |  | 14d | 2017-10-25 | 2017-11-07 | P1EWCC-PWP01-7480 |  |  |  | -221.12d | 0d |  | HS2 - 8h x 7d Workweek (No Holidays) | y | DC2C |
| P1EWCC-PWP01-7500 |  | PM Instruction to Commence Work Package Price | milestone | 0d | 2017-11-07 | 2017-11-07 | P1EWCC-PWP01-7490 |  |  |  | -221.12d | 0d |  | HS2 - 8h x 7d Workweek (No Holidays) | y | DC2C |
|  | 2 | **DC2D - Stoke Mandeville & Princes Risborough Detailed Design & Construction** |  |  |  |  |  |  |  |  |  |  |  |  |  |  |
|  | 4 | **DC2E - Calvert Cutting Detailed Design & Construction** |  |  | 2018-03-14 | 2018-04-17 |  |  |  |  |  |  |  |  |  |  |
| P1EWCC-PWP01-7260 |  | Development of Work Package Plan (WPP) |  | 15d | 2018-03-14 | 2018-04-03 | P1EWCC-PWP01-7210 |  |  |  | 50d | 0d | as late as possible |  | y | DC2E |
| P1EWCC-PWP01-7270 |  | Issue Work Package Plan (WPP) to PM for Acceptance | milestone | 0d | 2018-04-03 | 2018-04-03 | P1EWCC-PWP01-7260 |  |  |  | 50d | 0d | as late as possible |  | y | DC2E |
| P1EWCC-PWP01-7280 |  | PM Acceptance Period for Work Package Plan (WPP) |  | 14d | 2018-04-04 | 2018-04-17 | P1EWCC-PWP01-7270 |  |  |  | 70d | 0d | as late as possible | HS2 - 8h x 7d Workweek (No Holidays) | y | DC2E |
| P1EWCC-PWP01-7290 |  | PM Instruction to Commence Work Package Price | milestone | 0d | 2018-04-17 | 2018-04-17 | P1EWCC-PWP01-7280 |  |  |  | 70d | 0d | as late as possible | HS2 - 8h x 7d Workweek (No Holidays) | y | DC2E |
|  | 8 | **DC2F - Highways & Civils Detailed Design & Construction** |  |  | 2018-04-18 | 2018-05-22 |  |  |  |  |  |  |  |  |  |  |
| P1EWCC-PWP01-7920 |  | Development of Work Package Plan (WPP) |  | 15d | 2018-04-18 | 2018-05-08 | P1EWCC-PWP01-7910 |  |  |  | -157.25d | 0d | as late as possible |  | y | DC2F |
| P1EWCC-PWP01-7930 |  | Issue Work Package Plan (WPP) to PM for Acceptance | milestone | 0d | 2018-05-08 | 2018-05-08 | P1EWCC-PWP01-7920 |  |  |  | -157.25d | 0d | as late as possible |  | y | DC2F |
| P1EWCC-PWP01-7940 |  | PM Acceptance Period for Work Package Plan (WPP) |  | 14d | 2018-05-09 | 2018-05-22 | P1EWCC-PWP01-7930 |  |  |  | -221.12d | 0d | as late as possible | HS2 - 8h x 7d Workweek (No Holidays) | y | DC2F |
| P1EWCC-PWP01-7950 |  | PM Instruction to Commence Work Package Price | milestone | 0d | 2018-05-22 | 2018-05-22 | P1EWCC-PWP01-7940 |  |  |  | -221.12d | 0d | as late as possible | HS2 - 8h x 7d Workweek (No Holidays) | y | DC2F |
|  | 6 | **DC2G - A413 Roundabouts & Haul Road** |  |  | 2017-09-19 | 2018-02-28 |  |  |  |  |  |  |  |  |  |  |
| P1EWCC-PWP01-11590 |  | Development of Work Package Plan (WPP) inc Scheme Design (scenario 2) |  | 106d | 2017-09-19 | 2018-02-14 | P1EWCC-PWP01-11580 |  |  |  | 25.12d | 0d |  |  | y | DC2G |
| P1EWCC-PWP01-11600 |  | Issue Work Package Plan (WPP) to PM for Acceptance | milestone | 0d | 2018-02-14 | 2018-02-14 | P1EWCC-PWP01-11590 |  |  |  | 25.12d | 0.12d |  |  | y | DC2G |
| P1EWCC-PWP01-11610 |  | PM Acceptance Period for Work Package Plan (WPP) |  | 14d | 2018-02-15 | 2018-02-28 | P1EWCC-PWP01-11600 |  |  |  | 35d | 0d |  | HS2 - 8h x 7d Workweek (No Holidays) | y | DC2G |
| P1EWCC-PWP01-11620 |  | PM Instruction to Commence Work Package Price | milestone | 0d | 2018-02-28 | 2018-02-28 | P1EWCC-PWP01-11610 |  |  |  | 35d | 0d |  | HS2 - 8h x 7d Workweek (No Holidays) | y | DC2G |

| ID | WBS | Activity | Type | Duration | Start | Finish | Predecessors | Complete | Planned start | Planned finish | Total float | Free float | Calendar | HS2 Filter | Fusion - WPS |
| --- | --- | --- | --- | --- | --- | --- | --- | --- | --- | --- | --- | --- | --- | --- | --- |
|  | 3 | **DC3** |  |  | 2017-05-23 | 2018-07-04 |  |  |  |  |  |  |  |  |  |
|  | 2 | **DC3A - Chipping Warden, A361 Junction, Wardington A361 Safety Works & Sulgrave Junction - S. Design** |  |  | 2017-05-23 | 2017-07-17 |  |  |  |  |  |  |  |  |  |
| P1EWCC-PWP01-6020 |  | Development of Work Package Plan (WPP) |  | 12.12d | 2017-05-23 A | 2017-06-07 A | P1EWCC-PWP01-5920 | 100% | 2017-05-23 | 2017-06-08 |  |  |  | y | DC3A |
| P1EWCC-PWP01-6030 |  | Issue Work Package Plan (WPP) to PM for Acceptance | milestone | 0d | 2017-06-07 A | 2017-06-07 A | P1EWCC-PWP01-6020 | 100% |  |  |  |  |  | y | DC3A |
| P1EWCC-PWP01-6040 |  | PM Acceptance Period for Work Package Plan (WPP) |  | 14d | 2017-06-08 A | 2017-07-17 A | P1EWCC-PWP01-6030 | 100% | 2017-06-08 | 2017-06-21 |  |  | HS2 - 8h x 7d Workweek (No Holidays) | y | DC3A |
| P1EWCC-PWP01-6050 |  | PM Instruction to Commence Work Package Price | milestone | 0d | 2017-07-17 A | 2017-07-17 A | P1EWCC-PWP01-6040 | 100% | 2017-07-31 | 2017-07-31 |  |  | HS2 - 8h x 7d Workweek (No Holidays) | y | DC3A |
|  | 4 | **DC3B - Wills Pastures Road & Junction - Scheme Design** |  |  | 2017-05-23 | 2017-07-17 |  |  |  |  |  |  |  |  |  |
| P1EWCC-PWP01-6060 |  | Development of Work Package Plan (WPP) |  | 11d | 2017-05-23 A | 2017-06-06 A | P1EWCC-PWP01-5970 | 100% |  |  |  |  |  | y | DC3B |
| P1EWCC-PWP01-6070 |  | Issue Work Package Plan (WPP) to PM for Acceptance | milestone | 0d | 2017-06-06 A | 2017-06-06 A | P1EWCC-PWP01-6060 | 100% |  |  |  |  |  | y | DC3B |
| P1EWCC-PWP01-6080 |  | PM Acceptance Period for Work Package Plan (WPP) |  | 14d | 2017-06-07 A | 2017-07-17 A | P1EWCC-PWP01-6070 | 100% | 2017-06-07 | 2017-06-20 |  |  | HS2 - 8h x 7d Workweek (No Holidays) | y | DC3B |
| P1EWCC-PWP01-6090 |  | PM Instruction to Commence Work Package Price | milestone | 0d | 2017-07-17 A | 2017-07-17 A | P1EWCC-PWP01-6080 | 100% | 2017-07-31 | 2017-07-31 |  |  | HS2 - 8h x 7d Workweek (No Holidays) | y | DC3B |
|  | 1 | **DC3C - M40 J11 - Scheme Design** |  |  | 2017-05-23 | 2017-07-17 |  |  |  |  |  |  |  |  |  |
| P1EWCC-PWP01-8520 |  | Development of Work Package Plan (WPP) |  | 14d | 2017-05-23 A | 2017-06-09 A | P1EWCC-PWP01-8510 | 100% |  |  |  |  |  | y | DC3C |
| P1EWCC-PWP01-8530 |  | Issue Work Package Plan (WPP) to PM for Acceptance | milestone | 0d | 2017-06-09 A | 2017-06-09 A | P1EWCC-PWP01-8520 | 100% |  |  |  |  |  | y | DC3C |
| P1EWCC-PWP01-8540 |  | PM Acceptance Period for Work Package Plan (WPP) |  | 14d | 2017-06-10 A | 2017-07-17 A | P1EWCC-PWP01-8530 | 100% | 2017-06-10 | 2017-06-23 |  |  | HS2 - 8h x 7d Workweek (No Holidays) | y | DC3C |
| P1EWCC-PWP01-8550 |  | PM Instruction to Commence Work Package Price | milestone | 0d | 2017-07-17 A | 2017-07-17 A | P1EWCC-PWP01-8540 | 100% | 2017-07-31 | 2017-07-31 |  |  | HS2 - 8h x 7d Workweek (No Holidays) | y | DC3C |
|  | 10 | **DC3D - Utilities - Scheme Design** |  |  | 2017-10-13 | 2017-11-17 |  |  |  |  |  |  |  |  |  |
| P1EWCC-PWP01-9570 |  | Development of Work Package Plan (WPP) |  | 15d | 2017-10-13 | 2017-11-03 | P1EWCC-PWP01-9560 |  |  |  | -131.88d | 0d |  | y | DC3D |
| P1EWCC-PWP01-9580 |  | Issue Work Package Plan (WPP) to PM for Acceptance | milestone | 0d | 2017-11-03 | 2017-11-03 | P1EWCC-PWP01-9570 |  |  |  | -131.88d | 0.12d |  | y | DC3D |
| P1EWCC-PWP01-9590 |  | PM Acceptance Period for Work Package Plan (WPP) |  | 14d | 2017-11-04 | 2017-11-17 | P1EWCC-PWP01-9580 |  |  |  | -184d | 0d | HS2 - 8h x 7d Workweek (No Holidays) | y | DC3D |
| P1EWCC-PWP01-9600 |  | PM Instruction to Commence Work Package Price | milestone | 0d | 2017-11-17 | 2017-11-17 | P1EWCC-PWP01-9590 |  |  |  | -184d | 0d | HS2 - 8h x 7d Workweek (No Holidays) | y | DC3D |
|  | 12 | **DC3E - Turweston Haul - Scheme Design** |  |  | 2017-10-13 | 2017-11-17 |  |  |  |  |  |  |  |  |  |
| P1EWCC-PWP01-9870 |  | Development of Work Package Plan (WPP) |  | 15d | 2017-10-13 | 2017-11-03 | P1EWCC-PWP01-9860 |  |  |  | -58.38d | 0d |  | y | DC3E |
| P1EWCC-PWP01-9880 |  | Issue Work Package Plan (WPP) to PM for Acceptance | milestone | 0d | 2017-11-03 | 2017-11-03 | P1EWCC-PWP01-9870 |  |  |  | -58.38d | 0.12d |  | y | DC3E |
| P1EWCC-PWP01-9890 |  | PM Acceptance Period for Work Package Plan (WPP) |  | 14d | 2017-11-04 | 2017-11-17 | P1EWCC-PWP01-9880 |  |  |  | -80.38d | 0d | HS2 - 8h x 7d Workweek (No Holidays) | y | DC3E |
| P1EWCC-PWP01-9900 |  | PM Instruction to Commence Work Package Price | milestone | 0d | 2017-11-17 | 2017-11-17 | P1EWCC-PWP01-9890 |  |  |  | -80.38d | 0d | HS2 - 8h x 7d Workweek (No Holidays) | y | DC3E |

| ID | WBS | Activity | Type | Duration | Start | Finish | Predecessors | Total float | Free float | Constraint | Calendar | HS2 Filter | Fusion - WPS |
| --- | --- | --- | --- | --- | --- | --- | --- | --- | --- | --- | --- | --- | --- |
|  | 3 | **DC3F - Chipping Warden, A361 Junction, Wardington A361 Safety Works & Sulgrave Junction - DD & Con** |  |  | 2017-12-18 | 2018-01-19 |  |  |  |  |  |  |  |
| P1EWCC-PWP01-8670 |  | Development of Work Package Plan (WPP) |  | 15d | 2017-12-18 | 2018-01-05 | P1EWCC-PWP01-8660 | -52d | 0d | as late as possible |  | y | DC3F |
| P1EWCC-PWP01-8680 |  | Issue Work Package Plan (WPP) to PM for Acceptance | milestone | 0d | 2018-01-05 | 2018-01-05 | P1EWCC-PWP01-8670 | -52d | 0d | as late as possible |  | y | DC3F |
| P1EWCC-PWP01-8690 |  | PM Acceptance Period for Work Package Plan (WPP) |  | 14d | 2018-01-06 | 2018-01-19 | P1EWCC-PWP01-8680 | -72d | 0d | as late as possible | HS2 - 8h x 7d Workweek (No Holidays) | y | DC3F |
| P1EWCC-PWP01-8700 |  | PM Instruction to Commence Work Package Price | milestone | 0d | 2018-01-19 | 2018-01-19 | P1EWCC-PWP01-8690 | -72d | 0d | as late as possible | HS2 - 8h x 7d Workweek (No Holidays) | y | DC3F |
|  | 5 | **DC3G - Wills Pastures Road & Junction - DD & Con** |  |  | 2018-01-05 | 2018-02-08 |  |  |  |  |  |  |  |
| P1EWCC-PWP01-8820 |  | Development of Work Package Plan (WPP) |  | 15d | 2018-01-05 | 2018-01-25 | P1EWCC-PWP01-8810 | 32d | 0d | as late as possible |  | y | DC3G |
| P1EWCC-PWP01-8830 |  | Issue Work Package Plan (WPP) to PM for Acceptance | milestone | 0d | 2018-01-25 | 2018-01-25 | P1EWCC-PWP01-8820 | 32d | 0d | as late as possible |  | y | DC3G |
| P1EWCC-PWP01-8840 |  | PM Acceptance Period for Work Package Plan (WPP) |  | 14d | 2018-01-26 | 2018-02-08 | P1EWCC-PWP01-8830 | 46d | 0d | as late as possible | HS2 - 8h x 7d Workweek (No Holidays) | y | DC3G |
| P1EWCC-PWP01-8850 |  | PM Instruction to Commence Work Package Price | milestone | 0d | 2018-02-08 | 2018-02-08 | P1EWCC-PWP01-8840 | 46d | 0d | as late as possible | HS2 - 8h x 7d Workweek (No Holidays) | y | DC3G |
|  | 6 | **DC3H- M40 J11 - DD & Con** |  |  | 2017-12-21 | 2018-01-24 |  |  |  |  |  |  |  |
| P1EWCC-PWP01-8970 |  | Development of Work Package Plan (WPP) |  | 15d | 2017-12-21 | 2018-01-10 | P1EWCC-PWP01-8960 | 84d | 0d | as late as possible |  | y | DC3H |
| P1EWCC-PWP01-8980 |  | Issue Work Package Plan (WPP) to PM for Acceptance | milestone | 0d | 2018-01-10 | 2018-01-10 | P1EWCC-PWP01-8970 | 84d | 0d | as late as possible |  | y | DC3H |
| P1EWCC-PWP01-8990 |  | PM Acceptance Period for Work Package Plan (WPP) |  | 14d | 2018-01-11 | 2018-01-24 | P1EWCC-PWP01-8980 | 118d | 0d | as late as possible | HS2 - 8h x 7d Workweek (No Holidays) | y | DC3H |
| P1EWCC-PWP01-9000 |  | PM Instruction to Commence Work Package Price | milestone | 0d | 2018-01-24 | 2018-01-24 | P1EWCC-PWP01-8990 | 118d | 0d | as late as possible | HS2 - 8h x 7d Workweek (No Holidays) | y | DC3H |
|  | 9 | **DC3I - Utilities - DD & Con** |  |  | 2018-05-31 | 2018-07-04 |  |  |  |  |  |  |  |
| P1EWCC-PWP01-9420 |  | Development of Work Package Plan (WPP) |  | 15d | 2018-05-31 | 2018-06-20 | P1EWCC-PWP01-9410 | -132d | 0d | as late as possible |  | y | DC3I |
| P1EWCC-PWP01-9430 |  | Issue Work Package Plan (WPP) to PM for Acceptance | milestone | 0d | 2018-06-20 | 2018-06-20 | P1EWCC-PWP01-9420 | -132d | 0d | as late as possible |  | y | DC3I |
| P1EWCC-PWP01-9440 |  | PM Acceptance Period for Work Package Plan (WPP) |  | 14d | 2018-06-21 | 2018-07-04 | P1EWCC-PWP01-9430 | -184d | 0d | as late as possible | HS2 - 8h x 7d Workweek (No Holidays) | y | DC3I |
| P1EWCC-PWP01-9450 |  | PM Instruction to Commence Work Package Price | milestone | 0d | 2018-07-04 | 2018-07-04 | P1EWCC-PWP01-9440 | -184d | 0d | as late as possible | HS2 - 8h x 7d Workweek (No Holidays) | y | DC3I |
|  | 7 | **DC3J - Turweston Haul Road - DD & Con** |  |  | 2018-05-31 | 2018-07-04 |  |  |  |  |  |  |  |
| P1EWCC-PWP01-11490 |  | Development of Work Package Plan (WPP) |  | 15d | 2018-05-31 | 2018-06-20 | P1EWCC-PWP01-11480 | -58.38d | 0d | as late as possible |  | y | DC3J |
| P1EWCC-PWP01-11500 |  | Issue Work Package Plan (WPP) to PM for Acceptance | milestone | 0d | 2018-06-20 | 2018-06-20 | P1EWCC-PWP01-11490 | -58.38d | 0d | as late as possible |  | y | DC3J |
| P1EWCC-PWP01-11510 |  | PM Acceptance Period for Work Package Plan (WPP) |  | 14d | 2018-06-21 | 2018-07-04 | P1EWCC-PWP01-11500 | -82.25d | 0d | as late as possible | HS2 - 8h x 7d Workweek (No Holidays) | y | DC3J |
| P1EWCC-PWP01-11520 |  | PM Instruction to Commence Work Package Price | milestone | 0d | 2018-07-04 | 2018-07-04 | P1EWCC-PWP01-11510 | -82.25d | 0d | as late as possible | HS2 - 8h x 7d Workweek (No Holidays) | y | DC3J |

| ID | WBS | Activity | Type | Duration | Start | Finish | Predecessors | Complete | Planned start | Planned finish | Total float | Free float | Calendar | HS2 Filter | Fusion - WPS | VIEW Y/N |
| --- | --- | --- | --- | --- | --- | --- | --- | --- | --- | --- | --- | --- | --- | --- | --- | --- |
|  | 11 | **DC3K - Demolition Works** |  |  | 2017-12-29 | 2018-02-02 |  |  |  |  |  |  |  |  |  |  |
| P1EWCC-PWP01-9720 |  | Development of Work Package Plan (WPP) |  | 15d | 2017-12-29 | 2018-01-19 | P1EWCC-PWP01-9710, P1EWCC-PWP01-11480 |  |  |  | 0.38d | 0d |  | y | DC3K |  |
| P1EWCC-PWP01-9730 |  | Issue Work Package Plan (WPP) to PM for Acceptance | milestone | 0d | 2018-01-19 | 2018-01-19 | P1EWCC-PWP01-9720 |  |  |  | 0.38d | 0.12d |  | y | DC3K |  |
| P1EWCC-PWP01-9740 |  | PM Acceptance Period for Work Package Plan (WPP) |  | 14d | 2018-01-20 | 2018-02-02 | P1EWCC-PWP01-9730 |  |  |  | 2.25d | 0d | HS2 - 8h x 7d Workweek (No Holidays) | y | DC3K |  |
| P1EWCC-PWP01-9750 |  | PM Instruction to Commence Work Package Price | milestone | 0d | 2018-02-02 | 2018-02-02 | P1EWCC-PWP01-9740 |  |  |  | 2.25d | 0d | HS2 - 8h x 7d Workweek (No Holidays) | y | DC3K |  |
|  | 5 | **WORK PACKAGE PRICE (WPC)** |  |  | 2017-02-21 | 2018-11-29 |  |  |  |  |  |  |  |  |  |  |
|  | 39 | **Area Wide Packages** |  |  | 2017-02-21 | 2018-11-29 |  |  |  |  |  |  |  |  |  |  |
|  | 3 | **AW1 - Area Wide Surpport Team** |  |  | 2017-06-13 | 2017-09-22 |  |  |  |  |  |  |  |  |  |  |
| P1EWCC-PWP01-4910 |  | Development of Work Package Price (WPC) |  | 40d | 2017-06-13 A | 2017-06-21 A | P1EWCC-PWP01-4270 | 100% | 2017-07-05 | 2017-08-29 |  |  |  | y | AW1 |  |
| P1EWCC-PWP01-5080 |  | Issue Work Package Price (WPC) to PM for Acceptance | milestone | 0d | 2017-06-21 A | 2017-06-21 A | P1EWCC-PWP01-4910, P1EWCC-PWP01-5120 | 100% | 2017-08-29 | 2017-08-29 |  |  |  | y | AW1 |  |
| P1EWCC-PWP01-5090 |  | PM Acceptance Period for Work Package Price (WPC) |  | 14d | 2017-06-22 A | 2017-09-15 A | P1EWCC-PWP01-5080 | 100% | 2017-08-30 | 2017-09-12 |  |  | HS2 - 8h x 7d Workweek (No Holidays) | y | AW1 |  |
| P1EWCC-PWP01-5100 |  | PM Instruction to Commence Work Package | milestone | 0d | 2017-09-15 A | 2017-09-15 A | P1EWCC-PWP01-5090, P1EWCC-PWP01-4630 | 100% | 2017-09-16 | 2017-09-16 |  |  | HS2 - 8h x 7d Workweek (No Holidays) | y | AW1 | Y |
| P1EWCC-PWP01-5110 |  | Procurement/Mobilisation Period |  | 5d | 2017-09-18 | 2017-09-22 | P1EWCC-PWP01-5100 |  |  |  | 79d | 38d |  | y | AW1 |  |
|  | 21 | **WORK PACKAGE PERFORMANCE MEASUREMENT BASELINE (WPPMB)** |  |  | 2017-06-13 | 2017-06-20 |  |  |  |  |  |  |  |  |  |  |
| P1EWCC-PWP01-5120 |  | Development of Work Package Performance Measurement Baseline (WPPMB) |  | 40d | 2017-06-13 A | 2017-06-20 A | P1EWCC-PWP01-4910 SS | 100% | 2017-06-26 | 2017-08-18 |  |  |  | y | AW1 |  |
|  | 4 | **AW2 - Information Technology & Digital Integration** |  |  | 2017-10-20 | 2018-01-05 |  |  |  |  |  |  |  |  |  |  |
| P1EWCC-PWP01-5430 |  | Development of Work Package Price (WPC) |  | 40d | 2017-10-20 | 2017-12-15 | P1EWCC-PWP01-4700 |  |  |  | 1310.12d | 0d |  | y | AW2 |  |
| P1EWCC-PWP01-5440 |  | Issue Work Package Price (WPC) to PM for Acceptance | milestone | 0d | 2017-12-15 | 2017-12-15 | P1EWCC-PWP01-5430, P1EWCC-PWP01-5480 |  |  |  | 1310.12d | 0.12d |  | y | AW2 |  |
| P1EWCC-PWP01-5450 |  | PM Acceptance Period for Work Package Price (WPC) |  | 14d | 2017-12-16 | 2017-12-29 | P1EWCC-PWP01-5440 |  |  |  | 1836d | 0d | HS2 - 8h x 7d Workweek (No Holidays) | y | AW2 |  |
| P1EWCC-PWP01-5460 |  | PM Instruction to Commence Work Package | milestone | 0d | 2017-12-29 | 2017-12-29 | P1EWCC-PWP01-5450 |  |  |  | 1836d | 0d | HS2 - 8h x 7d Workweek (No Holidays) | y | AW2 | Y |
| P1EWCC-PWP01-5470 |  | Procurement/Mobilisation Period |  | 5d | 2017-12-29 | 2018-01-05 | P1EWCC-PWP01-5460 |  |  |  | 1310.12d |  |  | y | AW2 |  |
|  | 21 | **WORK PACKAGE PERFORMANCE MEASUREMENT BASELINE (WPPMB)** |  |  | 2017-10-20 | 2017-12-15 |  |  |  |  |  |  |  |  |  |  |
| P1EWCC-PWP01-5480 |  | Development of Work Package Performance Measurement Baseline (WPPMB) |  | 40d | 2017-10-20 | 2017-12-15 | P1EWCC-PWP01-5430 SS |  |  |  | 1310.12d | 0d |  | y | AW2 |  |
|  | 9 | **AW3.A - #beHighSpeed Onboarding Programme** |  |  | 2017-11-17 | 2018-02-02 |  |  |  |  |  |  |  |  |  |  |
| P1EWCC-PWP01-10330 |  | Development of Work Package Price (WPC) |  | 40d | 2017-11-17 | 2018-01-12 | P1EWCC-PWP01-10200 |  |  |  | 1290.12d | 0d |  | y |  |  |
| P1EWCC-PWP01-10340 |  | Issue Work Package Price (WPC) to PM for Acceptance | milestone | 0d | 2018-01-12 | 2018-01-12 | P1EWCC-PWP01-10370, P1EWCC-PWP01-10330 |  |  |  | 1290.12d | 0.12d |  | y |  |  |
| P1EWCC-PWP01-10350 |  | PM Acceptance Period for Work Package Price (WPC) |  | 14d | 2018-01-13 | 2018-01-26 | P1EWCC-PWP01-10340 |  |  |  | 1808d | 0d | HS2 - 8h x 7d Workweek (No Holidays) | y |  |  |
| P1EWCC-PWP01-10360 |  | PM Instruction to Commence Work Package | milestone | 0d | 2018-01-26 | 2018-01-26 | P1EWCC-PWP01-10350 |  |  |  | 1808d | 0d | HS2 - 8h x 7d Workweek (No Holidays) | y |  | Y |
| P1EWCC-PWP01-10380 |  | Procurement/Mobilisation Period |  | 5d | 2018-01-26 | 2018-02-02 | P1EWCC-PWP01-10360 |  |  |  | 1290.12d |  |  | y |  |  |

| ID | WBS | Activity | Type | Duration | Start | Finish | Predecessors | Total float | Free float | Calendar | HS2 Filter | VIEW Y/N |
| --- | --- | --- | --- | --- | --- | --- | --- | --- | --- | --- | --- | --- |
|  | 21 | **WORK PACKAGE PERFORMANCE MEASUREMENT BASELINE (WPPMB)** |  |  | 2017-11-17 | 2018-01-12 |  |  |  |  |  |  |
| P1EWCC-PWP01-10370 |  | Development of Work Package Performance Measurement Baseline (WPPMB) |  | 40d | 2017-11-17 | 2018-01-12 | P1EWCC-PWP01-10330 SS | 1290.12d | 0d |  | y |  |
|  | 10 | **AW3.B - Transformational Hub** |  |  | 2017-11-17 | 2018-02-02 |  |  |  |  |  |  |
| P1EWCC-PWP01-10390 |  | Development of Work Package Price (WPC) |  | 40d | 2017-11-17 | 2018-01-12 | P1EWCC-PWP01-10240 | 1290.12d | 0d |  | y |  |
| P1EWCC-PWP01-10400 |  | Issue Work Package Price (WPC) to PM for Acceptance | milestone | 0d | 2018-01-12 | 2018-01-12 | P1EWCC-PWP01-10430, P1EWCC-PWP01-10390 | 1290.12d | 0.12d |  | y |  |
| P1EWCC-PWP01-10410 |  | PM Acceptance Period for Work Package Price (WPC) |  | 14d | 2018-01-13 | 2018-01-26 | P1EWCC-PWP01-10400 | 1808d | 0d | HS2 - 8h x 7d Workweek (No Holidays) | y |  |
| P1EWCC-PWP01-10420 |  | PM Instruction to Commence Work Package | milestone | 0d | 2018-01-26 | 2018-01-26 | P1EWCC-PWP01-10410 | 1808d | 0d | HS2 - 8h x 7d Workweek (No Holidays) | y | Y |
| P1EWCC-PWP01-10440 |  | Procurement/Mobilisation Period |  | 5d | 2018-01-26 | 2018-02-02 | P1EWCC-PWP01-10420 | 1290.12d |  |  | y |  |
|  | 21 | **WORK PACKAGE PERFORMANCE MEASUREMENT BASELINE (WPPMB)** |  |  | 2017-11-17 | 2018-01-12 |  |  |  |  |  |  |
| P1EWCC-PWP01-10430 |  | Development of Work Package Performance Measurement Baseline (WPPMB) |  | 40d | 2017-11-17 | 2018-01-12 | P1EWCC-PWP01-10390 SS | 1290.12d | 0d |  | y |  |
|  | 11 | **AW3.C - LIFE Programme** |  |  | 2017-11-17 | 2018-02-02 |  |  |  |  |  |  |
| P1EWCC-PWP01-10450 |  | Development of Work Package Price (WPC) |  | 40d | 2017-11-17 | 2018-01-12 | P1EWCC-PWP01-10280 | 1290.12d | 0d |  | y |  |
| P1EWCC-PWP01-10460 |  | Issue Work Package Price (WPC) to PM for Acceptance | milestone | 0d | 2018-01-12 | 2018-01-12 | P1EWCC-PWP01-10490, P1EWCC-PWP01-10450 | 1290.12d | 0.12d |  | y |  |
| P1EWCC-PWP01-10470 |  | PM Acceptance Period for Work Package Price (WPC) |  | 14d | 2018-01-13 | 2018-01-26 | P1EWCC-PWP01-10460 | 1808d | 0d | HS2 - 8h x 7d Workweek (No Holidays) | y |  |
| P1EWCC-PWP01-10480 |  | PM Instruction to Commence Work Package | milestone | 0d | 2018-01-26 | 2018-01-26 | P1EWCC-PWP01-10470 | 1808d | 0d | HS2 - 8h x 7d Workweek (No Holidays) | y | Y |
| P1EWCC-PWP01-10500 |  | Procurement/Mobilisation Period |  | 5d | 2018-01-26 | 2018-02-02 | P1EWCC-PWP01-10480 | 1290.12d |  |  | y |  |
|  | 21 | **WORK PACKAGE PERFORMANCE MEASUREMENT BASELINE (WPPMB)** |  |  | 2017-11-17 | 2018-01-12 |  |  |  |  |  |  |
| P1EWCC-PWP01-10490 |  | Development of Work Package Performance Measurement Baseline (WPPMB) |  | 40d | 2017-11-17 | 2018-01-12 | P1EWCC-PWP01-10450 SS | 1290.12d | 0d |  | y |  |
|  | 12 | **AW3.D - Collaborative Mobilisation Team** |  |  | 2017-11-17 | 2018-02-02 |  |  |  |  |  |  |
| P1EWCC-PWP01-10510 |  | Development of Work Package Price (WPC) |  | 40d | 2017-11-17 | 2018-01-12 | P1EWCC-PWP01-10320 | 1290.12d | 0d |  | y |  |
| P1EWCC-PWP01-10520 |  | Issue Work Package Price (WPC) to PM for Acceptance | milestone | 0d | 2018-01-12 | 2018-01-12 | P1EWCC-PWP01-10510, P1EWCC-PWP01-10550 | 1290.12d | 0.12d |  | y |  |
| P1EWCC-PWP01-10530 |  | PM Acceptance Period for Work Package Price (WPC) |  | 14d | 2018-01-13 | 2018-01-26 | P1EWCC-PWP01-10520 | 1808d | 0d | HS2 - 8h x 7d Workweek (No Holidays) | y |  |
| P1EWCC-PWP01-10540 |  | PM Instruction to Commence Work Package | milestone | 0d | 2018-01-26 | 2018-01-26 | P1EWCC-PWP01-10530 | 1808d | 0d | HS2 - 8h x 7d Workweek (No Holidays) | y | Y |
| P1EWCC-PWP01-10560 |  | Procurement/Mobilisation Period |  | 5d | 2018-01-26 | 2018-02-02 | P1EWCC-PWP01-10540 | 1290.12d |  |  | y |  |

| ID | WBS | Activity | Type | Duration | Start | Finish | Predecessors | Complete | Remaining | Planned start | Planned finish | Total float | Free float | Expected finish | Calendar | HS2 Filter | Fusion - WPS | VIEW Y/N |
| --- | --- | --- | --- | --- | --- | --- | --- | --- | --- | --- | --- | --- | --- | --- | --- | --- | --- | --- |
|  | 21 | **WORK PACKAGE PERFORMANCE MEASUREMENT BASELINE (WPPMB)** |  |  | 2017-11-17 | 2018-01-12 |  |  |  |  |  |  |  |  |  |  |  |  |
| P1EWCC-PWP01-10550 |  | Development of Work Package Performance Measurement Baseline (WPPMB) |  | 40d | 2017-11-17 | 2018-01-12 | P1EWCC-PWP01-10510 SS |  |  |  |  | 1290.12d | 0d |  |  | y |  |  |
|  | 7 | **AW4 - Accomodation** |  |  | 2017-02-21 | 2017-06-20 |  |  |  |  |  |  |  |  |  |  |  |  |
| P1EWCC-PWP01-5550 |  | Development of Work Package Price (WPC) |  | 40d | 2017-02-21 A | 2017-05-15 A |  | 100% |  | 2017-05-30 | 2017-07-24 |  |  |  |  | y | AW4 |  |
| P1EWCC-PWP01-5560 |  | Issue Work Package Price (WPC) to PM for Acceptance | milestone | 0d | 2017-05-15 A | 2017-05-15 A | P1EWCC-PWP01-5600, P1EWCC-PWP01-5550 | 100% |  | 2017-07-24 | 2017-07-24 |  |  |  |  | y | AW4 |  |
| P1EWCC-PWP01-5570 |  | PM Acceptance Period for Work Package Price (WPC) |  | 14d | 2017-05-16 A | 2017-06-20 A |  | 100% |  | 2017-05-20 | 2017-06-02 |  |  |  | HS2 - 8h x 7d Workweek (No Holidays) | y | AW4 |  |
| P1EWCC-PWP01-5580 |  | PM Instruction to Commence Work Package | milestone | 0d | 2017-06-20 A | 2017-06-20 A | P1EWCC-PWP01-5570 | 100% |  | 2017-06-26 | 2017-06-26 |  |  |  | HS2 - 8h x 7d Workweek (No Holidays) | y | AW4 | Y |
|  | 21 | **WORK PACKAGE PERFORMANCE MEASUREMENT BASELINE (WPPMB)** |  |  | 2017-02-21 | 2017-05-15 |  |  |  |  |  |  |  |  |  |  |  |  |
| P1EWCC-PWP01-5600 |  | Development of Work Package Performance Measurement Baseline (WPPMB) |  | 40d | 2017-02-21 A | 2017-05-15 A | P1EWCC-PWP01-5550 SS | 100% |  | 2017-06-26 | 2017-08-18 |  |  |  |  | y | AW4 |  |
|  | 1 | **AWS - Area Wide Surveys** |  |  | 2017-09-22 | 2017-12-15 |  |  |  |  |  |  |  |  |  |  |  |  |
| P1EWCC-PWP01-190 |  | Development of Work Package Price (WPC) |  | 40d | 2017-09-22 | 2017-11-17 | P1EWCC-PWP01-180 |  |  |  |  | -174.88d | 0d |  |  | y | AWS |  |
| P1EWCC-PWP01-210 |  | Issue Work Package Price (WPC) to PM for Acceptance | milestone | 0d | 2017-11-17 | 2017-11-17 | P1EWCC-PWP01-190, P1EWCC-PWP01-200 |  |  |  |  | -174.88d | 0.12d |  |  | y | AWS |  |
| P1EWCC-PWP01-220 |  | PM Acceptance Period for Work Package Price (WPC) |  | 14d | 2017-11-18 | 2017-12-01 | P1EWCC-PWP01-210 |  |  |  |  | -243d | 0d |  | HS2 - 8h x 7d Workweek (No Holidays) | y | AWS |  |
| P1EWCC-PWP01-230 |  | PM Instruction to Commence Work Package | milestone | 0d | 2017-12-01 | 2017-12-01 | P1EWCC-PWP01-220 |  |  |  |  | -243d | 0d |  | HS2 - 8h x 7d Workweek (No Holidays) | y | AWS | Y |
| P1EWCC-PWP01-5610 |  | Procurement/Mobilisation Period |  | 10d | 2017-12-01 | 2017-12-15 | P1EWCC-PWP01-230 |  |  |  |  | -174.88d | 0d |  |  | y | AWS |  |
|  | 21 | **WORK PACKAGE PERFORMANCE MEASUREMENT BASELINE (WPPMB)** |  |  | 2017-09-22 | 2017-11-17 |  |  |  |  |  |  |  |  |  |  |  |  |
| P1EWCC-PWP01-200 |  | Development of Work Package Performance Measurement Baseline (WPPMB) |  | 40d | 2017-09-22 | 2017-11-17 | P1EWCC-PWP01-190 SS |  |  |  |  | -174.88d | 0d |  |  | y | AWS |  |
|  | 5 | **AWE1 - Habitat Creation & Translocation** |  |  | 2017-08-21 | 2018-07-25 |  |  |  |  |  |  |  |  |  |  |  |  |
|  | 1 | **Ecological Mitigation Site Construction** |  |  | 2017-08-21 | 2018-01-05 |  |  |  |  |  |  |  |  |  |  |  |  |
| P1EWCC-PWP02-190 |  | Development of Work Package Price (WPC) |  | 46d | 2017-08-21 A | 2017-10-23 |  | 44% | 25.88d | 2017-09-18 | 2017-11-20 | -321.88d | 0d | 2017-10-23 |  | y | AWE1 |  |
| P1EWCC-PWP02-210 |  | Issue Work Package Price (WPC) to PM for Acceptance | milestone | 0d | 2017-10-23 | 2017-10-23 | P1EWCC-PWP02-190 |  |  |  |  | -321.88d | 0.12d |  |  | y | AWE1 |  |
| P1EWCC-PWP02-220 |  | PM Acceptance Period for Work Package Price (WPC) |  | 14d | 2017-10-24 | 2017-11-06 | P1EWCC-PWP02-210 |  |  |  |  | -452d | 0d |  | HS2 - 8h x 7d Workweek (No Holidays) | y | AWE1 |  |
| P1EWCC-PWP02-230 |  | PM Instruction to Commence Work Package | milestone | 0d | 2017-11-06 | 2017-11-06 | P1EWCC-PWP02-220 |  |  |  |  | -452d | 0d |  | HS2 - 8h x 7d Workweek (No Holidays) | y | AWE1 | Y |
| P1EWCC-PWP02-9220 |  | Procurement/Mobilisation Period For Construction of Sites |  | 44d | 2017-11-06 | 2018-01-05 | P1EWCC-PWP02-230 |  |  |  |  | -178.88d | 0d |  |  | y | AWE1 |  |

| ID | WBS | Activity | Type | Duration | Start | Finish | Predecessors | Complete | Planned start | Planned finish | Total float | Free float | Constraint | Calendar | HS2 Filter | Fusion - WPS | VIEW Y/N |
| --- | --- | --- | --- | --- | --- | --- | --- | --- | --- | --- | --- | --- | --- | --- | --- | --- | --- |
|  | 2 | **Translocation of Species** |  |  | 2017-11-06 | 2018-07-25 |  |  |  |  |  |  |  |  |  |  |  |
| P1EWCC-PWP02-14560 |  | Translocation Tracker |  | 93d | 2017-11-06 | 2018-03-15 | P1EWCC-PWP02-230 |  |  |  | -321.88d | 0d |  |  | y | AWE1 |  |
| P1EWCC-PWP02-14570 |  | Tender Docs Preparation |  | 17d | 2018-03-15 | 2018-04-09 | P1EWCC-PWP02-14560 |  |  |  | -321.88d | 0d |  |  | y | AWE1 |  |
| P1EWCC-PWP02-14580 |  | Tender Period |  | 37d | 2018-04-09 | 2018-05-30 | P1EWCC-PWP02-14570 |  |  |  | -321.88d | 0d |  |  | y | AWE1 |  |
| P1EWCC-PWP02-14590 |  | Fusion Review |  | 10d | 2018-05-30 | 2018-06-13 | P1EWCC-PWP02-14580 |  |  |  | -321.88d | 0.12d |  |  | y | AWE1 |  |
| P1EWCC-PWP02-14600 |  | HS2 Review |  | 14d | 2018-06-14 | 2018-06-27 | P1EWCC-PWP02-14590, P1EWCC-PWP02-14590 FF |  |  |  | -450d | 0d |  | HS2 - 8h x 7d Workweek (No Holidays) | y | AWE1 |  |
| P1EWCC-PWP02-14610 |  | Procurement/Mobilisation Period |  | 20d | 2018-06-27 | 2018-07-25 | P1EWCC-PWP02-14600 |  |  |  | -321.88d | 0.12d |  |  | y | AWE1 |  |
|  | 13 | **AWE2 - Landscape Planting Installation - Design Only** |  |  | 2017-12-15 | 2018-04-05 |  |  |  |  |  |  |  |  |  |  |  |
| P1EWCC-PWP02-11860 |  | Development of Work Package Price (WPC) |  | 40d | 2017-12-15 | 2018-02-08 | P1EWCC-PWP02-11850 |  |  |  | -109.88d | 0d | as late as possible |  | y | AWE2 |  |
| P1EWCC-PWP02-11870 |  | Issue Work Package Price (WPC) to PM for Acceptance | milestone | 0d | 2018-02-08 | 2018-02-08 | P1EWCC-PWP02-11860, P1EWCC-PWP02-11900 |  |  |  | -109.88d | 0d | as late as possible |  | y | AWE2 |  |
| P1EWCC-PWP02-11880 |  | PM Acceptance Period for Work Package Price (WPC) |  | 14d | 2018-02-09 | 2018-02-22 | P1EWCC-PWP02-11870 |  |  |  | -149.88d | 0d | as late as possible | HS2 - 8h x 7d Workweek (No Holidays) | y | AWE2 |  |
| P1EWCC-PWP02-11890 |  | PM Instruction to Commence Work Package | milestone | 0d | 2018-02-22 | 2018-02-22 | P1EWCC-PWP02-11880 |  |  |  | -149.88d | 0d | as late as possible | HS2 - 8h x 7d Workweek (No Holidays) | y | AWE2 | Y |
| P1EWCC-PWP02-11910 |  | Procurement/Mobilisation Period for Planting on Site |  | 30d | 2018-02-22 | 2018-04-05 | P1EWCC-PWP02-11890 |  |  |  | -105.88d | 0d | as late as possible |  | y | AWE2 |  |
|  | 21 | **WORK PACKAGE PERFORMANCE MEASUREMENT BASELINE (WPPMB)** |  |  | 2017-12-15 | 2018-02-08 |  |  |  |  |  |  |  |  |  |  |  |
| P1EWCC-PWP02-11900 |  | Development of Work Package Performance Measurement Baseline (WPPMB) |  | 40d | 2017-12-15 | 2018-02-08 | P1EWCC-PWP02-11860 SS |  |  |  | -109.88d | 0d | as late as possible |  | y | AWE2 |  |
|  | 6 | **AWE2 - Landscape Planting Installation** |  |  | 2018-06-14 | 2018-11-29 |  |  |  |  |  |  |  |  |  |  |  |
| P1EWCC-PWP02-15030 |  | Development of Work Package Price (WPC) |  | 80d | 2018-06-14 | 2018-10-04 | P1EWCC-PWP02-12780 FS-15d, P1EWCC-PWP02-12840 FS-15d, P1EWCC-PWP02-12900 FS-15d, P1EWCC-PWP02-13100 FS-15d, P1EWCC-PWP02-13170 FS-15d, P1EWCC-PWP02-12990 FS-15d, P1EWCC-PWP02-13060 FS-15d, P1EWCC-PWP02-14690 FS-15d, P1EWCC-PWP02-14730 FS-15d, P1EWCC-PWP02-14770 FS-15d, P1EWCC-PWP02-13360 FS-15d, P1EWCC-PWP02-13240 FS-15d, P1EWCC-PWP02-14780 FS-15d, P1EWCC-PWP02-13310 FS-15d, P1EWCC-PWP02-14820 FS-15d, P1EWCC-PWP02-13390 FS-15d, P1EWCC-PWP02-13450 FS-15d, P1EWCC-PWP02-13530 FS-15d, P1EWCC-PWP02-13590 FS-15d, P1EWCC-PWP02-13610 FS-15d, P1EWCC-PWP02-13660 FS-15d, P1EWCC-PWP02-13690 FS-15d, P1EWCC-PWP02-13720 FS-15d, P1EWCC-PWP02-13750 FS-15d, P1EWCC-PWP02-13780 FS-15d, P1EWCC-PWP02-13810 FS-15d, P1EWCC-PWP02-13840 FS-15d, P1EWCC-PWP02-13870 FS-15d, P1EWCC-PWP02-13900 FS-15d, P1EWCC-PWP02-13930 FS-15d, P1EWCC-PWP02-14860 FS-15d, P1EWCC-PWP02-14900 FS-15d, P1EWCC-PWP02-14940 FS-15d, P1EWCC-PWP02-13950 FS-15d, P1EWCC-PWP02-14030 FS-15d, P1EWCC-PWP02-14090 FS-15d, P1EWCC-PWP02-14120 FS-15d, P1EWCC-PWP02-14980 FS-15d, P1EWCC-PWP02-15020 FS-15d, P1EWCC-PWP02-14150 FS-15d, P1EWCC-PWP02-14210 FS-15d, P1EWCC-PWP02-14280 FS-15d |  |  |  | -109.75d | 0d |  |  | y | AWE2 |  |
| P1EWCC-PWP02-15040 |  | Issue Work Package Price (WPC) to PM for Acceptance | milestone | 0d | 2018-10-04 | 2018-10-04 | P1EWCC-PWP02-15030, P1EWCC-PWP02-15080 |  |  |  | -109.75d | 0.12d |  |  | y | AWE2 |  |
| P1EWCC-PWP02-15050 |  | PM Acceptance Period for Work Package Price (WPC) |  | 14d | 2018-10-05 | 2018-10-18 | P1EWCC-PWP02-15040 |  |  |  | -153.88d | 0d |  | HS2 - 8h x 7d Workweek (No Holidays) | y | AWE2 |  |
| P1EWCC-PWP02-15060 |  | PM Instruction to Commence Work Package | milestone | 0d | 2018-10-18 | 2018-10-18 | P1EWCC-PWP02-15050 |  |  |  | -153.88d | 0d |  | HS2 - 8h x 7d Workweek (No Holidays) | y | AWE2 | Y |
| P1EWCC-PWP02-15070 |  | Procurement/Mobilisation Period for Planting on Site |  | 30d | 2018-10-18 | 2018-11-29 | P1EWCC-PWP02-15060 |  |  |  | -109.75d | 0d |  |  | y | AWE2 |  |
|  | 21 | **WORK PACKAGE PERFORMANCE MEASUREMENT BASELINE (WPPMB)** |  |  | 2018-06-14 | 2018-10-04 |  |  |  |  |  |  |  |  |  |  |  |
| P1EWCC-PWP02-15080 |  | Development of Work Package Performance Measurement Baseline (WPPMB) |  | 80d | 2018-06-14 | 2018-10-04 | P1EWCC-PWP02-15030 SS |  |  |  | -109.75d | 0d |  |  | y | AWE2 |  |
|  | 14 | **AWE3 - Preliminary Floodplain Storage Design & Fluvial/Hydrological Modelling Work** |  |  | 2017-07-26 | 2017-10-13 |  |  |  |  |  |  |  |  |  |  |  |
| P1EWCC-PWP02-12010 |  | Development of Work Package Price (WPC) |  | 40d | 2017-07-26 A | 2017-09-15 A | P1EWCC-PWP02-12000 | 100% | 2017-07-25 | 2017-09-18 |  |  |  |  | y | AWE3 |  |
| P1EWCC-PWP02-12020 |  | Issue Work Package Price (WPC) to PM for Acceptance | milestone | 0d | 2017-09-15 A | 2017-09-15 A | P1EWCC-PWP02-12050, P1EWCC-PWP02-12010 | 100% | 2017-09-18 | 2017-09-18 |  |  |  |  | y | AWE3 |  |
| P1EWCC-PWP02-12030 |  | PM Acceptance Period for Work Package Price (WPC) |  | 14d | 2017-09-16 | 2017-09-29 | P1EWCC-PWP02-12020 |  |  |  | 17.75d | 0d |  | HS2 - 8h x 7d Workweek (No Holidays) | y | AWE3 |  |
| P1EWCC-PWP02-12040 |  | PM Instruction to Commence Work Package | milestone | 0d | 2017-09-29 | 2017-09-29 | P1EWCC-PWP02-12030 |  |  |  | 17.75d | 0d |  | HS2 - 8h x 7d Workweek (No Holidays) | y | AWE3 | Y |
| P1EWCC-PWP02-12060 |  | Procurment/Mobilisation Period |  | 10d | 2017-09-29 | 2017-10-13 | P1EWCC-PWP02-12040 |  |  |  | 11.75d | 0d |  |  | y | AWE3 |  |

| ID | WBS | Activity | Type | Duration | Start | Finish | Predecessors | Complete | Planned start | Planned finish | Total float | Free float | Calendar | HS2 Filter | Fusion - WPS | VIEW Y/N |
| --- | --- | --- | --- | --- | --- | --- | --- | --- | --- | --- | --- | --- | --- | --- | --- | --- |
|  | 21 | **WORK PACKAGE PERFORMANCE MEASUREMENT BASELINE (WPPMB)** |  |  | 2017-07-26 | 2017-09-15 |  |  |  |  |  |  |  |  |  |  |
| P1EWCC-PWP02-12050 |  | Development of Work Package Performance Measurement Baseline (WPPMB) |  | 40d | 2017-07-26 A | 2017-09-15 A | P1EWCC-PWP02-12010 SS | 100% | 2017-07-25 | 2017-09-18 |  |  |  | y | AWE3 |  |
|  | 15 | **AWE4 - Invasive Species Surveys, Treatment & Control** |  |  | 2017-10-06 | 2018-01-19 |  |  |  |  |  |  |  |  |  |  |
| P1EWCC-PWP02-12160 |  | Development of Work Package Price (WPC) |  | 40d | 2017-10-06 | 2017-12-01 | P1EWCC-PWP02-12150 |  |  |  | 163.12d | 0d |  | y | AWE4 |  |
| P1EWCC-PWP02-12170 |  | Issue Work Package Price (WPC) to PM for Acceptance | milestone | 0d | 2017-12-01 | 2017-12-01 | P1EWCC-PWP02-12200, P1EWCC-PWP02-12160 |  |  |  | 163.12d | 0.12d |  | y | AWE4 |  |
| P1EWCC-PWP02-12180 |  | PM Acceptance Period for Work Package Price (WPC) |  | 14d | 2017-12-02 | 2017-12-15 | P1EWCC-PWP02-12170 |  |  |  | 229d | 0d | HS2 - 8h x 7d Workweek (No Holidays) | y | AWE4 |  |
| P1EWCC-PWP02-12190 |  | PM Instruction to Commence Work Package | milestone | 0d | 2017-12-15 | 2017-12-15 | P1EWCC-PWP02-12180 |  |  |  | 229d | 0d | HS2 - 8h x 7d Workweek (No Holidays) | y | AWE4 | Y |
| P1EWCC-PWP02-12210 |  | Procurmrnt/Mobilisation Period |  | 25d | 2017-12-15 | 2018-01-19 | P1EWCC-PWP02-12190 |  |  |  | 163d | 71.12d |  | y | AWE4 |  |
|  | 21 | **WORK PACKAGE PERFORMANCE MEASUREMENT BASELINE (WPPMB)** |  |  | 2017-10-06 | 2017-12-01 |  |  |  |  |  |  |  |  |  |  |
| P1EWCC-PWP02-12200 |  | Development of Work Package Performance Measurement Baseline (WPPMB) |  | 40d | 2017-10-06 | 2017-12-01 | P1EWCC-PWP02-12160 SS |  |  |  | 163.12d | 0d |  | y | AWE4 |  |
|  | 16 | **AWE5 - Site Clearance** |  |  | 2017-11-17 | 2018-02-02 |  |  |  |  |  |  |  |  |  |  |
| P1EWCC-PWP02-12310 |  | Development of Work Package Price (WPC) |  | 40d | 2017-11-17 | 2018-01-12 | P1EWCC-PWP02-12300 |  |  |  | -59.5d | 0d |  | y | AWE5 |  |
| P1EWCC-PWP02-12320 |  | Issue Work Package Price (WPC) to PM for Acceptance | milestone | 0d | 2018-01-12 | 2018-01-12 | P1EWCC-PWP02-12350, P1EWCC-PWP02-12310 |  |  |  | -59.5d | 0.12d |  | y | AWE5 |  |
| P1EWCC-PWP02-12330 |  | PM Acceptance Period for Work Package Price (WPC) |  | 14d | 2018-01-13 | 2018-01-26 | P1EWCC-PWP02-12320 |  |  |  | -81.62d | 0d | HS2 - 8h x 7d Workweek (No Holidays) | y | AWE5 |  |
| P1EWCC-PWP02-12340 |  | PM Instruction to Commence Work Package | milestone | 0d | 2018-01-26 | 2018-01-26 | P1EWCC-PWP02-12330 |  |  |  | -81.62d | 0d | HS2 - 8h x 7d Workweek (No Holidays) | y | AWE5 | Y |
| P1EWCC-PWP02-12360 |  | Procurmrnt/Mobilisation Period |  | 5d | 2018-01-26 | 2018-02-02 | P1EWCC-PWP02-12340 |  |  |  | -59.5d | 0d |  | y | AWE5 |  |
|  | 21 | **WORK PACKAGE PERFORMANCE MEASUREMENT BASELINE (WPPMB)** |  |  | 2017-11-17 | 2018-01-12 |  |  |  |  |  |  |  |  |  |  |
| P1EWCC-PWP02-12350 |  | Development of Work Package Performance Measurement Baseline (WPPMB) |  | 40d | 2017-11-17 | 2018-01-12 | P1EWCC-PWP02-12310 SS |  |  |  | -59.5d | 0d |  | y | AWE5 |  |
|  | 8 | **AWE6 - Ground Remediation** |  |  | 2017-11-17 | 2018-02-02 |  |  |  |  |  |  |  |  |  |  |
| P1EWCC-PWP02-11710 |  | Development of Work Package Price (WPC) |  | 40d | 2017-11-17 | 2018-01-12 | P1EWCC-PWP02-11700 |  |  |  | -117.75d | 0d |  | y | AWE6 |  |
| P1EWCC-PWP02-11720 |  | Issue Work Package Price (WPC) to PM for Acceptance | milestone | 0d | 2018-01-12 | 2018-01-12 | P1EWCC-PWP02-11710, P1EWCC-PWP02-11750 |  |  |  | -117.75d | 0.12d |  | y | AWE6 |  |
| P1EWCC-PWP02-11730 |  | PM Acceptance Period for Work Package Price (WPC) |  | 14d | 2018-01-13 | 2018-01-26 | P1EWCC-PWP02-11720 |  |  |  | -163.88d | 0d | HS2 - 8h x 7d Workweek (No Holidays) | y | AWE6 |  |
| P1EWCC-PWP02-11740 |  | PM Instruction to Commence Work Package | milestone | 0d | 2018-01-26 | 2018-01-26 | P1EWCC-PWP02-11730 |  |  |  | -163.88d | 0d | HS2 - 8h x 7d Workweek (No Holidays) | y | AWE6 | Y |
| P1EWCC-PWP02-11760 |  | Procurmrnt/Mobilisation Period |  | 5d | 2018-01-26 | 2018-02-02 | P1EWCC-PWP02-11740 |  |  |  | -117.75d | 0d |  | y | AWE6 |  |

| ID | WBS | Activity | Type | Duration | Start | Finish | Predecessors | Complete | Planned start | Planned finish | Total float | Free float | Calendar | HS2 Filter | Fusion - WPS | VIEW Y/N |
| --- | --- | --- | --- | --- | --- | --- | --- | --- | --- | --- | --- | --- | --- | --- | --- | --- |
|  | 21 | **WORK PACKAGE PERFORMANCE MEASUREMENT BASELINE (WPPMB)** |  |  | 2017-11-17 | 2018-01-12 |  |  |  |  |  |  |  |  |  |  |
| P1EWCC-PWP02-11750 |  | Development of Work Package Performance Measurement Baseline (WPPMB) |  | 40d | 2017-11-17 | 2018-01-12 | P1EWCC-PWP02-11710 SS |  |  |  | -117.75d | 0d |  | y | AWE6 |  |
|  | 2 | **AWH - Area Wide HERDS** |  |  | 2017-10-06 | 2017-12-15 |  |  |  |  |  |  |  |  |  |  |
| P1EWCC-PWP05-190 |  | Development of Work Package Price (WPC) |  | 30d | 2017-10-06 | 2017-11-17 | P1EWCC-PWP05-180 |  |  |  | -168.88d | 0d |  | y | AWH |  |
| P1EWCC-PWP05-210 |  | Issue Work Package Price (WPC) to PM for Acceptance | milestone | 0d | 2017-11-17 | 2017-11-17 | P1EWCC-PWP05-200, P1EWCC-PWP05-190 |  |  |  | -168.88d | 0.12d |  | y | AWH |  |
| P1EWCC-PWP05-220 |  | PM Acceptance Period for Work Package Price (WPC) |  | 14d | 2017-11-18 | 2017-12-01 | P1EWCC-PWP05-210 |  |  |  | -235d | 0d | HS2 - 8h x 7d Workweek (No Holidays) | y | AWH |  |
| P1EWCC-PWP05-230 |  | PM Instruction to Commence Work Package | milestone | 0d | 2017-12-01 | 2017-12-01 | P1EWCC-PWP05-220 |  |  |  | -235d | 0d | HS2 - 8h x 7d Workweek (No Holidays) | y | AWH | Y |
| P1EWCC-PWP05-240 |  | Procurement/Mobilisation Period |  | 10d | 2017-12-01 | 2017-12-15 | P1EWCC-PWP05-230 |  |  |  | -168.88d | 0d |  | y | AWH |  |
|  | 21 | **WORK PACKAGE PERFORMANCE MEASUREMENT BASELINE (WPPMB)** |  |  | 2017-10-06 | 2017-11-10 |  |  |  |  |  |  |  |  |  |  |
| P1EWCC-PWP05-200 |  | Development of Work Package Performance Measurement Baseline (WPPMB) |  | 25d | 2017-10-06 | 2017-11-10 | P1EWCC-PWP05-190 SS |  |  |  | -163.88d | 5d |  | y | AWH |  |
|  | 3 | **Urgent Works** |  |  | 2017-03-14 | 2017-04-20 |  |  |  |  |  |  |  |  |  |  |
| P1EWCC-UWP01-1000 |  | PM Instruction to Commence Work Package | milestone | 0d | 2017-03-14 A | 2017-03-14 A |  | 100% |  |  |  |  | HS2 - 8h x 7d Workweek (No Holidays) | y | UW1 |  |
| P1EWCC-UWP01-1010 |  | Mobilisation of Work Package |  | 6d | 2017-03-14 A | 2017-03-19 A | P1EWCC-UWP01-1000 | 100% |  |  |  |  | HS2 - 8h x 7d Workweek (No Holidays) | y | UW1 |  |
| P1EWCC-UWP01-1020 |  | Period for Quoting Urgent Work Package |  | 29d | 2017-03-14 A | 2017-04-20 A | P1EWCC-UWP01-1000 | 100% | 2017-03-14 | 2017-04-11 |  |  | HS2 - 8h x 7d Workweek (No Holidays) | y | UW1 |  |
| P1EWCC-UWP01-1030 |  | Submit UW1 Quote | milestone | 0d | 2017-04-20 A | 2017-04-20 A | P1EWCC-UWP01-1020 | 100% | 2017-04-11 | 2017-04-11 |  |  | HS2 - 8h x 7d Workweek (No Holidays) | y | UW1 |  |
|  | 14 | **Design & Construction Packages** |  |  | 2017-04-12 | 2018-09-19 |  |  |  |  |  |  |  |  |  |  |
|  | 2 | **DC1** |  |  | 2017-04-12 | 2018-07-17 |  |  |  |  |  |  |  |  |  |  |
|  | 3 | **DC1A - HOAC - Scheme Design** |  |  |  |  |  |  |  |  |  |  |  |  |  |  |
|  | 21 | **WORK PACKAGE PERFORMANCE MEASUREMENT BASELINE (WPPMB)** |  |  |  |  |  |  |  |  |  |  |  |  |  |  |
|  | 1 | **DC1B - TBM Power Supply - Scheme Design** |  |  | 2017-04-12 | 2017-08-04 |  |  |  |  |  |  |  |  |  |  |
| P1EWCC-PWP01-4110 |  | Development of Work Package Price (WPC) |  | 27d | 2017-04-12 A | 2017-06-02 A | P1EWCC-PWP01-4070 SS | 100% | 2017-03-30 | 2017-05-05 |  |  |  | y | DC1B |  |
| P1EWCC-PWP01-4120 |  | Issue Work Package Price (WPC) to PM for Acceptance | milestone | 0d | 2017-06-02 A | 2017-06-02 A | P1EWCC-PWP01-4150, P1EWCC-PWP01-4110 | 100% |  |  |  |  |  | y | DC1B |  |
| P1EWCC-PWP01-4130 |  | PM Acceptance Period for Work Package Price (WPC) |  | 14d | 2017-06-03 A | 2017-08-04 A | P1EWCC-PWP01-4120 | 100% | 2017-06-03 | 2017-06-16 |  |  | HS2 - 8h x 7d Workweek (No Holidays) | y | DC1B |  |
| P1EWCC-PWP01-4140 |  | PM Instruction to Commence Work Package | milestone | 0d | 2017-08-04 A | 2017-08-04 A | P1EWCC-PWP01-4130 | 100% | 2017-07-24 | 2017-07-24 |  |  | HS2 - 8h x 7d Workweek (No Holidays) | y | DC1B | Y |

| ID | WBS | Activity | Type | Duration | Start | Finish | Predecessors | Complete | Planned start | Planned finish | Total float | Free float | Calendar | HS2 Filter | Fusion - WPS | VIEW Y/N |
| --- | --- | --- | --- | --- | --- | --- | --- | --- | --- | --- | --- | --- | --- | --- | --- | --- |
|  | 21 | **WORK PACKAGE PERFORMANCE MEASUREMENT BASELINE (WPPMB)** |  |  | 2017-04-12 | 2017-06-02 |  |  |  |  |  |  |  |  |  |  |
| P1EWCC-PWP01-4150 |  | Development of Work Package Performance Measurement Baseline (WPPMB) |  | 20d | 2017-04-12 A | 2017-06-02 A | P1EWCC-PWP01-4110 SS | 100% | 2017-05-22 | 2017-06-16 |  |  |  | y | DC1B |  |
|  | 5 | **DC1D - Highway & Civil Works - Scheme Design** |  |  | 2017-09-22 | 2017-12-08 |  |  |  |  |  |  |  |  |  |  |
| P1EWCC-PWP01-6320 |  | Development of Work Package Price (WPC) |  | 40d | 2017-09-22 | 2017-11-17 | P1EWCC-PWP01-6300 |  |  |  | -27.88d | 0d |  | y | DC1D |  |
| P1EWCC-PWP01-6330 |  | Issue Work Package Price (WPC) to PM for Acceptance | milestone | 0d | 2017-11-17 | 2017-11-17 | P1EWCC-PWP01-6320, P1EWCC-PWP01-6310 |  |  |  | -27.88d | 0.12d |  | y | DC1D |  |
| P1EWCC-PWP01-6340 |  | PM Acceptance Period for Work Package Price (WPC) |  | 14d | 2017-11-18 | 2017-12-01 | P1EWCC-PWP01-6330 |  |  |  | -38d | 0d | HS2 - 8h x 7d Workweek (No Holidays) | y | DC1D |  |
| P1EWCC-PWP01-6350 |  | PM Instruction to Commence Work Package | milestone | 0d | 2017-12-01 | 2017-12-01 | P1EWCC-PWP01-6340 |  |  |  | -38d | 0d | HS2 - 8h x 7d Workweek (No Holidays) | y | DC1D | Y |
| P1EWCC-PWP01-6360 |  | Procurement/Mobilisation Period |  | 5d | 2017-12-01 | 2017-12-08 | P1EWCC-PWP01-6350 |  |  |  | -27.88d | 0d |  | y | DC1D |  |
|  | 21 | **WORK PACKAGE PERFORMANCE MEASUREMENT BASELINE (WPPMB)** |  |  | 2017-09-22 | 2017-11-17 |  |  |  |  |  |  |  |  |  |  |
| P1EWCC-PWP01-6310 |  | Development of Work Package Performance Measurement Baseline (WPPMB) |  | 40d | 2017-09-22 | 2017-11-17 | P1EWCC-PWP01-6320 SS |  |  |  | -27.88d | 0d |  | y | DC1D |  |
|  | 8 | **DC1E - Utilities - Scheme Design** |  |  | 2017-10-06 | 2017-12-22 |  |  |  |  |  |  |  |  |  |  |
| P1EWCC-PWP01-6760 |  | Development of Work Package Price (WPC) |  | 40d | 2017-10-06 | 2017-12-01 | P1EWCC-PWP01-6750 |  |  |  | -131.88d | 0d |  | y | DC1E |  |
| P1EWCC-PWP01-6770 |  | Issue Work Package Price (WPC) to PM for Acceptance | milestone | 0d | 2017-12-01 | 2017-12-01 | P1EWCC-PWP01-6760, P1EWCC-PWP01-6800 |  |  |  | -131.88d | 0.12d |  | y | DC1E |  |
| P1EWCC-PWP01-6780 |  | PM Acceptance Period for Work Package Price (WPC) |  | 14d | 2017-12-02 | 2017-12-15 | P1EWCC-PWP01-6770 |  |  |  | -184d | 0d | HS2 - 8h x 7d Workweek (No Holidays) | y | DC1E |  |
| P1EWCC-PWP01-6790 |  | PM Instruction to Commence Work Package | milestone | 0d | 2017-12-15 | 2017-12-15 | P1EWCC-PWP01-6780 |  |  |  | -184d | 0d | HS2 - 8h x 7d Workweek (No Holidays) | y | DC1E | Y |
| P1EWCC-PWP01-6810 |  | Procurement/Mobilisation Period |  | 5d | 2017-12-15 | 2017-12-22 | P1EWCC-PWP01-6790 |  |  |  | -131.88d | 0d |  | y | DC1E |  |
|  | 21 | **WORK PACKAGE PERFORMANCE MEASUREMENT BASELINE (WPPMB)** |  |  | 2017-10-06 | 2017-12-01 |  |  |  |  |  |  |  |  |  |  |
| P1EWCC-PWP01-6800 |  | Development of Work Package Performance Measurement Baseline (WPPMB) |  | 40d | 2017-10-06 | 2017-12-01 | P1EWCC-PWP01-6760 SS |  |  |  | -131.88d | 0d |  | y | DC1E |  |
|  | 2 | **DC1F - HOAC - Detailed Design & Construction** |  |  |  |  |  |  |  |  |  |  |  |  |  |  |
|  | 21 | **WORK PACKAGE PERFORMANCE MEASUREMENT BASELINE (WPPMB)** |  |  |  |  |  |  |  |  |  |  |  |  |  |  |
|  | 6 | **DC1G - TBM Power Supply - Detailed Design & Construction** |  |  | 2017-09-22 | 2017-12-08 |  |  |  |  |  |  |  |  |  |  |
| P1EWCC-PWP01-11200 |  | Development of Work Package Price (WPC) |  | 40d | 2017-09-22 | 2017-11-17 | P1EWCC-PWP01-10970 |  |  |  | 0.12d | 0d |  | y | DC1G |  |
| P1EWCC-PWP01-11210 |  | Issue Work Package Price (WPC) to PM for Acceptance | milestone | 0d | 2017-11-17 | 2017-11-17 | P1EWCC-PWP01-11240, P1EWCC-PWP01-11200 |  |  |  | 0.12d |  |  | y | DC1G |  |
| P1EWCC-PWP01-11220 |  | PM Acceptance Period for Work Package Price (WPC) |  | 14d | 2017-11-18 | 2017-12-01 | P1EWCC-PWP01-11210 |  |  |  | 0d |  | HS2 - 8h x 7d Workweek (No Holidays) | y | DC1G |  |
| P1EWCC-PWP01-11230 |  | PM Instruction to Commence Work Package | milestone | 0d | 2017-12-01 | 2017-12-01 | P1EWCC-PWP01-11220 |  |  |  | 0d |  | HS2 - 8h x 7d Workweek (No Holidays) | y | DC1G | Y |
| P1EWCC-PWP01-11250 |  | Procurement/Mobilisation Period |  | 5d | 2017-12-01 | 2017-12-08 | P1EWCC-PWP01-11230 |  |  |  | 0d |  |  | y | DC1G |  |

| ID | WBS | Activity | Type | Duration | Start | Finish | Predecessors | Complete | Planned start | Planned finish | Total float | Free float | Calendar | HS2 Filter | Fusion - WPS | VIEW Y/N |
| --- | --- | --- | --- | --- | --- | --- | --- | --- | --- | --- | --- | --- | --- | --- | --- | --- |
|  | 21 | **WORK PACKAGE PERFORMANCE MEASUREMENT BASELINE (WPPMB)** |  |  | 2017-09-22 | 2017-11-17 |  |  |  |  |  |  |  |  |  |  |
| P1EWCC-PWP01-11240 |  | Development of Work Package Performance Measurement Baseline (WPPMB) |  | 40d | 2017-09-22 | 2017-11-17 | P1EWCC-PWP01-11200 SS |  |  |  | 0.12d | 0d |  | y | DC1G |  |
|  | 9 | **DC1I - Highway & Civil Works - Detailed Design & Construction** |  |  | 2018-04-04 | 2018-06-20 |  |  |  |  |  |  |  |  |  |  |
| P1EWCC-PWP01-11140 |  | Development of Work Package Price (WPC) |  | 40d | 2018-04-04 | 2018-05-30 | P1EWCC-PWP01-10930, P1EWCC-PWP09-7180, P1EWCC-PWP09-7260, P1EWCC-PWP09-7350, P1EWCC-PWP09-1300, P1EWCC-PWP03-3650, P1EWCC-PWP09-1310, P1EWCC-PWP03-1210, P1EWCC-FWP02-1160, P1EWCC-PWP03-3560, P1EWCC-PWP03-3500, P1EWCC-PWP03-3490 |  |  |  | -27.88d | 0d |  | y | DC1I |  |
| P1EWCC-PWP01-11150 |  | Issue Work Package Price (WPC) to PM for Acceptance | milestone | 0d | 2018-05-30 | 2018-05-30 | P1EWCC-PWP01-11140, P1EWCC-PWP01-11180 |  |  |  | -27.88d | 0.12d |  | y | DC1I |  |
| P1EWCC-PWP01-11160 |  | PM Acceptance Period for Work Package Price (WPC) |  | 14d | 2018-05-31 | 2018-06-13 | P1EWCC-PWP01-11150 |  |  |  | -40d | 0d | HS2 - 8h x 7d Workweek (No Holidays) | y | DC1I |  |
| P1EWCC-PWP01-11170 |  | PM Instruction to Commence Work Package | milestone | 0d | 2018-06-13 | 2018-06-13 | P1EWCC-PWP01-11160 |  |  |  | -40d | 0d | HS2 - 8h x 7d Workweek (No Holidays) | y | DC1I | Y |
| P1EWCC-PWP01-11190 |  | Procurement/Mobilisation Period |  | 5d | 2018-06-13 | 2018-06-20 | P1EWCC-PWP01-11170 |  |  |  | -28d | 0d |  | y | DC1I |  |
|  | 21 | **WORK PACKAGE PERFORMANCE MEASUREMENT BASELINE (WPPMB)** |  |  | 2018-04-04 | 2018-05-30 |  |  |  |  |  |  |  |  |  |  |
| P1EWCC-PWP01-11180 |  | Development of Work Package Performance Measurement Baseline (WPPMB) |  | 40d | 2018-04-04 | 2018-05-30 | P1EWCC-PWP01-11140 SS |  |  |  | -27.88d | 0d |  | y | DC1I |  |
|  | 10 | **DC1J - Utilities - Detailed Design & Construction** |  |  | 2018-05-01 | 2018-07-17 |  |  |  |  |  |  |  |  |  |  |
| P1EWCC-PWP01-11260 |  | Development of Work Package Price (WPC) |  | 40d | 2018-05-01 | 2018-06-26 | P1EWCC-PWP01-11010, P1EWCC-PWP08-1260, P1EWCC-PWP08-1300, P1EWCC-PWP08-1330, P1EWCC-PWP08-1360, P1EWCC-PWP03-3380, P1EWCC-PWP03-3460, P1EWCC-PWP03-3470, P1EWCC-PWP03-3700 |  |  |  | -131.88d | 0d |  | y | DC1J |  |
| P1EWCC-PWP01-11270 |  | Issue Work Package Price (WPC) to PM for Acceptance | milestone | 0d | 2018-06-26 | 2018-06-26 | P1EWCC-PWP01-11300, P1EWCC-PWP01-11260 |  |  |  | -131.88d | 0.12d |  | y | DC1J |  |
| P1EWCC-PWP01-11280 |  | PM Acceptance Period for Work Package Price (WPC) |  | 14d | 2018-06-27 | 2018-07-10 | P1EWCC-PWP01-11270 |  |  |  | -184d | 0d | HS2 - 8h x 7d Workweek (No Holidays) | y | DC1J |  |
| P1EWCC-PWP01-11290 |  | PM Instruction to Commence Work Package | milestone | 0d | 2018-07-10 | 2018-07-10 | P1EWCC-PWP01-11280 |  |  |  | -184d | 0d | HS2 - 8h x 7d Workweek (No Holidays) | y | DC1J | Y |
| P1EWCC-PWP01-11310 |  | Procurement/Mobilisation Period |  | 5d | 2018-07-10 | 2018-07-17 | P1EWCC-PWP01-11290 |  |  |  | -131.88d | 0d |  | y | DC1J |  |
|  | 21 | **WORK PACKAGE PERFORMANCE MEASUREMENT BASELINE (WPPMB)** |  |  | 2018-05-01 | 2018-06-26 |  |  |  |  |  |  |  |  |  |  |
| P1EWCC-PWP01-11300 |  | Development of Work Package Performance Measurement Baseline (WPPMB) |  | 40d | 2018-05-01 | 2018-06-26 | P1EWCC-PWP01-11260 SS |  |  |  | -131.88d | 0d |  | y | DC1J |  |
|  | 1 | **DC2** |  |  | 2017-05-04 | 2018-08-07 |  |  |  |  |  |  |  |  |  |  |
|  | 1 | **DC2A - Stoke Mandeville & Princes Risborough Scheme Design** |  |  | 2017-05-04 | 2017-09-13 |  |  |  |  |  |  |  |  |  |  |
| P1EWCC-PWP01-5170 |  | Development of Work Package Price (WPC) |  | 15d | 2017-05-04 A | 2017-07-10 A | P1EWCC-PWP01-5160 | 100% | 2017-05-11 | 2017-05-31 |  |  |  | y | DC2A |  |
| P1EWCC-PWP01-5180 |  | Issue Work Package Price (WPC) to PM for Acceptance | milestone | 0d | 2017-07-10 A | 2017-07-10 A | P1EWCC-PWP01-5210, P1EWCC-PWP01-5170 | 100% |  |  |  |  |  | y | DC2A |  |
| P1EWCC-PWP01-5190 |  | PM Acceptance Period for Work Package Price (WPC) |  | 14d | 2017-07-11 A | 2017-09-13 A | P1EWCC-PWP01-5180 | 100% | 2017-07-11 | 2017-07-24 |  |  | HS2 - 8h x 7d Workweek (No Holidays) | y | DC2A |  |
| P1EWCC-PWP01-5200 |  | PM Instruction to Remove Work Package (email) | milestone | 0d | 2017-09-13 A | 2017-09-13 A | P1EWCC-PWP01-5190 | 100% | 2017-09-21 | 2017-09-21 |  |  | HS2 - 8h x 7d Workweek (No Holidays) | y | DC2A |  |

| ID | WBS | Activity | Type | Duration | Start | Finish | Predecessors | Complete | Remaining | Planned start | Planned finish | Total float | Free float | Expected finish | Calendar | HS2 Filter | Fusion - WPS | VIEW Y/N |
| --- | --- | --- | --- | --- | --- | --- | --- | --- | --- | --- | --- | --- | --- | --- | --- | --- | --- | --- |
|  | 21 | **WORK PACKAGE PERFORMANCE MEASUREMENT BASELINE (WPPMB)** |  |  | 2017-05-04 | 2017-07-10 |  |  |  |  |  |  |  |  |  |  |  |  |
| P1EWCC-PWP01-5210 |  | Development of Work Package Performance Measurement Baseline (WPPMB) |  | 15d | 2017-05-04 A | 2017-07-10 A | P1EWCC-PWP01-5170 SS | 100% |  | 2017-05-22 | 2017-06-09 |  |  |  |  | y | DC2A |  |
|  | 3 | **DC2B - Calvert Cutting Scheme Design - AWA** |  |  | 2017-08-02 | 2017-10-05 |  |  |  |  |  |  |  |  |  |  |  |  |
| P1EWCC-PWP01-7300 |  | Development of Work Package Price (WPC) |  | 55d | 2017-08-02 A | 2017-09-15 A | P1EWCC-PWP01-7250 | 100% |  | 2017-09-04 | 2017-11-17 |  |  |  |  | y | DC2B |  |
| P1EWCC-PWP01-7310 |  | Issue Work Package Price (WPC) to PM for Acceptance | milestone | 0d | 2017-09-15 A | 2017-09-15 A | P1EWCC-PWP01-7300, P1EWCC-PWP01-7340 | 100% |  | 2017-09-18 | 2017-09-18 |  |  |  |  | y | DC2B |  |
| P1EWCC-PWP01-7320 |  | PM Acceptance Period for Work Package Price (WPC) |  | 11d | 2017-09-18 | 2017-09-28 | P1EWCC-PWP01-7310 |  |  |  |  | -120d | 0d | 2017-09-28 | HS2 - 8h x 7d Workweek (No Holidays) | y | DC2B |  |
| P1EWCC-PWP01-7330 |  | PM Instruction to Commence Work Package | milestone | 0d | 2017-09-28 | 2017-09-28 | P1EWCC-PWP01-7320 |  |  |  |  | -120d | 0d |  | HS2 - 8h x 7d Workweek (No Holidays) | y | DC2B | Y |
| P1EWCC-PWP01-7350 |  | Procurement/Mobilisation Period |  | 5d | 2017-09-28 | 2017-10-05 | P1EWCC-PWP01-7330 |  |  |  |  | -85.88d | 0d |  |  | y | DC2B |  |
|  | 21 | **WORK PACKAGE PERFORMANCE MEASUREMENT BASELINE (WPPMB)** |  |  | 2017-08-02 | 2017-09-18 |  |  |  |  |  |  |  |  |  |  |  |  |
| P1EWCC-PWP01-7340 |  | Development of Work Package Performance Measurement Baseline (WPPMB) |  | 55d | 2017-08-02 A | 2017-09-18 | P1EWCC-PWP01-7300 SS | 100% | 0d | 2017-08-21 | 2017-11-03 | -85d | 0d | 2017-09-08 |  | y | DC2B |  |
|  | 7 | **DC2B - Calvert Cutting Scheme Design - UTX** |  |  | 2017-08-02 | 2017-10-20 |  |  |  |  |  |  |  |  |  |  |  |  |
| P1EWCC-PWP01-11690 |  | Development of Work Package Price (WPC) |  | 30d | 2017-08-02 A | 2017-09-29 | P1EWCC-PWP01-7250 | 67% | 9.88d | 2017-09-18 | 2017-10-27 | -96.88d | 0d | 2017-09-29 |  | y | DC2B |  |
| P1EWCC-PWP01-11700 |  | Issue Work Package Price (WPC) to PM for Acceptance | milestone | 0d | 2017-09-29 | 2017-09-29 | P1EWCC-PWP01-11690, P1EWCC-PWP01-11740 |  |  |  |  | -96.88d | 0.12d |  |  | y | DC2B |  |
| P1EWCC-PWP01-11710 |  | PM Acceptance Period for Work Package Price (WPC) |  | 14d | 2017-09-30 | 2017-10-13 | P1EWCC-PWP01-11700 |  |  |  |  | -135d | 0d |  | HS2 - 8h x 7d Workweek (No Holidays) | y | DC2B |  |
| P1EWCC-PWP01-11720 |  | PM Instruction to Commence Work Package | milestone | 0d | 2017-10-13 | 2017-10-13 | P1EWCC-PWP01-11710 |  |  |  |  | -135d | 0d |  | HS2 - 8h x 7d Workweek (No Holidays) | y | DC2B | Y |
| P1EWCC-PWP01-11730 |  | Procurement/Mobilisation Period |  | 5d | 2017-10-13 | 2017-10-20 | P1EWCC-PWP01-11720 |  |  |  |  | -96.88d | 0d |  |  | y | DC2B |  |
|  | 21 | **WORK PACKAGE PERFORMANCE MEASUREMENT BASELINE (WPPMB)** |  |  | 2017-08-02 | 2017-09-29 |  |  |  |  |  |  |  |  |  |  |  |  |
| P1EWCC-PWP01-11740 |  | Development of Work Package Performance Measurement Baseline (WPPMB) |  | 30d | 2017-08-02 A | 2017-09-29 | P1EWCC-PWP01-11690 SS | 67% | 9.88d | 2017-09-18 | 2017-10-27 | -96.88d | 0d | 2017-09-29 |  | y | DC2B |  |
|  | 9 | **DC2B - Calvert Cutting Scheme Design - Great Moor Sailing Club** |  |  | 2017-08-02 | 2017-10-20 |  |  |  |  |  |  |  |  |  |  |  |  |
| P1EWCC-PWP01-11750 |  | Development of Work Package Price (WPC) |  | 40d | 2017-08-02 A | 2017-09-29 |  | 75% | 9.88d | 2017-09-18 | 2017-11-10 | 50.12d | 0d | 2017-09-29 |  | y | DC2B |  |
| P1EWCC-PWP01-11760 |  | Issue Work Package Price (WPC) to PM for Acceptance | milestone | 0d | 2017-09-29 | 2017-09-29 | P1EWCC-PWP01-11750, P1EWCC-PWP01-11800 |  |  |  |  | 50.12d | 0.12d |  |  | y | DC2B |  |
| P1EWCC-PWP01-11770 |  | PM Acceptance Period for Work Package Price (WPC) |  | 14d | 2017-09-30 | 2017-10-13 | P1EWCC-PWP01-11760 |  |  |  |  | 72d | 0d |  | HS2 - 8h x 7d Workweek (No Holidays) | y | DC2B |  |
| P1EWCC-PWP01-11780 |  | PM Instruction to Commence Work Package | milestone | 0d | 2017-10-13 | 2017-10-13 | P1EWCC-PWP01-11770 |  |  |  |  | 72d | 0d |  | HS2 - 8h x 7d Workweek (No Holidays) | y | DC2B | Y |
| P1EWCC-PWP01-11790 |  | Procurement/Mobilisation Period |  | 5d | 2017-10-13 | 2017-10-20 | P1EWCC-PWP01-11780 |  |  |  |  | 50.12d | 0d |  |  | y | DC2B |  |

| ID | WBS | Activity | Type | Duration | Start | Finish | Predecessors | Complete | Remaining | Planned start | Planned finish | Total float | Free float | Constraint | Expected finish | Calendar | HS2 Filter | Fusion - WPS | VIEW Y/N |
| --- | --- | --- | --- | --- | --- | --- | --- | --- | --- | --- | --- | --- | --- | --- | --- | --- | --- | --- | --- |
|  | 21 | **WORK PACKAGE PERFORMANCE MEASUREMENT BASELINE (WPPMB)** |  |  | 2017-08-02 | 2017-09-29 |  |  |  |  |  |  |  |  |  |  |  |  |  |
| P1EWCC-PWP01-11800 |  | Development of Work Package Performance Measurement Baseline (WPPMB) |  | 30d | 2017-08-02 A | 2017-09-29 | P1EWCC-PWP01-11750 SS | 67% | 9.88d | 2017-09-18 | 2017-10-27 | 50.12d | 0d |  | 2017-09-29 |  | y | DC2B |  |
|  | 5 | **DC2C - Highway & Civils Works Scheme Design** |  |  | 2017-11-07 | 2018-01-23 |  |  |  |  |  |  |  |  |  |  |  |  |  |
| P1EWCC-PWP01-7510 |  | Development of Work Package Price (WPC) |  | 40d | 2017-11-07 | 2018-01-02 | P1EWCC-PWP01-7500 |  |  |  |  | -157.12d | 0d |  |  |  | y | DC2C |  |
| P1EWCC-PWP01-7520 |  | Issue Work Package Price (WPC) to PM for Acceptance | milestone | 0d | 2018-01-02 | 2018-01-02 | P1EWCC-PWP01-7550, P1EWCC-PWP01-7510 |  |  |  |  | -157.12d | 0.12d |  |  |  | y | DC2C |  |
| P1EWCC-PWP01-7530 |  | PM Acceptance Period for Work Package Price (WPC) |  | 14d | 2018-01-03 | 2018-01-16 | P1EWCC-PWP01-7520 |  |  |  |  | -221.12d | 0d |  |  | HS2 - 8h x 7d Workweek (No Holidays) | y | DC2C |  |
| P1EWCC-PWP01-7540 |  | PM Instruction to Commence Work Package | milestone | 0d | 2018-01-16 | 2018-01-16 | P1EWCC-PWP01-7530 |  |  |  |  | -221.12d | 0d |  |  | HS2 - 8h x 7d Workweek (No Holidays) | y | DC2C | Y |
| P1EWCC-PWP01-7560 |  | Procurement/Mobilisation Period |  | 5d | 2018-01-16 | 2018-01-23 | P1EWCC-PWP01-7540 |  |  |  |  | -157.12d | 0d |  |  |  | y | DC2C |  |
|  | 21 | **WORK PACKAGE PERFORMANCE MEASUREMENT BASELINE (WPPMB)** |  |  | 2017-11-07 | 2018-01-02 |  |  |  |  |  |  |  |  |  |  |  |  |  |
| P1EWCC-PWP01-7550 |  | Development of Work Package Performance Measurement Baseline (WPPMB) |  | 40d | 2017-11-07 | 2018-01-02 | P1EWCC-PWP01-7510 SS |  |  |  |  | -157.12d | 0d |  |  |  | y | DC2C |  |
|  | 2 | **DC2D - Stoke Mandeville & Princes Risborough Detailed Design & Construction** |  |  |  |  |  |  |  |  |  |  |  |  |  |  |  |  |  |
|  | 21 | **WORK PACKAGE PERFORMANCE MEASUREMENT BASELINE (WPPMB)** |  |  |  |  |  |  |  |  |  |  |  |  |  |  |  |  |  |
|  | 10 | **DC2E - Calvert Cutting - School Hill UTX Detailed Design & Construction** |  |  | 2018-04-04 | 2018-07-24 |  |  |  |  |  |  |  |  |  |  |  |  |  |
| P1EWCC-PWP01-11810 |  | Development of Work Package Price (WPC) |  | 45d | 2018-04-04 | 2018-06-05 |  |  |  |  |  | -97d | 0d | as late as possible |  |  | y | DC2E |  |
| P1EWCC-PWP01-11820 |  | Issue Work Package Price (WPC) to PM for Acceptance | milestone | 0d | 2018-06-05 | 2018-06-05 | P1EWCC-PWP01-11810, P1EWCC-PWP01-11860 |  |  |  |  | -97d | 0d | as late as possible |  |  | y | DC2E |  |
| P1EWCC-PWP01-11830 |  | PM Acceptance Period for Work Package Price (WPC) |  | 42d | 2018-06-06 | 2018-07-17 | P1EWCC-PWP01-11820 |  |  |  |  | -135d | 0d | as late as possible |  | HS2 - 8h x 7d Workweek (No Holidays) | y | DC2E |  |
| P1EWCC-PWP01-11840 |  | PM Instruction to Commence Work Package | milestone | 0d | 2018-07-17 | 2018-07-17 | P1EWCC-PWP01-11830 |  |  |  |  | -135d | 0d | as late as possible |  | HS2 - 8h x 7d Workweek (No Holidays) | y | DC2E | Y |
| P1EWCC-PWP01-11850 |  | Procurement/Mobilisation Period |  | 5d | 2018-07-17 | 2018-07-24 | P1EWCC-PWP01-11840 |  |  |  |  | -96.88d | 0d | as late as possible |  |  | y | DC2E |  |
|  | 21 | **WORK PACKAGE PERFORMANCE MEASUREMENT BASELINE (WPPMB)** |  |  | 2018-04-11 | 2018-06-05 |  |  |  |  |  |  |  |  |  |  |  |  |  |
| P1EWCC-PWP01-11860 |  | Development of Work Package Performance Measurement Baseline (WPPMB) |  | 40d | 2018-04-11 | 2018-06-05 | P1EWCC-PWP01-11810 SS |  |  |  |  | -97d | 0d | as late as possible |  |  | y | DC2E |  |
|  | 4 | **DC2E - Calvert Cutting - Great Moor Sailing Club Detailed Design & Construction** |  |  | 2018-04-17 | 2018-08-07 |  |  |  |  |  |  |  |  |  |  |  |  |  |
| P1EWCC-PWP01-7360 |  | Development of Work Package Price (WPC) |  | 45d | 2018-04-17 | 2018-06-19 | P1EWCC-PWP01-7290, P1EWCC-PWP09-1330 |  |  |  |  | 50.12d | 0d |  |  |  | y | DC2E |  |
| P1EWCC-PWP01-7370 |  | Issue Work Package Price (WPC) to PM for Acceptance | milestone | 0d | 2018-06-19 | 2018-06-19 | P1EWCC-PWP01-7360, P1EWCC-PWP01-7400 |  |  |  |  | 50.12d | 0.12d |  |  |  | y | DC2E |  |
| P1EWCC-PWP01-7380 |  | PM Acceptance Period for Work Package Price (WPC) |  | 42d | 2018-06-20 | 2018-07-31 | P1EWCC-PWP01-7370 |  |  |  |  | 70d | 0d |  |  | HS2 - 8h x 7d Workweek (No Holidays) | y | DC2E |  |
| P1EWCC-PWP01-7390 |  | PM Instruction to Commence Work Package | milestone | 0d | 2018-07-31 | 2018-07-31 | P1EWCC-PWP01-7380 |  |  |  |  | 70d | 0d |  |  | HS2 - 8h x 7d Workweek (No Holidays) | y | DC2E | Y |
| P1EWCC-PWP01-7410 |  | Procurement/Mobilisation Period |  | 5d | 2018-07-31 | 2018-08-07 | P1EWCC-PWP01-7390 |  |  |  |  | 50d | 0d |  |  |  | y | DC2E |  |

| ID | WBS | Activity | Type | Duration | Start | Finish | Predecessors | Complete | Remaining | Planned start | Planned finish | Total float | Free float | Constraint | Expected finish | Calendar | HS2 Filter | Fusion - WPS | VIEW Y/N |
| --- | --- | --- | --- | --- | --- | --- | --- | --- | --- | --- | --- | --- | --- | --- | --- | --- | --- | --- | --- |
|  | 21 | **WORK PACKAGE PERFORMANCE MEASUREMENT BASELINE (WPPMB)** |  |  | 2018-04-17 | 2018-06-12 |  |  |  |  |  |  |  |  |  |  |  |  |  |
| P1EWCC-PWP01-7400 |  | Development of Work Package Performance Measurement Baseline (WPPMB) |  | 40d | 2018-04-17 | 2018-06-12 | P1EWCC-PWP01-7360 SS |  |  |  |  | 55.12d | 5d |  |  |  | y | DC2E |  |
|  | 8 | **DC2F - Highways & Civils Detailed Design & Construction** |  |  | 2018-05-23 | 2018-08-07 |  |  |  |  |  |  |  |  |  |  |  |  |  |
| P1EWCC-PWP01-7960 |  | Development of Work Package Price (WPC) |  | 40d | 2018-05-23 | 2018-07-17 | P1EWCC-PWP01-7950, P1EWCC-PWP09-7140 |  |  |  |  | -157.25d | 0d | as late as possible |  |  | y | DC2F |  |
| P1EWCC-PWP01-7970 |  | Issue Work Package Price (WPC) to PM for Acceptance | milestone | 0d | 2018-07-17 | 2018-07-17 | P1EWCC-PWP01-7960, P1EWCC-PWP01-8000 |  |  |  |  | -157.25d | 0d | as late as possible |  |  | y | DC2F |  |
| P1EWCC-PWP01-7980 |  | PM Acceptance Period for Work Package Price (WPC) |  | 14d | 2018-07-18 | 2018-07-31 | P1EWCC-PWP01-7970 |  |  |  |  | -221.12d | 0d | as late as possible |  | HS2 - 8h x 7d Workweek (No Holidays) | y | DC2F |  |
| P1EWCC-PWP01-7990 |  | PM Instruction to Commence Work Package | milestone | 0d | 2018-07-31 | 2018-07-31 | P1EWCC-PWP01-7980 |  |  |  |  | -221.12d | 0d | as late as possible |  | HS2 - 8h x 7d Workweek (No Holidays) | y | DC2F | Y |
| P1EWCC-PWP01-8010 |  | Procurement/Mobilisation Period |  | 5d | 2018-07-31 | 2018-08-07 | P1EWCC-PWP01-7990 |  |  |  |  | -157.12d | 0d | as late as possible |  |  | y | DC2F |  |
|  | 21 | **WORK PACKAGE PERFORMANCE MEASUREMENT BASELINE (WPPMB)** |  |  | 2018-05-23 | 2018-07-17 |  |  |  |  |  |  |  |  |  |  |  |  |  |
| P1EWCC-PWP01-8000 |  | Development of Work Package Performance Measurement Baseline (WPPMB) |  | 40d | 2018-05-23 | 2018-07-17 | P1EWCC-PWP01-7960 SS |  |  |  |  | -157.25d | 0d | as late as possible |  |  | y | DC2F |  |
|  | 6 | **DC2G - A413 Roundabouts & Haul Road** |  |  | 2018-02-28 | 2018-06-21 |  |  |  |  |  |  |  |  |  |  |  |  |  |
| P1EWCC-PWP01-11630 |  | Development of Work Package Price (WPC) |  | 61d | 2018-02-28 | 2018-05-24 | P1EWCC-PWP01-11590, P1EWCC-PWP01-11620 |  |  |  |  | 25.12d | 0d |  |  |  | y | DC2G |  |
| P1EWCC-PWP01-11640 |  | Issue Work Package Price (WPC) to PM for Acceptance | milestone | 0d | 2018-05-24 | 2018-05-24 | P1EWCC-PWP01-11630, P1EWCC-PWP01-11680 |  |  |  |  | 25.12d | 0.12d |  |  |  | y | DC2G |  |
| P1EWCC-PWP01-11650 |  | PM Acceptance Period for Work Package Price (WPC) |  | 14d | 2018-05-25 | 2018-06-07 | P1EWCC-PWP01-11640 |  |  |  |  | 35d | 0d |  |  | HS2 - 8h x 7d Workweek (No Holidays) | y | DC2G |  |
| P1EWCC-PWP01-11660 |  | PM Instruction to Commence Work Package | milestone | 0d | 2018-06-07 | 2018-06-07 | P1EWCC-PWP01-11650 |  |  |  |  | 35d | 0d |  |  | HS2 - 8h x 7d Workweek (No Holidays) | y | DC2G | Y |
| P1EWCC-PWP01-11670 |  | Procurement/Mobilisation Period |  | 10d | 2018-06-07 | 2018-06-21 | P1EWCC-PWP01-11660 |  |  |  |  | 25d | 0d |  |  |  | y | DC2G |  |
|  | 21 | **WORK PACKAGE PERFORMANCE MEASUREMENT BASELINE (WPPMB)** |  |  | 2018-04-09 | 2018-05-24 |  |  |  |  |  |  |  |  |  |  |  |  |  |
| P1EWCC-PWP01-11680 |  | Development of Work Package Performance Measurement Baseline (WPPMB) |  | 33d | 2018-04-09 | 2018-05-24 | P1EWCC-PWP01-11630 SS |  |  |  |  | 25.12d | 0d | as late as possible |  |  | y | DC2G |  |
|  | 3 | **DC3** |  |  | 2017-07-18 | 2018-09-19 |  |  |  |  |  |  |  |  |  |  |  |  |  |
|  | 2 | **DC3A - Chipping Warden, A361 Junction, Wardington A361 Safety Works & Sulgrave Junction-S.Design** |  |  | 2017-07-18 | 2017-10-13 |  |  |  |  |  |  |  |  |  |  |  |  |  |
| P1EWCC-PWP01-6160 |  | Development of Work Package Price (WPC) |  | 30d | 2017-07-18 A | 2017-09-22 | P1EWCC-PWP01-6050 | 84% | 4.88d | 2017-08-01 | 2017-09-11 | -51.88d | 0d |  | 2017-09-22 |  | y | DC3A |  |
| P1EWCC-PWP01-6170 |  | Issue Work Package Price (WPC) to PM for Acceptance | milestone | 0d | 2017-09-22 | 2017-09-22 | P1EWCC-PWP01-6160, P1EWCC-PWP01-6200 |  |  |  |  | -51.88d | 0.12d |  |  |  | y | DC3A |  |
| P1EWCC-PWP01-6180 |  | PM Acceptance Period for Work Package Price (WPC) |  | 14d | 2017-09-23 | 2017-10-06 | P1EWCC-PWP01-6170 |  |  |  |  | -72d | 0d |  |  | HS2 - 8h x 7d Workweek (No Holidays) | y | DC3A |  |
| P1EWCC-PWP01-6190 |  | PM Instruction to Commence Work Package | milestone | 0d | 2017-10-06 | 2017-10-06 | P1EWCC-PWP01-6180 |  |  |  |  | -72d | 0d |  |  | HS2 - 8h x 7d Workweek (No Holidays) | y | DC3A | Y |
| P1EWCC-PWP01-6210 |  | Procurement/Mobilisation Period |  | 5d | 2017-10-06 | 2017-10-13 | P1EWCC-PWP01-6190 |  |  |  |  | -51.88d | 0d |  |  |  | y | DC3A |  |

| ID | WBS | Activity | Type | Duration | Start | Finish | Predecessors | Complete | Remaining | Planned start | Planned finish | Total float | Free float | Expected finish | Calendar | HS2 Filter | Fusion - WPS | VIEW Y/N |
| --- | --- | --- | --- | --- | --- | --- | --- | --- | --- | --- | --- | --- | --- | --- | --- | --- | --- | --- |
|  | 21 | **WORK PACKAGE PERFORMANCE MEASUREMENT BASELINE (WPPMB)** |  |  | 2017-07-18 | 2017-09-22 |  |  |  |  |  |  |  |  |  |  |  |  |
| P1EWCC-PWP01-6200 |  | Development of Work Package Performance Measurement Baseline (WPPMB) |  | 30d | 2017-07-18 A | 2017-09-22 | P1EWCC-PWP01-6160 SS | 84% | 4.88d | 2017-08-01 | 2017-09-11 | -51.88d | 0d | 2017-09-22 |  | y | DC3A |  |
|  | 4 | **DC3B - Wills Pastures Road & Junction - Scheme Design** |  |  | 2017-07-18 | 2017-10-13 |  |  |  |  |  |  |  |  |  |  |  |  |
| P1EWCC-PWP01-6220 |  | Development of Work Package Price (WPC) |  | 30d | 2017-07-18 A | 2017-09-22 | P1EWCC-PWP01-6090 | 84% | 4.88d | 2017-08-01 | 2017-09-11 | 32.12d | 0d | 2017-09-22 |  | y | DC3B |  |
| P1EWCC-PWP01-6230 |  | Issue Work Package Price (WPC) to PM for Acceptance | milestone | 0d | 2017-09-22 | 2017-09-22 | P1EWCC-PWP01-6260, P1EWCC-PWP01-6220 |  |  |  |  | 32.12d | 0.12d |  |  | y | DC3B |  |
| P1EWCC-PWP01-6240 |  | PM Acceptance Period for Work Package Price (WPC) |  | 14d | 2017-09-23 | 2017-10-06 | P1EWCC-PWP01-6230 |  |  |  |  | 46d | 0d |  | HS2 - 8h x 7d Workweek (No Holidays) | y | DC3B |  |
| P1EWCC-PWP01-6250 |  | PM Instruction to Commence Work Package | milestone | 0d | 2017-10-06 | 2017-10-06 | P1EWCC-PWP01-6240 |  |  |  |  | 46d | 0d |  | HS2 - 8h x 7d Workweek (No Holidays) | y | DC3B | Y |
| P1EWCC-PWP01-6270 |  | Procurement/Mobilisation Period |  | 5d | 2017-10-06 | 2017-10-13 | P1EWCC-PWP01-6250 |  |  |  |  | 32.12d | 0d |  |  | y | DC3B |  |
|  | 21 | **WORK PACKAGE PERFORMANCE MEASUREMENT BASELINE (WPPMB)** |  |  | 2017-07-18 | 2017-09-22 |  |  |  |  |  |  |  |  |  |  |  |  |
| P1EWCC-PWP01-6260 |  | Development of Work Package Performance Measurement Baseline (WPPMB) |  | 30d | 2017-07-18 A | 2017-09-22 | P1EWCC-PWP01-6220 SS | 84% | 4.88d | 2017-08-01 | 2017-09-11 | 32.12d | 0d | 2017-09-22 |  | y | DC3B |  |
|  | 1 | **DC3C - M40 J11 - Scheme Design** |  |  | 2017-07-18 | 2017-10-13 |  |  |  |  |  |  |  |  |  |  |  |  |
| P1EWCC-PWP01-8560 |  | Development of Work Package Price (WPC) |  | 30d | 2017-07-18 A | 2017-09-22 | P1EWCC-PWP01-8550 | 84% | 4.88d | 2017-08-01 | 2017-09-11 | 84.12d | 0d | 2017-09-22 |  | y | DC3C |  |
| P1EWCC-PWP01-8570 |  | Issue Work Package Price (WPC) to PM for Acceptance | milestone | 0d | 2017-09-22 | 2017-09-22 | P1EWCC-PWP01-8560, P1EWCC-PWP01-8600 |  |  |  |  | 84.12d | 0.12d |  |  | y | DC3C |  |
| P1EWCC-PWP01-8580 |  | PM Acceptance Period for Work Package Price (WPC) |  | 14d | 2017-09-23 | 2017-10-06 | P1EWCC-PWP01-8570 |  |  |  |  | 118d | 0d |  | HS2 - 8h x 7d Workweek (No Holidays) | y | DC3C |  |
| P1EWCC-PWP01-8590 |  | PM Instruction to Commence Work Package | milestone | 0d | 2017-10-06 | 2017-10-06 | P1EWCC-PWP01-8580 |  |  |  |  | 118d | 0d |  | HS2 - 8h x 7d Workweek (No Holidays) | y | DC3C | Y |
| P1EWCC-PWP01-8610 |  | Procurement/Mobilisation Period |  | 5d | 2017-10-06 | 2017-10-13 | P1EWCC-PWP01-8590 |  |  |  |  | 84.12d | 0d |  |  | y | DC3C |  |
|  | 21 | **WORK PACKAGE PERFORMANCE MEASUREMENT BASELINE (WPPMB)** |  |  | 2017-07-18 | 2017-09-22 |  |  |  |  |  |  |  |  |  |  |  |  |
| P1EWCC-PWP01-8600 |  | Development of Work Package Performance Measurement Baseline (WPPMB) |  | 30d | 2017-07-18 A | 2017-09-22 | P1EWCC-PWP01-8560 SS | 84% | 4.88d | 2017-08-01 | 2017-09-11 | 84.12d | 0d | 2017-09-22 |  | y | DC3C |  |
|  | 10 | **DC3 D - Utilities - Scheme Design** |  |  | 2017-11-17 | 2018-02-02 |  |  |  |  |  |  |  |  |  |  |  |  |
| P1EWCC-PWP01-9610 |  | Development of Work Package Price (WPC) |  | 40d | 2017-11-17 | 2018-01-12 | P1EWCC-PWP01-9600 |  |  |  |  | -131.88d | 0d |  |  | y | DC3D |  |
| P1EWCC-PWP01-9620 |  | Issue Work Package Price (WPC) to PM for Acceptance | milestone | 0d | 2018-01-12 | 2018-01-12 | P1EWCC-PWP01-9650, P1EWCC-PWP01-9610 |  |  |  |  | -131.88d | 0.12d |  |  | y | DC3D |  |
| P1EWCC-PWP01-9630 |  | PM Acceptance Period for Work Package Price (WPC) |  | 14d | 2018-01-13 | 2018-01-26 | P1EWCC-PWP01-9620 |  |  |  |  | -184d | 0d |  | HS2 - 8h x 7d Workweek (No Holidays) | y | DC3D |  |
| P1EWCC-PWP01-9640 |  | PM Instruction to Commence Work Package | milestone | 0d | 2018-01-26 | 2018-01-26 | P1EWCC-PWP01-9630 |  |  |  |  | -184d | 0d |  | HS2 - 8h x 7d Workweek (No Holidays) | y | DC3D | Y |
| P1EWCC-PWP01-9660 |  | Procurement/Mobilisation Period |  | 5d | 2018-01-26 | 2018-02-02 | P1EWCC-PWP01-9640 |  |  |  |  | -132d | 0d |  |  | y | DC3D |  |

| ID | WBS | Activity | Type | Duration | Start | Finish | Predecessors | Total float | Free float | Calendar | HS2 Filter | Fusion - WPS | VIEW Y/N |
| --- | --- | --- | --- | --- | --- | --- | --- | --- | --- | --- | --- | --- | --- |
|  | 21 | **WORK PACKAGE PERFORMANCE MEASUREMENT BASELINE (WPPMB)** |  |  | 2017-11-17 | 2018-01-12 |  |  |  |  |  |  |  |
| P1EWCC-PWP01-9650 |  | Development of Work Package Performance Measurement Baseline (WPPMB) |  | 40d | 2017-11-17 | 2018-01-12 | P1EWCC-PWP01-9610 SS | -131.88d | 0d |  | y | DC3D |  |
|  | 12 | **DC3 E - Turweston Haul Road - Scheme Design** |  |  | 2017-11-17 | 2018-02-02 |  |  |  |  |  |  |  |
| P1EWCC-PWP01-9910 |  | Development of Work Package Price (WPC) |  | 40d | 2017-11-17 | 2018-01-12 | P1EWCC-PWP01-9900 | -58.38d | 0d |  | y | DC3E |  |
| P1EWCC-PWP01-9920 |  | Issue Work Package Price (WPC) to PM for Acceptance | milestone | 0d | 2018-01-12 | 2018-01-12 | P1EWCC-PWP01-9950, P1EWCC-PWP01-9910 | -58.38d | 0.12d |  | y | DC3E |  |
| P1EWCC-PWP01-9930 |  | PM Acceptance Period for Work Package Price (WPC) |  | 14d | 2018-01-13 | 2018-01-26 | P1EWCC-PWP01-9920 | -80.38d | 0d | HS2 - 8h x 7d Workweek (No Holidays) | y | DC3E |  |
| P1EWCC-PWP01-9940 |  | PM Instruction to Commence Work Package | milestone | 0d | 2018-01-26 | 2018-01-26 | P1EWCC-PWP01-9930 | -80.38d | 0d | HS2 - 8h x 7d Workweek (No Holidays) | y | DC3E | Y |
| P1EWCC-PWP01-9960 |  | Procurement/Mobilisation Period |  | 5d | 2018-01-26 | 2018-02-02 | P1EWCC-PWP01-9940 | -58.38d | 0d |  | y | DC3E |  |
|  | 21 | **WORK PACKAGE PERFORMANCE MEASUREMENT BASELINE (WPPMB)** |  |  | 2017-11-17 | 2018-01-12 |  |  |  |  |  |  |  |
| P1EWCC-PWP01-9950 |  | Development of Work Package Performance Measurement Baseline (WPPMB) |  | 40d | 2017-11-17 | 2018-01-12 | P1EWCC-PWP01-9910 SS | -58.38d | 0d |  | y | DC3E |  |
|  | 3 | **DC3 F - Chipping Warden, A361 Junction, Wardington A361 Safety Works & Sulgrave Junction - DD & Con** |  |  | 2018-01-19 | 2018-04-06 |  |  |  |  |  |  |  |
| P1EWCC-PWP01-8710 |  | Development of Work Package Price (WPC) |  | 40d | 2018-01-19 | 2018-03-16 | P1EWCC-PWP01-8700, P1EWCC-PWP09-7040 FS-20d, P1EWCC-PWP10-1150 FS-20d, P1EWCC-FWP01-1130 FS-20d, P1EWCC-PWP09-7050 FS-20d, P1EWCC-PWP09-7070 FS-20d, P1EWCC-PWP09-7060 FS-20d | -51.88d | 0d |  | y | DC3F |  |
| P1EWCC-PWP01-8720 |  | Issue Work Package Price (WPC) to PM for Acceptance | milestone | 0d | 2018-03-16 | 2018-03-16 | P1EWCC-PWP01-8710, P1EWCC-PWP01-8750 | -51.88d | 0.12d |  | y | DC3F |  |
| P1EWCC-PWP01-8730 |  | PM Acceptance Period for Work Package Price (WPC) |  | 14d | 2018-03-17 | 2018-03-30 | P1EWCC-PWP01-8720 | -72d | 0d | HS2 - 8h x 7d Workweek (No Holidays) | y | DC3F |  |
| P1EWCC-PWP01-8740 |  | PM Instruction to Commence Work Package | milestone | 0d | 2018-03-30 | 2018-03-30 | P1EWCC-PWP01-8730 | -72d | 0d | HS2 - 8h x 7d Workweek (No Holidays) | y | DC3F | Y |
| P1EWCC-PWP01-8760 |  | Procurement/Mobilisation Period |  | 5d | 2018-03-30 | 2018-04-06 | P1EWCC-PWP01-8740 | -51.88d | 0d |  | y | DC3F |  |
|  | 21 | **WORK PACKAGE PERFORMANCE MEASUREMENT BASELINE (WPPMB)** |  |  | 2018-01-19 | 2018-03-16 |  |  |  |  |  |  |  |
| P1EWCC-PWP01-8750 |  | Development of Work Package Performance Measurement Baseline (WPPMB) |  | 40d | 2018-01-19 | 2018-03-16 | P1EWCC-PWP01-8710 SS | -51.88d | 0d |  | y | DC3F |  |
|  | 5 | **DC3 G - Wills Pastures Road & Junction - DD & Con** |  |  | 2018-02-08 | 2018-04-26 |  |  |  |  |  |  |  |
| P1EWCC-PWP01-8860 |  | Development of Work Package Price (WPC) |  | 40d | 2018-02-08 | 2018-04-05 | P1EWCC-PWP01-8850, P1EWCC-PWP09-7090 FS-35d, P1EWCC-PWP10-1160 FS-30d | 32.12d | 0d |  | y | DC3G |  |
| P1EWCC-PWP01-8870 |  | Issue Work Package Price (WPC) to PM for Acceptance | milestone | 0d | 2018-04-05 | 2018-04-05 | P1EWCC-PWP01-8900, P1EWCC-PWP01-8860 | 32.12d | 0.12d |  | y | DC3G |  |
| P1EWCC-PWP01-8880 |  | PM Acceptance Period for Work Package Price (WPC) |  | 14d | 2018-04-06 | 2018-04-19 | P1EWCC-PWP01-8870 | 46d | 0d | HS2 - 8h x 7d Workweek (No Holidays) | y | DC3G |  |
| P1EWCC-PWP01-8890 |  | PM Instruction to Commence Work Package | milestone | 0d | 2018-04-19 | 2018-04-19 | P1EWCC-PWP01-8880 | 46d | 0d | HS2 - 8h x 7d Workweek (No Holidays) | y | DC3G | Y |
| P1EWCC-PWP01-8910 |  | Procurement/Mobilisation Period |  | 5d | 2018-04-19 | 2018-04-26 | P1EWCC-PWP01-8890 | 32.12d | 0d |  | y | DC3G |  |

| ID | WBS | Activity | Type | Duration | Start | Finish | Predecessors | Total float | Free float | Constraint | Calendar | HS2 Filter | Fusion - WPS | VIEW Y/N |
| --- | --- | --- | --- | --- | --- | --- | --- | --- | --- | --- | --- | --- | --- | --- |
|  | 21 | **WORK PACKAGE PERFORMANCE MEASUREMENT BASELINE (WPPMB)** |  |  | 2018-02-08 | 2018-04-05 |  |  |  |  |  |  |  |  |
| P1EWCC-PWP01-8900 |  | Development of Work Package Performance Measurement Baseline (WPPMB) |  | 40d | 2018-02-08 | 2018-04-05 | P1EWCC-PWP01-8860 SS | 32.12d | 0d |  |  | y | DC3G |  |
|  | 6 | **DC3H - M40 J11 - DD & Con** |  |  | 2018-01-24 | 2018-04-11 |  |  |  |  |  |  |  |  |
| P1EWCC-PWP01-9010 |  | Development of Work Package Price (WPC) |  | 40d | 2018-01-24 | 2018-03-21 | P1EWCC-PWP01-9000, P1EWCC-PWP09-7080 FS-52d | 84.12d | 0d |  |  | y | DC3H |  |
| P1EWCC-PWP01-9020 |  | Issue Work Package Price (WPC) to PM for Acceptance | milestone | 0d | 2018-03-21 | 2018-03-21 | P1EWCC-PWP01-9050, P1EWCC-PWP01-9010 | 84.12d | 0.12d |  |  | y | DC3H |  |
| P1EWCC-PWP01-9030 |  | PM Acceptance Period for Work Package Price (WPC) |  | 14d | 2018-03-22 | 2018-04-04 | P1EWCC-PWP01-9020 | 118d | 0d |  | HS2 - 8h x 7d Workweek (No Holidays) | y | DC3H |  |
| P1EWCC-PWP01-9040 |  | PM Instruction to Commence Work Package | milestone | 0d | 2018-04-04 | 2018-04-04 | P1EWCC-PWP01-9030 | 118d | 0d |  | HS2 - 8h x 7d Workweek (No Holidays) | y | DC3H | Y |
| P1EWCC-PWP01-9060 |  | Procurement/Mobilisation Period |  | 5d | 2018-04-04 | 2018-04-11 | P1EWCC-PWP01-9040 | 84d | 0d |  |  | y | DC3H |  |
|  | 21 | **WORK PACKAGE PERFORMANCE MEASUREMENT BASELINE (WPPMB)** |  |  | 2018-01-24 | 2018-03-21 |  |  |  |  |  |  |  |  |
| P1EWCC-PWP01-9050 |  | Development of Work Package Performance Measurement Baseline (WPPMB) |  | 40d | 2018-01-24 | 2018-03-21 | P1EWCC-PWP01-9010 SS | 84.12d | 0d |  |  | y | DC3H |  |
|  | 7 | **DC3 I - Utilities - DD & Con-1** |  |  | 2018-07-05 | 2018-09-19 |  |  |  |  |  |  |  |  |
| P1EWCC-PWP01-11320 |  | Development of Work Package Price (WPC) |  | 40d | 2018-07-05 | 2018-08-29 | P1EWCC-PWP01-9450, P1EWCC-PWP10-1260 | -132.25d | 0d | as late as possible |  | y | DC3I |  |
| P1EWCC-PWP01-11330 |  | Issue Work Package Price (WPC) to PM for Acceptance | milestone | 0d | 2018-08-29 | 2018-08-29 | P1EWCC-PWP01-11320, P1EWCC-PWP01-11360 | -132.25d | 0d | as late as possible |  | y | DC3I |  |
| P1EWCC-PWP01-11340 |  | PM Acceptance Period for Work Package Price (WPC) |  | 14d | 2018-08-30 | 2018-09-12 | P1EWCC-PWP01-11330 | -184.25d | 0d | as late as possible | HS2 - 8h x 7d Workweek (No Holidays) | y | DC3I |  |
| P1EWCC-PWP01-11350 |  | PM Instruction to Commence Work Package | milestone | 0d | 2018-09-12 | 2018-09-12 | P1EWCC-PWP01-11340 | -184.25d | 0d | as late as possible | HS2 - 8h x 7d Workweek (No Holidays) | y | DC3I | Y |
| P1EWCC-PWP01-11370 |  | Procurement/Mobilisation Period |  | 5d | 2018-09-12 | 2018-09-19 | P1EWCC-PWP01-11350 | -132.25d | 0d | as late as possible |  | y | DC3I |  |
|  | 21 | **WORK PACKAGE PERFORMANCE MEASUREMENT BASELINE (WPPMB)** |  |  | 2018-07-05 | 2018-08-29 |  |  |  |  |  |  |  |  |
| P1EWCC-PWP01-11360 |  | Development of Work Package Performance Measurement Baseline (WPPMB) |  | 40d | 2018-07-05 | 2018-08-29 | P1EWCC-PWP01-11320 SS | -132.25d | 0d | as late as possible |  | y | DC3I |  |
|  | 8 | **DC3 J - Turweston Haul Rd - DD & Con** |  |  | 2018-07-05 | 2018-09-19 |  |  |  |  |  |  |  |  |
| P1EWCC-PWP01-11380 |  | Development of Work Package Price (WPC) |  | 40d | 2018-07-05 | 2018-08-29 | P1EWCC-PWP01-11520, P1EWCC-FWP06-6800 | -58.5d | 0d | as late as possible |  | y | DC3J |  |
| P1EWCC-PWP01-11390 |  | Issue Work Package Price (WPC) to PM for Acceptance | milestone | 0d | 2018-08-29 | 2018-08-29 | P1EWCC-PWP01-11420, P1EWCC-PWP01-11380 | -58.5d | 0d | as late as possible |  | y | DC3J |  |
| P1EWCC-PWP01-11400 |  | PM Acceptance Period for Work Package Price (WPC) |  | 14d | 2018-08-30 | 2018-09-12 | P1EWCC-PWP01-11390 | -82.5d | 0d | as late as possible | HS2 - 8h x 7d Workweek (No Holidays) | y | DC3J |  |
| P1EWCC-PWP01-11410 |  | PM Instruction to Commence Work Package | milestone | 0d | 2018-09-12 | 2018-09-12 | P1EWCC-PWP01-11400 | -82.5d | 0d | as late as possible | HS2 - 8h x 7d Workweek (No Holidays) | y | DC3J | Y |
| P1EWCC-PWP01-11430 |  | Procurement/Mobilisation Period |  | 5d | 2018-09-12 | 2018-09-19 | P1EWCC-PWP01-11410 | -58.5d | 0d | as late as possible |  | y | DC3J |  |

| ID | WBS | Activity | Type | Duration | Start | Finish | Predecessors | Complete | Total float | Free float | Constraint | Calendar | HS2 Filter | Fusion - WPS | VIEW Y/N |
| --- | --- | --- | --- | --- | --- | --- | --- | --- | --- | --- | --- | --- | --- | --- | --- |
|  | 21 | **WORK PACKAGE PERFORMANCE MEASUREMENT BASELINE (WPPMB)** |  |  | 2018-07-05 | 2018-08-29 |  |  |  |  |  |  |  |  |  |
| P1EWCC-PWP01-11420 |  | Development of Work Package Performance Measurement Baseline (WPPMB) |  | 40d | 2018-07-05 | 2018-08-29 | P1EWCC-PWP01-11380 SS |  | -58.5d | 0d | as late as possible |  | y | DC3J |  |
|  | 11 | **DC3 K - Demolition Works** |  |  | 2018-02-02 | 2018-04-20 |  |  |  |  |  |  |  |  |  |
| P1EWCC-PWP01-9760 |  | Development of Work Package Price (WPC) |  | 40d | 2018-02-02 | 2018-03-30 | P1EWCC-PWP01-9750 |  | 0.38d | 0d |  |  | y | DC3K |  |
| P1EWCC-PWP01-9770 |  | Issue Work Package Price (WPC) to PM for Acceptance | milestone | 0d | 2018-03-30 | 2018-03-30 | P1EWCC-PWP01-9760, P1EWCC-PWP01-9800 |  | 0.38d | 0.12d |  |  | y | DC3K |  |
| P1EWCC-PWP01-9780 |  | PM Acceptance Period for Work Package Price (WPC) |  | 14d | 2018-03-31 | 2018-04-13 | P1EWCC-PWP01-9770 |  | 2.25d | 0d |  | HS2 - 8h x 7d Workweek (No Holidays) | y | DC3K |  |
| P1EWCC-PWP01-9790 |  | PM Instruction to Commence Work Package | milestone | 0d | 2018-04-13 | 2018-04-13 | P1EWCC-PWP01-9780 |  | 2.25d | 0d |  | HS2 - 8h x 7d Workweek (No Holidays) | y | DC3K | Y |
| P1EWCC-PWP01-9810 |  | Procurement/Mobilisation Period |  | 5d | 2018-04-13 | 2018-04-20 | P1EWCC-PWP01-9790 |  | 0.38d | 30d |  |  | y | DC3K |  |
|  | 21 | **WORK PACKAGE PERFORMANCE MEASUREMENT BASELINE (WPPMB)** |  |  | 2018-02-02 | 2018-03-30 |  |  |  |  |  |  |  |  |  |
| P1EWCC-PWP01-9800 |  | Development of Work Package Performance Measurement Baseline (WPPMB) |  | 40d | 2018-02-02 | 2018-03-30 | P1EWCC-PWP01-9760 SS |  | 0.38d | 0d |  |  | y | DC3K |  |
|  | AW | **Area Wide Enabling Works** |  |  | 2017-02-23 | 2021-01-01 |  |  |  |  |  |  |  |  |  |
| P1EWCC-AWP01-1220 |  | Hybrid Bill Royal Ascent | milestone | 0d | 2017-02-23 A | 2017-02-23 A |  | 100% |  |  | start on or after 2017-02-23 |  | y |  |  |
| P1EWCC-AWP01-1230 |  | Royal Ascent discharge of Powers (21 days period) |  | 17d | 2017-02-23 A | 2017-03-17 A | P1EWCC-AWP01-1220 | 100% |  |  |  |  | y |  |  |
|  | MOB | **Mobilisation** |  |  |  |  |  |  |  |  |  |  |  |  |  |
|  | UTL | **Utilities** |  |  |  |  |  |  |  |  |  |  |  |  |  |
|  | DES | **Design** |  |  |  |  |  |  |  |  |  |  |  |  |  |
|  | CON | **Consents** |  |  |  |  |  |  |  |  |  |  |  |  |  |
|  | SUR | **Surveys** |  |  |  |  |  |  |  |  |  |  |  |  |  |
|  | DEM | **Demolitions** |  |  |  |  |  |  |  |  |  |  |  |  |  |
|  | ENV | **Environmental** |  |  | 2017-12-15 | 2021-01-01 |  |  |  |  |  |  |  |  |  |
|  | 4 | **Site Clearance Works** |  |  | 2018-02-05 | 2019-03-22 |  |  |  |  |  |  |  |  |  |
| P1EWCC-PWP10-1210 |  | Design and Approval of Site clearance Area Wide |  | 194.62d | 2018-02-05 | 2018-11-02 | P1EWCC-PWP02-12360 |  | 463.38d | 0d |  | HS2 - 8h x 5d Workweek (No Holidays) [upto 2034] | y | AWE5 |  |
| P1EWCC-AWP01-8230 |  | Planning Consent & Licensing for Site clearance Area Wide |  | 50d | 2018-11-02 | 2019-01-11 | P1EWCC-PWP10-1210 |  | 463.38d | 0d |  | HS2 - 8h x 5d Workweek (No Holidays) [upto 2034] |  | AWE5 |  |
| P1EWCC-EWP06-7170 |  | Site Clearance for Area Wide |  | 50d | 2019-01-11 | 2019-03-22 | P1EWCC-AWP01-8230 |  | 463.38d |  | start on or after 2018-09-03 | HS2 - 8h x 5d Workweek (No Holidays) [upto 2034] | y | AWE5 |  |

| ID | WBS | Activity | Type | Duration | Start | Finish | Predecessors | Complete | Planned start | Planned finish | Total float | Free float | Constraint | Calendar | Fusion - WPS | HS2 Filter |
| --- | --- | --- | --- | --- | --- | --- | --- | --- | --- | --- | --- | --- | --- | --- | --- | --- |
|  | 2 | **Surveys** |  |  | 2017-12-15 | 2019-09-23 |  |  |  |  |  |  |  |  |  |  |
| P1EWCC-PWP03-4710 |  | Survey for Invasive Species (Whole Area) |  | 461d | 2017-12-15 | 2019-09-23 | P1EWCC-PWP01-5610 |  |  |  | 333d | 241.12d |  |  | AWS |  |
|  | 3 | **Treatment** |  |  | 2018-05-01 | 2020-08-25 |  |  |  |  |  |  |  |  |  |  |
| P1EWCC-PWP03-4720 |  | Control & Treatment of Invasive Species (Whole Area) |  | 606d | 2018-05-01 | 2020-08-25 | P1EWCC-PWP03-4710 FF, P1EWCC-PWP02-12210 |  |  |  | 91.88d | 92d | start on or after 2018-05-01 |  | AWE4 |  |
|  | 1 | **SOW Completion Dates** |  |  | 2020-12-31 | 2021-01-01 |  |  |  |  |  |  |  |  |  |  |
| P1EWCC-EWP06-7220 |  | Completion of Site clearance works for Area Wide | milestone | 0d | 2020-12-31 | 2020-12-31 | P1EWCC-EWP06-7170 |  |  |  | 0d | 532d | finish on 2020-12-31 | HS2 - 8h x 5d Workweek (No Holidays) [upto 2034] | AWE5 | y |
| P1EWCC-PWP03-4730 |  | Control & Treatment of Invasive Species | milestone | 0d | 2021-01-01 | 2021-01-01 | P1EWCC-PWP03-4720 |  |  |  | 0d | 531d | finish on 2020-12-31 | HS2 - 8h x 5d Workweek (No Holidays) [upto 2034] | AWE4 |  |
|  | ARC | **Archaeology** |  |  |  |  |  |  |  |  |  |  |  |  |  |  |
|  | C1 | **C1 - Chiltern Tunnels & Colne Valley Viaduct (Ch. 25800 To Ch. 47750)** |  |  | 2017-02-17 | 2020-09-03 |  |  |  |  |  |  |  |  |  |  |
|  | 2 | **Bucks Junction Works** |  |  | 2017-12-08 | 2019-03-11 |  |  |  |  |  |  |  |  |  |  |
|  | 1 | **Engineering Surveys** |  |  | 2017-12-08 | 2017-12-29 |  |  |  |  |  |  |  |  |  |  |
| P1EWCC-PWP03-4690 |  | Survey for Engineering (Topo, GPR, Utility, Soil) |  | 15d | 2017-12-08 | 2017-12-29 | P1EWCC-PWP01-6360 |  |  |  | -27.88d | 0d |  |  | DC1D |  |
|  | 2 | **Design** |  |  | 2017-12-29 | 2018-10-08 |  |  |  |  |  |  |  |  |  |  |
| P1EWCC-PWP09-7180 |  | Scheme Design & Approval : Bucks Junctions |  | 68d | 2017-12-29 | 2018-04-04 | P1EWCC-PWP03-4690 |  |  |  | -27.88d | 0d |  |  | DC1D | y |
| P1EWCC-PWP09-7170 |  | Detailed Design & Approval : Bucks Junctions |  | 78d | 2018-06-20 | 2018-10-08 | P1EWCC-PWP01-6360, P1EWCC-PWP09-7180, P1EWCC-PWP01-11190 |  |  |  | -6d | 0d |  |  | DC1I | y |
| P1EWCC-AWP01-8190 |  | Schedule 17 Application for Highway Design |  | 50d | 2018-07-30 | 2018-10-08 | P1EWCC-PWP09-7170 FF |  |  |  | -6d | 0d |  |  | DC1I | y |
|  | 4 | **Construction** |  |  | 2018-10-08 | 2019-03-11 |  |  |  |  |  |  |  |  |  |  |
| P1EWCC-AWP01-8210 |  | Construction of Bucks Junctions |  | 110d | 2018-10-08 | 2019-03-11 | P1EWCC-AWP01-8190 |  |  |  | -6d | 0d |  |  | DC1I | y |
|  | 3 | **SOW Completion Dates** |  |  | 2018-04-04 | 2019-03-11 |  |  |  |  |  |  |  |  |  |  |
| P1EWCC-AWP01-8450 |  | Completion of Scheme Design for Bucks Junctions | milestone | 0d | 2018-04-04 | 2018-04-04 | P1EWCC-PWP09-7180 |  |  |  | -4d | 1745d | finish on 2018-03-31 | HS2 - 8h x 7d Workweek (No Holidays) | DC1D | y |
| P1EWCC-AWP01-8220 |  | Concstruction of Bucks Junctions Complete | milestone | 0d | 2019-03-11 | 2019-03-11 | P1EWCC-AWP01-8210 |  |  |  | -10d | 1404d | finish on 2019-03-01 | HS2 - 8h x 7d Workweek (No Holidays) | DC1I | y |
|  | C11 | **Colne Valley Viaduct & Surface Works (Ch. 25800 To Ch. 31050)** |  |  | 2017-03-20 | 2019-12-10 |  |  |  |  |  |  |  |  |  |  |
|  | C111 | **Colne Valley Viaduct (Ch. 25800 To 29650)** |  |  | 2017-03-20 | 2019-12-10 |  |  |  |  |  |  |  |  |  |  |
|  | 1 | **025-L1 - Colne Valley South Embankment** |  |  | 2017-03-20 | 2019-06-28 |  |  |  |  |  |  |  |  |  |  |
|  | 2 | **Land Access** |  |  | 2017-04-10 | 2018-07-26 |  |  |  |  |  |  |  |  |  |  |
|  | 1 | **Survey Work** |  |  | 2017-04-10 | 2017-04-10 |  |  |  |  |  |  |  |  |  |  |
| P1EWCC-AWP01-5140 |  | Land Access Granted for Survey Work (Schedule 2) | milestone | 0d | 2017-04-10 A | 2017-04-10 A |  | 100% | 2017-04-03 | 2017-04-03 |  |  | as late as possible |  | AW1 | y |

| ID | WBS | Activity | Type | Duration | Start | Finish | Predecessors | Complete | Remaining | Planned start | Planned finish | Total float | Free float | Constraint | Expected finish | HS2 Filter | Fusion - WPS |
| --- | --- | --- | --- | --- | --- | --- | --- | --- | --- | --- | --- | --- | --- | --- | --- | --- | --- |
|  | 2 | **Possession** |  |  | 2018-07-26 | 2018-07-26 |  |  |  |  |  |  |  |  |  |  |  |
| P1EWCC-AWP01-5160 |  | Land Access Possession Granted for Construction (Schedule 16) | milestone | 0d | 2018-07-26 | 2018-07-26 |  |  |  |  |  | 5d | 0d | as late as possible |  | y | AW1 |
|  | 6 | **Survey Works** |  |  | 2017-03-20 | 2019-06-28 |  |  |  |  |  |  |  |  |  |  |  |
| P1EWCC-AWP01-5100 |  | Planning Consent & Licensing for Survey Work |  | 10d | 2017-03-20 A | 2017-04-07 A | P1EWCC-AWP01-1230 | 100% |  | 2017-03-20 | 2017-03-31 |  |  |  |  |  | AW1 |
| P1EWCC-FWP01-1150 |  | Undertake Remaining Ecology & Environmental Surveys |  | 400d | 2017-12-15 | 2019-06-28 | P1EWCC-PWP01-5610 |  |  |  |  | 85d | 91.75d |  |  | y | AWS |
| P1EWCC-FWP01-1160 |  | Undertake Remaining Soil Surveys |  | 120d | 2017-12-15 | 2018-06-01 | P1EWCC-PWP01-5610 |  |  |  |  | 365d | 371.75d |  |  | y | AWS |
| P1EWCC-FWP01-1170 |  | Undertake Arboricultural Surveys |  | 125d | 2017-12-15 | 2018-06-08 | P1EWCC-PWP01-5610 |  |  |  |  | 360d | 366.75d |  |  | y | AWS |
|  | 3 | **Arboricultural Surveys** |  |  |  |  |  |  |  |  |  |  |  |  |  |  |  |
|  | 1 | **Ecological & Environmental Surveys** |  |  | 2017-04-10 | 2017-12-01 |  |  |  |  |  |  |  |  |  |  |  |
| P1EWCC-PWP01-3370 |  | Survey for Badgers, Bats, GCN & Reptiles |  | 25d | 2017-04-10 A | 2017-12-01 | P1EWCC-AWP01-5140, P1EWCC-AWP01-5100, P1EWCC-UWP01-1010 |  | 54.88d | 2017-04-03 | 2017-05-05 | -89d | 0d |  | 2017-12-01 |  | UW1 |
|  | 2 | **Engineering Surveys** |  |  |  |  |  |  |  |  |  |  |  |  |  |  |  |
|  | 4 | **Historic Environment Surveys** |  |  | 2017-09-18 | 2018-11-16 |  |  |  |  |  |  |  |  |  |  |  |
| P1EWCC-PWP06-3050 |  | Non-Intrusive Surveys (Geophysics) |  | 20d | 2018-02-09 | 2018-03-09 | P1EWCC-PWP06-3090, P1EWCC-UWP01-1010, P1EWCC-PWP05-240 |  |  |  |  | 280d | 0d |  |  |  | AWH |
| P1EWCC-PWP06-8550 |  | Non-Intrusive Surveys (Trial Trenching) |  | 30d | 2018-05-04 | 2018-06-15 | P1EWCC-PWP06-3100, P1EWCC-PWP05-240 |  |  |  |  | 280d | 0d |  |  |  | AWH |
| P1EWCC-PWP06-3070 |  | Intrusive Surveys (Mitigation Works) |  | 40d | 2018-09-24 | 2018-11-16 | P1EWCC-PWP02-6330, P1EWCC-PWP06-3120, P1EWCC-AWP01-5160 |  |  |  |  | 244.88d | 0d |  |  |  | AWH |
|  | 12 | **Ecological Mitigation Site Dews Farm 1001 (026-M3W, 026-M8E, 026-M9E)** |  |  | 2017-09-18 | 2017-12-22 |  |  |  |  |  |  |  |  |  |  |  |
| P1EWCC-PWP06-2100 |  | Geophysics (ecological mitigation site) (Dews Farm) |  | 8d | 2017-09-18 | 2017-09-27 | P1EWCC-PWP06-2060, P1EWCC-UWP01-1010 |  |  |  |  | -8d | 0d | start on or after 2017-09-18 |  |  | UW1 |
| P1EWCC-PWP06-2110 |  | Intrusive Surveys (ecological mitigation site) (Dews Farm) |  | 5d | 2017-12-15 | 2017-12-22 | P1EWCC-PWP06-2070, P1EWCC-AWP01-8400, P1EWCC-PWP05-240 |  |  |  |  | -34.88d | 0d |  |  |  | AWH |
|  | 1 | **BGC 275kv Access Road and Bridge St Johns Covert CR01410** |  |  | 2017-10-04 | 2017-10-04 |  |  |  |  |  |  |  |  |  |  |  |
| P1EWCC-PWP06-11370 |  | Boreholes (St Johns Covert) |  | 1d | 2017-10-04 | 2017-10-04 | P1EWCC-PWP06-11340 |  |  |  |  | 1347d | 0d | start on or after 2017-10-04 |  |  | UW1 |
|  | 8 | **Historic Environment** |  |  | 2017-04-17 | 2019-01-04 |  |  |  |  |  |  |  |  |  |  |  |
| P1EWCC-PWP06-3090 |  | Production and Approval of LS-WSI (non-intrusive surveys) |  | 40d | 2017-12-15 | 2018-02-09 | P1EWCC-PWP05-240 |  |  |  |  | 280d | 0d |  |  |  | AWH |
| P1EWCC-PWP06-3100 |  | Update of Project Plans and LS-WSI and Approval (Trial Trenching) |  | 40d | 2018-03-09 | 2018-05-04 | P1EWCC-PWP06-3050 |  |  |  |  | 280d | 0d |  |  |  | AWH |
| P1EWCC-PWP06-3120 |  | Update of Project Plans and LS-WSI and Approval (Mitigation Works) |  | 35d | 2018-06-15 | 2018-08-03 | P1EWCC-PWP06-8550 |  |  |  |  | 280d | 35.12d |  |  |  | AWH |
| P1EWCC-PWP06-8560 |  | Report of Findings And Approval |  | 35d | 2018-11-19 | 2019-01-04 | P1EWCC-PWP06-3070 |  |  |  |  | 1050d |  |  |  |  | AWH |

| ID | WBS | Activity | Type | Duration | Start | Finish | Predecessors | Complete | Planned start | Planned finish | Total float | Free float | Constraint | Calendar | Fusion - WPS | HS2 Filter |
| --- | --- | --- | --- | --- | --- | --- | --- | --- | --- | --- | --- | --- | --- | --- | --- | --- |
|  | 12 | **Ecological Mitigation Site Dews Farm 1001 (026-M3W, 026-M8E, 026-M9E)** |  |  | 2017-04-17 | 2018-02-09 |  |  |  |  |  |  |  |  |  |  |
| P1EWCC-PWP06-2060 |  | Production and Approval of LS-WSI Bucks, Herts & GLA (geophysics) (Dews Farm) Code 2 |  | 15d | 2017-04-17 A | 2017-06-27 A | P1EWCC-UWP01-1000 | 100% | 2017-03-27 | 2017-04-14 |  |  |  |  | UW1 |  |
| P1EWCC-PWP06-2050 |  | HS2 issue Project Plan |  | 1d | 2017-09-18 | 2017-09-18 | P1EWCC-UWP01-1000 |  |  |  | -1d | 7d |  |  | UW1 |  |
| P1EWCC-PWP06-2070 |  | Update of Project Plans and LS-WSI and Approval (intrusive surveys) |  | 30d | 2017-09-28 | 2017-11-08 | P1EWCC-PWP06-2100, P1EWCC-PWP06-2050 |  |  |  | -8d | 26.88d |  |  | UW1 |  |
| P1EWCC-PWP06-2080 |  | Report of Findings And Approval (ecological mitigation site) |  | 35d | 2017-12-22 | 2018-02-09 | P1EWCC-PWP06-2110 |  |  |  | 1285.12d |  |  |  | AWH |  |
|  | 1 | **BGC 275kv Access Road and Bridge St Johns Covert CR01410** |  |  | 2017-04-17 | 2017-11-15 |  |  |  |  |  |  |  |  |  |  |
| P1EWCC-PWP06-11340 |  | Production and Approval of LS-WSI CR01410 (boreholes) (St Johns Covert) Code 1 |  | 15d | 2017-04-17 A | 2017-08-04 A | P1EWCC-UWP01-1000 | 100% | 2017-03-27 | 2017-04-14 |  |  |  |  | UW1 |  |
| P1EWCC-PWP06-11330 |  | HS2 issue Project Plan |  | 1d | 2017-09-18 | 2017-09-18 |  |  |  |  | 1359d | 12d |  |  | UW1 |  |
| P1EWCC-PWP06-11350 |  | Update of Project Plans and LS-WSI and Approval (intrusive surveys) |  | 30d | 2017-10-05 | 2017-11-15 | P1EWCC-PWP06-11330, P1EWCC-PWP06-11370 |  |  |  | 1347d |  |  |  | UW1 |  |
|  | 7 | **Ecological Mitigation Works** |  |  | 2018-03-01 | 2019-02-01 |  |  |  |  |  |  |  |  |  |  |
|  | 5 | **Translocation of Species** |  |  | 2018-07-26 | 2018-09-23 |  |  |  |  |  |  |  |  |  |  |
| P1EWCC-PWP02-6330 |  | Species Translocation to Habitat Creation (026-M3W, 026-M8E) |  | 60d | 2018-07-26 | 2018-09-23 | P1EWCC-AWP01-5160, P1EWCC-PWP02-14320 SS+60d, P1EWCC-PWP02-14610 |  |  |  | 7d | 0d |  | HS2 - 8h x 7d Workweek (No Holidays) | AWE1 |  |
|  | 1 | **Landscape Planting - Colne Valley (026-M7E)** |  |  | 2018-03-01 | 2019-02-01 |  |  |  |  |  |  |  |  |  |  |
|  | 1 | **Design** |  |  | 2018-03-01 | 2018-07-05 |  |  |  |  |  |  |  |  |  |  |
| P1EWCC-PWP02-12780 |  | Review and Vaildate HS2 design for planning |  | 80d | 2018-03-01 | 2018-06-21 | P1EWCC-PWP02-14440, P1EWCC-PWP02-11910 SS+5d |  |  |  | -99.75d | 0d |  |  | AWE2 | y |
| P1EWCC-PWP02-12800 |  | Schedule 17 Planning Consent Approval Period |  | 56d | 2018-04-27 | 2018-06-21 | P1EWCC-PWP02-12780 FF |  |  |  | 437d | 161d |  | HS2 - 8h x 7d Workweek (No Holidays) | AWE2 | y |
| P1EWCC-PWP02-12790 |  | HS2 approval period of vaildated design |  | 14d | 2018-06-22 | 2018-07-05 | P1EWCC-PWP02-12780 |  |  |  | 332.12d | 0d |  | HS2 - 8h x 7d Workweek (No Holidays) | AWE2 | y |
|  | 2 | **Installation** |  |  | 2018-07-05 | 2019-02-01 |  |  |  |  |  |  |  |  |  |  |
| P1EWCC-PWP02-12760 |  | Call off of Advance Planting | milestone | 0d | 2018-07-05 | 2018-07-05 | P1EWCC-PWP02-12790 |  |  |  | 236.25d | 0d |  |  | AWE2 | y |
| P1EWCC-PWP02-12770 |  | Call off period for Advance Planting |  | 64.88d | 2018-07-05 | 2018-10-04 | P1EWCC-PWP02-12760 |  |  |  | 236.25d | 40.25d |  |  | AWE2 | y |
| P1EWCC-PWP02-12750 |  | Advance Planting to Screen National Grid Feeder Station (026-M7E) |  | 40d | 2018-11-30 | 2019-02-01 | P1EWCC-PWP02-12770, P1EWCC-PWP02-12800, P1EWCC-PWP02-11910, P1EWCC-AWP01-5160, P1EWCC-PWP02-6330, P1EWCC-PWP02-15070 |  |  |  | 185d | 191.75d | start on or after 2018-11-01 | HS2 - 8h x 5d Workweek (Nonwork: Bank Holidays & 1w Xmas) [upto 2034] DEFAULT | AWE2 |  |
|  | 1 | **SOW Completion Dates** |  |  | 2017-12-01 | 2018-09-30 |  |  |  |  |  |  |  |  |  |  |
| P1EWCC-PWP01-1890 |  | Completion of Survey for Badgers (25+750) | milestone | 0d | 2017-12-01 | 2017-12-01 | P1EWCC-PWP01-3370 |  |  |  | -89d | 1335.12d | finish on 2017-07-31 |  | UW1 |  |
| P1EWCC-PWP01-1900 |  | Completion of Survey for Bats (25+750) | milestone | 0d | 2017-12-01 | 2017-12-01 | P1EWCC-PWP01-3370 |  |  |  | -89d | 1335.12d | finish on 2017-07-31 |  | UW1 |  |
| P1EWCC-PWP01-1920 |  | Completion of Survey for GCN (25+850) | milestone | 0d | 2017-12-01 | 2017-12-01 | P1EWCC-PWP01-3370 |  |  |  | -89d | 1335.12d | finish on 2017-07-31 |  | UW1 |  |
| P1EWCC-PWP01-1950 |  | Completion of Survey for Reptiles (25+300 to 25+700) | milestone | 0d | 2017-12-01 | 2017-12-01 | P1EWCC-PWP01-3370 |  |  |  | -89d | 1335.12d | finish on 2017-07-31 |  | UW1 |  |
| P1EWCC-PWP01-1960 |  | Completion of Survey for Kingfishers (25+750) | milestone | 0d | 2017-12-01 | 2017-12-01 | P1EWCC-PWP01-3370 |  |  |  | -89d | 1335.12d | finish on 2017-07-31 |  | UW1 |  |
| P1EWCC-PWP02-1800 |  | Completion of Species Translocation/ exclusion - Badgers | milestone | 0d | 2018-09-30 | 2018-09-30 | P1EWCC-PWP02-6330 |  |  |  | 0d | 1566d | finish on 2018-09-30 | HS2 - 8h x 7d Workweek (No Holidays) | AWE1 |  |
| P1EWCC-PWP02-1810 |  | Completion of Species Translocation/ exclusion - Bats | milestone | 0d | 2018-09-30 | 2018-09-30 | P1EWCC-PWP02-6330 |  |  |  | 0d | 1566d | finish on 2018-09-30 | HS2 - 8h x 7d Workweek (No Holidays) | AWE1 |  |
| P1EWCC-PWP02-2030 |  | Completion of Species Translocation/ exclusion - Great Crested Newts | milestone | 0d | 2018-09-30 | 2018-09-30 | P1EWCC-PWP02-6330 |  |  |  | 0d | 1566d | finish on 2018-09-30 | HS2 - 8h x 7d Workweek (No Holidays) | AWE1 |  |
| P1EWCC-PWP02-2900 |  | Completion of Exclusion Fencing and Holt Closure | milestone | 0d | 2018-09-30 | 2018-09-30 | P1EWCC-PWP02-6330 |  |  |  | 0d | 1566d | finish on 2018-09-30 | HS2 - 8h x 7d Workweek (No Holidays) | AWE1 |  |
| P1EWCC-PWP02-2910 |  | Completion of creation, translocation, protection and management of Reptiles | milestone | 0d | 2018-09-30 | 2018-09-30 | P1EWCC-PWP02-6330 |  |  |  | 0d | 1566d | finish on 2018-09-30 | HS2 - 8h x 7d Workweek (No Holidays) | AWE1 |  |

| ID | WBS | Activity | Type | Duration | Start | Finish | Predecessors | Complete | Remaining | Planned start | Planned finish | Total float | Free float | Constraint | Expected finish | HS2 Filter | Fusion - WPS |
| --- | --- | --- | --- | --- | --- | --- | --- | --- | --- | --- | --- | --- | --- | --- | --- | --- | --- |
|  | 2 | **025-L2 - Colne Valley Viaduct** |  |  | 2017-03-20 | 2019-12-10 |  |  |  |  |  |  |  |  |  |  |  |
|  | 2 | **Land Access** |  |  | 2017-03-27 | 2018-07-26 |  |  |  |  |  |  |  |  |  |  |  |
|  | 1 | **Survey Work** |  |  | 2017-03-27 | 2017-03-27 |  |  |  |  |  |  |  |  |  |  |  |
| P1EWCC-AWP01-4270 |  | Land Access Granted for Survey Work (Schedule 2) | milestone | 0d | 2017-03-27 A | 2017-03-27 A |  | 100% |  | 2017-04-03 | 2017-04-03 |  |  | as late as possible |  | y | AW1 |
|  | 2 | **Possession** |  |  | 2017-05-11 | 2018-07-26 |  |  |  |  |  |  |  |  |  |  |  |
|  | 1 | **Ecological Mitigation Area** |  |  | 2017-05-11 | 2017-12-04 |  |  |  |  |  |  |  |  |  |  |  |
| P1EWCC-AWP01-8400 |  | Land Access Possession Granted for Ecolgical Mitigation Site (Schedule 16) 026-M3W (wetland) | milestone | 0d | 2017-05-11 A | 2017-05-11 A |  | 100% |  | 2017-05-29 | 2017-05-29 |  |  |  |  | y | UW1 |
| P1EWCC-AWP01-8550 |  | Land Access Possession Granted for Ecolgical Mitigation Site (Schedule 16) 026-M9E (grassland) | milestone | 0d | 2017-12-04 | 2017-12-04 |  |  |  |  |  | 89d | 24.88d | start on or after 2017-12-04 |  | y | UW1 |
|  | 2 | **025-L2 - Colne Valley Viaduct** |  |  | 2018-07-26 | 2018-07-26 |  |  |  |  |  |  |  |  |  |  |  |
| P1EWCC-AWP01-4290 |  | Land Access Possession Granted for Construction of Colne Valley Viaduct (Schedule 16) | milestone | 0d | 2018-07-26 | 2018-07-26 |  |  |  |  |  | -17.88d | 0d | as late as possible |  | y | AW1 |
|  | 6 | **Survey Works** |  |  | 2017-03-20 | 2019-06-28 |  |  |  |  |  |  |  |  |  |  |  |
| P1EWCC-AWP01-3940 |  | Planning Consent & Licensing for Survey Work |  | 10d | 2017-03-20 A | 2017-03-24 A | P1EWCC-AWP01-1230 | 100% |  | 2017-03-20 | 2017-03-31 |  |  |  |  |  | UW1 |
| P1EWCC-FWP01-1180 |  | Undertake Arboricultural Surveys |  | 125d | 2017-12-15 | 2018-06-08 | P1EWCC-PWP01-5610 |  |  |  |  | 360d | 366.75d |  |  | y | AWS |
| P1EWCC-FWP01-1190 |  | Undertake Remaining Soil Surveys |  | 120d | 2017-12-15 | 2018-06-01 | P1EWCC-PWP01-5610 |  |  |  |  | 365d | 371.75d |  |  | y | AWS |
| P1EWCC-FWP01-1200 |  | Undertake Remaining Ecology & Environmental Surveys |  | 400d | 2017-12-15 | 2019-06-28 | P1EWCC-PWP01-5610 |  |  |  |  | 85d | 91.75d |  |  | y | AWS |
| P1EWCC-FWP01-1260 |  | Undertake Water Monitoring |  | 280d | 2017-12-15 | 2019-01-11 | P1EWCC-PWP01-5610 |  |  |  |  | 205d | 211.75d |  |  | y | AWS |
|  | 1 | **Ecological & Environmental Surveys** |  |  | 2017-03-27 | 2017-11-24 |  |  |  |  |  |  |  |  |  |  |  |
| P1EWCC-PWP01-3140 |  | Survey for Badgers, Bats, GCN & Reptiles |  | 25d | 2017-03-27 A | 2017-11-24 | P1EWCC-UWP01-1010, P1EWCC-AWP01-3940, P1EWCC-AWP01-4270 |  | 49.88d | 2017-04-03 | 2017-05-05 | -84d | 0d |  | 2017-11-24 |  | UW1 |
|  | 2 | **Engineering Surveys** |  |  | 2017-04-25 | 2017-05-09 |  |  |  |  |  |  |  |  |  |  |  |
| P1EWCC-PWP03-3180 |  | Survey for Engineering (Topo, GPR, Utility, Soil) (ecological mitigation site) |  | 15d | 2017-04-25 A | 2017-05-09 A | P1EWCC-AWP01-3940, P1EWCC-UWP01-1010, P1EWCC-AWP01-4270 | 100% |  | 2017-04-03 | 2017-04-21 |  |  |  |  |  | UW1 |
|  | 3 | **Demolition Surveys** |  |  |  |  |  |  |  |  |  |  |  |  |  |  |  |
|  | 4 | **Historic Environment Surveys** |  |  | 2018-02-09 | 2018-11-16 |  |  |  |  |  |  |  |  |  |  |  |
|  | 2 | **025-L2 - Colne Valley Viaduct** |  |  | 2018-02-09 | 2018-11-16 |  |  |  |  |  |  |  |  |  |  |  |
| P1EWCC-PWP06-8610 |  | Non-Intrusive Surveys ( Geophysics) (Colne Valley Viaduct) |  | 20d | 2018-02-09 | 2018-03-09 | P1EWCC-PWP06-8580, P1EWCC-PWP05-240 |  |  |  |  | 39d | 0d |  |  |  | AWH |
| P1EWCC-PWP06-8620 |  | Non-Intrusive Surveys (Trial Trenching) (Colne Valley Viaduct) |  | 30d | 2018-05-04 | 2018-06-15 | P1EWCC-PWP06-8590, P1EWCC-PWP05-240 |  |  |  |  | 39d | 0d |  |  |  | AWH |
| P1EWCC-PWP06-2120 |  | Intrusive Surveys (Colne Valley Viaduct) |  | 40d | 2018-09-24 | 2018-11-16 | P1EWCC-PWP02-4890, P1EWCC-PWP06-8600, P1EWCC-AWP01-4290 |  |  |  |  | 3.88d | 0d |  |  |  | AWH |

| ID | WBS | Activity | Duration | Start | Finish | Predecessors | Complete | Remaining | Planned start | Planned finish | Total float | Free float | Constraint | Expected finish | Calendar | Fusion - WPS |
| --- | --- | --- | --- | --- | --- | --- | --- | --- | --- | --- | --- | --- | --- | --- | --- | --- |
|  | 8 | **Historic Environment** |  | 2017-12-15 | 2019-01-18 |  |  |  |  |  |  |  |  |  |  |  |
|  | 2 | **025-L2 - Colne Valley Viaduct** |  | 2017-12-15 | 2019-01-18 |  |  |  |  |  |  |  |  |  |  |  |
| P1EWCC-PWP06-8580 |  | Production and Approval of Project Plan & LS-WSI (non-intrusive surveys) | 40d | 2017-12-15 | 2018-02-09 | P1EWCC-PWP05-240 |  |  |  |  | 39d | 0d |  |  |  | AWH |
| P1EWCC-PWP06-8590 |  | Update of Project Plans and LS-WSI and Approval (Trial Trenching) | 40d | 2018-03-09 | 2018-05-04 | P1EWCC-PWP06-8610 |  |  |  |  | 39d | 0d |  |  |  | AWH |
| P1EWCC-PWP06-8600 |  | Update of Project Plans and LS-WSI and Approval (Mitigation Works) | 35d | 2018-06-15 | 2018-08-03 | P1EWCC-PWP06-8620 |  |  |  |  | 39d | 35.12d |  |  |  | AWH |
| P1EWCC-PWP06-2090 |  | Report of Findings And Approval (Whole Site) | 35d | 2018-12-03 | 2019-01-18 | P1EWCC-PWP06-2120 FS+10d |  |  |  |  | 1040d |  |  |  |  | AWH |
|  | 7 | **Ecological Mitigation Works** |  | 2017-04-11 | 2019-08-29 |  |  |  |  |  |  |  |  |  |  |  |
|  | 1 | **Design** |  | 2017-04-11 | 2017-12-12 |  |  |  |  |  |  |  |  |  |  |  |
|  | 3 | **026-M3W** |  | 2017-04-11 | 2017-11-06 |  |  |  |  |  |  |  |  |  |  |  |
| P1EWCC-PWP02-4850 |  | Design of Habitat Creation (026-M3W) | 25d | 2017-04-11 A | 2017-10-06 | P1EWCC-UWP01-1010, P1EWCC-PWP03-3180 FF | 40% | 14.88d | 2017-04-24 | 2017-05-26 | -0.88d | 0d |  | 2017-10-06 |  | UW1 |
| P1EWCC-AWP01-3930 |  | Planning Consent & Licensing for Habitat Creation (026-M3W) | 40d | 2017-08-07 A | 2017-11-06 | P1EWCC-PWP02-4850 SS | 10% | 35.88d | 2017-08-07 | 2017-09-29 | -0.88d | 0d |  | 2017-11-06 |  | UW1 |
|  | 1 | **026-M8E** |  | 2017-04-11 | 2017-10-31 |  |  |  |  |  |  |  |  |  |  |  |
| P1EWCC-PWP02-14290 |  | Design of Habitat Creation (026-M8E) | 25d | 2017-04-11 A | 2017-10-06 | P1EWCC-UWP01-1000, P1EWCC-PWP03-3180 FF | 40% | 14.88d | 2017-04-24 | 2017-05-26 | 137.12d | 0d |  | 2017-10-06 |  | UW1 |
| P1EWCC-AWP01-8530 |  | Planning Consent & Licensing for Habitat Creation (026-M8E) | 71d | 2017-06-19 A | 2017-10-31 | P1EWCC-PWP02-14290 SS | 55% | 31.88d | 2017-08-11 | 2017-11-17 | 137.12d | 0d |  | 2017-10-31 |  | UW1 |
|  | 2 | **026-M9E** |  | 2017-04-11 | 2017-12-12 |  |  |  |  |  |  |  |  |  |  |  |
| P1EWCC-PWP02-14300 |  | Design of Habitat Creation (026-M9E) | 25d | 2017-04-11 A | 2017-12-08 | P1EWCC-UWP01-1000, P1EWCC-PWP03-3180 FF |  | 59.88d | 2017-04-24 | 2017-05-26 | 82.12d | 0d |  | 2017-12-08 |  | UW1 |
| P1EWCC-AWP01-8540 |  | Planning Consent & Licensing for Habitat Creation (026-M9E) | 71d | 2017-06-19 A | 2017-12-12 | P1EWCC-PWP02-14300 SS | 13% | 61.88d | 2017-08-11 | 2017-11-17 | 82.12d | 0d |  | 2017-12-12 |  | UW1 |
|  | 3 | **Habitat Creation** |  | 2018-01-05 | 2019-08-29 |  |  |  |  |  |  |  |  |  |  |  |
|  | 3 | **026-M8E (woodland)** |  | 2018-01-05 | 2018-08-29 |  |  |  |  |  |  |  |  |  |  |  |
| P1EWCC-PWP02-14310 |  | Habitat Creation (026-M8E) | 50d | 2018-01-05 | 2018-03-16 | P1EWCC-AWP01-8530, P1EWCC-PWP06-2110, P1EWCC-PWP02-14290, P1EWCC-PWP02-9220 |  |  |  |  | 89.12d | 38.12d |  |  |  | AWE1 |
| P1EWCC-PWP02-14320 |  | Habitat Creation Maturity Period (026-M8E) | 182d | 2018-03-01 | 2018-08-29 | P1EWCC-PWP02-14310 SS |  |  |  |  | 71d | 87d | start on or after 2018-03-01 |  | HS2 - 8h x 7d Workweek (No Holidays) | AWE1 |
|  | 2 | **026-M9E (grassland)** |  | 2018-01-05 | 2018-08-29 |  |  |  |  |  |  |  |  |  |  |  |
| P1EWCC-PWP02-12580 |  | Habitat Creation (026-M9E) | 25d | 2018-01-05 | 2018-02-09 | P1EWCC-PWP02-9220, P1EWCC-AWP01-8540, P1EWCC-AWP01-8550, P1EWCC-PWP06-2110, P1EWCC-PWP02-14300 |  |  |  |  | 64.12d | 13.12d |  |  |  | AWE1 |
| P1EWCC-PWP02-12590 |  | Habitat Creation Maturity Period (026-M9E) | 182d | 2018-03-01 | 2018-08-29 | P1EWCC-PWP02-12580 |  |  |  |  | 71d | 87d | start on or after 2018-03-01 |  | HS2 - 8h x 7d Workweek (No Holidays) | AWE1 |

| ID | WBS | Activity | Type | Duration | Start | Finish | Predecessors | Total float | Free float | Constraint | Calendar | Fusion - WPS | HS2 Filter |
| --- | --- | --- | --- | --- | --- | --- | --- | --- | --- | --- | --- | --- | --- |
|  | 1 | **026-M3W (wetland)** |  |  | 2018-12-31 | 2019-08-29 |  |  |  |  |  |  |  |
| P1EWCC-PWP02-14330 |  | Completion of Gas Main Diversion | milestone | 0d | 2018-12-31 | 2018-12-31 |  | -300d | 0d | start on or after 2018-12-31 |  | AWE1 |  |
| P1EWCC-PWP02-4830 |  | Habitat Creation (026-M3W) |  | 40d | 2018-12-31 | 2019-02-22 | P1EWCC-PWP06-2110, P1EWCC-PWP02-9220, P1EWCC-AWP01-3930, P1EWCC-AWP01-8400, P1EWCC-PWP02-14330, P1EWCC-PWP02-4850 | -300d | 0d |  |  | AWE1 |  |
| P1EWCC-PWP02-4840 |  | Habitat Creation Maturity Period (026-M3W) |  | 182d | 2019-03-01 | 2019-08-29 | P1EWCC-PWP02-4830 | 57d | 0d | start on or after 2019-03-01 | HS2 - 8h x 7d Workweek (No Holidays) | AWE1 |  |
|  | 5 | **Translocation of Species** |  |  | 2018-07-26 | 2019-06-28 |  |  |  |  |  |  |  |
| P1EWCC-PWP02-4890 |  | Species Translocation to Habitat Creation (026-M8E & 026-M9E) |  | 60d | 2018-07-26 | 2018-09-23 | P1EWCC-AWP01-4290, P1EWCC-PWP02-14320 SS+60d, P1EWCC-PWP02-14610, P1EWCC-PWP02-12590 SS+60d | -16d | 0d |  | HS2 - 8h x 7d Workweek (No Holidays) | AWE1 |  |
| P1EWCC-PWP02-14620 |  | Species Translocation to Habitat Creation (026-M3W) |  | 60d | 2019-04-30 | 2019-06-28 | P1EWCC-PWP02-4840 SS+60d | 1295d |  |  | HS2 - 8h x 7d Workweek (No Holidays) | AWE1 |  |
|  | 8 | **Hydrogeological Modelling** |  |  |  |  |  |  |  |  |  |  |  |
|  | 1 | **Ground Remediation Works** |  |  | 2018-02-02 | 2019-03-13 |  |  |  |  |  |  |  |
| P1EWCC-FWP01-1000 |  | Design and Approval of Ground Remediation Works (from EA and local authority) - New Years Green Landfill site |  | 173d | 2018-02-02 | 2018-10-03 | P1EWCC-PWP02-11760 | -117.75d | 0d |  |  | AWE6 | y |
| P1EWCC-AWP01-1240 |  | Planning Consent & Licensing for Ground Remediation Works - New Years Green Landfill site |  | 50d | 2018-10-03 | 2018-12-12 | P1EWCC-FWP01-1000 | -117.75d | 0d |  |  | AWE6 |  |
| P1EWCC-EWP01-1000 |  | Ground Remediation Works - New Years Green Landfill site |  | 64.88d | 2018-12-12 | 2019-03-13 | P1EWCC-AWP01-1240, P1EWCC-AWP01-4290 | -117.75d | 0d |  |  | AWE6 | y |
|  | 9 | **Site Clearance Works** |  |  |  |  |  |  |  |  |  |  |  |
|  | 10 | **Structural Work** |  |  |  |  |  |  |  |  |  |  |  |
|  | 11 | **Highway and Public Rights of Works** |  |  | 2017-12-08 | 2019-03-04 |  |  |  |  |  |  |  |
|  | 1 | **Dews Lane** |  |  | 2017-12-08 | 2019-03-04 |  |  |  |  |  |  |  |
| P1EWCC-PWP09-7260 |  | Scheme Design and Approval of Dews Lane |  | 83d | 2017-12-08 | 2018-04-04 | P1EWCC-PWP01-6360 | -27.88d | 0d |  |  | DC1D | y |
| P1EWCC-PWP09-7270 |  | Detailed Design and Approval of Dews Lane |  | 83d | 2018-06-20 | 2018-10-15 | P1EWCC-PWP09-7260, P1EWCC-PWP01-11190 | -2d | 0d |  |  | DC1I | y |
| P1EWCC-AWP01-8440 |  | Planning Consent & Licensing of Dews Lane |  | 50d | 2018-08-06 | 2018-10-15 | P1EWCC-PWP09-7270 FF, P1EWCC-PWP09-7260 | -2d | 0d |  |  | DC1I |  |
| P1EWCC-EWP01-1290 |  | Construction of Dews Lane |  | 100d | 2018-10-15 | 2019-03-04 | P1EWCC-AWP01-8440, P1EWCC-PWP09-7270, P1EWCC-PWP02-4890, P1EWCC-PWP06-2120 SS+10d, P1EWCC-AWP01-4290 | -2d | 0d |  |  | DC1I | y |
|  | 2 | **BGC 275kv Access Road and Bridge** |  |  | 2017-12-08 | 2019-01-14 |  |  |  |  |  |  |  |
|  | 1 | **Scheme Design** |  |  | 2017-12-08 | 2018-04-04 |  |  |  |  |  |  |  |
| P1EWCC-PWP09-1020 |  | Scheme Design and Approval of Access Road in Bucks Golf Course | level of effort | 83d | 2017-12-08 | 2018-04-04 | P1EWCC-PWP01-6360, P1EWCC-PWP09-7280 SS | -27.88d | 0d |  |  | DC1D | y |
| P1EWCC-PWP09-7280 |  | H&S Documentation and Approval |  | 30d | 2017-12-08 | 2018-01-19 | P1EWCC-PWP01-6360 | -27.88d | 0d |  |  | DC1D | y |
| P1EWCC-PWP09-7295 |  | Scheme Design Desk Based Study |  | 20d | 2017-12-08 | 2018-01-05 | P1EWCC-PWP01-6360 | -2.88d | 25d |  |  | DC1D | y |
| P1EWCC-PWP09-7290 |  | Undertake Surveys & Documentation |  | 15d | 2018-01-19 | 2018-02-09 | P1EWCC-PWP09-7280, P1EWCC-PWP09-7280 FF | -27.88d | 0d |  |  | DC1D | y |
| P1EWCC-PWP09-7300 |  | Scheme Design Stage 1 |  | 10d | 2018-02-09 | 2018-02-23 | P1EWCC-PWP09-7290, P1EWCC-PWP09-7295 | -27.88d | 0d |  |  | DC1D | y |
| P1EWCC-PWP09-7310 |  | Scheme Design IDR |  | 1d | 2018-02-23 | 2018-02-26 | P1EWCC-PWP09-7300 | -27.88d | 0d |  |  | DC1D | y |
| P1EWCC-PWP09-7320 |  | Scheme Design Stage 2 |  | 10d | 2018-02-26 | 2018-03-12 | P1EWCC-PWP09-7310 | -27.88d | 0d |  |  | DC1D | y |
| P1EWCC-PWP09-7330 |  | Scheme Design IDC |  | 1d | 2018-03-12 | 2018-03-13 | P1EWCC-PWP09-7320 | -27.88d | 0d |  |  | DC1D | y |
| P1EWCC-PWP09-7340 |  | Scheme Design Stage 3 |  | 6d | 2018-03-13 | 2018-03-21 | P1EWCC-PWP09-7330 | -27.88d | 0.12d |  |  | DC1D | y |
| P1EWCC-PWP09-7350 |  | Scheme Design HS2 Approval |  | 14d | 2018-03-22 | 2018-04-04 | P1EWCC-PWP09-7340, P1EWCC-PWP09-1020 FF | -38d | 0d |  | HS2 - 8h x 7d Workweek (No Holidays) | DC1D | y |

| ID | WBS | Activity | Type | Duration | Start | Finish | Predecessors | Total float | Free float | Calendar | HS2 Filter | Fusion - WPS |
| --- | --- | --- | --- | --- | --- | --- | --- | --- | --- | --- | --- | --- |
|  | 2 | **Detailed Design** |  |  | 2018-06-20 | 2018-08-27 |  |  |  |  |  |  |
| P1EWCC-PWP09-7120 |  | Detailed Design and Approval of Access Road in Bucks Golf Course | level of effort | 48d | 2018-06-20 | 2018-08-27 | P1EWCC-PWP09-7360 SS | 9d | 0d |  | y | DC1I |
| P1EWCC-PWP09-7360 |  | Detailed Design Stage 1 |  | 13d | 2018-06-20 | 2018-07-09 | P1EWCC-PWP01-11190 | 9.12d | 0d |  | y | DC1I |
| P1EWCC-PWP09-7370 |  | Detailed Design IDR |  | 1d | 2018-07-09 | 2018-07-10 | P1EWCC-PWP09-7360 | 9.12d | 0d |  | y | DC1I |
| P1EWCC-PWP09-7380 |  | Detailed Design Stage 2 |  | 13d | 2018-07-10 | 2018-07-27 | P1EWCC-PWP09-7370 | 9.12d | 0d |  | y | DC1I |
| P1EWCC-PWP09-7390 |  | Detailed Design IDC |  | 1d | 2018-07-27 | 2018-07-30 | P1EWCC-PWP09-7380 | 9.12d | 0d |  | y | DC1I |
| P1EWCC-PWP09-7400 |  | Detailed Design Stage 3 |  | 10d | 2018-07-30 | 2018-08-13 | P1EWCC-PWP09-7390 | 9.12d | 0.12d |  | y | DC1I |
| P1EWCC-PWP09-7410 |  | Detailed Design HS2 Approval |  | 14d | 2018-08-14 | 2018-08-27 | P1EWCC-PWP09-7400, P1EWCC-PWP09-7120 FF | 11d | 27d | HS2 - 8h x 7d Workweek (No Holidays) | y | DC1I |
|  | 3 | **Planning Consents** |  |  | 2018-04-04 | 2018-06-13 |  |  |  |  |  |  |
| P1EWCC-AWP01-4320 |  | Sch 17, Sch 4 Planning Consent & Licensing of Access Road in Bucks Golf Course |  | 50d | 2018-04-04 | 2018-06-13 | P1EWCC-PWP09-7350 | 62d | 72.12d |  |  | DC1I |
|  | 4 | **Construction** |  |  | 2018-09-24 | 2019-01-14 |  |  |  |  |  |  |
| P1EWCC-EWP01-1220 |  | Construction of Access Road in Bucks Golf Course | level of effort | 81d | 2018-09-24 | 2019-01-14 | P1EWCC-EWP01-1300 SS | -10.12d | 0d |  | y | DC1I |
| P1EWCC-EWP01-1300 |  | Compound Establishment |  | 10d | 2018-09-24 | 2018-10-05 | P1EWCC-AWP01-4320, P1EWCC-PWP02-4890, P1EWCC-PWP09-7410, P1EWCC-AWP01-4290 | -10.12d | 0d |  | y | DC1I |
| P1EWCC-EWP01-1310 |  | Topsoil Strip to Temporary Bridge |  | 5d | 2018-10-08 | 2018-10-12 | P1EWCC-EWP01-1300 | -10.12d | 0d |  | y | DC1I |
| P1EWCC-EWP01-1320 |  | Access Road to Temporary Bridge |  | 5d | 2018-10-15 | 2018-10-19 | P1EWCC-EWP01-1310 | -10.12d | 0d |  | y | DC1I |
| P1EWCC-EWP01-1330 |  | Install Temporary Bridge Abutments |  | 20d | 2018-10-22 | 2018-11-16 | P1EWCC-EWP01-1320 | -10.12d | 0d |  | y | DC1I |
| P1EWCC-EWP01-1340 |  | Install Temporary Bridge |  | 5d | 2018-11-19 | 2018-11-23 | P1EWCC-EWP01-1330 | -10.12d | 0d |  | y | DC1I |
| P1EWCC-EWP01-1350 |  | Install Access Road |  | 36d | 2018-11-26 | 2019-01-14 | P1EWCC-EWP01-1340, P1EWCC-EWP01-1220 FF | -10.12d | 0d |  | y | DC1I |
| P1EWCC-EWP01-1480 |  | BGC Access Road Completion | milestone | 0d | 2019-01-14 | 2019-01-14 | P1EWCC-EWP01-1350 | -10.12d | 0d |  | y | DC1I |
|  | 3 | **Utility Works** |  |  | 2017-12-22 | 2019-11-05 |  |  |  |  |  |  |
|  | 1 | **Colne Valley Viaduct Satellite Compound** |  |  | 2017-12-22 | 2019-04-16 |  |  |  |  |  |  |
| P1EWCC-PWP08-1260 |  | Scheme Design & Approval of Utility Work for Colne Valley Viaduct Satalite Compound (Water, Foul Sewer, Power, Telecoms) |  | 92d | 2017-12-22 | 2018-05-01 | P1EWCC-PWP01-6810 | -131.88d | 0d |  | y | DC1E |
| P1EWCC-PWP08-1790 |  | Design & Approval of Utility Work for Colne Valley Viaduct Satalite Compound (Water, Foul Sewer, Power, Telecoms) |  | 55d | 2018-07-17 | 2018-10-02 | P1EWCC-PWP08-1260, P1EWCC-PWP01-11310 | 28.12d | 0d |  | y | DC1J |
| P1EWCC-PWP08-1290 |  | Procurement of Utility Work for Colne Valley Viaduct Satalite Compound (Water, Foul Sewer, Power, Telecoms) |  | 20d | 2018-10-02 | 2018-10-30 | P1EWCC-PWP08-1790, P1EWCC-PWP08-1260 | 28.12d | 0d |  | y | DC1J |
| P1EWCC-EWP01-1020 |  | Installation of Utility Work for Colne Valley Viaduct Satalite Compound (Water, Foul Sewer, Power, Telecoms) |  | 120d | 2018-10-30 | 2019-04-16 | P1EWCC-PWP02-4890, P1EWCC-PWP08-1290, P1EWCC-PWP06-2120 SS+10d, P1EWCC-AWP01-4290 | 28.12d |  |  | y | DC1J |

| ID | WBS | Activity | Type | Duration | Start | Finish | Predecessors | Total float | Free float | Constraint | Calendar | HS2 Filter | Fusion - WPS |
| --- | --- | --- | --- | --- | --- | --- | --- | --- | --- | --- | --- | --- | --- |
|  | 2 | **Colne Valley Storage Satellite Compound** |  |  | 2017-12-22 | 2019-04-30 |  |  |  |  |  |  |  |
| P1EWCC-PWP08-1300 |  | SchemeDesign & Approval of Utility Work for Colne Valley Storage Satellite Compound (Water, Foul Sewer, Power, Telecoms) |  | 92d | 2017-12-22 | 2018-05-01 | P1EWCC-PWP01-6810 | -131.88d | 0d |  |  | y | DC1E |
| P1EWCC-PWP08-1800 |  | DetailDesign & Approval of Utility Work for Colne Valley Storage Satellite Compound (Water, Foul Sewer, Power, Telecoms) |  | 55d | 2018-07-17 | 2018-10-02 | P1EWCC-PWP08-1300, P1EWCC-PWP01-11310 | -6.75d | 0d |  |  | y | DC1J |
| P1EWCC-PWP08-1320 |  | Procurement of Utility Work for Colne Valley Storage Satellite Compound (Water, Foul Sewer, Power, Telecoms) |  | 20d | 2018-10-02 | 2018-10-30 | P1EWCC-PWP08-1300, P1EWCC-PWP08-1800 | -6.75d | 0d |  |  | y | DC1J |
| P1EWCC-EWP01-1030 |  | Installation of Utility Work for Colne Valley Storage Satellite Compound (Water, Foul Sewer, Power, Telecoms) |  | 129.75d | 2018-10-30 | 2019-04-30 | P1EWCC-PWP08-1320, P1EWCC-PWP02-4890, P1EWCC-PWP06-2120 SS+10d, P1EWCC-AWP01-4290 | -6.75d | 0d |  |  | y | DC1J |
|  | 3 | **Colne Valley Jetty Satellite Compound** |  |  | 2017-12-22 | 2019-04-30 |  |  |  |  |  |  |  |
| P1EWCC-PWP08-1330 |  | Scheme Design & Approval of Utility Work for Colne Valley Jetty Satellite Compound(Water, Foul Sewer, Power, Telecoms) |  | 92d | 2017-12-22 | 2018-05-01 | P1EWCC-PWP01-6810 | -131.88d | 0d |  |  | y | DC1E |
| P1EWCC-PWP08-1810 |  | Design Design & Approval of Utility Work for Colne Valley Jetty Satellite Compound(Water, Foul Sewer, Power, Telecoms) |  | 55d | 2018-07-17 | 2018-10-02 | P1EWCC-PWP01-11310, P1EWCC-PWP08-1330 | 18.62d | 0d |  |  | y | DC1J |
| P1EWCC-PWP08-1350 |  | Procurement of Utility Work for Colne Valley Jetty Satellite Compound (Water, Foul Sewer, Power, Telecoms) |  | 20d | 2018-10-02 | 2018-10-30 | P1EWCC-PWP08-1330, P1EWCC-PWP08-1810 | 18.62d | 0d |  |  | y | DC1J |
| P1EWCC-EWP01-1040 |  | Installation of Utility Work for Colne Valley Jetty Satellite Compound (Water, Foul Sewer, Power, Telecoms) |  | 129.75d | 2018-10-30 | 2019-04-30 | P1EWCC-PWP08-1350, P1EWCC-PWP02-4890, P1EWCC-PWP06-2120 SS+10d, P1EWCC-AWP01-4290 | 18.62d | 0d |  |  | y | DC1J |
|  | 4 | **Colne Valley Laydown Satellite Compound** |  |  | 2017-12-22 | 2019-11-05 |  |  |  |  |  |  |  |
| P1EWCC-PWP08-1360 |  | SchemeDesign & Approval of Utility Work for Colne Valley Laydown Satellite Compound (Water, Foul Sewer, Power, Telecoms) |  | 92d | 2017-12-22 | 2018-05-01 | P1EWCC-PWP01-6810 | -131.88d | 0d |  |  | y | DC1E |
| P1EWCC-PWP08-1820 |  | DetailDesign & Approval of Utility Work for Colne Valley Laydown Satellite Compound (Water, Foul Sewer, Power, Telecoms) |  | 55d | 2018-07-17 | 2018-10-02 | P1EWCC-PWP01-11310, P1EWCC-PWP08-1360 | 123d | 0d |  |  | y | DC1J |
| P1EWCC-PWP08-1380 |  | Procurement of Utility Work for Colne Valley Laydown Satellite Compound (Water, Foul Sewer, Power, Telecoms) |  | 20d | 2018-10-02 | 2018-10-30 | P1EWCC-PWP08-1820, P1EWCC-PWP08-1360 | 123d | 129.75d |  |  | y | DC1J |
| P1EWCC-EWP01-1050 |  | Installation of Utility Work for Colne Valley Laydown Satellite Compound (Water, Foul Sewer, Power, Telecoms) |  | 135d | 2019-04-30 | 2019-11-05 | P1EWCC-PWP02-4890, P1EWCC-PWP08-1380, P1EWCC-PWP06-2120 SS+10d, P1EWCC-AWP01-4290, P1EWCC-EWP01-1030 | -6.75d | 0d |  |  | y | DC1J |
|  | 5 | **Demolition** |  |  |  |  |  |  |  |  |  |  |  |
|  | 4 | **SOW Completion Dates** |  |  | 2017-11-24 | 2019-12-10 |  |  |  |  |  |  |  |
| P1EWCC-PWP01-1850 |  | Completion of Survey for Badgers (26+000 to 28+100) | milestone | 0d | 2017-11-24 | 2017-11-24 | P1EWCC-PWP01-3140 | -116d | 1876d | finish on 2017-07-31 | HS2 - 8h x 7d Workweek (No Holidays) |  | UW1 |
| P1EWCC-PWP01-1910 |  | Completion of Survey for GCN (26+000 to 29+000) | milestone | 0d | 2017-11-24 | 2017-11-24 | P1EWCC-PWP01-3140 | -116d | 1876d | finish on 2017-07-31 | HS2 - 8h x 7d Workweek (No Holidays) |  | UW1 |
| P1EWCC-PWP01-1930 |  | Completion of Survey for Otter (26+000 to 27+000) | milestone | 0d | 2017-11-24 | 2017-11-24 | P1EWCC-PWP01-3140 | -116d | 1876d | finish on 2017-07-31 | HS2 - 8h x 7d Workweek (No Holidays) |  | UW1 |
| P1EWCC-PWP01-1940 |  | Completion of Survey for Reptiles (26+000 to 27+800) | milestone | 0d | 2017-11-24 | 2017-11-24 | P1EWCC-PWP01-3140 | -116d | 1876d | finish on 2017-07-31 | HS2 - 8h x 7d Workweek (No Holidays) |  | UW1 |
| P1EWCC-EWP01-1470 |  | Completion of Scheme Design for Dews Lane & BGC Access Road | milestone | 0d | 2018-04-04 | 2018-04-04 | P1EWCC-PWP09-7350 | -4d | 1745d | finish on 2018-03-31 | HS2 - 8h x 7d Workweek (No Holidays) |  | DC1D |
| P1EWCC-EWP01-1390 |  | Completion of Scheme Design for all Utility Work | milestone | 0d | 2018-05-01 | 2018-05-01 | P1EWCC-PWP08-1360, P1EWCC-PWP08-1330, P1EWCC-PWP08-1300, P1EWCC-PWP08-1260 | -120d | 1718d | finish on 2018-01-01 | HS2 - 8h x 7d Workweek (No Holidays) | y | DC1E |
| P1EWCC-PWP02-1820 |  | Species Translocation/exclusion -Badgers: Including for access road in Buckinghamshire Golf Course for HV O/H | milestone | 0d | 2018-09-30 | 2018-09-30 | P1EWCC-PWP02-4890 | 0d | 1566d | finish on 2018-09-30 | HS2 - 8h x 7d Workweek (No Holidays) |  | AWE1 |
| P1EWCC-PWP02-1830 |  | Species Translocation/exclusion - Bats: Including for access road in Buckinghamshire Golf Course for HV O/H | milestone | 0d | 2018-09-30 | 2018-09-30 | P1EWCC-PWP02-4890 FF | 0d | 1566d | finish on 2018-09-30 | HS2 - 8h x 7d Workweek (No Holidays) |  | AWE1 |
| P1EWCC-PWP02-2040 |  | Completion of Species Translocation/ exclusion - Great Crested Newts | milestone | 0d | 2018-09-30 | 2018-09-30 | P1EWCC-PWP02-4890 | 0d | 1566d | finish on 2018-09-30 | HS2 - 8h x 7d Workweek (No Holidays) |  | AWE1 |
| P1EWCC-PWP02-2050 |  | Species Translocation/exclusion - Water Vole: Including for access road in Buckinghamshire Golf Course for HV O/H | milestone | 0d | 2018-09-30 | 2018-09-30 | P1EWCC-PWP02-4890 FF | 0d | 1566d | finish on 2018-09-30 | HS2 - 8h x 7d Workweek (No Holidays) |  | AWE1 |
| P1EWCC-PWP02-2060 |  | Broadwater Lake bird islands. Several new gravel islands/rafts to be created in the south-eastern corner | milestone | 0d | 2018-09-30 | 2018-09-30 | P1EWCC-PWP02-4890 | 0d | 1566d | finish on 2018-09-30 | HS2 - 8h x 7d Workweek (No Holidays) |  | AWE1 |
| P1EWCC-PWP02-2920 |  | Completion of Exclusion Fencing and Holt Closure | milestone | 0d | 2018-09-30 | 2018-09-30 | P1EWCC-PWP02-4890 | 0d | 1566d | finish on 2018-09-30 | HS2 - 8h x 7d Workweek (No Holidays) |  | AWE1 |
| P1EWCC-PWP02-2930 |  | Species Translocation/exclusion - Reptiles: Including for access road in Buckinghamshire Golf Course for HV O/H | milestone | 0d | 2018-09-30 | 2018-09-30 | P1EWCC-PWP02-4890 | 0d | 1566d | finish on 2018-09-30 | HS2 - 8h x 7d Workweek (No Holidays) |  | AWE1 |
| P1EWCC-EWP01-1490 |  | Completion of Highway Works to Access Road in Bucks Golf Course | milestone | 0d | 2019-01-15 | 2019-01-15 | P1EWCC-EWP01-1480 | -14d | 1460d | finish on 2018-12-31 | HS2 - 8h x 7d Workweek (No Holidays) |  | DC1I |
| P1EWCC-PWP02-1230 |  | Completion of Habitat Creation (026-M3W). Create Habitat - Wetland Habitat Creation (Sector C1) (P) | milestone | 0d | 2019-02-23 | 2019-02-23 | P1EWCC-PWP02-4830 | -418d | 1421d | finish on 2017-12-31 | HS2 - 8h x 7d Workweek (No Holidays) |  | AWE1 |
| P1EWCC-PWP02-1240 |  | Completion of Habitat Creation (026-M9E). Create Habitat - Grassland Habitat Creation (Sector C1) (P) | milestone | 0d | 2019-02-23 | 2019-02-23 | P1EWCC-PWP02-4830 | -418d | 1421d | finish on 2017-12-31 | HS2 - 8h x 7d Workweek (No Holidays) |  | AWE1 |
| P1EWCC-EWP01-1240 |  | Completion of Highway Works to Dews Lane | milestone | 0d | 2019-03-04 | 2019-03-04 | P1EWCC-EWP01-1290 | -4d | 1411d | finish on 2019-02-28 | HS2 - 8h x 7d Workweek (No Holidays) |  | DC1I |
| P1EWCC-PWP08-1400 |  | Completion of Ground Remediation Work | milestone | 0d | 2019-03-13 | 2019-03-13 | P1EWCC-EWP01-1000 | -163.88d | 1402.12d | finish on 2018-09-30 | HS2 - 8h x 7d Workweek (No Holidays) | y | AWE6 |
| P1EWCC-EWP01-1380 |  | Completion of Colne Valley Viaduct Satalite Compound Utility Work | milestone | 0d | 2019-05-25 | 2019-05-25 | P1EWCC-EWP01-1020 | 0d | 1329d | finish on 2019-05-25 | HS2 - 8h x 7d Workweek (No Holidays) | y | DC1J |
| P1EWCC-EWP01-1360 |  | Completion of Colne Valley Storage Satellite Compound Utility Work | milestone | 0d | 2019-07-27 | 2019-07-27 | P1EWCC-EWP01-1030 | 0d | 1266d | finish on 2019-07-27 | HS2 - 8h x 7d Workweek (No Holidays) | y | DC1J |
| P1EWCC-EWP01-1370 |  | Completion of Colne Valley Jetty Satellite Compound Utility Work | milestone | 0d | 2019-07-27 | 2019-07-27 | P1EWCC-EWP01-1040 | 0d | 1266d | finish on 2019-07-27 | HS2 - 8h x 7d Workweek (No Holidays) | y | DC1J |
| P1EWCC-EWP01-1200 |  | Completion of Colne Valley Laydown Satellite Compound Utility Work | milestone | 0d | 2019-12-10 | 2019-12-10 | P1EWCC-EWP01-1050 | 0d | 1130d | finish on 2019-12-10 | HS2 - 8h x 7d Workweek (No Holidays) | y | DC1J |

| ID | WBS | Activity | Type | Duration | Start | Finish | Predecessors | Complete | Planned start | Planned finish | Total float | Free float | Constraint | Calendar | HS2 Filter | Fusion - WPS |
| --- | --- | --- | --- | --- | --- | --- | --- | --- | --- | --- | --- | --- | --- | --- | --- | --- |
|  | 3 | **029-L1 - Colne Valley North Embankment** |  |  | 2017-03-20 | 2019-11-23 |  |  |  |  |  |  |  |  |  |  |
|  | 2 | **Land Access** |  |  | 2017-05-08 | 2018-07-30 |  |  |  |  |  |  |  |  |  |  |
|  | 1 | **Survey Work** |  |  | 2017-05-08 | 2017-05-08 |  |  |  |  |  |  |  |  |  |  |
| P1EWCC-AWP01-5170 |  | Land Access Granted for Survey Work (Schedule 2) | milestone | 0d | 2017-05-08 A | 2017-05-08 A |  | 100% | 2017-04-03 | 2017-04-03 |  |  | as late as possible |  | y | AW1 |
|  | 2 | **Possession** |  |  | 2018-07-30 | 2018-07-30 |  |  |  |  |  |  |  |  |  |  |
| P1EWCC-AWP01-5180 |  | Land Access Possession Granted for Construction of (Schedule 16) | milestone | 0d | 2018-07-30 | 2018-07-30 |  |  |  |  | 3d | 0d | as late as possible |  | y | AW1 |
|  | 6 | **Survey Works** |  |  | 2017-03-20 | 2019-04-05 |  |  |  |  |  |  |  |  |  |  |
| P1EWCC-AWP01-5110 |  | Planning Consent & Licensing for Survey Work |  | 10d | 2017-03-20 A | 2017-05-05 A | P1EWCC-AWP01-1230 | 100% | 2017-03-20 | 2017-03-31 |  |  |  |  |  | AW1 |
| P1EWCC-FWP01-1210 |  | Undertake Arboricultural Surveys |  | 125d | 2017-12-15 | 2018-06-08 | P1EWCC-PWP01-5610 |  |  |  | 569d |  |  |  | y | AWS |
| P1EWCC-FWP01-1220 |  | Undertake Remaining Ecology & Environmental Surveys |  | 340d | 2017-12-15 | 2019-04-05 | P1EWCC-PWP01-5610 |  |  |  | 354d |  |  |  | y | AWS |
| P1EWCC-FWP01-1230 |  | Undertake Remaining Soil Surveys |  | 120d | 2017-12-15 | 2018-06-01 | P1EWCC-PWP01-5610 |  |  |  | 574d |  |  |  | y | AWS |
|  | 1 | **Ecological & Environmental Surveys** |  |  | 2017-05-08 | 2017-06-30 |  |  |  |  |  |  |  |  |  |  |
| P1EWCC-PWP01-3380 |  | Survey for Badgers, Bats, GCN & Reptiles |  | 25d | 2017-05-08 A | 2017-06-30 A | P1EWCC-AWP01-5110, P1EWCC-AWP01-5170, P1EWCC-UWP01-1010 | 100% | 2017-04-03 | 2017-05-05 |  |  |  |  |  | UW1 |
|  | 2 | **Engineering Surveys** |  |  |  |  |  |  |  |  |  |  |  |  |  |  |
|  | 4 | **Historic Environment Surveys** |  |  | 2018-02-09 | 2018-11-21 |  |  |  |  |  |  |  |  |  |  |
| P1EWCC-PWP06-3130 |  | Non-Intrusive Surveys (geophysics) |  | 20d | 2018-02-09 | 2018-03-09 | P1EWCC-UWP01-1010, P1EWCC-PWP06-3170, P1EWCC-PWP05-240 |  |  |  | 265.38d | 0d |  |  |  | AWH |
| P1EWCC-PWP06-8630 |  | Intrusive Surveys (trial trenching) |  | 30d | 2018-05-04 | 2018-06-15 | P1EWCC-PWP06-3180 |  |  |  | 1195.12d |  |  |  |  | AWH |
| P1EWCC-PWP06-3150 |  | Intrusive Surveys (Mitigation Works) |  | 40d | 2018-09-26 | 2018-11-21 | P1EWCC-PWP06-3180, P1EWCC-PWP02-6340, P1EWCC-AWP01-5180 |  |  |  | 162.38d | 0d |  |  |  | AWH |
|  | 8 | **Historic Environment** |  |  | 2017-12-15 | 2019-01-09 |  |  |  |  |  |  |  |  |  |  |
| P1EWCC-PWP06-3170 |  | Production and Approval of Project Plan & LS-WSI (non-intrusive surveys) |  | 40d | 2017-12-15 | 2018-02-09 | P1EWCC-PWP05-240 |  |  |  | 265.38d | 0d |  |  |  | AWH |
| P1EWCC-PWP06-3180 |  | Update of Project Plans and LS-WSI and Approval (intrusive surveys) |  | 40d | 2018-03-09 | 2018-05-04 | P1EWCC-PWP06-3130 |  |  |  | 265.38d | 0d |  |  |  | AWH |
| P1EWCC-PWP06-3200 |  | Report of Findings And Approval |  | 35d | 2018-11-21 | 2019-01-09 | P1EWCC-PWP06-3150 |  |  |  | 1047.12d |  |  |  |  | AWH |
|  | 7 | **Ecological Mitigation Works** |  |  | 2018-07-29 | 2018-09-26 |  |  |  |  |  |  |  |  |  |  |
|  | 5 | **Translocation of Species** |  |  | 2018-07-29 | 2018-09-26 |  |  |  |  |  |  |  |  |  |  |
| P1EWCC-PWP02-6340 |  | Species Translocation to Habitat Creation (029-M1W) |  | 60d | 2018-07-29 | 2018-09-26 | P1EWCC-PWP02-4930, P1EWCC-AWP01-5180, P1EWCC-PWP02-14610 |  |  |  | 4d | 0d |  | HS2 - 8h x 7d Workweek (No Holidays) |  | AWE1 |

| ID | WBS | Activity | Type | Duration | Start | Finish | Predecessors | Complete | Total float | Free float | Constraint | Calendar | HS2 Filter | Fusion - WPS |
| --- | --- | --- | --- | --- | --- | --- | --- | --- | --- | --- | --- | --- | --- | --- |
|  | 1 | **Landscape Planting** |  |  |  |  |  |  |  |  |  |  |  |  |
|  | 3 | **Utility Works** |  |  | 2017-12-22 | 2019-10-29 |  |  |  |  |  |  |  |  |
| P1EWCC-PWP03-3380 |  | Scheme Design & Approval of Utility Work for Colne Valley Viaduct North Embankment Satellite Compound |  | 92d | 2017-12-22 | 2018-05-01 | P1EWCC-PWP01-6810 |  | -131.88d | 0d |  |  | y | DC1E |
| P1EWCC-PWP03-4570 |  | Detailed Design & Approval of Utility Work for Colne Valley Viaduct North Embankment Satellite Compound |  | 55d | 2018-07-17 | 2018-10-02 | P1EWCC-PWP03-3380, P1EWCC-PWP01-11310 |  | 148.38d | 0d |  |  | y | DC1J |
| P1EWCC-PWP08-1490 |  | Procurement of Utility Work for Colne Valley Viaduct North Embankment Satellite Compound |  | 20d | 2018-10-02 | 2018-10-30 | P1EWCC-PWP03-3380, P1EWCC-PWP03-4570 |  | 148.38d | 129.75d |  |  | y | DC1J |
| P1EWCC-EWP01-1270 |  | Installation of Utility Work for Colne Valley Viaduct North Embankment Satellite Compound |  | 129.75d | 2019-04-30 | 2019-10-29 | P1EWCC-PWP08-1490, P1EWCC-AWP01-5180, P1EWCC-PWP06-3150 SS+10d, P1EWCC-EWP01-1040 |  | 18.62d |  |  |  | y | DC1J |
|  | 1 | **SOW Completion Dates** |  |  | 2017-09-16 | 2019-11-23 |  |  |  |  |  |  |  |  |
| P1EWCC-PWP01-1800 |  | Completion of Survey for Kingfishers (29+500) | milestone | 0d | 2017-09-16 | 2017-09-16 | P1EWCC-PWP01-3380 |  | -46d | 1946d | finish on 2017-07-31 | HS2 - 8h x 7d Workweek (No Holidays) |  | UW1 |
| P1EWCC-PWP01-1880 |  | Completion of Survey for Badgers (29+500) | milestone | 0d | 2017-09-16 | 2017-09-16 | P1EWCC-PWP01-3380 |  | -46d | 1946d | finish on 2017-07-31 | HS2 - 8h x 7d Workweek (No Holidays) |  | UW1 |
| P1EWCC-EWP01-1400 |  | Completion of Scheme Design for all Utility Work | milestone | 0d | 2018-05-01 | 2018-05-01 | P1EWCC-PWP03-3380 |  | -120d | 1718d | finish on 2018-01-01 | HS2 - 8h x 7d Workweek (No Holidays) | y | DC1E |
| P1EWCC-PWP02-1840 |  | Completion of Species Translocation/ exclusion - Bats | milestone | 0d | 2018-09-30 | 2018-09-30 | P1EWCC-PWP02-6340 |  | 0d | 1566d | finish on 2018-09-30 | HS2 - 8h x 7d Workweek (No Holidays) |  | AWE1 |
| P1EWCC-PWP02-2940 |  | Completion of Species Translocation/ exclusion - Reptiles | milestone | 0d | 2018-09-30 | 2018-09-30 | P1EWCC-PWP02-6340 |  | 0d | 1566d | finish on 2018-09-30 | HS2 - 8h x 7d Workweek (No Holidays) |  | AWE1 |
| P1EWCC-PWP02-6360 |  | Completion of Tilehouse Lane woodland creation area | milestone | 0d | 2018-09-30 | 2018-09-30 | P1EWCC-PWP02-4930 |  | 0d | 1566d | finish on 2018-09-30 | HS2 - 8h x 7d Workweek (No Holidays) |  | AWE1 |
| P1EWCC-EWP01-1280 |  | Installation of Utility Work for Colne Valley Viaduct North Embankment Satellite Compound | milestone | 0d | 2019-11-23 | 2019-11-23 | P1EWCC-EWP01-1270 |  | 0d | 1147d | finish on 2019-11-23 | HS2 - 8h x 7d Workweek (No Holidays) | y | DC1J |
|  | C112 | **Tilehouse & West Hyde (Ch. 29650 To Ch. 31050)** |  |  | 2017-03-20 | 2019-09-01 |  |  |  |  |  |  |  |  |
|  | 1 | **029-L2 - Tilehouse Lane Cutting** |  |  | 2017-03-20 | 2019-09-01 |  |  |  |  |  |  |  |  |
|  | 7 | **Land Access** |  |  | 2017-04-03 | 2018-07-30 |  |  |  |  |  |  |  |  |
|  | 1 | **Survey Work** |  |  | 2017-04-03 | 2017-04-03 |  |  |  |  |  |  |  |  |
| P1EWCC-AWP01-4350 |  | Land Access Granted for Survey Work (Schedule 2) | milestone | 0d | 2017-04-03 A | 2017-04-03 A |  | 100% |  |  |  |  | y | AW1 |
|  | 2 | **Possession** |  |  | 2017-12-04 | 2018-07-30 |  |  |  |  |  |  |  |  |
|  | 1 | **Ecological Mitigation Area** |  |  | 2017-12-04 | 2017-12-04 |  |  |  |  |  |  |  |  |
| P1EWCC-AWP01-4360 |  | Land Access Possession Granted for Ecolgical Mitigation Site (Schedule 16) | milestone | 0d | 2017-12-04 | 2017-12-04 |  |  | -154d | 24.88d | start on or after 2017-12-04 |  | y | UW1 |
|  | 2 | **029-L2 - Tilehouse Lane Cutting** |  |  | 2018-07-30 | 2018-07-30 |  |  |  |  |  |  |  |  |
| P1EWCC-AWP01-4370 |  | Land Access Possession Granted for Construction of 029-L2 - Tilehouse Lane Cutting (Schedule 16) | milestone | 0d | 2018-07-30 | 2018-07-30 |  |  | -40d | 0d | as late as possible |  | y | AW1 |

| ID | WBS | Activity | Duration | Start | Finish | Predecessors | Complete | Remaining | Planned start | Planned finish | Total float | Free float | Constraint | Expected finish | Fusion - WPS | HS2 Filter |
| --- | --- | --- | --- | --- | --- | --- | --- | --- | --- | --- | --- | --- | --- | --- | --- | --- |
|  | 1 | **Survey Works** |  | 2017-03-20 | 2019-01-11 |  |  |  |  |  |  |  |  |  |  |  |
| P1EWCC-AWP01-4340 |  | Planning Consent & Licensing for Survey Work | 10d | 2017-03-20 A | 2017-05-05 A | P1EWCC-AWP01-1230 | 100% |  | 2017-03-20 | 2017-03-31 |  |  |  |  | AW1 |  |
| P1EWCC-FWP01-1240 |  | Undertake Arboricultural Surveys | 125d | 2017-12-15 | 2018-06-08 | P1EWCC-PWP01-5610 |  |  |  |  | 308d |  |  |  | AWS | y |
| P1EWCC-FWP01-1250 |  | Undertake Remaining Soil Surveys | 120d | 2017-12-15 | 2018-06-01 | P1EWCC-PWP01-5610 |  |  |  |  | 313d |  |  |  | AWS | y |
| P1EWCC-FWP01-1270 |  | Undertake Water Monitoring | 280d | 2017-12-15 | 2019-01-11 | P1EWCC-PWP01-5610 |  |  |  |  | 153d |  |  |  | AWS | y |
|  | 1 | **Ecological & Environmental Surveys** |  | 2017-05-08 | 2017-11-24 |  |  |  |  |  |  |  |  |  |  |  |
| P1EWCC-PWP01-3150 |  | Survey for Badgers, Bats, GCN & Reptiles | 25d | 2017-05-08 A | 2017-11-24 | P1EWCC-AWP01-4340, P1EWCC-AWP01-4350, P1EWCC-UWP01-1010 |  | 49.88d | 2017-04-03 | 2017-05-05 | -84d | 0d |  | 2017-11-24 | UW1 |  |
|  | 2 | **Engineering Surveys** |  | 2017-04-03 | 2017-05-09 |  |  |  |  |  |  |  |  |  |  |  |
| P1EWCC-PWP03-3190 |  | Survey for Engineering (Topo, GPR, Utility, Soil) | 15d | 2017-04-03 A | 2017-05-09 A | P1EWCC-AWP01-4350, P1EWCC-AWP01-4340, P1EWCC-UWP01-1010 | 100% |  | 2017-04-03 | 2017-04-21 |  |  |  |  | UW1 |  |
|  | 3 | **Historic Environment Surveys** |  | 2017-08-21 | 2018-11-21 |  |  |  |  |  |  |  |  |  |  |  |
|  | 1 | **Ecological Mitigation Site Little Halings Wood 1012, 1012a (029-M1W)** |  | 2017-08-21 | 2017-12-22 |  |  |  |  |  |  |  |  |  |  |  |
| P1EWCC-PWP06-1990 |  | Geophysics (ecological mitigation site) (Little Halings Wood) | 5d | 2017-08-21 A | 2017-08-25 A | P1EWCC-PWP06-1980, P1EWCC-UWP01-1010, P1EWCC-AWP01-4350 | 100% |  | 2017-09-18 | 2017-09-22 |  |  | start on or after 2017-08-21 |  | UW1 |  |
| P1EWCC-PWP06-2010 |  | Intrusive Surveys (ecological mitigation site) (Little Halings Wood) | 5d | 2017-12-15 | 2017-12-22 | P1EWCC-PWP06-2000, P1EWCC-PWP05-240 |  |  |  |  | -168.88d | 0d |  |  | AWH |  |
|  | 2 | **029-L2 - Tilehouse Lane Cutting** |  | 2018-02-09 | 2018-11-21 |  |  |  |  |  |  |  |  |  |  |  |
| P1EWCC-PWP06-8640 |  | Non-Intrusive Surveys (geophysics) | 20d | 2018-02-09 | 2018-03-09 | P1EWCC-PWP06-8660, P1EWCC-PWP05-240 |  |  |  |  | 160d | 0d |  |  | AWH |  |
| P1EWCC-PWP06-8650 |  | Intrusive Surveys (trial trenching) | 30d | 2018-05-04 | 2018-06-15 | P1EWCC-PWP06-8670 |  |  |  |  | 160d | 0d |  |  | AWH |  |
| P1EWCC-PWP06-2030 |  | Intrusive Surveys (029-L2 - Tilehouse Lane Cutting) | 40d | 2018-09-26 | 2018-11-21 | P1EWCC-PWP02-4980, P1EWCC-PWP06-8680, P1EWCC-AWP01-4370 |  |  |  |  | 127d | 0d |  |  | AWH |  |
|  | 6 | **Historic Environment** |  | 2017-04-17 | 2019-01-09 |  |  |  |  |  |  |  |  |  |  |  |
|  | 1 | **Ecological Mitigation Site Little Halings Wood 1012, 1012a (029-M1W)** |  | 2017-04-17 | 2018-02-09 |  |  |  |  |  |  |  |  |  |  |  |
| P1EWCC-PWP06-1980 |  | Production and Approval of LS-WSI Bucks, Herts, LGA (Geophysics) (Little Halings Wood) Code 2 | 15d | 2017-04-17 A | 2017-06-27 A | P1EWCC-UWP01-1000 | 100% |  | 2017-03-27 | 2017-04-14 |  |  |  |  | UW1 |  |
| P1EWCC-PWP06-2000 |  | Update of Project Plans and LS-WSI and Approval (intrusive surveys) | 20d | 2017-08-28 A | 2017-10-06 | P1EWCC-PWP06-1990, P1EWCC-PWP06-1970 FF | 26% | 14.88d | 2017-09-25 | 2017-10-20 | -118.88d | 0d |  | 2017-10-06 | UW1 |  |
| P1EWCC-PWP06-1970 |  | HS2 issue Project Plan | 1d | 2017-09-18 | 2017-09-18 | P1EWCC-UWP01-1000 |  |  |  |  | -105d | 13.88d |  |  | UW1 |  |
| P1EWCC-PWP06-2020 |  | Report of Findings And Approval (ecological mitigation site) | 35d | 2017-12-22 | 2018-02-09 | P1EWCC-PWP06-2010 |  |  |  |  | 1285.12d |  |  |  | AWH |  |
|  | 2 | **029-L2 - Tilehouse Lane Cutting** |  | 2017-12-15 | 2019-01-09 |  |  |  |  |  |  |  |  |  |  |  |
| P1EWCC-PWP06-8660 |  | Production and Approval of Project Plan & LS-WSI (non-intrusive surveys) | 40d | 2017-12-15 | 2018-02-09 | P1EWCC-PWP05-240 |  |  |  |  | 160d | 0d |  |  | AWH |  |
| P1EWCC-PWP06-8670 |  | Update of Project Plans and LS-WSI and Approval (intrusive surveys) | 40d | 2018-03-09 | 2018-05-04 | P1EWCC-PWP06-8640 |  |  |  |  | 160d | 0d |  |  | AWH |  |
| P1EWCC-PWP06-8680 |  | Update of Project Plans and LS-WSI and Approval (intrusive surveys) | 40d | 2018-06-15 | 2018-08-10 | P1EWCC-PWP06-8650 |  |  |  |  | 160d | 33d |  |  | AWH |  |
| P1EWCC-PWP06-2040 |  | Report of Findings And Approval (029-L2 - Tilehouse Lane Cutting) | 35d | 2018-11-21 | 2019-01-09 | P1EWCC-PWP06-2030 |  |  |  |  | 1047.12d |  |  |  | AWH |  |

| ID | WBS | Activity | Type | Duration | Start | Finish | Predecessors | Complete | Remaining | Planned start | Planned finish | Total float | Free float | Constraint | Expected finish | Calendar | Fusion - WPS | Key Milestones | HS2 Filter |
| --- | --- | --- | --- | --- | --- | --- | --- | --- | --- | --- | --- | --- | --- | --- | --- | --- | --- | --- | --- |
|  | 9 | **Drainage** |  |  |  |  |  |  |  |  |  |  |  |  |  |  |  |  |  |
|  | 2 | **Ecological Mitigation Works** |  |  | 2017-04-11 | 2018-09-26 |  |  |  |  |  |  |  |  |  |  |  |  |  |
|  | 1 | **Design** |  |  | 2017-04-11 | 2017-10-24 |  |  |  |  |  |  |  |  |  |  |  |  |  |
| P1EWCC-PWP02-4940 |  | Design of Habitat Creation (029-M1W) |  | 25d | 2017-04-11 A | 2017-10-05 | P1EWCC-PWP03-3190 FF, P1EWCC-UWP01-1010 | 44% | 13.88d | 2017-04-24 | 2017-05-26 | -125.88d | 0d |  | 2017-10-05 |  | UW1 |  |  |
| P1EWCC-AWP01-4330 |  | Planning Consent & Licensing for Habitat Creation (029-M1W) |  | 40d | 2017-06-19 A | 2017-10-24 | P1EWCC-PWP02-4940 SS | 33% | 26.88d | 2017-07-19 | 2017-09-12 | -125.88d | 0d |  | 2017-10-24 |  | UW1 |  |  |
|  | 3 | **Habitat Creation** |  |  | 2018-01-05 | 2018-07-28 |  |  |  |  |  |  |  |  |  |  |  |  |  |
| P1EWCC-PWP02-4920 |  | Habitat Creation (029-M1W) |  | 44d | 2018-01-05 | 2018-03-08 | P1EWCC-AWP01-4330, P1EWCC-PWP06-2010, P1EWCC-PWP02-9220, P1EWCC-AWP01-4360, P1EWCC-PWP02-4940 |  |  |  |  | -178.88d | 0d |  |  |  | AWE1 | Key MS |  |
| P1EWCC-PWP02-4930 |  | Habitat Creation Maturity Period (029-M1W) |  | 150d | 2018-03-01 | 2018-07-28 | P1EWCC-PWP02-4920 SS |  |  |  |  | -303d | 0d | start on or after 2018-03-01 |  | HS2 - 8h x 7d Workweek (No Holidays) | AWE1 | Key MS |  |
|  | 5 | **Translocation of Species** |  |  | 2018-07-29 | 2018-09-26 |  |  |  |  |  |  |  |  |  |  |  |  |  |
| P1EWCC-PWP02-4980 |  | Species Translocation to Habitat Creation (029-M1W) |  | 60d | 2018-07-29 | 2018-09-26 | P1EWCC-PWP02-4930, P1EWCC-AWP01-4370, P1EWCC-PWP02-14610 |  |  |  |  | -57d | 0d |  |  | HS2 - 8h x 7d Workweek (No Holidays) | AWE1 |  |  |
|  | 8 | **Ground Remediation Works** |  |  | 2018-02-02 | 2019-01-11 |  |  |  |  |  |  |  |  |  |  |  |  |  |
| P1EWCC-FWP01-1120 |  | Design and Approval of Ground Remediation Works (from EA and local authority) - Pynesfield Farm/Maple Cross Landfill |  | 129.75d | 2018-02-02 | 2018-08-03 | P1EWCC-PWP02-11760 |  |  |  |  | -74.5d | 0d |  |  |  | AWE6 |  | y |
| P1EWCC-AWP01-4380 |  | Planning Consent & Licensing for Ground Remediation Works - Pynesfield Farm/Maple Cross Landfill |  | 50d | 2018-08-03 | 2018-10-12 | P1EWCC-FWP01-1120 |  |  |  |  | -74.5d | 0d |  |  |  | AWE6 |  |  |
| P1EWCC-EWP01-1250 |  | Ground Remediation Works - Pynesfield Farm/Maple Cross Landfill |  | 64.88d | 2018-10-12 | 2019-01-11 | P1EWCC-AWP01-4380, P1EWCC-AWP01-4370 |  |  |  |  | -74.5d | 0d |  |  |  | AWE6 |  | y |
|  | 3 | **Utility Works** |  |  | 2017-12-22 | 2019-02-18 |  |  |  |  |  |  |  |  |  |  |  |  |  |
| P1EWCC-PWP08-1830 |  | Detailed Design & Approval of Utility Work for CSO-01-7202 Thames Water 600mm sewer |  | 92d | 2017-12-22 | 2018-05-01 | P1EWCC-PWP01-6810 |  |  |  |  | -86d | 0d |  |  |  | DC1E |  | y |
| P1EWCC-PWP08-1900 |  | Procurement of Utility Work for CSO-01-7202 Thames Water 600mm sewer |  | 20d | 2018-07-17 | 2018-08-14 | P1EWCC-PWP01-11310 |  |  |  |  | 168d | 41d |  |  |  | DC1J |  | y |
| P1EWCC-EWP01-1410 |  | Installation of Utility Work for CSO-01-7202 Thames Water 600mm sewer |  | 93d | 2018-10-10 | 2019-02-18 | P1EWCC-PWP08-1900, P1EWCC-PWP02-4980, P1EWCC-PWP06-2030 SS+10d, P1EWCC-AWP01-4370 |  |  |  |  | 127d |  |  |  |  | DC1J |  | y |
|  | 5 | **Water Resources** |  |  | 2017-12-15 | 2018-06-15 |  |  |  |  |  |  |  |  |  |  |  |  |  |
| P1EWCC-FWP01-1100 |  | Undertake a Preliminary Dewatering Assessment to assess if exceeding ES Limits |  | 130d | 2017-12-15 | 2018-06-15 | P1EWCC-PWP01-5610 |  |  |  |  | 75.12d |  |  |  |  | AWS |  | y |
|  | 4 | **SOW Completion Dates** |  |  | 2017-11-24 | 2019-09-01 |  |  |  |  |  |  |  |  |  |  |  |  |  |
| P1EWCC-PWP01-3290 |  | Completion of Survey for GCN (34+500) | milestone | 0d | 2017-11-24 | 2017-11-24 | P1EWCC-PWP01-3150 |  |  |  |  | -116d | 1876d | finish on 2017-07-31 |  | HS2 - 8h x 7d Workweek (No Holidays) | UW1 |  |  |
| P1EWCC-PWP01-3300 |  | Completion of Survey for Bats (34+000) | milestone | 0d | 2017-11-24 | 2017-11-24 | P1EWCC-PWP01-3150 |  |  |  |  | -116d | 1876d | finish on 2017-07-31 |  | HS2 - 8h x 7d Workweek (No Holidays) | UW1 |  |  |
| P1EWCC-PWP01-3310 |  | Completion of Survey for Badgers (34+000 & 34+200) | milestone | 0d | 2017-11-24 | 2017-11-24 | P1EWCC-PWP01-3150 |  |  |  |  | -116d | 1876d | finish on 2017-07-31 |  | HS2 - 8h x 7d Workweek (No Holidays) | UW1 |  |  |
| P1EWCC-PWP02-1270 |  | Completion of Habitat Creation (029-M1W). Create Habitat - Woodland Habitat Creation (Sector C1) (P) | milestone | 0d | 2018-03-08 | 2018-03-08 | P1EWCC-PWP02-4920 |  |  |  |  | -67d | 1772d | finish on 2017-12-31 |  | HS2 - 8h x 7d Workweek (No Holidays) | AWE1 |  |  |
| P1EWCC-EWP01-1420 |  | Completion of Detailed Design for all Utility Work | milestone | 0d | 2018-05-01 | 2018-05-01 | P1EWCC-PWP08-1830 |  |  |  |  | -120d | 1718d | finish on 2018-01-01 |  | HS2 - 8h x 7d Workweek (No Holidays) | DC1E |  | y |
| P1EWCC-PWP02-2950 |  | Completion of Species Translocation/ exclusion - Reptiles | milestone | 0d | 2018-09-26 | 2018-09-26 | P1EWCC-PWP02-4980 |  |  |  |  | -57d | 1570d | finish on 2018-07-31 |  | HS2 - 8h x 7d Workweek (No Holidays) | AWE1 |  |  |
| P1EWCC-FWP01-1110 |  | Completion of Preliminary Dewatering Assessment to assess if exceeding ES Limits | milestone | 0d | 2018-09-30 | 2018-09-30 | P1EWCC-FWP01-1100 |  |  |  |  | 0d | 1566d | finish on 2018-09-30 |  | HS2 - 8h x 7d Workweek (No Holidays) | AWS |  | y |
| P1EWCC-PWP02-1850 |  | Completion of Species Translocation/ exclusion - Bats | milestone | 0d | 2018-09-30 | 2018-09-30 | P1EWCC-PWP02-4980 |  |  |  |  | 0d | 1566d | finish on 2018-09-30 |  | HS2 - 8h x 7d Workweek (No Holidays) | AWE1 |  |  |
| P1EWCC-PWP02-1860 |  | Completion of Species Translocation/ exclusion - Badgers | milestone | 0d | 2018-09-30 | 2018-09-30 | P1EWCC-PWP02-4980 |  |  |  |  | 0d | 1566d | finish on 2018-09-30 |  | HS2 - 8h x 7d Workweek (No Holidays) | AWE1 |  |  |
| P1EWCC-EWP01-1260 |  | Ground Remediation Works - Pynesfield Farm/Maple Cross Landfill | milestone | 0d | 2019-01-11 | 2019-01-11 | P1EWCC-EWP01-1250 |  |  |  |  | -102.5d | 1463.5d | finish on 2018-09-30 |  | HS2 - 8h x 7d Workweek (No Holidays) | AWE6 |  | y |
| P1EWCC-PWP08-1440 |  | Completion of Utility Work for CSO-01-7202 Thames Water 600mm sewer | milestone | 0d | 2019-09-01 | 2019-09-01 | P1EWCC-PWP08-1830, P1EWCC-EWP01-1410 |  |  |  |  | 0d | 1230d | finish on 2019-09-01 |  | HS2 - 8h x 7d Workweek (No Holidays) | DC1J |  | y |

| ID | WBS | Activity | Type | Duration | Start | Finish | Predecessors | Complete | Remaining | Planned start | Planned finish | Total float | Free float | Constraint | Expected finish | Calendar | HS2 Filter | Fusion - WPS |
| --- | --- | --- | --- | --- | --- | --- | --- | --- | --- | --- | --- | --- | --- | --- | --- | --- | --- | --- |
|  | 2 | **030-L1 - West Hyde Embankment** |  |  | 2017-03-20 | 2019-06-26 |  |  |  |  |  |  |  |  |  |  |  |  |
|  | 2 | **Land Access** |  |  | 2017-03-27 | 2018-07-30 |  |  |  |  |  |  |  |  |  |  |  |  |
|  | 1 | **Survey Work** |  |  | 2017-03-27 | 2017-03-27 |  |  |  |  |  |  |  |  |  |  |  |  |
| P1EWCC-AWP01-5190 |  | Land Access Granted for Survey Work (Schedule 2) | milestone | 0d | 2017-03-27 A | 2017-03-27 A |  | 100% |  | 2017-04-03 | 2017-04-03 |  |  | as late as possible |  |  | y | AW1 |
|  | 2 | **Possession** |  |  | 2018-07-30 | 2018-07-30 |  |  |  |  |  |  |  |  |  |  |  |  |
| P1EWCC-AWP01-5200 |  | Land Access Possession Granted for Construction of (Schedule 16) | milestone | 0d | 2018-07-30 | 2018-07-30 |  |  |  |  |  | 3d | 0d | as late as possible |  |  | y | AW1 |
|  | 6 | **Survey Works** |  |  | 2017-03-20 | 2019-06-26 |  |  |  |  |  |  |  |  |  |  |  |  |
| P1EWCC-AWP01-5120 |  | Planning Consent & Licensing for Survey Work |  | 10d | 2017-03-20 A | 2017-03-24 A | P1EWCC-AWP01-1230 | 100% |  | 2017-03-20 | 2017-03-31 |  |  |  |  |  |  | AW1 |
| P1EWCC-FWP01-1280 |  | Undertake Arboricultural Surveys |  | 125d | 2017-12-15 | 2018-06-08 | P1EWCC-PWP01-5610 |  |  |  |  | 446d |  |  |  |  | y | AWS |
| P1EWCC-FWP01-1290 |  | Undertake Remaining Ecology & Environmental Surveys |  | 398d | 2017-12-15 | 2019-06-26 | P1EWCC-PWP01-5610 |  |  |  |  | 173d |  |  |  |  | y | AWS |
| P1EWCC-FWP01-1300 |  | Undertake Remaining Soil Surveys |  | 120d | 2017-12-15 | 2018-06-01 | P1EWCC-PWP01-5610 |  |  |  |  | 451d |  |  |  |  | y | AWS |
|  | 1 | **Ecological & Environmental Surveys** |  |  | 2017-03-27 | 2017-10-06 |  |  |  |  |  |  |  |  |  |  |  |  |
| P1EWCC-PWP01-3390 |  | Survey for Badgers, Bats, GCN & Reptiles |  | 25d | 2017-03-27 A | 2017-10-06 | P1EWCC-AWP01-5190 SS, P1EWCC-AWP01-5120, P1EWCC-UWP01-1010, P1EWCC-AWP01-5190 | 40% | 14.88d | 2017-04-03 | 2017-05-05 | -49d | 0d |  | 2017-10-06 |  |  | UW1 |
|  | 4 | **Historic Environment Surveys** |  |  | 2018-02-09 | 2018-11-21 |  |  |  |  |  |  |  |  |  |  |  |  |
| P1EWCC-PWP06-3210 |  | Non-Intrusive Surveys (geophysics) |  | 20d | 2018-02-09 | 2018-03-09 | P1EWCC-PWP06-3250, P1EWCC-UWP01-1010, P1EWCC-PWP05-240 |  |  |  |  | 361d | 0d |  |  |  |  | AWH |
| P1EWCC-PWP06-8690 |  | Non-Intrusive Surveys (trial trenching) |  | 30d | 2018-05-04 | 2018-06-15 | P1EWCC-PWP06-3260, P1EWCC-PWP05-240 |  |  |  |  | 361d | 0d |  |  |  |  | AWH |
| P1EWCC-PWP06-3230 |  | Intrusive Surveys |  | 40d | 2018-09-26 | 2018-11-21 | P1EWCC-PWP06-3260, P1EWCC-PWP02-6370, P1EWCC-PWP06-8700, P1EWCC-AWP01-5200 |  |  |  |  | 328d | 0d |  |  |  |  | AWH |
|  | 8 | **Historic Environment** |  |  | 2017-12-15 | 2019-01-09 |  |  |  |  |  |  |  |  |  |  |  |  |
| P1EWCC-PWP06-3250 |  | Production and Approval of Project Plans & LS-WSI (non-intrusive surveys) |  | 40d | 2017-12-15 | 2018-02-09 | P1EWCC-PWP05-240 |  |  |  |  | 361d | 0d |  |  |  |  | AWH |
| P1EWCC-PWP06-3260 |  | Update of Project Plans and LS-WSI and Approval (intrusive surveys) |  | 40d | 2018-03-09 | 2018-05-04 | P1EWCC-PWP06-3210 |  |  |  |  | 361d | 0d |  |  |  |  | AWH |
| P1EWCC-PWP06-8700 |  | Update of Project Plans and LS-WSI and Approval (intrusive surveys) |  | 40d | 2018-06-15 | 2018-08-10 | P1EWCC-PWP06-8690 |  |  |  |  | 361d | 33d |  |  |  |  | AWH |
| P1EWCC-PWP06-3280 |  | Report of Findings And Approval |  | 35d | 2018-11-21 | 2019-01-09 | P1EWCC-PWP06-3230 |  |  |  |  | 1047.12d |  |  |  |  |  | AWH |
|  | 7 | **Ecological Mitigation Works** |  |  | 2018-03-01 | 2019-01-18 |  |  |  |  |  |  |  |  |  |  |  |  |
|  | 5 | **Translocation of Species** |  |  | 2018-07-29 | 2018-09-26 |  |  |  |  |  |  |  |  |  |  |  |  |
| P1EWCC-PWP02-6370 |  | Species Translocation to Habitat Creation (029-M1W) |  | 60d | 2018-07-29 | 2018-09-26 | P1EWCC-PWP02-4930, P1EWCC-AWP01-5200, P1EWCC-PWP02-14610 |  |  |  |  | 4d | 0d |  |  | HS2 - 8h x 7d Workweek (No Holidays) |  | AWE1 |

| ID | WBS | Activity | Type | Duration | Start | Finish | Predecessors | Complete | Planned start | Planned finish | Total float | Free float | Constraint | Calendar | HS2 Filter | Fusion - WPS |
| --- | --- | --- | --- | --- | --- | --- | --- | --- | --- | --- | --- | --- | --- | --- | --- | --- |
|  | 1 | **Landscape Planting - West Hyde (030-M2E)** |  |  | 2018-03-01 | 2019-01-18 |  |  |  |  |  |  |  |  |  |  |
|  | 1 | **Design** |  |  | 2018-03-01 | 2018-07-05 |  |  |  |  |  |  |  |  |  |  |
| P1EWCC-PWP02-12840 |  | Review and Vaildate HS2 design for planning |  | 80d | 2018-03-01 | 2018-06-21 | P1EWCC-PWP02-14440, P1EWCC-PWP02-11910 SS+5d |  |  |  | -99.75d | 0d |  |  | y | AWE2 |
| P1EWCC-PWP02-12860 |  | Schedule 17 Planning Consent Approval Period |  | 56d | 2018-04-27 | 2018-06-21 | P1EWCC-PWP02-12840 FF |  |  |  | 571d | 161d |  | HS2 - 8h x 7d Workweek (No Holidays) | y | AWE2 |
| P1EWCC-PWP02-12850 |  | HS2 approval period of vaildated design |  | 14d | 2018-06-22 | 2018-07-05 | P1EWCC-PWP02-12840 |  |  |  | 466.12d | 0d |  | HS2 - 8h x 7d Workweek (No Holidays) | y | AWE2 |
|  | 2 | **Installation** |  |  | 2018-07-05 | 2019-01-18 |  |  |  |  |  |  |  |  |  |  |
| P1EWCC-PWP02-12820 |  | Call off of Advance Planting | milestone | 0d | 2018-07-05 | 2018-07-05 | P1EWCC-PWP02-12850 |  |  |  | 332.25d | 0d |  |  | y | AWE2 |
| P1EWCC-PWP02-12830 |  | Call off period for Advance Planting |  | 64.88d | 2018-07-05 | 2018-10-04 | P1EWCC-PWP02-12820 |  |  |  | 332.25d | 40.25d |  |  | y | AWE2 |
| P1EWCC-PWP02-12810 |  | Advance Planting to the east of the A412 to provide screening to West Hyde (030-M2E) |  | 30d | 2018-11-30 | 2019-01-18 | P1EWCC-PWP02-12830, P1EWCC-PWP02-12860, P1EWCC-PWP02-11910, P1EWCC-AWP01-5200, P1EWCC-PWP02-6370, P1EWCC-PWP02-15070 |  |  |  | 275d |  | start on or after 2018-11-01 | HS2 - 8h x 5d Workweek (Nonwork: Bank Holidays & 1w Xmas) [upto 2034] DEFAULT |  | AWE2 |
|  | 1 | **SOW Completion Dates** |  |  | 2017-10-06 | 2018-09-30 |  |  |  |  |  |  |  |  |  |  |
| P1EWCC-PWP01-1810 |  | Completion of Survey for Reptiles (31+000) | milestone | 0d | 2017-10-06 | 2017-10-06 | P1EWCC-PWP01-3390 |  |  |  | -67d | 1925d | finish on 2017-07-31 | HS2 - 8h x 7d Workweek (No Holidays) |  | UW1 |
| P1EWCC-PWP01-1860 |  | Completion of Survey for Badgers (30+900 to 31+000) | milestone | 0d | 2017-10-06 | 2017-10-06 | P1EWCC-PWP01-3390 |  |  |  | -67d | 1925d | finish on 2017-07-31 | HS2 - 8h x 7d Workweek (No Holidays) |  | UW1 |
| P1EWCC-PWP01-1870 |  | Completion of Survey for Bats (31+000) | milestone | 0d | 2017-10-06 | 2017-10-06 | P1EWCC-PWP01-3390 |  |  |  | -67d | 1925d | finish on 2017-07-31 | HS2 - 8h x 7d Workweek (No Holidays) |  | UW1 |
| P1EWCC-PWP02-1870 |  | Completion of Species Translocation/ exclusion - Badgers | milestone | 0d | 2018-09-30 | 2018-09-30 | P1EWCC-PWP02-6370 |  |  |  | 0d | 1566d | finish on 2018-09-30 | HS2 - 8h x 7d Workweek (No Holidays) |  | AWE1 |
| P1EWCC-PWP02-1880 |  | Completion of Species Translocation/ exclusion - Bats | milestone | 0d | 2018-09-30 | 2018-09-30 | P1EWCC-PWP02-6370 |  |  |  | 0d | 1566d | finish on 2018-09-30 | HS2 - 8h x 7d Workweek (No Holidays) |  | AWE1 |
| P1EWCC-PWP02-2070 |  | Completion of Species Translocation/ exclusion - Great Crested Newts | milestone | 0d | 2018-09-30 | 2018-09-30 | P1EWCC-PWP02-6370 |  |  |  | 0d | 1566d | finish on 2018-09-30 | HS2 - 8h x 7d Workweek (No Holidays) |  | AWE1 |
| P1EWCC-PWP02-2960 |  | Completion of Species Translocation/ exclusion - Reptiles | milestone | 0d | 2018-09-30 | 2018-09-30 | P1EWCC-PWP02-6370 FF |  |  |  | 0d | 1566d | finish on 2018-09-30 | HS2 - 8h x 7d Workweek (No Holidays) |  | AWE1 |
|  | C12 | **Tunnels & Approach Cuttings (Ch. 31050 To Ch.47750)** |  |  | 2017-02-17 | 2020-09-03 |  |  |  |  |  |  |  |  |  |  |
|  | C121 | **Chiltern Tunnel South Approach Cutting (Ch. 31050 To Ch. 31363)** |  |  | 2017-03-16 | 2019-03-05 |  |  |  |  |  |  |  |  |  |  |
|  | 1 | **031-L1 - Chiltern Tunnel South Cutting** |  |  | 2017-03-16 | 2019-03-05 |  |  |  |  |  |  |  |  |  |  |
|  | 1 | **Land Access** |  |  | 2017-03-27 | 2018-08-01 |  |  |  |  |  |  |  |  |  |  |
|  | 1 | **Survey Work** |  |  | 2017-03-27 | 2017-03-27 |  |  |  |  |  |  |  |  |  |  |
| P1EWCC-AWP01-5210 |  | Land Access Granted for Survey Work (Schedule 2) | milestone | 0d | 2017-03-27 A | 2017-03-27 A |  | 100% | 2017-04-03 | 2017-04-03 |  |  | as late as possible |  | y | AW1 |
|  | 2 | **Possession** |  |  | 2017-09-18 | 2018-08-01 |  |  |  |  |  |  |  |  |  |  |
| P1EWCC-AWP01-8490 |  | 11 month Land Access Possession Period for Construction of (Schedule 16) - Badger Sett |  | 138d | 2017-09-18 | 2018-03-28 |  |  |  |  | 1197d | 0d | as late as possible |  | y | AW1 |
| P1EWCC-AWP01-8520 |  | Land Access Possession Granted for Construction of (Schedule 16) - South Chalfont lane | milestone | 0d | 2017-09-18 | 2017-09-18 |  |  |  |  | 265d | 0d | as late as possible |  | y | AW1 |
| P1EWCC-AWP01-5220 |  | Land Access Possession Granted for Construction of (Schedule 16) - TBM | milestone | 0d | 2018-03-07 | 2018-03-07 |  |  |  |  | 0d |  | as late as possible |  | y | AW1 |
| P1EWCC-AWP01-8510 |  | Land Access Possession Granted for Construction of (Schedule 16) - Badger Sett | milestone | 0d | 2018-03-29 | 2018-03-29 | P1EWCC-AWP01-8490 |  |  |  | 1197d | 0d |  |  | y | AW1 |
| P1EWCC-AWP01-8500 |  | Land Access Possession Granted for Construction of (Schedule 16) - Whole Asset | milestone | 0d | 2018-08-01 | 2018-08-01 |  |  |  |  | -326d | 0d | as late as possible |  | y | AW1 |

| ID | WBS | Activity | Duration | Start | Finish | Predecessors | Complete | Remaining | Planned start | Planned finish | Total float | Free float | Expected finish | Fusion - WPS | HS2 Filter | Key Milestones |
| --- | --- | --- | --- | --- | --- | --- | --- | --- | --- | --- | --- | --- | --- | --- | --- | --- |
|  | 6 | **Survey Works** |  | 2017-03-20 | 2019-01-11 |  |  |  |  |  |  |  |  |  |  |  |
| P1EWCC-AWP01-5130 |  | Planning Consent & Licensing for Survey Work | 10d | 2017-03-20 A | 2017-03-24 A | P1EWCC-AWP01-1230 | 100% |  | 2017-03-20 | 2017-03-31 |  |  |  | AW1 |  |  |
| P1EWCC-FWP01-1310 |  | Undertake Remaining Soil Surveys | 120d | 2017-12-15 | 2018-06-01 | P1EWCC-PWP01-5610 |  |  |  |  | 109d | 197d |  | AWS | y |  |
| P1EWCC-FWP01-1320 |  | Undertake Arboricultural Surveys | 125d | 2017-12-15 | 2018-06-08 | P1EWCC-PWP01-5610 |  |  |  |  | 104d | 192d |  | AWS | y |  |
| P1EWCC-FWP01-1330 |  | Undertake Remaining Ecology & Environmental Surveys | 137d | 2017-12-15 | 2018-06-26 | P1EWCC-PWP01-5610 |  |  |  |  | 92d | 180d |  | AWS | y |  |
| P1EWCC-FWP01-1340 |  | Undertake Water Monitoring | 280d | 2017-12-15 | 2019-01-11 | P1EWCC-PWP01-5610 |  |  |  |  | -51d | 37d |  | AWS | y |  |
|  | 1 | **Ecological & Environmental Surveys** |  | 2017-03-27 | 2017-12-01 |  |  |  |  |  |  |  |  |  |  |  |
| P1EWCC-PWP01-3400 |  | Survey for Badgers, Bats, GCN & Reptiles | 25d | 2017-03-27 A | 2017-12-01 | P1EWCC-UWP01-1010, P1EWCC-AWP01-5210, P1EWCC-AWP01-5130 |  | 54.88d | 2017-04-03 | 2017-05-05 | -153.88d | 0d | 2017-12-01 | UW1 |  |  |
|  | 4 | **Historic Environment Surveys** |  | 2017-04-18 | 2018-11-23 |  |  |  |  |  |  |  |  |  |  |  |
|  | 2 | **M25 Slip Roads** |  | 2017-04-18 | 2017-05-23 |  |  |  |  |  |  |  |  |  |  |  |
| P1EWCC-PWP06-11270 |  | Non-Intrusive Surveys (trial trenching) | 30d | 2017-04-18 A | 2017-05-23 A | P1EWCC-PWP06-11300 | 100% |  | 2018-04-02 | 2018-05-11 |  |  |  | UW1 |  | Key MS |
|  | 3 | **North Chalfont Lane (CR01406d)** |  | 2017-07-07 | 2017-07-19 |  |  |  |  |  |  |  |  |  |  |  |
| P1EWCC-PWP06-11280 |  | Non-Intrusive Surveys (trial trenching) | 15d | 2017-07-07 A | 2017-07-19 A | P1EWCC-PWP06-11270 | 100% |  | 2017-07-03 | 2017-07-21 |  |  |  | UW1 |  | Key MS |
|  | 4 | **South Chalfont Lane (CR01929)** |  | 2017-09-04 | 2017-09-29 |  |  |  |  |  |  |  |  |  |  |  |
| P1EWCC-PWP06-11290 |  | Non-Intrusive Surveys (trial trenching) | 20d | 2017-09-04 A | 2017-09-29 | P1EWCC-PWP06-11280, P1EWCC-AWP01-8520 | 51% | 9.88d | 2017-09-18 | 2017-10-13 | 265.12d | 0d | 2017-09-29 | UW1 |  | Key MS |
|  | 1 | **031-L1 - Chiltern Tunnel South Cutting** |  | 2018-02-09 | 2018-11-23 |  |  |  |  |  |  |  |  |  |  |  |
| P1EWCC-PWP06-8710 |  | Non-Intrusive Surveys (trial trenching) | 30d | 2018-02-09 | 2018-03-23 | P1EWCC-PWP06-3330, P1EWCC-PWP05-240 |  |  |  |  | -24.88d | 0d |  | AWH |  | Key MS |
| P1EWCC-PWP06-3310 |  | Intrusive Surveys (mitigation works) | 40d | 2018-10-01 | 2018-11-23 | P1EWCC-PWP02-6380, P1EWCC-PWP06-8720, P1EWCC-AWP01-8500 |  |  |  |  | -120d | 0d |  | AWH |  | Key MS |
|  | 8 | **Historic Environment** |  | 2017-03-16 | 2019-01-11 |  |  |  |  |  |  |  |  |  |  |  |
| P1EWCC-PWP06-3330 |  | Production and Approval of Project Plan & LS-WSI (trail trenching) | 40d | 2017-12-15 | 2018-02-09 | P1EWCC-PWP05-240 |  |  |  |  | -24.88d | 0d |  | AWH |  |  |
| P1EWCC-PWP06-8720 |  | Update of Project Plans and LS-WSI and Approval (intrusive surveys) | 40d | 2018-03-23 | 2018-05-18 | P1EWCC-PWP06-8710 |  |  |  |  | -24.88d | 95.12d |  | AWH |  |  |
| P1EWCC-PWP06-3360 |  | Report of Findings And Approval | 35d | 2018-11-26 | 2019-01-11 | P1EWCC-PWP06-3310, P1EWCC-PWP06-11320 |  |  |  |  | 0d |  |  | AWH |  |  |
|  | 2 | **M25 Slip Roads, North & South Chalfont Lane** |  | 2017-03-16 | 2017-11-17 |  |  |  |  |  |  |  |  |  |  |  |
| P1EWCC-PWP06-11300 |  | Production and Approval of Project Plan & LS-WSI (trail trenching) | 40d | 2017-03-16 A | 2017-04-17 A |  | 100% |  | 2017-11-13 | 2018-01-05 |  |  |  | AWH |  |  |
| P1EWCC-PWP06-11320 |  | Report of Findings And Approval | 35d | 2017-09-29 | 2017-11-17 | P1EWCC-PWP06-11290 |  |  |  |  | 265.12d |  |  | AWH |  |  |

| ID | WBS | Activity | Type | Duration | Start | Finish | Predecessors | Complete | Remaining | Planned start | Planned finish | Total float | Free float | Constraint | Expected finish | Calendar | Fusion - WPS | Key Milestones | HS2 Filter |
| --- | --- | --- | --- | --- | --- | --- | --- | --- | --- | --- | --- | --- | --- | --- | --- | --- | --- | --- | --- |
|  | 1 | **031-L1 - Chiltern Tunnel South Cutting** |  |  |  |  |  |  |  |  |  |  |  |  |  |  |  |  |  |
|  | 7 | **Ecological Mitigation Works** |  |  | 2017-07-17 | 2019-02-22 |  |  |  |  |  |  |  |  |  |  |  |  |  |
|  | 1 | **Design** |  |  | 2017-07-17 | 2017-12-18 |  |  |  |  |  |  |  |  |  |  |  |  |  |
|  | 1 | **Badger Sett** |  |  | 2017-07-17 | 2017-12-18 |  |  |  |  |  |  |  |  |  |  |  |  |  |
| P1EWCC-PWP02-12700 |  | Sch 17 Planning Consent Approval Period |  | 103d | 2017-07-17 A | 2017-12-18 |  | 36% | 65.88d | 2017-09-18 | 2018-02-07 | 1289.12d | 0d |  | 2017-12-18 |  | UW1 | Key MS |  |
| P1EWCC-PWP02-12690 |  | Detailed Design & Acceptance of New Badger Sett |  | 96d | 2017-07-25 A | 2017-12-12 | P1EWCC-UWP01-1030 | 36% | 61.88d | 2017-07-25 | 2017-12-05 | 1293.12d | 0d |  | 2017-12-12 |  | UW1 | Key MS |  |
|  | 2 | **Habitat Creation** |  |  | 2017-12-01 | 2018-07-06 |  |  |  |  |  |  |  |  |  |  |  |  |  |
|  | 1 | **Badger Sett** |  |  | 2017-12-01 | 2018-07-06 |  |  |  |  |  |  |  |  |  |  |  |  |  |
| P1EWCC-PWP02-12730 |  | Badger Breeding Season (no sett closure) |  | 151d | 2017-12-01 | 2018-06-29 |  |  |  |  |  | 1180d | 0d | start on or after 2017-12-01 |  |  | AWE1 | Key MS |  |
| P1EWCC-PWP02-14630 |  | Exclude GCN/Reptile from New Badger Sett Location |  | 30d | 2018-03-29 | 2018-04-27 | P1EWCC-AWP01-8510 |  |  |  |  | 1675d | 0d |  |  | HS2 - 8h x 7d Workweek (No Holidays) | AWE1 | Key MS |  |
| P1EWCC-PWP02-12710 |  | Create New Badger Sett |  | 10d | 2018-04-27 | 2018-05-11 | P1EWCC-PWP02-12700, P1EWCC-AWP01-8510, P1EWCC-PWP02-12690, P1EWCC-PWP02-14630 |  |  |  |  | 1195.12d | 0d |  |  |  | AWE1 | Key MS |  |
| P1EWCC-PWP02-12720 |  | Maturity of New Badger Sett |  | 20d | 2018-05-11 | 2018-06-08 | P1EWCC-PWP02-12710 |  |  |  |  | 1195.12d | 15.12d |  |  |  | AWE1 | Key MS |  |
| P1EWCC-PWP02-12740 |  | Sett Exclusion and Destruction |  | 5d | 2018-07-02 | 2018-07-06 | P1EWCC-PWP02-12730, P1EWCC-PWP02-12720 |  |  |  |  | 1180d |  |  |  |  | AWE1 | Key MS |  |
|  | 5 | **Translocation of Species** |  |  | 2018-08-01 | 2018-09-29 |  |  |  |  |  |  |  |  |  |  |  |  |  |
| P1EWCC-PWP02-6380 |  | Species Translocation to Habitat Creation (029-M1W) |  | 60d | 2018-08-01 | 2018-09-29 | P1EWCC-PWP02-4930 SS, P1EWCC-AWP01-8500, P1EWCC-PWP01-3400, P1EWCC-PWP02-14610 |  |  |  |  | -456d | 0d | start on or after 2018-08-01 |  | HS2 - 8h x 7d Workweek (No Holidays) | AWE1 | Key MS |  |
|  | 3 | **Landscape Planting - Hornhill Road (031-M3E)** |  |  | 2018-03-01 | 2019-02-22 |  |  |  |  |  |  |  |  |  |  |  |  |  |
|  | 1 | **Design** |  |  | 2018-03-01 | 2018-07-05 |  |  |  |  |  |  |  |  |  |  |  |  |  |
| P1EWCC-PWP02-12900 |  | Review and Vaildate HS2 design for planning |  | 80d | 2018-03-01 | 2018-06-21 | P1EWCC-PWP02-14440, P1EWCC-PWP02-11910 SS+5d |  |  |  |  | -99.75d | 0d |  |  |  | AWE2 |  | y |
| P1EWCC-PWP02-12920 |  | Schedule 17 Planning Consent Approval Period |  | 56d | 2018-04-27 | 2018-06-21 | P1EWCC-PWP02-12900 FF |  |  |  |  | 1582d | 161d |  |  | HS2 - 8h x 7d Workweek (No Holidays) | AWE2 |  | y |
| P1EWCC-PWP02-12910 |  | HS2 approval period of vaildated design |  | 14d | 2018-06-22 | 2018-07-05 | P1EWCC-PWP02-12900 |  |  |  |  | 1477.12d | 0d |  |  | HS2 - 8h x 7d Workweek (No Holidays) | AWE2 |  | y |
|  | 2 | **Installation** |  |  | 2018-07-05 | 2019-02-22 |  |  |  |  |  |  |  |  |  |  |  |  |  |
| P1EWCC-PWP02-12880 |  | Call off of Advance Planting | milestone | 0d | 2018-07-05 | 2018-07-05 | P1EWCC-PWP02-12910 |  |  |  |  | 1055.25d | 0d |  |  |  | AWE2 |  | y |
| P1EWCC-PWP02-12890 |  | Call off period for Advance Planting |  | 64.88d | 2018-07-05 | 2018-10-04 | P1EWCC-PWP02-12880 |  |  |  |  | 1055.25d | 40.25d |  |  |  | AWE2 |  | y |
| P1EWCC-PWP02-12870 |  | Advance Planting along Hornhill Road (031-M3E) |  | 55d | 2018-11-30 | 2019-02-22 | P1EWCC-PWP02-12890, P1EWCC-PWP02-12920, P1EWCC-PWP02-11910, P1EWCC-AWP01-8500, P1EWCC-PWP02-6380, P1EWCC-PWP02-15070 |  |  |  |  | 971d |  | start on or after 2018-11-01 |  | HS2 - 8h x 5d Workweek (Nonwork: Bank Holidays & 1w Xmas) [upto 2034] DEFAULT | AWE2 |  |  |

| ID | WBS | Activity | Type | Duration | Start | Finish | Predecessors | Complete | Remaining | Planned start | Planned finish | Total float | Free float | Constraint | Expected finish | Calendar | HS2 Filter | Fusion - WPS | Key Milestones |
| --- | --- | --- | --- | --- | --- | --- | --- | --- | --- | --- | --- | --- | --- | --- | --- | --- | --- | --- | --- |
|  | 3 | **Utility Works** |  |  | 2017-06-05 | 2019-03-05 |  |  |  |  |  |  |  |  |  |  |  |  |  |
|  | 6 | **TBM Power Supply (Contestable Aspects Only)** |  |  | 2017-06-05 | 2019-03-01 |  |  |  |  |  |  |  |  |  |  |  |  |  |
| P1EWCC-PWP18-1000 |  | Scheme Design & Approval of Utility Work for TBM Power Supply (Contestable Aspects Only) |  | 39.88d | 2017-06-05 A | 2017-09-22 | P1EWCC-PWP01-4140 FF, P1EWCC-PWP01-4100 FF | 88% | 4.88d | 2017-06-26 | 2017-08-18 | -40d | 0d |  | 2017-09-22 |  | y | DC1B | Key MS |
| P1EWCC-PWP18-1020 |  | Detailed Design & Approval of Utility Work for TBM Power Supply (Contestable Aspects Only) |  | 172d | 2017-12-08 | 2018-08-07 | P1EWCC-PWP01-11250, P1EWCC-PWP18-1000 |  |  |  |  | 0d |  |  |  |  | y | DC1G | Key MS |
| P1EWCC-PWP19-1000 |  | Procurement of Utility Work for TBM Power Supply (Contestable Aspects Only) |  | 262d | 2017-12-18 | 2018-12-19 | P1EWCC-PWP18-1020 SS+6d |  |  |  |  | 0d |  |  |  |  | y | DC1G | Key MS |
| P1EWCC-EWP19-1010 |  | Installation of Utility Work for TBM Power Supply (Contestable Aspects Only) |  | 257d | 2018-03-07 | 2019-03-01 | P1EWCC-PWP19-1000 SS+57d, P1EWCC-AWP01-5220 |  |  |  |  | 0d |  |  |  |  | y | DC1G | Key MS |
|  | 7 | **Utility Connections into Colne Valley Viaduct Main Compound** |  |  | 2017-12-22 | 2019-03-05 |  |  |  |  |  |  |  |  |  |  |  |  |  |
| P1EWCC-PWP03-3460 |  | Scheme Design & Approval of Utility Work for Utility Connections into Colne Valley Viaduct Main Compound |  | 92d | 2017-12-22 | 2018-05-01 | P1EWCC-PWP01-6810 |  |  |  |  | -131.88d | 0d |  |  |  | y | DC1E |  |
| P1EWCC-PWP03-4630 |  | Detailed Design & Approval of Utility Work for Utility Connections into Colne Valley Viaduct Main Compound |  | 55d | 2018-07-17 | 2018-10-02 | P1EWCC-PWP01-11310, P1EWCC-PWP03-3460 |  |  |  |  | -131.88d | 0d |  |  |  | y | DC1J |  |
| P1EWCC-PWP08-1560 |  | Procurement of Utility Work for Utility Connections into Colne Valley Viaduct Main Compound |  | 20d | 2018-10-02 | 2018-10-30 | P1EWCC-PWP03-4630 |  |  |  |  | -131.88d | 0d |  |  |  | y | DC1J |  |
| P1EWCC-EWP02-1350 |  | Installation of Utility Work for Utility Connections into Colne Valley Viaduct Main Compound |  | 90d | 2018-10-30 | 2019-03-05 | P1EWCC-PWP08-1560, P1EWCC-PWP02-6380, P1EWCC-PWP06-3310 SS+10d, P1EWCC-AWP01-8500 |  |  |  |  | -131.88d | 0d |  |  |  | y | DC1J |  |
|  | 8 | **Utility Connections into Chiltern Tunnel Main Construction Compound** |  |  | 2017-12-22 | 2019-03-05 |  |  |  |  |  |  |  |  |  |  |  |  |  |
| P1EWCC-PWP03-3470 |  | Scheme Design & Approval of Utility Connections into Chiltern Tunnel Main Construction Compound |  | 92d | 2017-12-22 | 2018-05-01 | P1EWCC-PWP01-6810 |  |  |  |  | -131.88d | 0d |  |  |  | y | DC1E |  |
| P1EWCC-PWP03-4640 |  | Detailed Design & Approval of Utility Connections into Chiltern Tunnel Main Construction Compound |  | 55d | 2018-07-17 | 2018-10-02 | P1EWCC-PWP03-3470, P1EWCC-PWP01-11310 |  |  |  |  | -131.88d | 0d |  |  |  | y | DC1J |  |
| P1EWCC-PWP08-1570 |  | Procurement of Utility Work for Utility Connections into Chiltern Tunnel Main Construction Compound |  | 20d | 2018-10-02 | 2018-10-30 | P1EWCC-PWP03-4640 |  |  |  |  | -131.88d | 0d |  |  |  | y | DC1J |  |
| P1EWCC-EWP02-1360 |  | Installation of Utility Work for Utility Connections into Chiltern Tunnel Main Construction Compound |  | 90d | 2018-10-30 | 2019-03-05 | P1EWCC-PWP06-3310 SS+10d, P1EWCC-PWP02-6380, P1EWCC-PWP08-1570, P1EWCC-AWP01-8500 |  |  |  |  | -131.88d | 0d |  |  |  | y | DC1J |  |
|  | 9 | **Water Resources** |  |  | 2017-12-15 | 2018-06-15 |  |  |  |  |  |  |  |  |  |  |  |  |  |
| P1EWCC-FWP02-1130 |  | Undertake a Preliminary Dewatering Assessment to assess if exceeding ES Limits |  | 130d | 2017-12-15 | 2018-06-15 | P1EWCC-PWP01-5610 |  |  |  |  | 75.12d |  |  |  |  | y | AWS |  |
|  | 2 | **SOW Completion Dates** |  |  | 2017-09-22 | 2019-03-05 |  |  |  |  |  |  |  |  |  |  |  |  |  |
| P1EWCC-PWP18-1010 |  | Completion of Utility Scheme Design & Approval for TBM Power Supply (Contestable Aspects Only) | milestone | 0d | 2017-09-22 | 2017-09-22 | P1EWCC-PWP18-1000 |  |  |  |  | -56d | 1939d | finish on 2017-07-28 |  | HS2 - 8h x 7d Workweek (No Holidays) | y | DC1B |  |
| P1EWCC-EWP01-1430 |  | Completion of Scheme Design for all Utility Work | milestone | 0d | 2017-11-01 | 2017-11-01 |  |  |  |  |  | 0d | 1899d | finish on 2017-11-01 |  | HS2 - 8h x 7d Workweek (No Holidays) | y | DC1E |  |
| P1EWCC-PWP02-1280 |  | Completion of Species Translocation/ exclusion for M25 Works - Reptiles | milestone | 0d | 2018-09-29 | 2018-09-29 | P1EWCC-PWP01-3400, P1EWCC-PWP02-6380 |  |  |  |  | -456d | 1567d | finish on 2017-06-30 |  | HS2 - 8h x 7d Workweek (No Holidays) |  | AWE1 |  |
| P1EWCC-PWP02-1290 |  | Completion of Species Translocation/ exclusion for M25 Works - Badgers | milestone | 0d | 2018-09-29 | 2018-09-29 | P1EWCC-PWP01-3400, P1EWCC-PWP02-6380 |  |  |  |  | -456d | 1567d | finish on 2017-06-30 |  | HS2 - 8h x 7d Workweek (No Holidays) |  | AWE1 |  |
| P1EWCC-PWP02-1300 |  | Completion of Species Translocation/ exclusion for M25 Works - Bats | milestone | 0d | 2018-09-29 | 2018-09-29 | P1EWCC-PWP01-3400, P1EWCC-PWP02-6380 |  |  |  |  | -456d | 1567d | finish on 2017-06-30 |  | HS2 - 8h x 7d Workweek (No Holidays) |  | AWE1 |  |
| P1EWCC-PWP02-1350 |  | Completion of Artificial Sett - Badgers - Chiltern Tunnel - South Cutting (Replacement Sett) | milestone | 0d | 2018-09-29 | 2018-09-29 | P1EWCC-PWP02-6380 |  |  |  |  | -1d | 1567d | finish on 2018-09-28 |  | HS2 - 8h x 7d Workweek (No Holidays) |  | AWE1 |  |
| P1EWCC-PWP02-1890 |  | Completion of Species Translocation/ exclusion - Badgers | milestone | 0d | 2018-09-29 | 2018-09-29 | P1EWCC-PWP02-6380 |  |  |  |  | -1d | 1567d | finish on 2018-09-28 |  | HS2 - 8h x 7d Workweek (No Holidays) |  | AWE1 |  |
| P1EWCC-PWP02-1900 |  | Completion of Species Translocation/ exclusion - Bats | milestone | 0d | 2018-09-29 | 2018-09-29 | P1EWCC-PWP02-6380 |  |  |  |  | -1d | 1567d | finish on 2018-09-28 |  | HS2 - 8h x 7d Workweek (No Holidays) |  | AWE1 |  |
| P1EWCC-PWP02-2970 |  | Completion of Species Translocation/ exclusion - Reptiles | milestone | 0d | 2018-09-29 | 2018-09-29 | P1EWCC-PWP02-6380 FF |  |  |  |  | -1d | 1567d | finish on 2018-09-28 |  | HS2 - 8h x 7d Workweek (No Holidays) |  | AWE1 |  |
| P1EWCC-FWP02-1140 |  | Completion of Preliminary Dewatering Assessment to assess if exceeding ES Limits | milestone | 0d | 2018-09-30 | 2018-09-30 | P1EWCC-FWP02-1130 |  |  |  |  | 0d | 1566d | finish on 2018-09-30 |  | HS2 - 8h x 7d Workweek (No Holidays) | y | AWS |  |
| P1EWCC-PWP19-1030 |  | Completion of Installation of Utility Work for TBM Power Supply (Contestable Aspects Only) | milestone | 0d | 2019-03-01 | 2019-03-01 | P1EWCC-EWP19-1010 |  |  |  |  | 0d | 1414d | finish on 2019-03-01 |  | HS2 - 8h x 7d Workweek (No Holidays) | y | DC1G |  |
| P1EWCC-EWP02-1430 |  | Completion of Installation of Utility Work for Utility Connections into Colne Valley Viaduct Main Compound | milestone | 0d | 2019-03-05 | 2019-03-05 | P1EWCC-EWP02-1350 |  |  |  |  | -185d | 1410d | finish on 2018-09-01 |  | HS2 - 8h x 7d Workweek (No Holidays) | y | DC1J |  |
| P1EWCC-EWP02-1440 |  | Completion of Installation of Utility Work for Utility Connections into Chiltern Tunnel Main Construction Compound | milestone | 0d | 2019-03-05 | 2019-03-05 | P1EWCC-EWP02-1360 |  |  |  |  | -185d | 1410d | finish on 2018-09-01 |  | HS2 - 8h x 7d Workweek (No Holidays) | y | DC1J |  |

| ID | WBS | Activity | Type | Duration | Start | Finish | Predecessors | Complete | Remaining | Planned start | Planned finish | Total float | Free float | Constraint | Expected finish | HS2 Filter | Fusion - WPS |
| --- | --- | --- | --- | --- | --- | --- | --- | --- | --- | --- | --- | --- | --- | --- | --- | --- | --- |
|  | C122 | **Chiltern Tunnel (Ch. 31363 To Ch. 47205)** |  |  | 2017-02-17 | 2020-09-03 |  |  |  |  |  |  |  |  |  |  |  |
|  | 1 | **034-S1 - Chiltern Tunnel - Chalfont St Peter Vent Shaft** |  |  | 2017-02-17 | 2019-01-11 |  |  |  |  |  |  |  |  |  |  |  |
|  | 7 | **Land Access** |  |  | 2017-04-10 | 2018-07-26 |  |  |  |  |  |  |  |  |  |  |  |
|  | 1 | **Survey Work** |  |  | 2017-04-10 | 2017-04-10 |  |  |  |  |  |  |  |  |  |  |  |
| P1EWCC-AWP01-3960 |  | Land Access Granted for Survey Work (Schedule 2) | milestone | 0d | 2017-04-10 A | 2017-04-10 A |  | 100% |  | 2017-03-30 | 2017-03-30 |  |  | as late as possible |  | y | AW1 |
|  | 2 | **Possession** |  |  | 2017-12-05 | 2018-07-26 |  |  |  |  |  |  |  |  |  |  |  |
|  | 1 | **Ecological Mitigation Area** |  |  | 2017-12-05 | 2017-12-05 |  |  |  |  |  |  |  |  |  |  |  |
| P1EWCC-AWP01-3990 |  | Land Access Possession Granted for Ecolgical Mitigation Site (Schedule 16) | milestone | 0d | 2017-12-05 | 2017-12-05 |  |  |  |  |  | -26d | 0d | start on or after 2017-12-05 |  | y | UW1 |
|  | 2 | **034-S1 - Chiltern Tunnel - Chalfont St Peter Vent Shaft** |  |  | 2018-07-26 | 2018-07-26 |  |  |  |  |  |  |  |  |  |  |  |
| P1EWCC-AWP01-4040 |  | Land Access Possession Granted for Construction of Chalfont St Peter Vent Shaft (Schedule 16) | milestone | 0d | 2018-07-26 | 2018-07-26 |  |  |  |  |  | -126d | 0d | as late as possible |  | y | AW1 |
|  | 1 | **Survey Works** |  |  | 2017-03-20 | 2019-01-11 |  |  |  |  |  |  |  |  |  |  |  |
| P1EWCC-AWP01-3050 |  | Planning Consent & Licensing for Survey Work |  | 8d | 2017-03-20 A | 2017-04-07 A | P1EWCC-AWP01-1230 | 100% |  | 2017-03-20 | 2017-03-29 |  |  |  |  |  | UW1 |
| P1EWCC-FWP01-1350 |  | Undertake Arboricultural Surveys |  | 125d | 2017-12-15 | 2018-06-08 | P1EWCC-PWP01-5610 |  |  |  |  | 104d | 155d |  |  | y | AWS |
| P1EWCC-FWP01-1360 |  | Undertake Remaining Ecology & Environmental Surveys |  | 240d | 2017-12-15 | 2018-11-16 | P1EWCC-PWP01-5610 |  |  |  |  | -11d | 40d |  |  | y | AWS |
| P1EWCC-FWP01-1370 |  | Undertake Water Monitoring |  | 280d | 2017-12-15 | 2019-01-11 | P1EWCC-PWP01-5610 |  |  |  |  | -51d | 0d |  |  | y | AWS |
|  | 1 | **Ecological & Environmental Surveys** |  |  | 2017-05-08 | 2017-09-29 |  |  |  |  |  |  |  |  |  |  |  |
| P1EWCC-PWP01-3040 |  | Survey for Badgers, Bats, GCN & Reptiles |  | 25d | 2017-05-08 A | 2017-09-29 | P1EWCC-AWP01-3050, P1EWCC-AWP01-3960, P1EWCC-UWP01-1010 | 60% | 9.88d | 2017-03-30 | 2017-05-03 | 20.12d | 0d |  | 2017-09-29 |  | UW1 |
|  | 2 | **Engineering Surveys** |  |  | 2017-04-10 | 2017-04-21 |  |  |  |  |  |  |  |  |  |  |  |
| P1EWCC-PWP03-3060 |  | Survey for Engineering (Topo, GPR, Utility, Soil) |  | 20d | 2017-04-10 A | 2017-04-21 A | P1EWCC-AWP01-3960, P1EWCC-UWP01-1010, P1EWCC-AWP01-3050 | 100% |  | 2017-03-30 | 2017-04-26 |  |  |  |  |  | UW1 |
|  | 3 | **Historic Environment Surveys** |  |  | 2017-09-25 | 2018-11-16 |  |  |  |  |  |  |  |  |  |  |  |
|  | 1 | **Ecological Mitigation Site** |  |  | 2017-09-25 | 2017-09-26 |  |  |  |  |  |  |  |  |  |  |  |
| P1EWCC-PWP06-1340 |  | Trial Trenching (ecological mitigation site) (Ashwells Farm) |  | 2d | 2017-09-25 | 2017-09-26 | P1EWCC-PWP06-1330 |  |  |  |  | 28d | 0d | start on or after 2017-09-25 |  |  | UW1 |
|  | 2 | **034-S1 - Chiltern Tunnel - Chalfont St Peter Vent Shaft** |  |  | 2018-02-09 | 2018-11-16 |  |  |  |  |  |  |  |  |  |  |  |
| P1EWCC-PWP06-8730 |  | Non-Intrusive Surveys (geophysics) |  | 20d | 2018-02-09 | 2018-03-09 | P1EWCC-PWP06-8750, P1EWCC-PWP05-240 |  |  |  |  | -44.88d | 0d |  |  |  | AWH |
| P1EWCC-PWP06-8740 |  | Non-Intrusive Surveys (trial trenching) |  | 30d | 2018-05-04 | 2018-06-15 | P1EWCC-PWP06-8760, P1EWCC-PWP05-240 |  |  |  |  | -44.88d | 0d |  |  |  | AWH |
| P1EWCC-PWP06-1820 |  | Intrusive Surveys (chalfont st peter vent shaft) |  | 40d | 2018-09-24 | 2018-11-16 | P1EWCC-PWP02-3810, P1EWCC-PWP06-8770, P1EWCC-AWP01-4040 |  |  |  |  | -75d | 0d |  |  |  | AWH |

| ID | WBS | Activity | Duration | Start | Finish | Predecessors | Complete | Remaining | Planned start | Planned finish | Total float | Free float | Constraint | Expected finish | Calendar | Fusion - WPS | HS2 Filter |
| --- | --- | --- | --- | --- | --- | --- | --- | --- | --- | --- | --- | --- | --- | --- | --- | --- | --- |
|  | 6 | **Historic Environment** |  | 2017-04-17 | 2019-01-04 |  |  |  |  |  |  |  |  |  |  |  |  |
|  | 1 | **Ecological Mitigation Site Ashwells Farm 1017 (034-M1E)** |  | 2017-04-17 | 2017-11-07 |  |  |  |  |  |  |  |  |  |  |  |  |
| P1EWCC-PWP06-1330 |  | Production and Approval of LS-WSI Chalfont St Peter (non-intrusive surveys) (Ashwells Farm) Code 1 | 40d | 2017-04-17 A | 2017-08-01 A | P1EWCC-UWP01-1000 | 100% |  | 2017-05-23 | 2017-07-17 |  |  |  |  |  | UW1 |  |
| P1EWCC-PWP06-1300 |  | HS2 issue Project Plan | 1d | 2017-09-18 | 2017-09-18 |  |  |  |  |  | 1359d | 6d |  |  |  | UW1 |  |
| P1EWCC-PWP06-1400 |  | Report of Findings And Approval (ecological mitigation site) | 30d | 2017-09-27 | 2017-11-07 | P1EWCC-PWP06-1340, P1EWCC-PWP06-1300 |  |  |  |  | 1353d |  |  |  |  | UW1 |  |
|  | 2 | **034-S1 - Chiltern Tunnel - Chalfont St Peter Vent Shaft** |  | 2017-12-15 | 2019-01-04 |  |  |  |  |  |  |  |  |  |  |  |  |
| P1EWCC-PWP06-8750 |  | Production and Approval of Project Plan & LS-WSI (non-intrusive surveys) | 40d | 2017-12-15 | 2018-02-09 | P1EWCC-PWP05-240 |  |  |  |  | -44.88d | 0d |  |  |  | AWH |  |
| P1EWCC-PWP06-8760 |  | Update of Project Plans and LS-WSI and Approval (intrusive surveys) | 40d | 2018-03-09 | 2018-05-04 | P1EWCC-PWP06-8730 |  |  |  |  | -44.88d | 0d |  |  |  | AWH |  |
| P1EWCC-PWP06-8770 |  | Update of Project Plans and LS-WSI and Approval (intrusive surveys) | 40d | 2018-06-15 | 2018-08-10 | P1EWCC-PWP06-8740 |  |  |  |  | -44.88d | 30.12d |  |  |  | AWH |  |
| P1EWCC-PWP06-1830 |  | Report of Findings And Approval (chalfont st peter vent shaft) | 35d | 2018-11-19 | 2019-01-04 | P1EWCC-PWP06-1820 |  |  |  |  | 1050d |  |  |  |  | AWH |  |
|  | 2 | **Ecological Mitigation Works** |  | 2017-02-17 | 2018-09-23 |  |  |  |  |  |  |  |  |  |  |  |  |
|  | 1 | **Design** |  | 2017-02-17 | 2017-10-25 |  |  |  |  |  |  |  |  |  |  |  |  |
| P1EWCC-PWP02-3780 |  | HS2 issue Prelimanry Design of Habitat Creation (034-M1E) | 1d | 2017-02-17 A | 2017-02-17 A |  | 100% |  |  |  |  |  |  |  |  | UW1 |  |
| P1EWCC-PWP02-3760 |  | Design of Habitat Creation (034-M1E) | 25d | 2017-03-30 A | 2017-09-15 A | P1EWCC-PWP02-3780, P1EWCC-UWP01-1010, P1EWCC-PWP03-3060 FF | 100% |  | 2017-03-20 | 2017-04-21 |  |  |  |  |  | UW1 |  |
| P1EWCC-AWP01-3770 |  | Planning Consent & Licensing for Habitat Creation (034-M1E) | 40d | 2017-05-26 A | 2017-10-25 | P1EWCC-PWP02-3760 SS | 30% | 27.88d | 2017-07-05 | 2017-08-29 | 7.12d | 0d |  | 2017-10-25 |  | UW1 |  |
|  | 2 | **Species Removal from Habitat Area** |  | 2017-07-31 | 2017-12-11 |  |  |  |  |  |  |  |  |  |  |  |  |
| P1EWCC-PWP02-3800 |  | MS/RAMS for GCN/Reptile Clearance from Habitat Creation Site (034-M1E) | 15d | 2017-07-31 A | 2017-09-15 A | P1EWCC-PWP01-3040 FF | 100% |  | 2017-08-04 | 2017-08-24 |  |  |  |  |  | UW1 |  |
| P1EWCC-PWP02-3790 |  | Exclude GCN/Reptile from Habitat Creation (034-M1E) | 7d | 2017-12-05 | 2017-12-11 | P1EWCC-AWP01-3990, P1EWCC-PWP02-3800, P1EWCC-PWP03-3060 |  |  |  |  | -36d | 25d |  |  | HS2 - 8h x 7d Workweek (No Holidays) | UW1 |  |
|  | 3 | **Habitat Creation** |  | 2018-01-05 | 2018-08-29 |  |  |  |  |  |  |  |  |  |  |  |  |
| P1EWCC-PWP02-3740 |  | Habitat Creation (034-M1E) | 20d | 2018-01-05 | 2018-02-02 | P1EWCC-PWP06-1340, P1EWCC-AWP01-3770, P1EWCC-PWP02-3790, P1EWCC-PWP02-9220, P1EWCC-PWP02-3760 |  |  |  |  | -44.88d | 18.12d |  |  |  | AWE1 |  |
| P1EWCC-PWP02-3750 |  | Habitat Creation Maturity Period (034-M1E) | 182d | 2018-03-01 | 2018-08-29 | P1EWCC-PWP02-3740 |  |  |  |  | -89d | 87d | start on or after 2018-03-01 |  | HS2 - 8h x 7d Workweek (No Holidays) | AWE1 |  |
|  | 5 | **Translocation of Species** |  | 2018-07-26 | 2018-09-23 |  |  |  |  |  |  |  |  |  |  |  |  |
| P1EWCC-PWP02-3810 |  | Species Translocation to Habitat Creation (034-M1E) | 60d | 2018-07-26 | 2018-09-23 | P1EWCC-PWP02-3750 SS+60d, P1EWCC-AWP01-4040, P1EWCC-PWP02-14610 |  |  |  |  | -176d | 0d |  |  | HS2 - 8h x 7d Workweek (No Holidays) | AWE1 |  |
|  | 3 | **Utility Works** |  | 2017-12-22 | 2019-01-08 |  |  |  |  |  |  |  |  |  |  |  |  |
| P1EWCC-PWP08-1220 |  | Scheme Design & Approval of Utility Work for Chalfont St Peter Satellite Compound (Water, Foul Sewer, Power, Telecoms) | 92d | 2017-12-22 | 2018-05-01 | P1EWCC-PWP01-6810 |  |  |  |  | -36.88d | 55d |  |  |  | DC1E | y |
| P1EWCC-PWP08-1780 |  | Detailed Design & Approval of Utility Work for Chalfont St Peter Satellite Compound (Water, Foul Sewer, Power, Telecoms) | 55d | 2018-07-17 | 2018-10-02 | P1EWCC-PWP08-1220, P1EWCC-PWP01-11310 |  |  |  |  | -91.88d | 0d |  |  |  | DC1J | y |
| P1EWCC-PWP08-1250 |  | Procurement of Utility Work for Chalfont St Peter Satellite Compound (Water, Foul Sewer, Power, Telecoms) | 20d | 2018-10-02 | 2018-10-30 | P1EWCC-PWP08-1220, P1EWCC-PWP08-1780 |  |  |  |  | -91.88d | 0d |  |  |  | DC1J | y |
| P1EWCC-PWP08-1230 |  | Installation of Utility Work for Chalfont St Peter Satellite Compound (Water, Foul Sewer, Power, Telecoms) | 50d | 2018-10-30 | 2019-01-08 | P1EWCC-PWP08-1250, P1EWCC-PWP02-3810, P1EWCC-PWP06-1820 SS+10d, P1EWCC-AWP01-4040, P1EWCC-PWP02-3810 FF, P1EWCC-PWP06-8770 |  |  |  |  | -91.88d | 0d |  |  |  | DC1J | y |

| ID | WBS | Activity | Type | Duration | Start | Finish | Predecessors | Complete | Remaining | Planned start | Planned finish | Total float | Free float | Constraint | Expected finish | Calendar | HS2 Filter | Fusion - WPS |
| --- | --- | --- | --- | --- | --- | --- | --- | --- | --- | --- | --- | --- | --- | --- | --- | --- | --- | --- |
|  | 5 | **Water Resources** |  |  |  |  |  |  |  |  |  |  |  |  |  |  |  |  |
|  | 4 | **SOW Completion Dates** |  |  | 2017-11-01 | 2019-01-08 |  |  |  |  |  |  |  |  |  |  |  |  |
| P1EWCC-EWP01-1440 |  | Completion of Scheme Design for all Utility Work | milestone | 0d | 2017-11-01 | 2017-11-01 |  |  |  |  |  | 0d | 1899d | finish on 2017-11-01 |  | HS2 - 8h x 7d Workweek (No Holidays) | y | DC1E |
| P1EWCC-PWP03-3070 |  | Completion of Engineering Survey Work | milestone | 0d | 2017-12-31 | 2017-12-31 | P1EWCC-PWP03-3060 |  |  |  |  | 0d | 1839d | finish on 2017-12-31 |  | HS2 - 8h x 7d Workweek (No Holidays) |  | UW1 |
| P1EWCC-PWP02-2080 |  | Completion of Species Translocation/ exclusion - Great Crested Newts | milestone | 0d | 2018-09-23 | 2018-09-23 | P1EWCC-PWP02-3810 |  |  |  |  | -176d | 1573d | finish on 2018-03-31 |  | HS2 - 8h x 7d Workweek (No Holidays) |  | AWE1 |
| P1EWCC-PWP02-2980 |  | Completion of Species Translocation/ exclusion - Reptiles | milestone | 0d | 2018-09-23 | 2018-09-23 | P1EWCC-PWP02-3810 |  |  |  |  | -85d | 1573d | finish on 2018-06-30 |  | HS2 - 8h x 7d Workweek (No Holidays) |  | AWE1 |
| P1EWCC-FWP02-1010 |  | Completion of Undertake a Preliminary Dewatering Assessment to assess if exceeding ES Limits | milestone | 0d | 2018-09-30 | 2018-09-30 |  |  |  |  |  | 0d | 1566d | finish on 2018-09-30 |  | HS2 - 8h x 7d Workweek (No Holidays) | y | AWS |
| P1EWCC-PWP02-1220 |  | Completion of Habitat Creation (034-M1E). Create Habitat - Grassland Habitat Creation (Sector C1) (P) | milestone | 0d | 2018-09-30 | 2018-09-30 | P1EWCC-PWP02-3810 |  |  |  |  | 0d | 1566d | finish on 2018-09-30 |  | HS2 - 8h x 7d Workweek (No Holidays) |  | AWE1 |
| P1EWCC-PWP02-1910 |  | Completion of Species Translocation/ exclusion - Badgers | milestone | 0d | 2018-09-30 | 2018-09-30 | P1EWCC-PWP02-3810 |  |  |  |  | 0d | 1566d | finish on 2018-09-30 |  | HS2 - 8h x 7d Workweek (No Holidays) |  | AWE1 |
| P1EWCC-PWP02-1920 |  | Completion of Species Translocation/ exclusion - Bats | milestone | 0d | 2018-09-30 | 2018-09-30 | P1EWCC-PWP02-3810 |  |  |  |  | 0d | 1566d | finish on 2018-09-30 |  | HS2 - 8h x 7d Workweek (No Holidays) |  | AWE1 |
| P1EWCC-PWP08-1240 |  | Completion of Utility Work for Chalfont St Peter Satellite Compound | milestone | 0d | 2019-01-08 | 2019-01-08 | P1EWCC-PWP08-1230 |  |  |  |  | -129d | 1466d | finish on 2018-09-01 |  | HS2 - 8h x 7d Workweek (No Holidays) | y | DC1J |
|  | 2 | **037-S1 - Chiltern Tunnel - Chalfont St Giles vent shaft** |  |  | 2017-03-20 | 2019-03-29 |  |  |  |  |  |  |  |  |  |  |  |  |
|  | 1 | **Land Access** |  |  | 2017-05-15 | 2018-04-30 |  |  |  |  |  |  |  |  |  |  |  |  |
|  | 1 | **Survey Work** |  |  | 2017-05-15 | 2017-05-15 |  |  |  |  |  |  |  |  |  |  |  |  |
| P1EWCC-AWP01-5250 |  | Land Access Granted for Survey Work (Schedule 2) | milestone | 0d | 2017-05-15 A | 2017-05-15 A |  | 100% |  | 2017-04-03 | 2017-04-03 |  |  | as late as possible |  |  | y | AW1 |
|  | 2 | **Possession** |  |  | 2018-04-30 | 2018-04-30 |  |  |  |  |  |  |  |  |  |  |  |  |
| P1EWCC-AWP01-5260 |  | Land Access Possession Granted for Construction of (Schedule 16) | milestone | 0d | 2018-04-30 | 2018-04-30 |  |  |  |  |  | 30d | 63d | start on or after 2018-04-30 |  |  | y | AW1 |
|  | 6 | **Survey Works** |  |  | 2017-03-20 | 2019-01-11 |  |  |  |  |  |  |  |  |  |  |  |  |
| P1EWCC-AWP01-5240 |  | Planning Consent & Licensing for Survey Work |  | 10d | 2017-03-20 A | 2017-05-12 A | P1EWCC-AWP01-1230 | 100% |  | 2017-03-20 | 2017-03-31 |  |  |  |  |  |  | AW1 |
| P1EWCC-FWP01-1380 |  | Undertake Remaining Soil Surveys |  | 120d | 2017-12-15 | 2018-06-01 | P1EWCC-PWP01-5610 |  |  |  |  | 227d |  |  |  |  | y | AWS |
| P1EWCC-FWP01-1390 |  | Undertake Arboricultural Surveys |  | 125d | 2017-12-15 | 2018-06-08 | P1EWCC-PWP01-5610 |  |  |  |  | 222d |  |  |  |  | y | AWS |
| P1EWCC-FWP01-1400 |  | Undertake Remaining Ecology & Environmental Surveys |  | 240d | 2017-12-15 | 2018-11-16 | P1EWCC-PWP01-5610 |  |  |  |  | 107d |  |  |  |  | y | AWS |
| P1EWCC-FWP01-1410 |  | Undertake Water Monitoring |  | 280d | 2017-12-15 | 2019-01-11 | P1EWCC-PWP01-5610 |  |  |  |  | 67d |  |  |  |  | y | AWS |
|  | 1 | **Ecological & Environmental Surveys** |  |  | 2017-05-15 | 2017-11-17 |  |  |  |  |  |  |  |  |  |  |  |  |
| P1EWCC-PWP01-3410 |  | Survey for Badgers, Bats, GCN & Reptiles |  | 25d | 2017-05-15 A | 2017-11-17 | P1EWCC-AWP01-5240, P1EWCC-AWP01-5250, P1EWCC-UWP01-1010 |  | 44.88d | 2017-04-03 | 2017-05-05 | 1345.12d | 0d |  | 2017-11-17 |  |  | UW1 |

| ID | WBS | Activity | Duration | Start | Finish | Predecessors | Total float | Free float | Calendar | Fusion - WPS | HS2 Filter |
| --- | --- | --- | --- | --- | --- | --- | --- | --- | --- | --- | --- |
|  | 2 | **Engineering Surveys** |  |  |  |  |  |  |  |  |  |
|  | 4 | **Historic Environment Surveys** |  | 2018-02-09 | 2018-11-16 |  |  |  |  |  |  |
| P1EWCC-PWP06-3500 |  | Non-Intrusive Surveys (geophysics) | 20d | 2018-02-09 | 2018-03-09 | P1EWCC-PWP06-3530, P1EWCC-UWP01-1010, P1EWCC-PWP05-240 | -1d | 0d |  | AWH |  |
| P1EWCC-PWP06-8780 |  | Non-Intrusive Surveys (trial trenching) | 30d | 2018-05-04 | 2018-06-15 | P1EWCC-PWP06-3540, P1EWCC-PWP05-240 | -1d | 0d |  | AWH |  |
| P1EWCC-PWP06-3510 |  | Intrusive Surveys | 40d | 2018-09-24 | 2018-11-16 | P1EWCC-PWP02-6390, P1EWCC-PWP06-3540, P1EWCC-PWP06-8790, P1EWCC-AWP01-5260 | -31.12d | 0d |  | AWH |  |
|  | 8 | **Historic Environment** |  | 2017-12-15 | 2019-01-04 |  |  |  |  |  |  |
| P1EWCC-PWP06-3530 |  | Production and Approval of Project Plan & LS-WSI (non-intrusive surveys) | 40d | 2017-12-15 | 2018-02-09 | P1EWCC-PWP05-240 | -1d | 0d |  | AWH |  |
| P1EWCC-PWP06-3540 |  | Update of Project Plans and LS-WSI and Approval (intrusive surveys) | 40d | 2018-03-09 | 2018-05-04 | P1EWCC-PWP06-3500 | -1d | 0d |  | AWH |  |
| P1EWCC-PWP06-8790 |  | Update of Project Plans and LS-WSI and Approval (intrusive surveys) | 40d | 2018-06-15 | 2018-08-10 | P1EWCC-PWP06-8780 | -1d | 30.12d |  | AWH |  |
| P1EWCC-PWP06-3550 |  | Report of Findings And Approval | 35d | 2018-11-19 | 2019-01-04 | P1EWCC-PWP06-3510 | 1050d |  |  | AWH |  |
|  | 7 | **Ecological Mitigation Works** |  | 2018-07-26 | 2018-09-23 |  |  |  |  |  |  |
|  | 5 | **Translocation of Species** |  | 2018-07-26 | 2018-09-23 |  |  |  |  |  |  |
| P1EWCC-PWP02-6390 |  | Species Translocation to Habitat Creation (034-M1E) | 60d | 2018-07-26 | 2018-09-23 | P1EWCC-AWP01-5260, P1EWCC-PWP02-3750 SS+60d, P1EWCC-PWP02-14610 | -45d | 0d | HS2 - 8h x 7d Workweek (No Holidays) | AWE1 |  |
|  | 11 | **Highway and Public Rights of Works** |  | 2017-12-08 | 2019-03-18 |  |  |  |  |  |  |
| P1EWCC-PWP09-1300 |  | Scheme Design and Approval of Bottom House Farm Lane Widening | 83d | 2017-12-08 | 2018-04-04 | P1EWCC-PWP01-6360 | -27.88d | 0d |  | DC1D | y |
| P1EWCC-PWP09-7100 |  | Detailed Design and Approval of Bottom House Farm Lane Widening | 73d | 2018-06-20 | 2018-10-01 | P1EWCC-PWP09-1300, P1EWCC-PWP01-11190 | -27d | 0d |  | DC1I | y |
| P1EWCC-AWP01-5270 |  | Planning Consent & Licensing of Bottom House Farm Lane Widening | 50d | 2018-07-23 | 2018-10-01 | P1EWCC-PWP09-1300, P1EWCC-PWP09-7100 FF | -27d | 4.12d |  | DC1I |  |
| P1EWCC-EWP02-1550 |  | Construction of Bottom House Farm Lane Widening | 116d | 2018-10-08 | 2019-03-18 | P1EWCC-FWP02-1160, P1EWCC-AWP01-5270, P1EWCC-PWP06-3510 SS+10d, P1EWCC-PWP02-6390, P1EWCC-AWP01-5260 | -31.12d | 0d |  | DC1I | y |
|  | 3 | **Utility Works** |  | 2017-12-08 | 2019-02-21 |  |  |  |  |  |  |
|  | 1 | **CSO-01-1404 UG LV** |  | 2017-12-08 | 2019-02-21 |  |  |  |  |  |  |
| P1EWCC-PWP03-3490 |  | Scheme Design & Approval of Utility Work for CSO-01-1404 UG LV | 83d | 2017-12-08 | 2018-04-04 | P1EWCC-PWP01-6360 | -27.88d | 0d |  | DC1D | y |
| P1EWCC-PWP03-4510 |  | Detailed Design & Approval of Utility Work for CSO-01-1404 UG LV | 73d | 2018-06-20 | 2018-10-01 | P1EWCC-PWP03-3490, P1EWCC-PWP01-11190 | -14d | 0d |  | DC1I | y |
| P1EWCC-PWP08-1580 |  | Procurement of Utility Work for CSO-01-1404 UG LV | 40d | 2018-10-01 | 2018-11-26 | P1EWCC-PWP03-3490, P1EWCC-PWP03-4510 | -14d | 0d |  | DC1I | y |
| P1EWCC-EWP02-1470 |  | Installation of Utility Work for CSO-01-1404 UG LV | 63d | 2018-11-26 | 2019-02-21 | P1EWCC-PWP08-1580, P1EWCC-PWP02-6390, P1EWCC-PWP06-3510 SS+10d, P1EWCC-AWP01-5260 | -14d | 17.12d |  | DC1I | y |

| ID | WBS | Activity | Type | Duration | Start | Finish | Predecessors | Total float | Free float | Constraint | Calendar | HS2 Filter | Fusion - WPS |
| --- | --- | --- | --- | --- | --- | --- | --- | --- | --- | --- | --- | --- | --- |
|  | 2 | **CSO-01-3107 O/H BT Openreach** |  |  | 2017-12-08 | 2019-02-21 |  |  |  |  |  |  |  |
| P1EWCC-PWP03-3500 |  | Scheme Design & Approval of Utility Work for CSO-01-3107 O/H BT Openreach |  | 83d | 2017-12-08 | 2018-04-04 | P1EWCC-PWP01-6360 | -27.88d | 0d |  |  | y | DC1D |
| P1EWCC-PWP03-4520 |  | Detailed Design & Approval of Utility Work for CSO-01-3107 O/H BT Openreach |  | 73d | 2018-06-20 | 2018-10-01 | P1EWCC-PWP03-3500, P1EWCC-PWP01-11190 | -14d | 0d |  |  | y | DC1I |
| P1EWCC-PWP08-1590 |  | Procurement of Utility Work for CSO-01-3107 O/H BT Openreach |  | 40d | 2018-10-01 | 2018-11-26 | P1EWCC-PWP03-3500, P1EWCC-PWP03-4520 | -14d | 0d |  |  | y | DC1I |
| P1EWCC-EWP02-1480 |  | Installation of Utility Work for CSO-01-3107 O/H BT Openreach |  | 63d | 2018-11-26 | 2019-02-21 | P1EWCC-PWP02-6390, P1EWCC-PWP08-1590, P1EWCC-PWP06-3510 SS+10d, P1EWCC-AWP01-5260 | -14d | 17.12d |  |  | y | DC1I |
|  | 8 | **Utility Connections into Chalfont St Giles Vent Shaft Satellite Compound** |  |  | 2017-12-08 | 2019-02-21 |  |  |  |  |  |  |  |
| P1EWCC-PWP03-3560 |  | Scheme Design & Approval of Utility Connections into Chalfont St Giles Vent Shaft Satellite Compound |  | 83d | 2017-12-08 | 2018-04-04 | P1EWCC-PWP01-6360 | -27.88d | 0d |  |  | y | DC1D |
| P1EWCC-PWP03-4500 |  | Detailed Design & Approval of Utility Connections into Chalfont St Giles Vent Shaft Satellite Compound |  | 73d | 2018-06-20 | 2018-10-01 | P1EWCC-PWP03-3560, P1EWCC-PWP01-11190 | -14d | 0d |  |  | y | DC1I |
| P1EWCC-PWP08-1650 |  | Procurement of Utility Work for Utility Connections into Chalfont St Giles Vent Shaft Satellite Compound |  | 40d | 2018-10-01 | 2018-11-26 | P1EWCC-PWP03-4500, P1EWCC-PWP03-3560 | -14d | 0d |  |  | y | DC1I |
| P1EWCC-EWP02-1540 |  | Installation of Utility Work for Utility Connections into Chalfont St Giles Vent Shaft Satellite Compound |  | 63d | 2018-11-26 | 2019-02-21 | P1EWCC-PWP08-1650, P1EWCC-PWP02-6390, P1EWCC-PWP06-3510 SS+10d, P1EWCC-AWP01-5260 | -14d | 17.12d |  |  | y | DC1I |
|  | 9 | **Water Resources** |  |  | 2017-12-08 | 2018-04-04 |  |  |  |  |  |  |  |
| P1EWCC-FWP02-1160 |  | Detailed Design Flood Storage / River Diversions - Watercourse Works - Bottom House Farm Lane |  | 83d | 2017-12-08 | 2018-04-04 | P1EWCC-PWP01-6360 | -27.88d | 0d |  |  | y | DC1D |
|  | 4 | **Landscape Planting** |  |  | 2018-11-20 | 2019-03-18 |  |  |  |  |  |  |  |
| P1EWCC-PWP013-1000 |  | Call off of Landscape Planting | milestone | 0d | 2018-11-20 | 2018-11-20 | P1EWCC-PWP02-11910 | 20.88d | 0d | as late as possible |  | y | DC1D |
| P1EWCC-PWP013-1010 |  | Call off period for Landscape Planting |  | 64.88d | 2018-11-20 | 2019-02-18 | P1EWCC-PWP013-1000 | 20.88d | 0d | as late as possible |  | y | DC1D |
| P1EWCC-PWP013-1020 |  | Landscape mitigation planting to be planted along Bottom House Farm Lane (2018-2019 season) (not in AWE2) |  | 20d | 2019-02-19 | 2019-03-18 | P1EWCC-PWP013-1010, P1EWCC-EWP02-1550 FF, P1EWCC-PWP02-6390, P1EWCC-AWP01-5260, P1EWCC-PWP02-6390 FF | 20.88d |  | start on or after 2018-11-01 |  | y | DC1D |
|  | 2 | **SOW Completion Dates** |  |  | 2018-04-04 | 2019-03-29 |  |  |  |  |  |  |  |
| P1EWCC-EWP02-1780 |  | Completion of Scheme Design of Bottom House Farm Lane | milestone | 0d | 2018-04-04 | 2018-04-04 | P1EWCC-PWP03-3560, P1EWCC-PWP03-3500, P1EWCC-PWP03-3490, P1EWCC-PWP09-1300 | -4d | 1745d | finish on 2018-03-31 | HS2 - 8h x 7d Workweek (No Holidays) | y | DC1D |
| P1EWCC-PWP02-2990 |  | Completion of Species Translocation/ exclusion - Reptiles | milestone | 0d | 2018-09-28 | 2018-09-28 | P1EWCC-PWP02-6390 | 0d | 1568d | finish on 2018-09-28 | HS2 - 8h x 7d Workweek (No Holidays) |  | AWE1 |
| P1EWCC-PWP02-1930 |  | Completion of Species Translocation/ exclusion - Badgers | milestone | 0d | 2018-09-30 | 2018-09-30 | P1EWCC-PWP02-6390 | 0d | 1566d | finish on 2018-09-30 | HS2 - 8h x 7d Workweek (No Holidays) |  | AWE1 |
| P1EWCC-PWP02-1940 |  | Completion of Species Translocation/ exclusion - Bats | milestone | 0d | 2018-09-30 | 2018-09-30 | P1EWCC-PWP02-6390 | 0d | 1566d | finish on 2018-09-30 | HS2 - 8h x 7d Workweek (No Holidays) |  | AWE1 |
| P1EWCC-PWP02-2090 |  | Completion of Species Translocation/ exclusion - Great Crested Newts | milestone | 0d | 2018-09-30 | 2018-09-30 | P1EWCC-PWP02-6390 | 0d | 1566d | finish on 2018-09-30 | HS2 - 8h x 7d Workweek (No Holidays) |  | AWE1 |
| P1EWCC-EWP02-1560 |  | Completion of Construction of Bottom House Farm Lane | milestone | 0d | 2019-03-19 | 2019-03-19 | P1EWCC-EWP02-1550, P1EWCC-EWP02-1540, P1EWCC-EWP02-1480, P1EWCC-EWP02-1470 | -45d | 1397d | finish on 2019-02-01 | HS2 - 8h x 7d Workweek (No Holidays) | y | DC1I |
| P1EWCC-PWP013-1030 |  | Completion of Landscape mitigation planting to be planted along Bottom House Farm Lane (2018-2019 season) | milestone | 0d | 2019-03-29 | 2019-03-29 |  | 0d | 1386d | finish on 2019-03-29 | HS2 - 8h x 7d Workweek (No Holidays) | y | DC1D |

| ID | WBS | Activity | Type | Duration | Start | Finish | Predecessors | Complete | Planned start | Planned finish | Total float | Free float | Constraint | Calendar | HS2 Filter | Fusion - WPS |
| --- | --- | --- | --- | --- | --- | --- | --- | --- | --- | --- | --- | --- | --- | --- | --- | --- |
|  | 3 | **040-S1 - Chiltern Tunnel - Amersham vent shaft** |  |  | 2017-03-20 | 2019-03-13 |  |  |  |  |  |  |  |  |  |  |
|  | 1 | **Land Access** |  |  | 2017-05-15 | 2018-07-26 |  |  |  |  |  |  |  |  |  |  |
|  | 1 | **Survey Work** |  |  | 2017-05-15 | 2017-05-15 |  |  |  |  |  |  |  |  |  |  |
| P1EWCC-AWP01-5290 |  | Land Access Granted for Survey Work (Schedule 2) | milestone | 0d | 2017-05-15 A | 2017-05-15 A |  | 100% | 2017-04-03 | 2017-04-03 |  |  | as late as possible |  | y | AW1 |
|  | 2 | **Possession** |  |  | 2018-07-26 | 2018-07-26 |  |  |  |  |  |  |  |  |  |  |
| P1EWCC-AWP01-5300 |  | Land Access Possession Granted for Construction of (Schedule 16) | milestone | 0d | 2018-07-26 | 2018-07-26 |  |  |  |  | -8d | 0d | as late as possible |  | y | AW1 |
|  | 6 | **Survey Works** |  |  | 2017-03-20 | 2019-01-11 |  |  |  |  |  |  |  |  |  |  |
| P1EWCC-AWP01-5280 |  | Planning Consent & Licensing for Survey Work |  | 10d | 2017-03-20 A | 2017-05-12 A | P1EWCC-AWP01-1230 | 100% | 2017-03-20 | 2017-03-31 |  |  |  |  |  | AW1 |
| P1EWCC-FWP01-1420 |  | Undertake Remaining Soil Surveys |  | 120d | 2017-12-15 | 2018-06-01 | P1EWCC-PWP01-5610 |  |  |  | 259d |  |  |  | y | AWS |
| P1EWCC-FWP01-1430 |  | Undertake Arboricultural Surveys |  | 125d | 2017-12-15 | 2018-06-08 | P1EWCC-PWP01-5610 |  |  |  | 254d |  |  |  | y | AWS |
| P1EWCC-FWP01-1450 |  | Undertake Water Monitoring |  | 280d | 2017-12-15 | 2019-01-11 | P1EWCC-PWP01-5610 |  |  |  | 99d |  |  |  | y | AWS |
|  | 1 | **Ecological & Environmental Surveys** |  |  | 2017-05-15 | 2017-06-30 |  |  |  |  |  |  |  |  |  |  |
| P1EWCC-PWP01-3420 |  | Survey for Badgers, Bats, GCN & Reptiles |  | 25d | 2017-05-15 A | 2017-06-30 A | P1EWCC-AWP01-5290, P1EWCC-UWP01-1010, P1EWCC-AWP01-5280 | 100% | 2017-04-03 | 2017-05-05 |  |  |  |  |  | UW1 |
|  | 2 | **Engineering Surveys** |  |  |  |  |  |  |  |  |  |  |  |  |  |  |
|  | 4 | **Historic Environment Surveys** |  |  | 2018-02-09 | 2018-11-16 |  |  |  |  |  |  |  |  |  |  |
| P1EWCC-PWP06-3560 |  | Non-Intrusive Surveys (geophysics) |  | 20d | 2018-02-09 | 2018-03-09 | P1EWCC-UWP01-1010, P1EWCC-PWP06-3590, P1EWCC-PWP05-240 |  |  |  | 24d | 0d |  |  |  | AWH |
| P1EWCC-PWP06-8800 |  | Non-Intrusive Surveys (trial trenching) |  | 30d | 2018-05-04 | 2018-06-15 | P1EWCC-PWP06-3600, P1EWCC-PWP05-240 |  |  |  | 24d | 0d |  |  |  | AWH |
| P1EWCC-PWP06-3570 |  | Intrusive Surveys |  | 40d | 2018-09-24 | 2018-11-16 | P1EWCC-PWP02-6400, P1EWCC-PWP06-3600, P1EWCC-PWP06-8810, P1EWCC-AWP01-5300 |  |  |  | -6.12d | 0d |  |  |  | AWH |
|  | 8 | **Historic Environment** |  |  | 2017-12-15 | 2019-01-04 |  |  |  |  |  |  |  |  |  |  |
| P1EWCC-PWP06-3590 |  | Production and Approval of LS-WSI (non-intrusive surveys) |  | 40d | 2017-12-15 | 2018-02-09 | P1EWCC-PWP05-240 |  |  |  | 24d | 0d |  |  |  | AWH |
| P1EWCC-PWP06-3600 |  | Update of Project Plans and LS-WSI and Approval (intrusive surveys) |  | 40d | 2018-03-09 | 2018-05-04 | P1EWCC-PWP06-3560 |  |  |  | 24d | 0d |  |  |  | AWH |
| P1EWCC-PWP06-8810 |  | Update of Project Plans and LS-WSI and Approval (intrusive surveys) |  | 40d | 2018-06-15 | 2018-08-10 | P1EWCC-PWP06-8800 |  |  |  | 24d | 30.12d |  |  |  | AWH |
| P1EWCC-PWP06-3610 |  | Report of Findings And Approval |  | 35d | 2018-11-19 | 2019-01-04 | P1EWCC-PWP06-3570 |  |  |  | 1050d |  |  |  |  | AWH |
|  | 7 | **Ecological Mitigation Works** |  |  | 2017-12-08 | 2018-09-23 |  |  |  |  |  |  |  |  |  |  |
|  | 5 | **Translocation of Species** |  |  | 2018-07-26 | 2018-09-23 |  |  |  |  |  |  |  |  |  |  |
| P1EWCC-PWP02-6400 |  | Species Translocation to Habitat Creation (034-M1E) |  | 60d | 2018-07-26 | 2018-09-23 | P1EWCC-AWP01-5300, P1EWCC-PWP01-3420, P1EWCC-PWP02-3750 SS+60d, P1EWCC-PWP02-14610 |  |  |  | -10d | 0d |  | HS2 - 8h x 7d Workweek (No Holidays) |  | AWE1 |

| ID | WBS | Activity | Type | Duration | Start | Finish | Predecessors | Complete | Planned start | Planned finish | Total float | Free float | Constraint | Calendar | HS2 Filter | Fusion - WPS |
| --- | --- | --- | --- | --- | --- | --- | --- | --- | --- | --- | --- | --- | --- | --- | --- | --- |
|  | 4 | **Hydrogeological Modelling** |  |  | 2017-12-08 | 2018-04-04 |  |  |  |  |  |  |  |  |  |  |
| P1EWCC-PWP03-1210 |  | To include Topo Survey, Flow survey, GPR survey, Utility Tag and Trace and CCTV surveys |  | 83d | 2017-12-08 | 2018-04-04 | P1EWCC-PWP01-6360 |  |  |  | -27.88d | 0d |  |  | y | DC1D |
|  | 11 | **Highway and Public Rights of Works** |  |  | 2017-12-08 | 2019-02-11 |  |  |  |  |  |  |  |  |  |  |
| P1EWCC-PWP09-1310 |  | Scheme Design and Approval of Amersham Vent Shaft Access Road off Whielden Lane |  | 83d | 2017-12-08 | 2018-04-04 | P1EWCC-PWP01-6360 |  |  |  | -27.88d | 0d |  |  | y | DC1D |
| P1EWCC-PWP09-7110 |  | Detailed Design and Approval of Amersham Vent Shaft Access Road off Whielden Lane |  | 73d | 2018-06-20 | 2018-10-01 | P1EWCC-PWP09-1310, P1EWCC-PWP01-11190 |  |  |  | -2d | 0d |  |  | y | DC1I |
| P1EWCC-AWP01-5310 |  | Planning Consent & Licensing of Amersham Vent Shaft Access Road off Whielden Lane |  | 50d | 2018-07-23 | 2018-10-01 | P1EWCC-PWP09-7110 FF, P1EWCC-PWP09-1310 |  |  |  | -2d | 4.12d |  |  |  | DC1I |
| P1EWCC-EWP02-1650 |  | Construction of Amersham Vent Shaft Access Road off Whielden Lane |  | 91d | 2018-10-08 | 2019-02-11 | P1EWCC-AWP01-5310, P1EWCC-PWP02-6400, P1EWCC-PWP06-3570 SS+10d, P1EWCC-AWP01-5300 |  |  |  | -6.12d | 21.88d |  |  | y | DC1I |
|  | 3 | **Utility Works** |  |  | 2017-12-08 | 2019-03-13 |  |  |  |  |  |  |  |  |  |  |
|  | 8 | **Utility Connections into Amersham Vent Shaft Satellite Compound** |  |  | 2017-12-08 | 2019-03-13 |  |  |  |  |  |  |  |  |  |  |
| P1EWCC-PWP03-3650 |  | Scheme Design & Approval of Utility Connections into Amersham Vent Shaft Satellite Compound |  | 83d | 2017-12-08 | 2018-04-04 | P1EWCC-PWP01-6360 |  |  |  | -27.88d | 0d |  |  | y | DC1D |
| P1EWCC-PWP03-4530 |  | Detailed Design & Approval of Utility Connections into Amersham Vent Shaft Satellite Compound |  | 73d | 2018-06-20 | 2018-10-01 | P1EWCC-PWP03-3650, P1EWCC-PWP01-11190 |  |  |  | -28d | 0d |  |  | y | DC1I |
| P1EWCC-PWP08-1730 |  | Procurement of Utility Connections into Amersham Vent Shaft Satellite Compound |  | 40d | 2018-10-01 | 2018-11-26 | P1EWCC-PWP03-4530, P1EWCC-PWP03-3650 |  |  |  | -28d | 0d |  |  | y | DC1I |
| P1EWCC-EWP02-1640 |  | Installation of Utility Connections into Amersham Vent Shaft Satellite Compound |  | 77d | 2018-11-26 | 2019-03-13 | P1EWCC-PWP08-1730, P1EWCC-PWP02-6400, P1EWCC-PWP06-3570 SS+10d, P1EWCC-AWP01-5300 |  |  |  | -28d | 0d |  |  | y | DC1I |
|  | 9 | **Water Resources** |  |  |  |  |  |  |  |  |  |  |  |  |  |  |
|  | 2 | **SOW Completion Dates** |  |  | 2018-04-04 | 2019-03-13 |  |  |  |  |  |  |  |  |  |  |
| P1EWCC-EWP02-1790 |  | Completion of Scheme Design of Amersham Vent Shaft Access Road off Whielden Lane | milestone | 0d | 2018-04-04 | 2018-04-04 | P1EWCC-PWP03-3650, P1EWCC-PWP09-1310, P1EWCC-PWP03-1210 |  |  |  | -4d | 1745d | finish on 2018-03-31 | HS2 - 8h x 7d Workweek (No Holidays) | y | DC1D |
| P1EWCC-FWP02-1200 |  | Completion of Undertake a Preliminary Dewatering Assessment to assess if exceeding ES Limits | milestone | 0d | 2018-09-30 | 2018-09-30 |  |  |  |  | 0d | 1566d | finish on 2018-09-30 | HS2 - 8h x 7d Workweek (No Holidays) | y | AWS |
| P1EWCC-PWP02-1950 |  | Completion of Species Translocation/ exclusion - Bats | milestone | 0d | 2018-09-30 | 2018-09-30 | P1EWCC-PWP02-6400 |  |  |  | 0d | 1566d | finish on 2018-09-30 | HS2 - 8h x 7d Workweek (No Holidays) |  | AWE1 |
| P1EWCC-PWP02-1960 |  | Completion of Species Translocation/ exclusion - Badgers | milestone | 0d | 2018-09-30 | 2018-09-30 | P1EWCC-PWP02-6400 |  |  |  | 0d | 1566d | finish on 2018-09-30 | HS2 - 8h x 7d Workweek (No Holidays) |  | AWE1 |
| P1EWCC-EWP02-1700 |  | Completion of Construction of Amersham Vent Shaft Access Road off Whielden Lane | milestone | 0d | 2019-03-13 | 2019-03-13 | P1EWCC-EWP02-1650, P1EWCC-EWP02-1640 |  |  |  | -40d | 1402d | finish on 2019-02-01 | HS2 - 8h x 7d Workweek (No Holidays) | y | DC1I |
|  | 4 | **043-S1 - Chiltern Tunnel - Little Missenden Vent shaft** |  |  | 2017-03-20 | 2019-12-10 |  |  |  |  |  |  |  |  |  |  |
|  | 2 | **Land Access** |  |  | 2017-03-27 | 2018-07-26 |  |  |  |  |  |  |  |  |  |  |
|  | 1 | **Survey Work** |  |  | 2017-03-27 | 2017-03-27 |  |  |  |  |  |  |  |  |  |  |
| P1EWCC-AWP01-5330 |  | Land Access Granted for Survey Work (Schedule 2) | milestone | 0d | 2017-03-27 A | 2017-03-27 A |  | 100% | 2017-04-03 | 2017-04-03 |  |  | as late as possible |  | y | AW1 |

| ID | WBS | Activity | Type | Duration | Start | Finish | Predecessors | Complete | Remaining | Planned start | Planned finish | Total float | Free float | Constraint | Expected finish | Calendar | HS2 Filter | Fusion - WPS |
| --- | --- | --- | --- | --- | --- | --- | --- | --- | --- | --- | --- | --- | --- | --- | --- | --- | --- | --- |
|  | 2 | **Possession** |  |  | 2018-07-26 | 2018-07-26 |  |  |  |  |  |  |  |  |  |  |  |  |
| P1EWCC-AWP01-5340 |  | Land Access Possession Granted for Construction of (Schedule 16) | milestone | 0d | 2018-07-26 | 2018-07-26 |  |  |  |  |  | 5d | 0d | as late as possible |  |  | y | AW1 |
|  | 6 | **Survey Works** |  |  | 2017-03-20 | 2019-06-26 |  |  |  |  |  |  |  |  |  |  |  |  |
| P1EWCC-AWP01-5320 |  | Planning Consent & Licensing for Survey Work |  | 10d | 2017-03-20 A | 2017-03-24 A | P1EWCC-AWP01-1230 | 100% |  | 2017-03-20 | 2017-03-31 |  |  |  |  |  |  | AW1 |
| P1EWCC-FWP01-1460 |  | Undertake Remaining Soil Surveys |  | 120d | 2017-12-15 | 2018-06-01 | P1EWCC-PWP01-5610 |  |  |  |  | 461d |  |  |  |  | y | AWS |
| P1EWCC-FWP01-1470 |  | Undertake Arboricultural Surveys |  | 125d | 2017-12-15 | 2018-06-08 | P1EWCC-PWP01-5610 |  |  |  |  | 456d |  |  |  |  | y | AWS |
| P1EWCC-FWP01-1480 |  | Undertake Remaining Ecology & Environmental Surveys |  | 398d | 2017-12-15 | 2019-06-26 | P1EWCC-PWP01-5610 |  |  |  |  | 183d |  |  |  |  | y | AWS |
| P1EWCC-FWP01-1490 |  | Undertake Water Monitoring |  | 280d | 2017-12-15 | 2019-01-11 | P1EWCC-PWP01-5610 |  |  |  |  | 301d |  |  |  |  | y | AWS |
|  | 1 | **Ecological & Environmental Surveys** |  |  | 2017-03-27 | 2017-09-29 |  |  |  |  |  |  |  |  |  |  |  |  |
| P1EWCC-PWP01-3430 |  | Survey for Badgers, Bats, GCN & Reptiles |  | 25d | 2017-03-27 A | 2017-09-29 | P1EWCC-AWP01-5330, P1EWCC-AWP01-5320, P1EWCC-UWP01-1010 | 60% | 9.88d | 2017-04-03 | 2017-05-05 | -44d | 0d |  | 2017-09-29 |  |  | UW1 |
|  | 4 | **Historic Environment Surveys** |  |  | 2018-02-09 | 2018-11-16 |  |  |  |  |  |  |  |  |  |  |  |  |
| P1EWCC-PWP06-3620 |  | Non-Intrusive Surveys (geophysics) |  | 20d | 2018-02-09 | 2018-03-09 | P1EWCC-UWP01-1010, P1EWCC-PWP06-3650, P1EWCC-PWP05-240 |  |  |  |  | 187d | 0d |  |  |  |  | AWH |
| P1EWCC-PWP06-8820 |  | Non-Intrusive Surveys (trial trenching) |  | 30d | 2018-05-04 | 2018-06-15 | P1EWCC-PWP06-3660, P1EWCC-PWP05-240 |  |  |  |  | 187d | 0d |  |  |  |  | AWH |
| P1EWCC-PWP06-3630 |  | Intrusive Surveys |  | 40d | 2018-09-24 | 2018-11-16 | P1EWCC-PWP06-3660, P1EWCC-PWP02-6410, P1EWCC-PWP06-8830, P1EWCC-AWP01-5340 |  |  |  |  | 156.88d | 0d |  |  |  |  | AWH |
|  | 8 | **Historic Environment** |  |  | 2017-12-15 | 2019-01-04 |  |  |  |  |  |  |  |  |  |  |  |  |
| P1EWCC-PWP06-3650 |  | Production and Approval of LS-WSI (non-intrusive surveys) |  | 40d | 2017-12-15 | 2018-02-09 | P1EWCC-PWP05-240 |  |  |  |  | 187d | 0d |  |  |  |  | AWH |
| P1EWCC-PWP06-3660 |  | Update of Project Plans and LS-WSI and Approval (intrusive surveys) |  | 40d | 2018-03-09 | 2018-05-04 | P1EWCC-PWP06-3620 |  |  |  |  | 187d | 0d |  |  |  |  | AWH |
| P1EWCC-PWP06-8830 |  | Update of Project Plans and LS-WSI and Approval (intrusive surveys) |  | 40d | 2018-06-15 | 2018-08-10 | P1EWCC-PWP06-8820 |  |  |  |  | 187d | 30.12d |  |  |  |  | AWH |
| P1EWCC-PWP06-3670 |  | Report of Findings And Approval |  | 35d | 2018-11-19 | 2019-01-04 | P1EWCC-PWP06-3630 |  |  |  |  | 1050d |  |  |  |  |  | AWH |
|  | 7 | **Ecological Mitigation Works** |  |  | 2018-07-26 | 2018-09-23 |  |  |  |  |  |  |  |  |  |  |  |  |
|  | 5 | **Translocation of Species** |  |  | 2018-07-26 | 2018-09-23 |  |  |  |  |  |  |  |  |  |  |  |  |
| P1EWCC-PWP02-6410 |  | Species Translocation to Habitat Creation (047-M5W) |  | 60d | 2018-07-26 | 2018-09-23 | P1EWCC-PWP01-3430, P1EWCC-AWP01-5340, P1EWCC-PWP02-12390 SS+60d, P1EWCC-PWP02-14610 |  |  |  |  | 7d | 0d |  |  | HS2 - 8h x 7d Workweek (No Holidays) |  | AWE1 |
|  | 3 | **Utility Works** |  |  | 2017-12-22 | 2019-08-06 |  |  |  |  |  |  |  |  |  |  |  |  |
|  | 8 | **Utility Connections into Little Missenden Vent shaftSatellite Compound** |  |  | 2017-12-22 | 2019-08-06 |  |  |  |  |  |  |  |  |  |  |  |  |
| P1EWCC-PWP03-3680 |  | Scheme Design & Approval of Utility Connections into Little Missenden Vent Shaft Satellite Compound |  | 92d | 2017-12-22 | 2018-05-01 | P1EWCC-PWP01-6810 |  |  |  |  | -86d | 0d |  |  |  | y | DC1E |
| P1EWCC-PWP03-4540 |  | Detailed Design & Approval of Utility Connections into Little Missenden Vent Shaft Satellite Compound |  | 55d | 2018-07-17 | 2018-10-02 | P1EWCC-PWP03-3680, P1EWCC-PWP01-11310 |  |  |  |  | 140d | 0d |  |  |  | y | DC1J |
| P1EWCC-PWP08-1740 |  | Procurement of Utility Connections into Little Missenden Vent Shaft Satellite Compound |  | 20d | 2018-10-02 | 2018-10-30 | P1EWCC-PWP03-4540 |  |  |  |  | 140d | 50d |  |  |  | y | DC1J |
| P1EWCC-EWP02-1710 |  | Installation of Utility Connections into Little Missenden Vent Shaft Satellite Compound |  | 150d | 2019-01-08 | 2019-08-06 | P1EWCC-PWP06-3630 SS+10d, P1EWCC-PWP02-6410, P1EWCC-PWP08-1740, P1EWCC-AWP01-5340, P1EWCC-PWP08-1230 |  |  |  |  | 90d | 0d |  |  |  | y | DC1J |

| ID | WBS | Activity | Type | Duration | Start | Finish | Predecessors | Complete | Planned start | Planned finish | Total float | Free float | Constraint | Calendar | Fusion - WPS | HS2 Filter |
| --- | --- | --- | --- | --- | --- | --- | --- | --- | --- | --- | --- | --- | --- | --- | --- | --- |
|  | 9 | **Water Resources** |  |  |  |  |  |  |  |  |  |  |  |  |  |  |
|  | 1 | **SOW Completion Dates** |  |  | 2017-09-29 | 2019-12-10 |  |  |  |  |  |  |  |  |  |  |
| P1EWCC-PWP01-1990 |  | Completion of Survey for Otters (43+000) | milestone | 0d | 2017-09-29 | 2017-09-29 | P1EWCC-PWP01-3430 |  |  |  | -60d | 1932d | finish on 2017-07-31 | HS2 - 8h x 7d Workweek (No Holidays) | UW1 |  |
| P1EWCC-EWP01-1460 |  | Completion of Scheme Design for all Utility Work | milestone | 0d | 2018-05-01 | 2018-05-01 | P1EWCC-PWP03-3680 |  |  |  | -120d | 1718d | finish on 2018-01-01 | HS2 - 8h x 7d Workweek (No Holidays) | DC1E | y |
| P1EWCC-FWP02-1220 |  | Completion of Undertake a Preliminary Dewatering Assessment to assess if exceeding ES Limits | milestone | 0d | 2018-09-30 | 2018-09-30 |  |  |  |  | 0d | 1566d | finish on 2018-09-30 | HS2 - 8h x 7d Workweek (No Holidays) | AWS | y |
| P1EWCC-PWP02-1970 |  | Completion of Species Translocation/ exclusion - Bats | milestone | 0d | 2018-09-30 | 2018-09-30 | P1EWCC-PWP02-6410 |  |  |  | 0d | 1566d | finish on 2018-09-30 | HS2 - 8h x 7d Workweek (No Holidays) | AWE1 |  |
| P1EWCC-PWP02-1980 |  | Completion of Species Translocation/ exclusion - Badgers | milestone | 0d | 2018-09-30 | 2018-09-30 | P1EWCC-PWP02-6410 |  |  |  | 0d | 1566d | finish on 2018-09-30 | HS2 - 8h x 7d Workweek (No Holidays) | AWE1 |  |
| P1EWCC-PWP02-3000 |  | Completion of Exclusion Fencing and Holt Closure | milestone | 0d | 2018-09-30 | 2018-09-30 | P1EWCC-PWP02-6410 |  |  |  | 0d | 1566d | finish on 2018-09-30 | HS2 - 8h x 7d Workweek (No Holidays) | AWE1 |  |
| P1EWCC-EWP02-1720 |  | Completion of Installation of Utility Connections into Little Missenden Vent Shaft Satellite Compound | milestone | 0d | 2019-12-10 | 2019-12-10 | P1EWCC-EWP02-1710 |  |  |  | 0d | 1130d | finish on 2019-12-10 | HS2 - 8h x 7d Workweek (No Holidays) | DC1J | y |
|  | 5 | **046-S6 - Chiltern Tunnel - Chesham Road Vent Shaft** |  |  | 2017-03-20 | 2020-09-03 |  |  |  |  |  |  |  |  |  |  |
|  | 2 | **Land Access** |  |  | 2017-04-17 | 2018-07-26 |  |  |  |  |  |  |  |  |  |  |
|  | 1 | **Survey Work** |  |  | 2017-04-17 | 2017-04-17 |  |  |  |  |  |  |  |  |  |  |
| P1EWCC-AWP01-5390 |  | Land Access Granted for Survey Work (Schedule 2) | milestone | 0d | 2017-04-17 A | 2017-04-17 A |  | 100% | 2017-04-03 | 2017-04-03 |  |  | as late as possible |  | AW1 | y |
|  | 2 | **Possession** |  |  | 2018-07-26 | 2018-07-26 |  |  |  |  |  |  |  |  |  |  |
| P1EWCC-AWP01-5400 |  | Land Access Possession Granted for Construction of (Schedule 16) | milestone | 0d | 2018-07-26 | 2018-07-26 |  |  |  |  | 5d | 0d | as late as possible |  | AW1 | y |
|  | 6 | **Survey Works** |  |  | 2017-03-20 | 2019-04-05 |  |  |  |  |  |  |  |  |  |  |
| P1EWCC-AWP01-5380 |  | Planning Consent & Licensing for Survey Work |  | 10d | 2017-03-20 A | 2017-04-14 A | P1EWCC-AWP01-1230 | 100% | 2017-03-20 | 2017-03-31 |  |  |  |  | AW1 |  |
| P1EWCC-FWP01-1500 |  | Undertake Remaining Soil Surveys |  | 120d | 2017-12-15 | 2018-06-01 | P1EWCC-PWP01-5610 |  |  |  | 653d |  |  |  | AWS | y |
| P1EWCC-FWP01-1510 |  | Undertake Arboricultural Surveys |  | 125d | 2017-12-15 | 2018-06-08 | P1EWCC-PWP01-5610 |  |  |  | 648d |  |  |  | AWS | y |
| P1EWCC-FWP01-1520 |  | Undertake Remaining Ecology & Environmental Surveys |  | 340d | 2017-12-15 | 2019-04-05 | P1EWCC-PWP01-5610 |  |  |  | 433d |  |  |  | AWS | y |
| P1EWCC-FWP01-1530 |  | Undertake Water Monitoring |  | 280d | 2017-12-15 | 2019-01-11 | P1EWCC-PWP01-5610 |  |  |  | 493d |  |  |  | AWS | y |
|  | 1 | **Ecological & Environmental Surveys** |  |  | 2017-04-17 | 2017-07-28 |  |  |  |  |  |  |  |  |  |  |
| P1EWCC-PWP01-3460 |  | Survey for Badgers, Bats, GCN & Reptiles |  | 25d | 2017-04-17 A | 2017-07-28 A | P1EWCC-UWP01-1010, P1EWCC-AWP01-5380, P1EWCC-AWP01-5390 | 100% | 2017-04-03 | 2017-05-05 |  |  |  |  | UW1 |  |
|  | 2 | **Engineering Surveys** |  |  |  |  |  |  |  |  |  |  |  |  |  |  |
|  | 4 | **Historic Environment Surveys** |  |  | 2018-02-09 | 2018-11-16 |  |  |  |  |  |  |  |  |  |  |
| P1EWCC-PWP06-3740 |  | Non-Intrusive Surveys (geophysics) |  | 20d | 2018-02-09 | 2018-03-09 | P1EWCC-UWP01-1010, P1EWCC-PWP06-3770, P1EWCC-PWP05-240 |  |  |  | 379d | 0d |  |  | AWH |  |
| P1EWCC-PWP06-8840 |  | Non-Intrusive Surveys (trial trenching) |  | 30d | 2018-05-04 | 2018-06-15 | P1EWCC-PWP06-3780, P1EWCC-PWP05-240 |  |  |  | 379d | 0d |  |  | AWH |  |
| P1EWCC-PWP06-3750 |  | Intrusive Surveys |  | 40d | 2018-09-24 | 2018-11-16 | P1EWCC-PWP06-3780, P1EWCC-PWP02-6460, P1EWCC-PWP06-8850, P1EWCC-AWP01-5400 |  |  |  | 348.88d | 0d |  |  | AWH |  |

| ID | WBS | Activity | Type | Duration | Start | Finish | Predecessors | Total float | Free float | Constraint | Calendar | Fusion - WPS | HS2 Filter |
| --- | --- | --- | --- | --- | --- | --- | --- | --- | --- | --- | --- | --- | --- |
|  | 8 | **Historic Environment** |  |  | 2017-09-18 | 2019-01-04 |  |  |  |  |  |  |  |
| P1EWCC-PWP06-3760 |  | HS2 issue Project Plan |  | 1d | 2017-09-18 | 2017-09-18 |  | 442.88d | 63.88d | start on or after 2017-02-20 |  | AWH |  |
| P1EWCC-PWP06-3770 |  | Production and Approval of LS-WSI (non-intrusive surveys) |  | 40d | 2017-12-15 | 2018-02-09 | P1EWCC-PWP06-3760, P1EWCC-PWP05-240 | 379d | 0d |  |  | AWH |  |
| P1EWCC-PWP06-3780 |  | Update of Project Plans and LS-WSI and Approval (intrusive surveys) |  | 40d | 2018-03-09 | 2018-05-04 | P1EWCC-PWP06-3740 | 379d | 0d |  |  | AWH |  |
| P1EWCC-PWP06-8850 |  | Update of Project Plans and LS-WSI and Approval (intrusive surveys) |  | 40d | 2018-06-15 | 2018-08-10 | P1EWCC-PWP06-8840 | 379d | 30.12d |  |  | AWH |  |
| P1EWCC-PWP06-3790 |  | Report of Findings And Approval |  | 35d | 2018-11-19 | 2019-01-04 | P1EWCC-PWP06-3750 | 1050d |  |  |  | AWH |  |
|  | 7 | **Ecological Mitigation Works** |  |  | 2018-07-26 | 2018-09-23 |  |  |  |  |  |  |  |
|  | 5 | **Translocation of Species** |  |  | 2018-07-26 | 2018-09-23 |  |  |  |  |  |  |  |
| P1EWCC-PWP02-6460 |  | Species Translocation to Habitat Creation (047-M5W) |  | 60d | 2018-07-26 | 2018-09-23 | P1EWCC-PWP01-3460, P1EWCC-AWP01-5400, P1EWCC-PWP02-12390 SS+60d, P1EWCC-PWP02-14610 | 7d | 0d |  | HS2 - 8h x 7d Workweek (No Holidays) | AWE1 |  |
|  | 9 | **Water Resources** |  |  | 2017-12-15 | 2018-06-15 |  |  |  |  |  |  |  |
| P1EWCC-FWP02-1230 |  | Undertake a Preliminary Dewatering Assessment to assess if exceeding ES Limits |  | 130d | 2017-12-15 | 2018-06-15 | P1EWCC-PWP01-5610 | 75.12d |  |  |  | AWS | y |
|  | 3 | **Utility Works** |  |  | 2017-12-22 | 2020-03-03 |  |  |  |  |  |  |  |
|  | 8 | **Utility Connections into Chiltern Tunnel North Portal Satellite Compound** |  |  | 2017-12-22 | 2020-03-03 |  |  |  |  |  |  |  |
| P1EWCC-PWP03-3720 |  | Scheme Design & Approval of Utility Connections into Chesham Road Vent Shaft Satellite Compound |  | 92d | 2017-12-22 | 2018-05-01 | P1EWCC-PWP01-6810 | -86d | 0d |  |  | DC1E | y |
| P1EWCC-PWP03-4550 |  | Detailed Design & Approval of Utility Connections into Chesham Road Vent Shaft Satellite Compound |  | 55d | 2018-07-17 | 2018-10-02 | P1EWCC-PWP03-3720, P1EWCC-PWP01-11310 | 332d | 0d |  |  | DC1J | y |
| P1EWCC-PWP08-1760 |  | Procurement of Utility Connections into Chesham Road Vent Shaft Satellite Compound |  | 20d | 2018-10-02 | 2018-10-30 | P1EWCC-PWP03-4550 | 332d | 200d |  |  | DC1J | y |
| P1EWCC-EWP02-1750 |  | Installation of Utility Connections into Chesham Road Vent Shaft Satellite Compound |  | 150d | 2019-08-06 | 2020-03-03 | P1EWCC-PWP08-1760, P1EWCC-PWP02-6460, P1EWCC-PWP06-3750 SS+10d, P1EWCC-AWP01-5400, P1EWCC-EWP02-1710 | 132d |  |  |  | DC1J | y |
|  | 1 | **SOW Completion Dates** |  |  | 2018-05-01 | 2020-09-03 |  |  |  |  |  |  |  |
| P1EWCC-EWP01-1450 |  | Completion of Scheme Design for all Utility Work | milestone | 0d | 2018-05-01 | 2018-05-01 | P1EWCC-PWP03-3720 | -120d | 1718d | finish on 2018-01-01 | HS2 - 8h x 7d Workweek (No Holidays) | DC1E | y |
| P1EWCC-FWP02-1240 |  | Completion of Undertake a Preliminary Dewatering Assessment to assess if exceeding ES Limits | milestone | 0d | 2018-09-30 | 2018-09-30 | P1EWCC-FWP02-1230 | 0d | 1566d | finish on 2018-09-30 | HS2 - 8h x 7d Workweek (No Holidays) | AWS | y |
| P1EWCC-PWP02-1990 |  | Completion of Species Translocation/ exclusion - Bats | milestone | 0d | 2018-09-30 | 2018-09-30 | P1EWCC-PWP02-6460 | 0d | 1566d | finish on 2018-09-30 | HS2 - 8h x 7d Workweek (No Holidays) | AWE1 |  |
| P1EWCC-PWP02-2000 |  | Completion of Species Translocation/ exclusion - Badgers | milestone | 0d | 2018-09-30 | 2018-09-30 | P1EWCC-PWP02-6460 | 0d | 1566d | finish on 2018-09-30 | HS2 - 8h x 7d Workweek (No Holidays) | AWE1 |  |
| P1EWCC-PWP02-3010 |  | Completion of Species Translocation/ exclusion - Reptiles | milestone | 0d | 2018-09-30 | 2018-09-30 | P1EWCC-PWP02-6460 | 0d | 1566d | finish on 2018-09-30 | HS2 - 8h x 7d Workweek (No Holidays) | AWE1 |  |
| P1EWCC-EWP02-1760 |  | Completion of Installation of Utility Connections into Chesham Road Vent Shaft Satellite Compound | milestone | 0d | 2020-09-03 | 2020-09-03 | P1EWCC-EWP02-1750 | 0d | 862d | finish on 2020-09-03 | HS2 - 8h x 7d Workweek (No Holidays) | DC1J | y |

| ID | WBS | Activity | Type | Duration | Start | Finish | Predecessors | Complete | Planned start | Planned finish | Total float | Free float | Constraint | Calendar | HS2 Filter | Fusion - WPS |
| --- | --- | --- | --- | --- | --- | --- | --- | --- | --- | --- | --- | --- | --- | --- | --- | --- |
|  | 7 | **044-L1 - Chiltern Tunnel - North Portal** |  |  | 2017-03-20 | 2019-03-31 |  |  |  |  |  |  |  |  |  |  |
|  | 2 | **Land Access** |  |  | 2017-03-27 | 2018-06-08 |  |  |  |  |  |  |  |  |  |  |
|  | 1 | **Survey Work** |  |  | 2017-03-27 | 2017-03-27 |  |  |  |  |  |  |  |  |  |  |
| P1EWCC-AWP01-5360 |  | Land Access Granted for Survey Work (Schedule 2) | milestone | 0d | 2017-03-27 A | 2017-03-27 A |  | 100% | 2017-04-03 | 2017-04-03 |  |  | as late as possible |  | y | AW1 |
|  | 2 | **Possession** |  |  | 2018-06-08 | 2018-06-08 |  |  |  |  |  |  |  |  |  |  |
| P1EWCC-AWP01-5370 |  | Land Access Possession Granted for Construction of (Schedule 16) | milestone | 0d | 2018-06-08 | 2018-06-08 |  |  |  |  | 25d | 0d | as late as possible |  | y | AW1 |
|  | 6 | **Survey Works** |  |  | 2017-03-20 | 2018-11-16 |  |  |  |  |  |  |  |  |  |  |
| P1EWCC-AWP01-5350 |  | Planning Consent & Licensing for Survey Work |  | 10d | 2017-03-20 A | 2017-03-24 A | P1EWCC-AWP01-1230 | 100% | 2017-03-20 | 2017-03-31 |  |  |  |  |  | AW1 |
| P1EWCC-FWP01-1550 |  | Undertake Arboricultural Surveys |  | 125d | 2017-12-15 | 2018-06-08 | P1EWCC-PWP01-5610 |  |  |  | 190d | 210.5d |  |  | y | AWS |
|  | 1 | **Ecological & Environmental Surveys** |  |  | 2017-03-27 | 2017-09-15 |  |  |  |  |  |  |  |  |  |  |
| P1EWCC-PWP01-3450 |  | Survey for Badgers, Bats, GCN & Reptiles |  | 25d | 2017-03-27 A | 2017-09-15 A | P1EWCC-AWP01-5360, P1EWCC-UWP01-1010, P1EWCC-AWP01-5350 | 100% | 2017-04-03 | 2017-05-05 |  |  |  |  |  | UW1 |
|  | 2 | **Engineering Surveys** |  |  |  |  |  |  |  |  |  |  |  |  |  |  |
|  | 4 | **Historic Environment Surveys** |  |  | 2018-02-09 | 2018-11-16 |  |  |  |  |  |  |  |  |  |  |
| P1EWCC-PWP06-3680 |  | Non-Intrusive Surveys (geophysics) |  | 20d | 2018-02-09 | 2018-03-09 | P1EWCC-UWP01-1010, P1EWCC-PWP06-3710, P1EWCC-PWP05-240 |  |  |  | 105d | 0d |  |  |  | AWH |
| P1EWCC-PWP06-8860 |  | Non-Intrusive Surveys (trial trenching) |  | 30d | 2018-05-04 | 2018-06-15 | P1EWCC-PWP06-3720, P1EWCC-PWP05-240 |  |  |  | 105d | 0d |  |  |  | AWH |
| P1EWCC-PWP06-3690 |  | Intrusive Surveys |  | 40d | 2018-09-24 | 2018-11-16 | P1EWCC-PWP02-6450, P1EWCC-PWP06-3720, P1EWCC-PWP06-8870, P1EWCC-AWP01-5370 |  |  |  | 74.88d | 0d |  |  |  | AWH |
|  | 8 | **Historic Environment** |  |  | 2017-12-15 | 2019-01-04 |  |  |  |  |  |  |  |  |  |  |
| P1EWCC-PWP06-3710 |  | Production and Approval of LS-WSI (non-intrusive surveys) |  | 40d | 2017-12-15 | 2018-02-09 | P1EWCC-PWP05-240 |  |  |  | 105d | 0d |  |  |  | AWH |
| P1EWCC-PWP06-3720 |  | Update of Project Plans and LS-WSI and Approval (intrusive surveys) |  | 40d | 2018-03-09 | 2018-05-04 | P1EWCC-PWP06-3680 |  |  |  | 105d | 0d |  |  |  | AWH |
| P1EWCC-PWP06-8870 |  | Update of Project Plans and LS-WSI and Approval (intrusive surveys) |  | 40d | 2018-06-15 | 2018-08-10 | P1EWCC-PWP06-8860 |  |  |  | 105d | 30.12d |  |  |  | AWH |
| P1EWCC-PWP06-3730 |  | Report of Findings And Approval |  | 35d | 2018-11-19 | 2019-01-04 | P1EWCC-PWP06-3690 |  |  |  | 1050d |  |  |  |  | AWH |
|  | 7 | **Ecological Mitigation Works** |  |  | 2018-07-26 | 2018-09-23 |  |  |  |  |  |  |  |  |  |  |
|  | 5 | **Translocation of Species** |  |  | 2018-07-26 | 2018-09-23 |  |  |  |  |  |  |  |  |  |  |
| P1EWCC-PWP02-6450 |  | Species Translocation to Habitat Creation (047-M5w) |  | 60d | 2018-07-26 | 2018-09-23 | P1EWCC-AWP01-5370, P1EWCC-PWP01-3450, P1EWCC-PWP02-12390 SS+60d, P1EWCC-PWP02-14610 |  |  |  | 103d | 0d |  | HS2 - 8h x 7d Workweek (No Holidays) |  | AWE1 |

| ID | WBS | Activity | Type | Duration | Start | Finish | Predecessors | Complete | Planned start | Planned finish | Total float | Free float | Constraint | Calendar | HS2 Filter | Fusion - WPS |
| --- | --- | --- | --- | --- | --- | --- | --- | --- | --- | --- | --- | --- | --- | --- | --- | --- |
|  | 11 | **Highway and Public Rights of Works** |  |  | 2018-02-28 | 2019-01-25 |  |  |  |  |  |  |  |  |  |  |
| P1EWCC-PWP09-7430 |  | Detailed Design and Approval of A413 Roundabouts & Haul Road |  | 69d | 2018-02-28 | 2018-06-05 | P1EWCC-PWP01-11620 |  |  |  | 28d | 0d |  |  | y | DC2G |
| P1EWCC-AWP01-8480 |  | Planning Consent & Licensing of A413 Roundabouts & Haul Road |  | 50d | 2018-03-27 | 2018-06-05 | P1EWCC-PWP09-7430 FF |  |  |  | 28d | 3d |  |  |  | DC2G |
| P1EWCC-EWP02-1800 |  | Construction of A413 Roundabouts & Haul Road |  | 165d | 2018-06-08 | 2019-01-25 | P1EWCC-AWP01-8480, P1EWCC-AWP01-5370, P1EWCC-PWP01-11670 FS-9d |  |  |  | 25d | 45.12d |  |  | y | DC2G |
|  | 3 | **Utility Works** |  |  | 2017-12-22 | 2018-05-01 |  |  |  |  |  |  |  |  |  |  |
|  | 8 | **Utility Connections into Chiltern Tunnel North Portal Satellite Compound** |  |  | 2017-12-22 | 2018-05-01 |  |  |  |  |  |  |  |  |  |  |
| P1EWCC-PWP03-3700 |  | Scheme Design & Approval of Utility Connections into Chiltern Tunnel North Portal Satellite Compound |  | 92d | 2017-12-22 | 2018-05-01 | P1EWCC-PWP01-6810 |  |  |  | -131.88d | 0d |  |  | y | DC1E |
|  | 1 | **SOW Completion Dates** |  |  | 2018-05-01 | 2019-03-31 |  |  |  |  |  |  |  |  |  |  |
| P1EWCC-EWP02-1740 |  | Completion of Scheme Design of Utility Connections into Chiltern Tunnel North Portal Satellite Compound | milestone | 0d | 2018-05-01 | 2018-05-01 | P1EWCC-PWP03-3700 |  |  |  | -86d | 1228.12d | finish on 2018-01-01 |  | y | DC1E |
| P1EWCC-EWP02-1810 |  | Completion of A413 Roundabouts & Haul Road | milestone | 0d | 2019-03-31 | 2019-03-31 | P1EWCC-EWP02-1800 |  |  |  | 0d | 1384d | finish on 2019-03-31 | HS2 - 8h x 7d Workweek (No Holidays) | y | DC2G |
|  | 6 | **SOW Completion Dates** |  |  | 2017-09-16 | 2017-09-16 |  |  |  |  |  |  |  |  |  |  |
| P1EWCC-PWP01-2010 |  | Completion of Survey for Badgers (31+800 to 47+000) | milestone | 0d | 2017-09-16 | 2017-09-16 | P1EWCC-PWP01-3460 |  |  |  | -46d | 1946d | finish on 2017-07-31 | HS2 - 8h x 7d Workweek (No Holidays) |  | UW1 |
| P1EWCC-PWP01-2020 |  | Completion of Survey for Bats (35+200 to 47+000) | milestone | 0d | 2017-09-16 | 2017-09-16 | P1EWCC-PWP01-3460 |  |  |  | -46d | 1946d | finish on 2017-07-31 | HS2 - 8h x 7d Workweek (No Holidays) |  | UW1 |
| P1EWCC-PWP01-2030 |  | Completion of Survey for GCN (34+500 & 47+185) | milestone | 0d | 2017-09-16 | 2017-09-16 | P1EWCC-PWP01-3460 |  |  |  | -46d | 1946d | finish on 2017-07-31 | HS2 - 8h x 7d Workweek (No Holidays) |  | UW1 |
| P1EWCC-PWP01-2040 |  | Completion of Survey for Reptiles (31+800 to 47+000) | milestone | 0d | 2017-09-16 | 2017-09-16 | P1EWCC-PWP01-3460 |  |  |  | -46d | 1946d | finish on 2017-07-31 | HS2 - 8h x 7d Workweek (No Holidays) |  | UW1 |
|  | C123 | **Chiltern Tunnel North Approach Cutting (Ch 47205 to Ch. 47750)** |  |  | 2017-02-17 | 2019-05-20 |  |  |  |  |  |  |  |  |  |  |
|  | 7 | **047-L1 - South Heath Cutting** |  |  | 2017-02-17 | 2019-05-20 |  |  |  |  |  |  |  |  |  |  |
|  | 8 | **Land Access** |  |  | 2017-03-27 | 2018-04-02 |  |  |  |  |  |  |  |  |  |  |
|  | 1 | **Survey Work** |  |  | 2017-03-27 | 2017-03-27 |  |  |  |  |  |  |  |  |  |  |
| P1EWCC-AWP01-4050 |  | Land Access Granted for Survey Work (Schedule 2) | milestone | 0d | 2017-03-27 A | 2017-03-27 A |  | 100% | 2017-04-03 | 2017-04-03 |  |  | as late as possible |  | y | UW1 |
|  | 2 | **Possession** |  |  | 2017-09-18 | 2018-04-02 |  |  |  |  |  |  |  |  |  |  |
|  | 1 | **Ecological Mitigation Area** |  |  | 2017-09-18 | 2017-09-28 |  |  |  |  |  |  |  |  |  |  |
| P1EWCC-AWP01-4060 |  | Land Access Possession Granted for Ecolgical Mitigation Sites (Schedule 16) 047-M2E (TBA -now Bury Farm) | milestone | 0d | 2017-09-18 | 2017-09-18 |  |  |  |  | 217d | 0d | start on or after 2017-09-15 |  | y | UW1 |
| P1EWCC-AWP01-8270 |  | Land Access Possession Granted for Ecolgical Mitigation Sites (Schedule 16) 047-M5W (Park Hill) | milestone | 0d | 2017-09-28 | 2017-09-28 |  |  |  |  | 175d | 71.88d | start on or after 2017-09-28 |  | y | UW1 |

| ID | WBS | Activity | Type | Duration | Start | Finish | Predecessors | Complete | Remaining | Planned start | Planned finish | Total float | Free float | Constraint | Expected finish | HS2 Filter | Fusion - WPS |
| --- | --- | --- | --- | --- | --- | --- | --- | --- | --- | --- | --- | --- | --- | --- | --- | --- | --- |
|  | 2 | **047-L1 - South Heath Cutting** |  |  | 2018-04-02 | 2018-04-02 |  |  |  |  |  |  |  |  |  |  |  |
| P1EWCC-AWP01-4070 |  | Land Access Possession Granted for South Heath Cutting (Schedule 16) | milestone | 0d | 2018-04-02 | 2018-04-02 |  |  |  |  |  | -20.5d | 0d | as late as possible |  | y | AW1 |
|  | 1 | **Survey Works** |  |  | 2017-03-20 | 2019-04-01 |  |  |  |  |  |  |  |  |  |  |  |
| P1EWCC-AWP01-3060 |  | Planning Consent & Licensing for Survey Work |  | 10d | 2017-03-20 A | 2017-03-24 A | P1EWCC-AWP01-1230 | 100% |  | 2017-03-20 | 2017-03-31 |  |  |  |  |  | UW1 |
| P1EWCC-FWP01-1560 |  | Undertake Remaining Soil Surveys |  | 120d | 2017-12-15 | 2018-06-01 | P1EWCC-PWP01-5610 |  |  |  |  | 195d | 215.5d |  |  | y | AWS |
| P1EWCC-FWP01-1570 |  | Undertake Arboricultural Surveys |  | 125d | 2017-12-15 | 2018-06-08 | P1EWCC-PWP01-5610 |  |  |  |  | 190d | 210.5d |  |  | y | AWS |
| P1EWCC-FWP01-1580 |  | Undertake Remaining Ecology & Environmental Surveys |  | 137d | 2017-12-15 | 2018-06-26 | P1EWCC-PWP01-5610 |  |  |  |  | 178d | 198.5d |  |  | y | AWS |
|  | 1 | **Ecological & Environmental Surveys** |  |  | 2017-03-27 | 2017-11-24 |  |  |  |  |  |  |  |  |  |  |  |
| P1EWCC-PWP01-3050 |  | Survey for Badgers, Bats, GCN & Reptiles |  | 25d | 2017-03-27 A | 2017-11-24 | P1EWCC-AWP01-4050, P1EWCC-AWP01-3060, P1EWCC-UWP01-1010 |  | 49.88d | 2017-04-03 | 2017-05-05 | -105.88d | 0d |  | 2017-11-24 |  | UW1 |
|  | 2 | **Engineering Surveys** |  |  | 2017-04-10 | 2017-04-21 |  |  |  |  |  |  |  |  |  |  |  |
| P1EWCC-PWP03-3080 |  | Survey for Engineering (Topo, GPR, Utility, Soil) |  | 20d | 2017-04-10 A | 2017-04-21 A | P1EWCC-AWP01-3060, P1EWCC-UWP01-1010, P1EWCC-AWP01-4050 | 100% |  | 2017-04-03 | 2017-04-28 |  |  |  |  |  | UW1 |
|  | 3 | **Historic Environment** |  |  | 2017-08-31 | 2019-04-01 |  |  |  |  |  |  |  |  |  |  |  |
|  | 4 | **Ecological Mitigation Sites Bury Farm CR01591** |  |  | 2017-09-11 | 2017-12-22 |  |  |  |  |  |  |  |  |  |  |  |
| P1EWCC-PWP06-11380 |  | Geophysics (ecological mitigation site) |  | 1d | 2017-09-11 A | 2017-09-11 A | P1EWCC-PWP06-11400 | 100% |  | 2017-09-18 | 2017-09-18 |  |  |  |  |  | UW1 |
| P1EWCC-PWP06-11390 |  | Intrusive Surveys (ecological mitigation site) |  | 5d | 2017-12-15 | 2017-12-22 | P1EWCC-PWP05-240 |  |  |  |  | 169.12d | 0d |  |  |  | AWH |
|  | 2 | **Ecological Mitigation Sites Park Hill 1436 NI 02 047-M5W** |  |  | 2017-08-31 | 2017-12-22 |  |  |  |  |  |  |  |  |  |  |  |
| P1EWCC-PWP06-1380 |  | Geophysics (ecological mitigation site) |  | 1d | 2017-08-31 A | 2017-08-31 A | P1EWCC-AWP01-4050, P1EWCC-UWP01-1010, P1EWCC-PWP06-1360 | 100% |  | 2017-08-02 | 2017-08-02 |  |  |  |  |  | UW1 |
| P1EWCC-PWP06-1390 |  | Intrusive Surveys (ecological mitigation site) |  | 5d | 2017-12-15 | 2017-12-22 | P1EWCC-PWP06-1370, P1EWCC-PWP05-240 |  |  |  |  | 169.12d | 0d |  |  |  | AWH |
|  | 5 | **Jones Hill Wood 1348 (050-M5W)** |  |  | 2017-09-25 | 2017-12-22 |  |  |  |  |  |  |  |  |  |  |  |
| P1EWCC-PWP06-11430 |  | Geophysics (ecological mitigation site) |  | 2d | 2017-09-25 | 2017-09-26 | P1EWCC-PWP06-11470 |  |  |  |  | 1313d | 0d | start on or after 2017-09-25 |  |  | UW1 |
| P1EWCC-PWP06-11440 |  | Intrusive Surveys (ecological mitigation site) |  | 5d | 2017-12-15 | 2017-12-22 | P1EWCC-PWP06-11480, P1EWCC-PWP05-240 |  |  |  |  | 1285.12d | 0d |  |  |  | AWH |
|  | 6 | **Jones Hill Wood 1348 (050-M1E)** |  |  | 2017-09-25 | 2017-12-22 |  |  |  |  |  |  |  |  |  |  |  |
| P1EWCC-PWP06-11450 |  | Geophysics (ecological mitigation site) |  | 2d | 2017-09-25 | 2017-09-26 | P1EWCC-PWP06-11510 |  |  |  |  | 1313d | 0d | start on or after 2017-09-25 |  |  | UW1 |
| P1EWCC-PWP06-11460 |  | Intrusive Surveys (ecological mitigation site) |  | 5d | 2017-12-15 | 2017-12-22 | P1EWCC-PWP06-11520, P1EWCC-PWP05-240 |  |  |  |  | 1285.12d | 0d |  |  |  | AWH |

| ID | WBS | Activity | Duration | Start | Finish | Predecessors | Complete | Remaining | Planned start | Planned finish | Total float | Free float | Expected finish | Fusion - WPS |
| --- | --- | --- | --- | --- | --- | --- | --- | --- | --- | --- | --- | --- | --- | --- |
|  | 1 | **Grims Ditch** |  | 2018-04-02 | 2019-04-01 |  |  |  |  |  |  |  |  |  |
| P1EWCC-PWP06-1200 |  | Archaeological Investigation of Scheduled Monument - Grims Ditch | 259.5d | 2018-04-02 | 2019-04-01 | P1EWCC-AWP01-4070, P1EWCC-PWP06-1630 |  |  |  |  | -20.5d | 0d |  | AWH |
|  | 3 | **047-L1 - South Heath Cutting** |  | 2018-02-09 | 2018-11-20 |  |  |  |  |  |  |  |  |  |
| P1EWCC-PWP06-8920 |  | Non-Intrusive Surveys (geophysics) | 20d | 2018-02-09 | 2018-03-09 | P1EWCC-PWP06-8880, P1EWCC-PWP05-240 |  |  |  |  | 105d | 0d |  | AWH |
| P1EWCC-PWP06-8930 |  | Non-Intrusive Surveys (trial trenching) | 30d | 2018-05-04 | 2018-06-15 | P1EWCC-PWP06-8890, P1EWCC-PWP05-240 |  |  |  |  | 105d | 0d |  | AWH |
| P1EWCC-PWP06-1840 |  | Intrusive Surveys (South Heath Cutting) | 40d | 2018-09-25 | 2018-11-20 | P1EWCC-PWP02-3880, P1EWCC-PWP06-8900, P1EWCC-FWP02-1040 FS+130d, P1EWCC-AWP01-4070 |  |  |  |  | 73d | 0d |  | AWH |
|  | 7 | **Historic Environment** |  | 2017-04-17 | 2019-05-20 |  |  |  |  |  |  |  |  |  |
|  | 4 | **Ecological Mitigation Site Bury Farm CR01591** |  | 2017-04-17 | 2018-02-09 |  |  |  |  |  |  |  |  |  |
| P1EWCC-PWP06-11400 |  | Production and Approval of LS-WSI Bucks, Herts, LGA (non-intrusive surveys) | 25d | 2017-04-17 A | 2017-06-27 A | P1EWCC-UWP01-1000 | 100% |  | 2017-02-27 | 2017-03-31 |  |  |  | UW1 |
| P1EWCC-PWP06-11410 |  | Update of Project Plans and LS-WSI and Approval (intrusive surveys) | 20d | 2017-09-12 A | 2017-10-23 | P1EWCC-PWP06-11380 |  | 25.88d | 2017-09-19 | 2017-10-16 | 1364.12d | 0d | 2017-10-23 | UW1 |
| P1EWCC-PWP06-11420 |  | Report of Findings And Approval (intrusive surveys) | 35d | 2017-12-22 | 2018-02-09 | P1EWCC-PWP06-11390 |  |  |  |  | 1285.12d |  |  | AWH |
|  | 3 | **Ecological Mitigation Site Park Hill 1436 NI 02 047-M5W** |  | 2017-04-17 | 2018-02-09 |  |  |  |  |  |  |  |  |  |
| P1EWCC-PWP06-1360 |  | Production and Approval of LS-WSI LS-WSI Bucks, Herts, LGA (non-intrusive surveys) | 25d | 2017-04-17 A | 2017-06-27 A | P1EWCC-UWP01-1000 | 100% |  | 2017-02-27 | 2017-03-31 |  |  |  | UW1 |
| P1EWCC-PWP06-1370 |  | Update of Project Plans and LS-WSI and Approval (intrusive surveys) | 30d | 2017-09-01 A | 2017-10-12 | P1EWCC-PWP06-1380, P1EWCC-PWP06-1350 FF | 37% | 18.88d | 2017-09-19 | 2017-10-30 | 215.12d | 0d | 2017-10-12 | UW1 |
| P1EWCC-PWP06-1350 |  | HS2 issue Project Plan | 1d | 2017-09-18 | 2017-09-18 |  |  |  |  |  | 233d | 17.88d |  | UW1 |
| P1EWCC-PWP06-1410 |  | Report of Findings And Approval (intrusive surveys) | 35d | 2017-12-22 | 2018-02-09 | P1EWCC-PWP06-1390 |  |  |  |  | 1285.12d |  |  | AWH |
|  | 5 | **Jones Hill Wood 1348 (050-M5W)** |  | 2017-04-17 | 2018-02-09 |  |  |  |  |  |  |  |  |  |
| P1EWCC-PWP06-11470 |  | Production and Approval of LS-WSI LS-WSI Bucks, Herts, LGA (non-intrusive surveys) | 25d | 2017-04-17 A | 2017-06-27 A | P1EWCC-UWP01-1000 | 100% |  | 2017-02-27 | 2017-03-31 |  |  |  | UW1 |
| P1EWCC-PWP06-11480 |  | Update of Project Plans and LS-WSI and Approval (intrusive surveys) | 30d | 2017-09-27 | 2017-11-07 | P1EWCC-PWP06-11430 |  |  |  |  | 1313d | 27.88d |  | UW1 |
| P1EWCC-PWP06-11490 |  | Report of Findings And Approval (intrusive surveys) | 35d | 2017-12-22 | 2018-02-09 | P1EWCC-PWP06-11440 |  |  |  |  | 1285.12d |  |  | AWH |
|  | 6 | **Jones Hill Wood 1348 (050-M1E)** |  | 2017-04-17 | 2018-02-09 |  |  |  |  |  |  |  |  |  |
| P1EWCC-PWP06-11510 |  | Production and Approval of LS-WSI LS-WSI Bucks, Herts, LGA (non-intrusive surveys) | 25d | 2017-04-17 A | 2017-06-27 A | P1EWCC-UWP01-1000 | 100% |  | 2017-02-27 | 2017-03-31 |  |  |  | UW1 |
| P1EWCC-PWP06-11520 |  | Update of Project Plans and LS-WSI and Approval (intrusive surveys) | 30d | 2017-09-27 | 2017-11-07 | P1EWCC-PWP06-11450 |  |  |  |  | 1313d | 27.88d |  | UW1 |
| P1EWCC-PWP06-11530 |  | Report of Findings And Approval (intrusive surveys) | 35d | 2017-12-22 | 2018-02-09 | P1EWCC-PWP06-11460 |  |  |  |  | 1285.12d |  |  | AWH |

| ID | WBS | Activity | Duration | Start | Finish | Predecessors | Complete | Remaining | Planned start | Planned finish | Total float | Free float | Constraint | Expected finish | Calendar | Fusion - WPS |
| --- | --- | --- | --- | --- | --- | --- | --- | --- | --- | --- | --- | --- | --- | --- | --- | --- |
|  | 1 | **Grims Ditch** |  | 2017-08-04 | 2019-05-20 |  |  |  |  |  |  |  |  |  |  |  |
| P1EWCC-PWP06-1630 |  | DDBA, Project Plans, LS-WSI for Grims Ditch | 160d | 2017-08-04 A | 2018-04-02 | P1EWCC-PWP05-150 SS+11d | 12% | 140.88d | 2017-09-18 | 2018-04-27 | -20.5d | 0d |  | 2018-04-02 |  | AWH |
| P1EWCC-PWP06-1620 |  | Report of Findings And Approval (Archaeological Investigation) | 35d | 2019-04-01 | 2019-05-20 | P1EWCC-PWP06-1200 |  |  |  |  | 954.62d |  |  |  |  | AWH |
|  | 2 | **047-L1 - South Heath Cutting** |  | 2017-12-15 | 2019-01-08 |  |  |  |  |  |  |  |  |  |  |  |
| P1EWCC-PWP06-8880 |  | Production and Approval of LS-WSI (non-intrusive surveys) | 40d | 2017-12-15 | 2018-02-09 | P1EWCC-PWP05-240 |  |  |  |  | 105d | 0d |  |  |  | AWH |
| P1EWCC-PWP06-8890 |  | Update of Project Plans and LS-WSI and Approval (intrusive surveys) | 40d | 2018-03-09 | 2018-05-04 | P1EWCC-PWP06-8920 |  |  |  |  | 105d | 0d |  |  |  | AWH |
| P1EWCC-PWP06-8900 |  | Update of Project Plans and LS-WSI and Approval (intrusive surveys) | 40d | 2018-06-15 | 2018-08-10 | P1EWCC-PWP06-8930 |  |  |  |  | 105d | 32d |  |  |  | AWH |
| P1EWCC-PWP06-8910 |  | Report of Findings And Approval | 35d | 2018-11-20 | 2019-01-08 | P1EWCC-PWP06-1840 |  |  |  |  | 1048.12d |  |  |  |  | AWH |
|  | 2 | **Ecological Mitigation Works** |  | 2017-02-17 | 2019-04-30 |  |  |  |  |  |  |  |  |  |  |  |
|  | 1 | **Design** |  | 2017-02-17 | 2018-01-16 |  |  |  |  |  |  |  |  |  |  |  |
|  | 1 | **047-M2E** |  | 2017-02-24 | 2017-09-18 |  |  |  |  |  |  |  |  |  |  |  |
| P1EWCC-PWP02-4900 |  | HS2 issue Prelimanry Design of Habitat Creation (047-M2E) | 1d | 2017-02-24 A | 2017-02-24 A |  | 100% |  |  |  |  |  |  |  |  | UW1 |
| P1EWCC-PWP02-4910 |  | Design of Habitat Creation (047-M2E) (deleted PMI9) | 25d | 2017-03-30 A | 2017-09-18 | P1EWCC-PWP02-4900, P1EWCC-UWP01-1010, P1EWCC-PWP03-3080 FF | 96% | 0.88d | 2017-03-20 | 2017-04-21 | 1389.12d | 0d |  | 2017-09-18 |  | UW1 |
|  | 2 | **047-M5W** |  | 2017-02-17 | 2017-10-06 |  |  |  |  |  |  |  |  |  |  |  |
| P1EWCC-PWP02-3850 |  | HS2 issue Prelimanry Design of Habitat Creation (047-M5W) | 1d | 2017-02-17 A | 2017-02-17 A |  | 100% |  |  |  |  |  |  |  |  | UW1 |
| P1EWCC-PWP02-3840 |  | Design of Habitat Creation (047-M5W) | 25d | 2017-03-30 A | 2017-09-26 | P1EWCC-UWP01-1010, P1EWCC-PWP02-3850, P1EWCC-PWP03-3080 FF | 72% | 6.88d | 2017-03-20 | 2017-04-21 | 168.12d | 0d |  | 2017-09-26 |  | UW1 |
| P1EWCC-AWP01-8370 |  | Planning Consent & Licensing for Habitat Creation (047-M5W) | 40d | 2017-06-09 A | 2017-10-06 | P1EWCC-PWP02-3840 SS | 63% | 14.88d | 2017-07-05 | 2017-08-29 | 168.12d | 0d |  | 2017-10-06 |  | UW1 |
|  | 3 | **Bury Farm** |  | 2017-07-17 | 2018-01-16 |  |  |  |  |  |  |  |  |  |  |  |
| P1EWCC-AWP01-8460 |  | Full TCPA Planning Consent & Licensing for Habitat Creation (Bury Farm) | 113d | 2017-07-17 A | 2018-01-16 | P1EWCC-PWP02-12600 SS | 23% | 86.88d | 2017-07-21 | 2017-12-26 | 152.12d | 0d |  | 2018-01-16 |  | UW1 |
| P1EWCC-PWP02-12600 |  | Design of Habitat Creation (Bury Farm) | 104d | 2017-07-17 A | 2017-12-12 | P1EWCC-UWP01-1000 | 41% | 61.88d | 2017-07-03 | 2017-11-23 | 152.12d | 0d |  | 2017-12-12 |  | UW1 |
|  | 2 | **Species Removal from Habitat Area** |  | 2017-07-31 | 2017-10-17 |  |  |  |  |  |  |  |  |  |  |  |
| P1EWCC-PWP02-3870 |  | MS/RAMS for GCN/Reptile Clearance from Habitat Creation Site (Bury Farm) | 15d | 2017-07-31 A | 2017-09-14 A | P1EWCC-AWP01-1230 | 100% |  | 2017-07-24 | 2017-08-11 |  |  |  |  |  | UW1 |
| P1EWCC-PWP02-3860 |  | Exclude GCN/Reptile from Habitat Creation (Bury Farm) | 30d | 2017-09-18 | 2017-10-17 | P1EWCC-PWP02-3870, P1EWCC-AWP01-4060 |  |  |  |  | 303d | 91d |  |  | HS2 - 8h x 7d Workweek (No Holidays) | UW1 |
|  | 3 | **Habitat Creation** |  | 2018-01-05 | 2019-02-28 |  |  |  |  |  |  |  |  |  |  |  |
|  | 1 | **Ecological Habitat Creation** |  | 2018-01-05 | 2018-08-29 |  |  |  |  |  |  |  |  |  |  |  |
|  | 2 | **047-M5W** |  | 2018-01-05 | 2018-08-29 |  |  |  |  |  |  |  |  |  |  |  |
| P1EWCC-PWP02-12380 |  | Habitat Creation (047-M5W) | 55d | 2018-01-05 | 2018-03-23 | P1EWCC-AWP01-8270, P1EWCC-AWP01-8370, P1EWCC-PWP02-9220, P1EWCC-PWP02-3840 |  |  |  |  | 103.12d | 38.12d |  |  |  | AWE1 |
| P1EWCC-PWP02-12390 |  | Habitat Creation Maturity Period (047-M5W) | 182d | 2018-03-01 | 2018-08-29 | P1EWCC-PWP02-12380 SS |  |  |  |  | 91d | 87d | start on or after 2018-03-01 |  | HS2 - 8h x 7d Workweek (No Holidays) | AWE1 |

| ID | WBS | Activity | Type | Duration | Start | Finish | Predecessors | Total float | Free float | Constraint | Calendar | Fusion - WPS | HS2 Filter |
| --- | --- | --- | --- | --- | --- | --- | --- | --- | --- | --- | --- | --- | --- |
|  | 1 | **047-M2E** |  |  | 2018-01-16 | 2018-08-29 |  |  |  |  |  |  |  |
| P1EWCC-PWP02-3820 |  | Habitat Creation (Bury Farm) |  | 30d | 2018-01-16 | 2018-02-27 | P1EWCC-PWP06-1390, P1EWCC-PWP01-3050, P1EWCC-PWP02-3860, P1EWCC-PWP02-9220, P1EWCC-AWP01-8460, P1EWCC-PWP02-12600, P1EWCC-PWP06-11390 | 152.12d | 1.12d |  |  | AWE1 |  |
| P1EWCC-PWP02-3830 |  | Habitat Creation Maturity Period (Bury Farm) |  | 182d | 2018-03-01 | 2018-08-29 | P1EWCC-PWP02-3820 | 1598d | 258d | start on or after 2018-03-01 | HS2 - 8h x 7d Workweek (No Holidays) | AWE1 |  |
|  | 2 | **Woodland Habitat Creation** |  |  | 2018-03-01 | 2019-02-28 |  |  |  |  |  |  |  |
|  | 3 | **Jones's Hill Wood 050-M1E** |  |  | 2018-03-01 | 2019-02-28 |  |  |  |  |  |  |  |
|  | 1 | **Design** |  |  | 2018-03-01 | 2018-07-19 |  |  |  |  |  |  |  |
| P1EWCC-PWP02-14650 |  | Develop Scheme Design |  | 40d | 2018-03-01 | 2018-04-26 | P1EWCC-PWP02-11910 SS+5d | -109.75d | 0d |  |  | AWE2 | y |
| P1EWCC-PWP02-13100 |  | Develop Detailed Design |  | 50d | 2018-04-26 | 2018-07-05 | P1EWCC-PWP02-11910 SS+5d, P1EWCC-PWP02-14650 | -109.75d | 0d |  |  | AWE2 | y |
| P1EWCC-PWP02-13090 |  | Schedule 17 Planning Consent Approval Period |  | 56d | 2018-04-27 | 2018-06-21 | P1EWCC-PWP02-14650 | 7.12d | 161d |  | HS2 - 8h x 7d Workweek (No Holidays) | AWE2 | y |
| P1EWCC-PWP02-13080 |  | HS2 approval period of vaildated design |  | 14d | 2018-07-06 | 2018-07-19 | P1EWCC-PWP02-13100 | -111.75d | 0d |  | HS2 - 8h x 7d Workweek (No Holidays) | AWE2 | y |
|  | 2 | **Installation** |  |  | 2018-07-19 | 2019-02-28 |  |  |  |  |  |  |  |
| P1EWCC-PWP02-8820 |  | Call off of Create Habitat - Woodland Habitat Creation | milestone | 0d | 2018-07-19 | 2018-07-19 | P1EWCC-PWP02-13080 | -79.62d | 0d |  |  | AWE2 | y |
| P1EWCC-PWP02-8830 |  | Call off period for Create Habitat - Woodland Habitat Creation |  | 64.88d | 2018-07-19 | 2018-10-18 | P1EWCC-PWP02-8820 | -79.62d | 30.12d |  |  | AWE2 | y |
| P1EWCC-PWP02-8750 |  | Ecological Compensation Planting to allow for replacement of ancient woodlands at Jones Hill (050-M1E) |  | 64.88d | 2018-11-29 | 2019-02-28 | P1EWCC-PWP02-8830, P1EWCC-AWP01-4070, P1EWCC-PWP02-13090, P1EWCC-PWP02-15070 | -109.75d | 0d | start on or after 2018-11-01 |  | AWE2 |  |
|  | 1 | **Jones's Hill Wood 050-M5W** |  |  | 2018-03-01 | 2019-02-22 |  |  |  |  |  |  |  |
|  | 1 | **Design** |  |  | 2018-03-01 | 2018-07-19 |  |  |  |  |  |  |  |
| P1EWCC-PWP02-13140 |  | Develop Scheme Design |  | 40d | 2018-03-01 | 2018-04-26 | P1EWCC-PWP02-11910 SS+5d | -109.75d | 0d |  |  | AWE2 | y |
| P1EWCC-PWP02-13170 |  | Develop Detailed Design |  | 50d | 2018-04-26 | 2018-07-05 | P1EWCC-PWP02-13140 | -109.75d | 0d |  |  | AWE2 | y |
| P1EWCC-PWP02-13160 |  | Schedule 17 Planning Consent Approval Period |  | 56d | 2018-04-27 | 2018-06-21 | P1EWCC-PWP02-13140 | 1582d | 161d |  | HS2 - 8h x 7d Workweek (No Holidays) | AWE2 | y |
| P1EWCC-PWP02-13150 |  | HS2 approval period of vaildated design |  | 14d | 2018-07-06 | 2018-07-19 | P1EWCC-PWP02-13170 | 1463.12d | 0d |  | HS2 - 8h x 7d Workweek (No Holidays) | AWE2 | y |
|  | 2 | **Installation** |  |  | 2018-07-19 | 2019-02-22 |  |  |  |  |  |  |  |
| P1EWCC-PWP02-13120 |  | Call off of Advance Planting | milestone | 0d | 2018-07-19 | 2018-07-19 | P1EWCC-PWP02-13150 | 1045.25d | 0d |  |  | AWE2 | y |
| P1EWCC-PWP02-13130 |  | Call off period for Advance Planting |  | 64.88d | 2018-07-19 | 2018-10-18 | P1EWCC-PWP02-13120 | 1045.25d | 30.25d |  |  | AWE2 | y |
| P1EWCC-PWP02-13110 |  | Precautionary Ecological Compensation Area to consist of grassland, scrub and trees (050-M5W) |  | 55d | 2018-11-30 | 2019-02-22 | P1EWCC-PWP02-13130, P1EWCC-AWP01-4070, P1EWCC-PWP02-3880, P1EWCC-PWP02-13160, P1EWCC-PWP02-15070 | 971d |  | start on or after 2018-11-01 | HS2 - 8h x 5d Workweek (Nonwork: Bank Holidays & 1w Xmas) [upto 2034] DEFAULT | AWE2 |  |

| ID | WBS | Activity | Type | Duration | Start | Finish | Predecessors | Total float | Free float | Constraint | Calendar | Fusion - WPS | HS2 Filter |
| --- | --- | --- | --- | --- | --- | --- | --- | --- | --- | --- | --- | --- | --- |
|  | 5 | **Translocation of Species** |  |  | 2018-07-28 | 2019-04-30 |  |  |  |  |  |  |  |
| P1EWCC-PWP02-3880 |  | Species Translocation to Habitat Creation (047-M5w) |  | 60d | 2018-07-28 | 2018-09-25 | P1EWCC-AWP01-4070, P1EWCC-FWP02-1040 FS+130d, P1EWCC-PWP02-12390 SS+60d, P1EWCC-PWP02-14610 | 2d | 0d |  | HS2 - 8h x 7d Workweek (No Holidays) | AWE1 |  |
| P1EWCC-PWP02-14640 |  | Species Translocation to Habitat Creation (Bury Farm) |  | 60d | 2019-03-01 | 2019-04-30 | P1EWCC-PWP02-3830 SS+107.5d | 1354.5d |  | start on or after 2019-03-01 | HS2 - 8h x 7d Workweek (No Holidays) | AWE1 |  |
|  | 8 | **Landscape Planting** |  |  | 2018-03-01 | 2019-02-22 |  |  |  |  |  |  |  |
|  | 6 | **Landscape Planting - Letter Lane (048-M4W)** |  |  | 2018-03-01 | 2019-02-22 |  |  |  |  |  |  |  |
|  | 1 | **Design** |  |  | 2018-03-01 | 2018-07-19 |  |  |  |  |  |  |  |
| P1EWCC-PWP02-12960 |  | Develop Scheme Design |  | 40d | 2018-03-01 | 2018-04-26 | P1EWCC-PWP02-11910 SS+5d | -109.75d | 0d |  |  | AWE2 | y |
| P1EWCC-PWP02-12990 |  | Develop Detailed Design |  | 50d | 2018-04-26 | 2018-07-05 | P1EWCC-PWP02-12960 | -109.75d | 0d |  |  | AWE2 | y |
| P1EWCC-PWP02-12980 |  | Schedule 17 Planning Consent Approval Period |  | 56d | 2018-04-27 | 2018-06-21 | P1EWCC-PWP02-12960 | 1582d | 161d |  | HS2 - 8h x 7d Workweek (No Holidays) | AWE2 | y |
| P1EWCC-PWP02-12970 |  | HS2 approval period of vaildated design |  | 14d | 2018-07-06 | 2018-07-19 | P1EWCC-PWP02-12990 | 1463.12d | 0d |  | HS2 - 8h x 7d Workweek (No Holidays) | AWE2 | y |
|  | 2 | **Installation** |  |  | 2018-07-19 | 2019-02-22 |  |  |  |  |  |  |  |
| P1EWCC-PWP02-12940 |  | Call off of Advance Planting | milestone | 0d | 2018-07-19 | 2018-07-19 | P1EWCC-PWP02-12970 | 1045.25d | 0d |  |  | AWE2 | y |
| P1EWCC-PWP02-12950 |  | Call off period for Advance Planting |  | 64.88d | 2018-07-19 | 2018-10-18 | P1EWCC-PWP02-12940 | 1045.25d | 30.25d |  |  | AWE2 | y |
| P1EWCC-PWP02-12930 |  | Advance Planting along Leather Lane (048-M4w) |  | 55d | 2018-11-30 | 2019-02-22 | P1EWCC-PWP02-12950, P1EWCC-AWP01-4070, P1EWCC-PWP02-3880, P1EWCC-PWP02-12980, P1EWCC-PWP02-15070 | 971d |  | start on or after 2018-11-01 | HS2 - 8h x 5d Workweek (Nonwork: Bank Holidays & 1w Xmas) [upto 2034] DEFAULT | AWE2 |  |
|  | 7 | **Landscape Planting - Letter Lane (048-M3 & AP4-M11)** |  |  | 2018-03-01 | 2019-02-22 |  |  |  |  |  |  |  |
|  | 1 | **Design** |  |  | 2018-03-01 | 2018-07-19 |  |  |  |  |  |  |  |
| P1EWCC-PWP02-13030 |  | Develop Scheme Design |  | 40d | 2018-03-01 | 2018-04-26 | P1EWCC-PWP02-11910 SS+5d | -109.75d | 0d |  |  | AWE2 | y |
| P1EWCC-PWP02-13060 |  | Develop Detailed Design |  | 50d | 2018-04-26 | 2018-07-05 | P1EWCC-PWP02-13030 | -109.75d | 0d |  |  | AWE2 | y |
| P1EWCC-PWP02-13050 |  | Schedule 17 Planning Consent Approval Period |  | 56d | 2018-04-27 | 2018-06-21 | P1EWCC-PWP02-13030 | 1582d | 161d |  | HS2 - 8h x 7d Workweek (No Holidays) | AWE2 | y |
| P1EWCC-PWP02-13040 |  | HS2 approval period of vaildated design |  | 14d | 2018-07-06 | 2018-07-19 | P1EWCC-PWP02-13060 | 1463.12d | 0d |  | HS2 - 8h x 7d Workweek (No Holidays) | AWE2 | y |
|  | 2 | **Installation** |  |  | 2018-07-19 | 2019-02-22 |  |  |  |  |  |  |  |
| P1EWCC-PWP02-13010 |  | Call off of Advance Planting | milestone | 0d | 2018-07-19 | 2018-07-19 | P1EWCC-PWP02-13040 | 1045.25d | 0d |  |  | AWE2 | y |
| P1EWCC-PWP02-13020 |  | Call off period for Advance Planting |  | 64.88d | 2018-07-19 | 2018-10-18 | P1EWCC-PWP02-13010 | 1045.25d | 30.25d |  |  | AWE2 | y |
| P1EWCC-PWP02-13000 |  | Advance Planting along Leather Lane (048-M3 & AP4-M11) |  | 55d | 2018-11-30 | 2019-02-22 | P1EWCC-PWP02-13020, P1EWCC-AWP01-4070, P1EWCC-PWP02-3880, P1EWCC-PWP02-13050, P1EWCC-PWP02-15070 | 971d |  | start on or after 2018-11-01 | HS2 - 8h x 5d Workweek (Nonwork: Bank Holidays & 1w Xmas) [upto 2034] DEFAULT | AWE2 |  |

| ID | WBS | Activity | Type | Duration | Start | Finish | Predecessors | Total float | Free float | Constraint | Calendar | Fusion - WPS | HS2 Filter |
| --- | --- | --- | --- | --- | --- | --- | --- | --- | --- | --- | --- | --- | --- |
|  | 4 | **Translocation of Hedgerow** |  |  | 2018-11-01 | 2018-12-14 |  |  |  |  |  |  |  |
| P1EWCC-PWP02-9190 |  | Translocation of hedgerows |  | 43d | 2018-11-01 | 2018-12-14 | P1EWCC-PWP02-11910, P1EWCC-AWP01-4070, P1EWCC-PWP02-3880 | 77.62d | 108d | start on or after 2018-11-01 | HS2 - 8h x 7d Workweek (No Holidays) | AWE2 |  |
|  | 5 | **Noise and Vibration Works** |  |  | 2017-12-18 | 2018-01-26 |  |  |  |  |  |  |  |
| P1EWCC-FWP02-1040 |  | Noise Insulation/ Temporary Rehousing Appraisal |  | 30d | 2017-12-18 | 2018-01-26 | P1EWCC-PWP01-5610 | 0d |  | as late as possible |  | AWS | y |
|  | 4 | **SOW Completion Dates** |  |  | 2017-09-29 | 2019-03-29 |  |  |  |  |  |  |  |
| P1EWCC-PWP03-3090 |  | Completion of Engineering Survey Work | milestone | 0d | 2017-09-29 | 2017-09-29 | P1EWCC-PWP03-3080 | 0d | 1380d | finish on 2017-09-29 |  | UW1 |  |
| P1EWCC-PWP01-3320 |  | Completion of Survey for Badgers (47+900) | milestone | 0d | 2017-11-24 | 2017-11-24 | P1EWCC-PWP01-3050 | -105.88d | 1340.12d | finish on 2017-06-30 |  | UW1 |  |
| P1EWCC-PWP01-3340 |  | Completion of Survey for GCN (47+700) | milestone | 0d | 2017-11-24 | 2017-11-24 | P1EWCC-PWP01-3050 | -105.88d | 1340.12d | finish on 2017-06-30 |  | UW1 |  |
| P1EWCC-PWP02-3890 |  | Completion of Habitat Creation (047-M2E & 047-M5W). Create Habitat - Grassland Habitat Creation | milestone | 0d | 2018-09-28 | 2018-09-28 | P1EWCC-PWP02-3820, P1EWCC-PWP02-3880 | 0d | 1121d | finish on 2018-09-28 |  | AWE1 |  |
| P1EWCC-PWP02-3900 |  | Completion of Species Translocation/ exclusion - Badgers | milestone | 0d | 2018-09-28 | 2018-09-28 | P1EWCC-PWP02-3880 | 0d | 1121d | finish on 2018-09-28 |  | AWE1 |  |
| P1EWCC-PWP02-3910 |  | Completion of Species Translocation/ exclusion - Bats | milestone | 0d | 2018-09-28 | 2018-09-28 | P1EWCC-PWP02-3880 | 0d | 1121d | finish on 2018-09-28 |  | AWE1 |  |
| P1EWCC-PWP02-3920 |  | Completion of Species Translocation/ exclusion - Great Crested Newts | milestone | 0d | 2018-09-28 | 2018-09-28 | P1EWCC-PWP02-3880 | 0d | 1121d | finish on 2018-09-28 |  | AWE1 |  |
| P1EWCC-PWP02-3930 |  | Completion of Species Translocation/ exclusion - Reptiles | milestone | 0d | 2018-09-28 | 2018-09-28 | P1EWCC-PWP02-3880 | 0d | 1121d | finish on 2018-09-28 |  | AWE1 |  |
| P1EWCC-PWP02-3940 |  | Completion of Translocation of Hedgerows | milestone | 0d | 2018-12-31 | 2018-12-31 |  | 0d | 1055d | finish on 2018-12-31 |  | AWE2 |  |
| P1EWCC-PWP06-1150 |  | Completion of Archaeology Investigation - Grims Ditch | milestone | 0d | 2018-12-31 | 2018-12-31 |  | 0d | 1054d | finish on 2018-12-31 |  | UW1 | y |
| P1EWCC-PWP02-8760 |  | Completion of Woodland Creation at Jones Hill Wood and Bowood Lane | milestone | 0d | 2019-02-28 | 2019-02-28 | P1EWCC-PWP02-8750 | -109.75d | 1011.25d | finish on 2018-09-28 |  | AWE2 |  |
| P1EWCC-FWP02-1030 |  | Completion of Noise and Vibration Works Activities - Noise Insulation and Re-Housing | milestone | 0d | 2019-03-29 | 2019-03-29 | P1EWCC-FWP02-1040 FS+129.75d | 0d | 990d | finish on 2019-03-29 |  | AWS | y |
|  | 1 | **SOW Completion Dates** |  |  |  |  |  |  |  |  |  |  |  |
|  | C2 | **C2 - North of Chiltern Tunnels To Brackley (Ch. 47750 To Ch.95340)** |  |  | 2017-02-17 | 2020-01-10 |  |  |  |  |  |  |  |
|  | 4 | **Site Clearance Works** |  |  | 2018-02-02 | 2019-03-22 |  |  |  |  |  |  |  |
| P1EWCC-PWP10-1220 |  | Design and Approval of Site clearance C2 |  | 194.62d | 2018-02-02 | 2018-11-02 | P1EWCC-PWP02-12360 | -59.5d | 0d |  |  | AWE5 | y |
| P1EWCC-AWP01-8240 |  | Planning Consent & Licensing for Site clearance C2 |  | 50d | 2018-11-02 | 2019-01-11 | P1EWCC-PWP10-1220 | -59.5d | 0d |  |  | AWE5 |  |
| P1EWCC-EWP06-7180 |  | Site Clearance for C2 |  | 50d | 2019-01-11 | 2019-03-22 | P1EWCC-AWP01-8240 | -59.5d | 0d | start on or after 2018-09-03 |  | AWE5 | y |
|  | 2 | **SOW Completion Dates** |  |  | 2019-03-22 | 2019-03-22 |  |  |  |  |  |  |  |
| P1EWCC-EWP06-7210 |  | Completion of Site clearance works for C2 | milestone | 0d | 2019-03-22 | 2019-03-22 | P1EWCC-EWP06-7180 | -59.5d | 995.5d | finish on 2018-12-31 |  | AWE5 | y |

| ID | WBS | Activity | Type | Duration | Start | Finish | Predecessors | Complete | Planned start | Planned finish | Total float | Free float | Constraint | Fusion - WPS | HS2 Filter |
| --- | --- | --- | --- | --- | --- | --- | --- | --- | --- | --- | --- | --- | --- | --- | --- |
|  | 1 | **Bucks Junction Works** |  |  | 2018-01-23 | 2019-01-15 |  |  |  |  |  |  |  |  |  |
|  | 1 | **Engineering Surveys** |  |  | 2018-01-23 | 2018-02-20 |  |  |  |  |  |  |  |  |  |
| P1EWCC-PWP03-4670 |  | Survey for Engineering (Topo, GPR, Utility, Soil) |  | 20d | 2018-01-23 | 2018-02-20 | P1EWCC-PWP01-7560 |  |  |  | -157.12d | 0d |  | DC2C |  |
|  | 2 | **Design** |  |  | 2018-02-20 | 2019-01-15 |  |  |  |  |  |  |  |  |  |
| P1EWCC-PWP09-7140 |  | Scheme Design & Approval : Bucks Junctions |  | 65d | 2018-02-20 | 2018-05-22 | P1EWCC-PWP03-4670 |  |  |  | -157.12d | 0.12d |  | DC2C | y |
| P1EWCC-PWP09-7150 |  | Detailed Design & Approval : Bucks Junctions |  | 65d | 2018-08-07 | 2018-11-06 | P1EWCC-PWP01-8010, P1EWCC-PWP09-7140 |  |  |  | -157.12d | 0d |  | DC2F | y |
| P1EWCC-AWP01-8170 |  | Schedule 17 Application for Highway Design |  | 50d | 2018-11-06 | 2019-01-15 | P1EWCC-PWP09-7150 |  |  |  | -142.25d | 0d |  | DC2F | y |
|  | 3 | **SOW Completion Dates** |  |  | 2018-02-20 | 2019-01-15 |  |  |  |  |  |  |  |  |  |
| P1EWCC-PWP03-4680 |  | Survey for Engineering (Topo, GPR, Utility, Soil) | milestone | 0d | 2018-02-20 | 2018-02-20 | P1EWCC-PWP03-4670 |  |  |  | -102d | 1278.12d | finish on 2017-09-29 | DC2C |  |
| P1EWCC-PWP09-7160 |  | Detailed Design & Approval : Bucks Junctions | milestone | 0d | 2018-11-06 | 2018-11-06 | P1EWCC-PWP09-7150 |  |  |  | -157.12d | 1093.12d | finish on 2018-03-30 | DC2F | y |
| P1EWCC-AWP01-8180 |  | Schedule 17 Application for Highway Design | milestone | 0d | 2019-01-15 | 2019-01-15 | P1EWCC-AWP01-8170 |  |  |  | -142.25d | 1043.12d | finish on 2018-06-29 | DC2F | y |
|  | C21 | **South Heath to Stoke Mandeville (Ch. 47750 to Ch. 58400)** |  |  | 2017-02-17 | 2019-11-13 |  |  |  |  |  |  |  |  |  |
|  | C211 | **South Heath (Ch. 47750 To Ch. 52530)** |  |  | 2017-03-20 | 2019-09-30 |  |  |  |  |  |  |  |  |  |
|  | 1 | **050-L1 - Wendover Dean South Embankment** |  |  | 2017-03-20 | 2019-09-30 |  |  |  |  |  |  |  |  |  |
|  | 8 | **Land Access** |  |  | 2017-06-05 | 2018-08-01 |  |  |  |  |  |  |  |  |  |
|  | 1 | **Survey Work** |  |  | 2017-06-05 | 2017-06-05 |  |  |  |  |  |  |  |  |  |
| P1EWCC-AWP01-5440 |  | Land Access Granted for Survey Work (Schedule 2) | milestone | 0d | 2017-06-05 A | 2017-06-05 A |  | 100% | 2017-07-03 | 2017-07-03 |  |  | as late as possible | AW1 | y |
|  | 2 | **Possession** |  |  | 2018-08-01 | 2018-08-01 |  |  |  |  |  |  |  |  |  |
| P1EWCC-AWP01-5460 |  | Land Access Possession Granted for Construction (Schedule 16) | milestone | 0d | 2018-08-01 | 2018-08-01 |  |  |  |  | 67.62d | 0d | as late as possible | AW1 | y |
|  | 1 | **Survey Works** |  |  | 2017-03-20 | 2018-11-23 |  |  |  |  |  |  |  |  |  |
| P1EWCC-AWP01-5420 |  | Planning Consent & Licensing for Survey Work |  | 10d | 2017-03-20 A | 2017-06-02 A | P1EWCC-AWP01-1230 | 100% | 2017-03-20 | 2017-03-31 |  |  |  | AW1 |  |
| P1EWCC-FWP01-1600 |  | Undertake Arboricultural Surveys |  | 125d | 2017-12-15 | 2018-06-08 | P1EWCC-PWP01-5610 |  |  |  | 190d | 210.5d |  | AWS | y |
|  | 1 | **Ecological & Environmental Surveys** |  |  |  |  |  |  |  |  |  |  |  |  |  |
|  | 2 | **Engineering Surveys** |  |  |  |  |  |  |  |  |  |  |  |  |  |
|  | 3 | **Historic Environment** |  |  | 2018-02-09 | 2018-11-23 |  |  |  |  |  |  |  |  |  |
| P1EWCC-PWP06-3850 |  | Non-Intrusive Surveys (geophysics) |  | 20d | 2018-02-09 | 2018-03-09 | P1EWCC-AWP01-5440, P1EWCC-PWP06-3830, P1EWCC-PWP05-240 |  |  |  | 105d | 0d |  | AWH |  |
| P1EWCC-PWP06-8940 |  | Non-Intrusive Surveys (trial trenching) |  | 30d | 2018-05-04 | 2018-06-15 | P1EWCC-PWP06-3840, P1EWCC-PWP05-240 |  |  |  | 105d | 0d |  | AWH |  |
| P1EWCC-PWP06-3900 |  | Intrusive Surveys |  | 40d | 2018-10-01 | 2018-11-23 | P1EWCC-PWP02-6530, P1EWCC-PWP06-3840, P1EWCC-PWP06-8950, P1EWCC-AWP01-5460 |  |  |  | 69.88d | 0d |  | AWH |  |

| ID | WBS | Activity | Type | Duration | Start | Finish | Predecessors | Total float | Free float | Constraint | Calendar | Fusion - WPS | HS2 Filter |
| --- | --- | --- | --- | --- | --- | --- | --- | --- | --- | --- | --- | --- | --- |
|  | 7 | **Historic Environment** |  |  | 2017-12-15 | 2019-01-11 |  |  |  |  |  |  |  |
| P1EWCC-PWP06-3830 |  | Production and Approval of Project Plan & LS-WSI (non-intrusive surveys) |  | 40d | 2017-12-15 | 2018-02-09 | P1EWCC-PWP05-240 | 105d | 0d |  |  | AWH |  |
| P1EWCC-PWP06-3840 |  | Update of Project Plans and LS-WSI and Approval (intrusive surveys) |  | 40d | 2018-03-09 | 2018-05-04 | P1EWCC-PWP06-3850 | 105d | 0d |  |  | AWH |  |
| P1EWCC-PWP06-8950 |  | Update of Project Plans and LS-WSI and Approval (intrusive surveys) |  | 40d | 2018-06-15 | 2018-08-10 | P1EWCC-PWP06-8940 | 105d | 35.12d |  |  | AWH |  |
| P1EWCC-PWP06-3880 |  | Report of Findings And Approval (Archaeological Investigation) |  | 35d | 2018-11-26 | 2019-01-11 | P1EWCC-PWP06-3900 | 1045d |  |  |  | AWH |  |
|  | 2 | **Ecological Mitigation Works** |  |  | 2018-03-01 | 2019-01-30 |  |  |  |  |  |  |  |
|  | 5 | **Translocation of Species** |  |  | 2018-08-01 | 2018-09-29 |  |  |  |  |  |  |  |
| P1EWCC-PWP02-6530 |  | Species Translocation to Habitat Creation (047-M5w) |  | 60d | 2018-08-01 | 2018-09-29 | P1EWCC-AWP01-5460, P1EWCC-PWP02-12390 SS+60d, P1EWCC-PWP02-14610 | 93.75d | 1d | start on or after 2018-08-01 | HS2 - 8h x 7d Workweek (No Holidays) | AWE1 |  |
|  | 6 | **Landscape Planting (not in AWE2)** |  |  | 2018-03-01 | 2019-01-30 |  |  |  |  |  |  |  |
|  | 1 | **Design** |  |  | 2018-03-01 | 2018-07-19 |  |  |  |  |  |  |  |
| P1EWCC-PWP02-14660 |  | Develop Scheme Design |  | 40d | 2018-03-01 | 2018-04-26 | P1EWCC-PWP02-11910 SS+5d | -109.75d | 0d |  |  | AWE2 | y |
| P1EWCC-PWP02-14690 |  | Develop Detailed Design |  | 50d | 2018-04-26 | 2018-07-05 | P1EWCC-PWP02-14660 | -109.75d | 0d |  |  | AWE2 | y |
| P1EWCC-PWP02-14680 |  | Schedule 17 Planning Consent Approval Period |  | 56d | 2018-04-27 | 2018-06-21 | P1EWCC-PWP02-14660 | 1667d |  |  | HS2 - 8h x 7d Workweek (No Holidays) | AWE2 | y |
| P1EWCC-PWP02-14670 |  | HS2 approval period of vaildated design |  | 14d | 2018-07-06 | 2018-07-19 | P1EWCC-PWP02-14690 | 74.88d | 42d |  | HS2 - 8h x 7d Workweek (No Holidays) | AWE2 | y |
|  | 2 | **Installation** |  |  | 2018-08-31 | 2019-01-30 |  |  |  |  |  |  |  |
| P1EWCC-FWP03-1430 |  | Call off of Landscape Planting | milestone | 0d | 2018-08-31 | 2018-08-31 | P1EWCC-PWP02-11910, P1EWCC-PWP02-14670 | 22.75d | 0d | as late as possible |  | AWE2 | y |
| P1EWCC-FWP03-1440 |  | Call off period for Landscape Planting |  | 64.88d | 2018-08-31 | 2018-11-29 | P1EWCC-FWP03-1430 | 22.75d | 0d | as late as possible |  | AWE2 | y |
| P1EWCC-FWP03-1420 |  | Advance Planting (not in AWE2) |  | 43.25d | 2018-11-29 | 2019-01-30 | P1EWCC-FWP03-1440, P1EWCC-AWP01-5460, P1EWCC-PWP02-6530, P1EWCC-PWP02-15070 | 22.75d | 42.88d | start on or after 2018-11-01 |  | AWE2 | y |
|  | 1 | **Translocation of Hedgerow** |  |  | 2018-11-01 | 2018-12-14 |  |  |  |  |  |  |  |
| P1EWCC-PWP02-6590 |  | Translocation of hedgerows |  | 43d | 2018-11-01 | 2018-12-14 | P1EWCC-PWP02-6530, P1EWCC-PWP02-11910, P1EWCC-AWP01-5460 | 77.62d | 108d | start on or after 2018-11-01 | HS2 - 8h x 7d Workweek (No Holidays) | AWE2 |  |
|  | 5 | **Noise and Vibration Works** |  |  |  |  |  |  |  |  |  |  |  |
|  | 4 | **SOW Completion Dates** |  |  | 2019-03-29 | 2019-09-30 |  |  |  |  |  |  |  |
| P1EWCC-FWP03-1520 |  | Completion of Advance Planting | milestone | 0d | 2019-03-29 | 2019-03-29 | P1EWCC-FWP03-1420 | 0d | 990d | finish on 2019-03-29 |  | AWE2 | y |
| P1EWCC-PWP02-6550 |  | Completion of Species Translocation/ exclusion - Badgers | milestone | 0d | 2019-09-30 | 2019-09-30 | P1EWCC-PWP02-6530 | 0d | 860d | finish on 2019-09-30 |  | AWE1 |  |
| P1EWCC-PWP02-6560 |  | Completion of Species Translocation/ exclusion - Bats | milestone | 0d | 2019-09-30 | 2019-09-30 | P1EWCC-PWP02-6530 | 0d | 860d | finish on 2019-09-30 |  | AWE1 |  |
| P1EWCC-PWP02-6570 |  | Completion of Translocation of hedgerows | milestone | 0d | 2019-09-30 | 2019-09-30 | P1EWCC-PWP02-6590 | 0d | 860d | finish on 2019-09-30 |  | AWE2 |  |
| P1EWCC-PWP02-6580 |  | Completion of Species Translocation/ exclusion - Reptiles | milestone | 0d | 2019-09-30 | 2019-09-30 | P1EWCC-PWP02-6530 | 0d | 860d | finish on 2019-09-30 |  | AWE1 |  |

| ID | WBS | Activity | Type | Duration | Start | Finish | Predecessors | Complete | Planned start | Planned finish | Total float | Free float | Constraint | HS2 Filter | Fusion - WPS |
| --- | --- | --- | --- | --- | --- | --- | --- | --- | --- | --- | --- | --- | --- | --- | --- |
|  | 2 | **050-L2 - Wendover Dean Viaduct** |  |  | 2017-03-20 | 2019-09-30 |  |  |  |  |  |  |  |  |  |
|  | 8 | **Land Access** |  |  | 2017-06-12 | 2018-08-01 |  |  |  |  |  |  |  |  |  |
|  | 1 | **Survey Work** |  |  | 2017-06-12 | 2017-06-12 |  |  |  |  |  |  |  |  |  |
| P1EWCC-AWP01-5480 |  | Land Access Granted for Survey Work (Schedule 2) | milestone | 0d | 2017-06-12 A | 2017-06-12 A |  | 100% | 2017-07-24 | 2017-07-24 |  |  | as late as possible | y | AW1 |
|  | 2 | **Possession** |  |  | 2018-08-01 | 2018-08-01 |  |  |  |  |  |  |  |  |  |
| P1EWCC-AWP01-5490 |  | Land Access Possession Granted for Construction (Schedule 16) | milestone | 0d | 2018-08-01 | 2018-08-01 |  |  |  |  | 69d | 0d | as late as possible | y | AW1 |
|  | 1 | **Survey Works** |  |  | 2017-03-20 | 2018-11-23 |  |  |  |  |  |  |  |  |  |
| P1EWCC-AWP01-5470 |  | Planning Consent & Licensing for Survey Work |  | 10d | 2017-03-20 A | 2017-06-09 A | P1EWCC-AWP01-1230 | 100% | 2017-03-20 | 2017-03-31 |  |  |  |  | AW1 |
| P1EWCC-FWP01-1640 |  | Undertake Arboricultural Surveys |  | 125d | 2017-12-15 | 2018-06-08 | P1EWCC-PWP01-5610 |  |  |  | 190d | 210.5d |  | y | AWS |
| P1EWCC-FWP01-1650 |  | Undertake Remaining Ecology & Environmental Surveys |  | 137d | 2017-12-15 | 2018-06-26 | P1EWCC-PWP01-5610 |  |  |  | 178d | 198.5d |  | y | AWS |
| P1EWCC-AWP01-5840 |  | Planning Consent & Licensing for Demolition Survey Work |  | 64.88d | 2018-01-29 | 2018-04-27 | P1EWCC-AWP01-1230 |  |  |  | 85.12d | 0d | as late as possible |  | AW1 |
|  | 1 | **Ecological & Environmental Surveys** |  |  | 2017-06-12 | 2017-06-30 |  |  |  |  |  |  |  |  |  |
| P1EWCC-PWP01-3480 |  | Survey for Badgers, Bats, GCN & Reptiles |  | 10d | 2017-06-12 A | 2017-06-30 A | P1EWCC-AWP01-5470, P1EWCC-AWP01-5480 | 100% | 2017-07-24 | 2017-08-04 |  |  |  |  | UW1 |
|  | 2 | **Engineering Surveys** |  |  |  |  |  |  |  |  |  |  |  |  |  |
|  | 4 | **Demoltion Surveys** |  |  | 2018-04-27 | 2018-05-11 |  |  |  |  |  |  |  |  |  |
| P1EWCC-FWP03-3750 |  | Pre-Demolition Survey for Farmstead at Durham Farm (Heritage) |  | 10d | 2018-04-27 | 2018-05-11 | P1EWCC-FWP03-5070, P1EWCC-AWP01-5840, P1EWCC-PWP01-5610 |  |  |  | 85.12d | 0d |  |  | AWS |
|  | 3 | **Historic Environment** |  |  | 2018-02-09 | 2018-11-23 |  |  |  |  |  |  |  |  |  |
| P1EWCC-PWP06-3940 |  | Non-Intrusive Surveys (geophysics) |  | 20d | 2018-02-09 | 2018-03-09 | P1EWCC-AWP01-5480, P1EWCC-PWP06-3920, P1EWCC-PWP05-240 |  |  |  | 105d | 0d |  |  | AWH |
| P1EWCC-PWP06-8960 |  | Non-Intrusive Surveys (trial trenching) |  | 30d | 2018-05-04 | 2018-06-15 | P1EWCC-PWP06-3930, P1EWCC-PWP05-240 |  |  |  | 105d | 0d |  |  | AWH |
| P1EWCC-PWP06-3960 |  | Intrusive Surveys |  | 40d | 2018-10-01 | 2018-11-23 | P1EWCC-PWP06-3930, P1EWCC-PWP02-6600, P1EWCC-PWP06-8970, P1EWCC-AWP01-5490 |  |  |  | 69.88d | 0d |  |  | AWH |
|  | 7 | **Historic Environment** |  |  | 2017-12-15 | 2019-01-11 |  |  |  |  |  |  |  |  |  |
| P1EWCC-PWP06-3920 |  | Production and Approval of Project Plan & LS-WSI (non-intrusive surveys) |  | 40d | 2017-12-15 | 2018-02-09 | P1EWCC-PWP05-240 |  |  |  | 105d | 0d |  |  | AWH |
| P1EWCC-PWP06-3930 |  | Update of Project Plans and LS-WSI and Approval (intrusive surveys) |  | 40d | 2018-03-09 | 2018-05-04 | P1EWCC-PWP06-3940 |  |  |  | 105d | 0d |  |  | AWH |
| P1EWCC-PWP06-8970 |  | Update of Project Plans and LS-WSI and Approval (intrusive surveys) |  | 40d | 2018-06-15 | 2018-08-10 | P1EWCC-PWP06-8960 |  |  |  | 105d | 35.12d |  |  | AWH |
| P1EWCC-PWP06-3950 |  | Report of Findings And Approval (Archaeological Investigation) |  | 35d | 2018-11-26 | 2019-01-11 | P1EWCC-PWP06-3960 |  |  |  | 1045d |  |  |  | AWH |

| ID | WBS | Activity | Type | Duration | Start | Finish | Predecessors | Complete | Planned start | Planned finish | Total float | Free float | Constraint | Calendar | Fusion - WPS | HS2 Filter |
| --- | --- | --- | --- | --- | --- | --- | --- | --- | --- | --- | --- | --- | --- | --- | --- | --- |
|  | 3 | **Demolition** |  |  | 2017-12-15 | 2018-06-01 |  |  |  |  |  |  |  |  |  |  |
| P1EWCC-FWP03-5070 |  | Prepare Investigation Plans for Scoping and Planning Demolitions inc Approval at Farmstead at Durham Farm (Heritage) |  | 95d | 2017-12-15 | 2018-04-27 | P1EWCC-PWP01-5610 |  |  |  | 90d | 0d | as late as possible |  | AWS |  |
| P1EWCC-FWP03-5080 |  | Report on Demoliton Surveys and Approval at Farmstead at Durham Farm (Heritage) |  | 15d | 2018-05-11 | 2018-06-01 | P1EWCC-FWP03-3750, P1EWCC-PWP01-5610 |  |  |  | 85.12d |  |  |  | AWS |  |
|  | 2 | **Ecological Mitigation Works** |  |  | 2018-08-01 | 2018-12-14 |  |  |  |  |  |  |  |  |  |  |
|  | 5 | **Translocation of Species** |  |  | 2018-08-01 | 2018-09-29 |  |  |  |  |  |  |  |  |  |  |
| P1EWCC-PWP02-6600 |  | Species Translocation to Habitat Creation (047-M5w) |  | 60d | 2018-08-01 | 2018-09-29 | P1EWCC-AWP01-5490, P1EWCC-PWP01-3480, P1EWCC-PWP02-12390 SS+60d, P1EWCC-PWP02-14610 |  |  |  | 97d | 1d | start on or after 2018-08-01 | HS2 - 8h x 7d Workweek (No Holidays) | AWE1 |  |
|  | 1 | **Translocation of Hedgerow** |  |  | 2018-11-01 | 2018-12-14 |  |  |  |  |  |  |  |  |  |  |
| P1EWCC-PWP02-6650 |  | Translocation of hedgerows |  | 43d | 2018-11-01 | 2018-12-14 | P1EWCC-PWP02-6600, P1EWCC-PWP02-11910, P1EWCC-AWP01-5490 |  |  |  | 77.62d | 108d | start on or after 2018-11-01 | HS2 - 8h x 7d Workweek (No Holidays) | AWE2 |  |
|  | 5 | **Noise and Vibration Works** |  |  |  |  |  |  |  |  |  |  |  |  |  |  |
|  | 4 | **SOW Completion Dates** |  |  | 2018-09-28 | 2019-09-30 |  |  |  |  |  |  |  |  |  |  |
| P1EWCC-FWP03-5090 |  | Completion of Report on Demoliton Surveys and Approval | milestone | 0d | 2018-09-28 | 2018-09-28 | P1EWCC-FWP03-5080 |  |  |  | 0d | 1120d | finish on 2018-09-28 |  | AWS |  |
| P1EWCC-PWP02-6610 |  | Completion of Species Translocation/ exclusion - Badgers | milestone | 0d | 2019-09-30 | 2019-09-30 | P1EWCC-PWP02-6600 |  |  |  | 0d | 860d | finish on 2019-09-30 |  | AWE1 |  |
| P1EWCC-PWP02-6620 |  | Completion of Species Translocation/ exclusion - Bats | milestone | 0d | 2019-09-30 | 2019-09-30 | P1EWCC-PWP02-6600 |  |  |  | 0d | 860d | finish on 2019-09-30 |  | AWE1 |  |
| P1EWCC-PWP02-6630 |  | Completion of Translocation of hedgerows | milestone | 0d | 2019-09-30 | 2019-09-30 | P1EWCC-PWP02-6650 |  |  |  | 0d | 860d | finish on 2019-09-30 |  | AWE2 |  |
| P1EWCC-PWP02-6640 |  | Completion of Species Translocation/ exclusion - Reptiles | milestone | 0d | 2019-09-30 | 2019-09-30 | P1EWCC-PWP02-6600 |  |  |  | 0d | 860d | finish on 2019-09-30 |  | AWE1 |  |
|  | 3 | **051-L1 - Wendover Dean North Embankment** |  |  | 2017-03-20 | 2019-09-30 |  |  |  |  |  |  |  |  |  |  |
|  | 8 | **Land Access** |  |  | 2017-04-17 | 2018-08-01 |  |  |  |  |  |  |  |  |  |  |
|  | 1 | **Survey Work** |  |  | 2017-04-17 | 2017-04-17 |  |  |  |  |  |  |  |  |  |  |
| P1EWCC-AWP01-5510 |  | Land Access Granted for Survey Work (Schedule 2) | milestone | 0d | 2017-04-17 A | 2017-04-17 A |  | 100% | 2017-07-24 | 2017-07-24 |  |  | as late as possible |  | AW1 | y |
|  | 2 | **Possession** |  |  | 2018-08-01 | 2018-08-01 |  |  |  |  |  |  |  |  |  |  |
| P1EWCC-AWP01-5520 |  | Land Access Possession Granted for Construction (Schedule 16) | milestone | 0d | 2018-08-01 | 2018-08-01 |  |  |  |  | 69d | 0d | as late as possible |  | AW1 | y |
|  | 1 | **Survey Works** |  |  | 2017-03-20 | 2018-11-23 |  |  |  |  |  |  |  |  |  |  |
| P1EWCC-AWP01-5500 |  | Planning Consent & Licensing for Survey Work |  | 10d | 2017-03-20 A | 2017-04-14 A | P1EWCC-AWP01-1230 | 100% | 2017-03-20 | 2017-03-31 |  |  |  |  | AW1 |  |
| P1EWCC-FWP01-1680 |  | Undertake Arboricultural Surveys |  | 125d | 2017-12-15 | 2018-06-08 | P1EWCC-PWP01-5610 |  |  |  | 190d | 210.5d |  |  | AWS | y |
| P1EWCC-FWP01-1690 |  | Undertake Remaining Ecology & Environmental Surveys |  | 137d | 2017-12-15 | 2018-06-26 | P1EWCC-PWP01-5610 |  |  |  | 178d | 198.5d |  |  | AWS | y |

| ID | WBS | Activity | Type | Duration | Start | Finish | Predecessors | Total float | Free float | Constraint | Calendar | Fusion - WPS | HS2 Filter |
| --- | --- | --- | --- | --- | --- | --- | --- | --- | --- | --- | --- | --- | --- |
|  | 1 | **Ecological & Environmental Surveys** |  |  |  |  |  |  |  |  |  |  |  |
|  | 2 | **Engineering Surveys** |  |  |  |  |  |  |  |  |  |  |  |
|  | 3 | **Historic Environment** |  |  | 2018-02-09 | 2018-11-23 |  |  |  |  |  |  |  |
| P1EWCC-PWP06-4000 |  | Non-Intrusive Surveys (geophysics) |  | 20d | 2018-02-09 | 2018-03-09 | P1EWCC-PWP06-3980, P1EWCC-AWP01-5510, P1EWCC-PWP05-240 | 105d | 0d |  |  | AWH |  |
| P1EWCC-PWP06-8980 |  | Non-Intrusive Surveys (trial trenching) |  | 30d | 2018-05-04 | 2018-06-15 | P1EWCC-PWP06-3990, P1EWCC-PWP05-240 | 105d | 0d |  |  | AWH |  |
| P1EWCC-PWP06-4020 |  | Intrusive Surveys |  | 40d | 2018-10-01 | 2018-11-23 | P1EWCC-PWP06-3990, P1EWCC-PWP02-6660, P1EWCC-PWP06-8990, P1EWCC-AWP01-5520 | 69.88d | 0d |  |  | AWH |  |
|  | 7 | **Historic Environment** |  |  | 2017-12-15 | 2019-01-11 |  |  |  |  |  |  |  |
| P1EWCC-PWP06-3980 |  | Production and Approval of Proejct Plans & LS-WSI (non-intrusive surveys) |  | 40d | 2017-12-15 | 2018-02-09 | P1EWCC-PWP05-240 | 105d | 0d |  |  | AWH |  |
| P1EWCC-PWP06-3990 |  | Update of Project Plans and LS-WSI and Approval (intrusive surveys) |  | 40d | 2018-03-09 | 2018-05-04 | P1EWCC-PWP06-4000 | 105d | 0d |  |  | AWH |  |
| P1EWCC-PWP06-8990 |  | Update of Project Plans and LS-WSI and Approval (intrusive surveys) |  | 40d | 2018-06-15 | 2018-08-10 | P1EWCC-PWP06-8980 | 105d | 35.12d |  |  | AWH |  |
| P1EWCC-PWP06-4010 |  | Report of Findings And Approval (Archaeological Investigation) |  | 35d | 2018-11-26 | 2019-01-11 | P1EWCC-PWP06-4020 | 1045d |  |  |  | AWH |  |
|  | 2 | **Ecological Mitigation Works** |  |  | 2018-08-01 | 2018-09-29 |  |  |  |  |  |  |  |
|  | 5 | **Translocation of Species** |  |  | 2018-08-01 | 2018-09-29 |  |  |  |  |  |  |  |
| P1EWCC-PWP02-6660 |  | Species Translocation to Habitat Creation (047-M5w) |  | 60d | 2018-08-01 | 2018-09-29 | P1EWCC-AWP01-5520, P1EWCC-PWP02-12390 SS+60d, P1EWCC-PWP02-14610 | 97d | 1d | start on or after 2018-08-01 | HS2 - 8h x 7d Workweek (No Holidays) | AWE1 |  |
|  | 5 | **Noise and Vibration Works** |  |  |  |  |  |  |  |  |  |  |  |
|  | 4 | **SOW Completion Dates** |  |  | 2019-09-30 | 2019-09-30 |  |  |  |  |  |  |  |
| P1EWCC-PWP02-6670 |  | Completion of Species Translocation/ exclusion - Badgers | milestone | 0d | 2019-09-30 | 2019-09-30 | P1EWCC-PWP02-6660 | 0d | 860d | finish on 2019-09-30 |  | AWE1 |  |
| P1EWCC-PWP02-6680 |  | Completion of Species Translocation/ exclusion - Bats | milestone | 0d | 2019-09-30 | 2019-09-30 | P1EWCC-PWP02-6660 | 0d | 860d | finish on 2019-09-30 |  | AWE1 |  |
| P1EWCC-PWP02-6700 |  | Completion of Species Translocation/ exclusion - Reptiles | milestone | 0d | 2019-09-30 | 2019-09-30 | P1EWCC-PWP02-6660 | 0d | 860d | finish on 2019-09-30 |  | AWE1 |  |
|  | 4 | **051-L2 - Rocky Lane Cutting** |  |  | 2017-03-20 | 2019-09-30 |  |  |  |  |  |  |  |
|  | 8 | **Land Access** |  |  | 2018-02-09 | 2018-08-01 |  |  |  |  |  |  |  |
|  | 1 | **Survey Work** |  |  | 2018-02-09 | 2018-02-09 |  |  |  |  |  |  |  |
| P1EWCC-AWP01-5540 |  | Land Access Granted for Survey Work (Schedule 2) | milestone | 0d | 2018-02-09 | 2018-02-09 |  | 105d | 0d | as late as possible |  | AW1 | y |
|  | 2 | **Possession** |  |  | 2018-08-01 | 2018-08-01 |  |  |  |  |  |  |  |
| P1EWCC-AWP01-5550 |  | Land Access Possession Granted for Construction (Schedule 16) | milestone | 0d | 2018-08-01 | 2018-08-01 |  | 69d | 0d | as late as possible |  | AW1 | y |

| ID | WBS | Activity | Type | Duration | Start | Finish | Predecessors | Complete | Planned start | Planned finish | Total float | Free float | Constraint | Calendar | Fusion - WPS | HS2 Filter |
| --- | --- | --- | --- | --- | --- | --- | --- | --- | --- | --- | --- | --- | --- | --- | --- | --- |
|  | 1 | **Survey Works** |  |  | 2017-03-20 | 2018-11-23 |  |  |  |  |  |  |  |  |  |  |
| P1EWCC-AWP01-5530 |  | Planning Consent & Licensing for Survey Work |  | 10d | 2017-03-20 A | 2017-06-23 A | P1EWCC-AWP01-1230 | 100% | 2017-03-20 | 2017-03-31 |  |  |  |  | AW1 |  |
| P1EWCC-FWP01-1710 |  | Undertake Remaining Soil Surveys |  | 120d | 2017-12-15 | 2018-06-01 | P1EWCC-PWP01-5610 |  |  |  | 195d | 215.5d |  |  | AWS | y |
| P1EWCC-FWP01-1720 |  | Undertake Arboricultural Surveys |  | 125d | 2017-12-15 | 2018-06-08 | P1EWCC-PWP01-5610 |  |  |  | 190d | 210.5d |  |  | AWS | y |
| P1EWCC-FWP01-1730 |  | Undertake Remaining Ecology & Environmental Surveys |  | 137d | 2017-12-15 | 2018-06-26 | P1EWCC-PWP01-5610 |  |  |  | 178d | 198.5d |  |  | AWS | y |
|  | 1 | **Ecological & Environmental Surveys** |  |  |  |  |  |  |  |  |  |  |  |  |  |  |
|  | 2 | **Engineering Surveys** |  |  |  |  |  |  |  |  |  |  |  |  |  |  |
|  | 3 | **Historic Environment** |  |  | 2018-02-09 | 2018-11-23 |  |  |  |  |  |  |  |  |  |  |
| P1EWCC-PWP06-4060 |  | Non-Intrusive Surveys (geophysics) |  | 20d | 2018-02-09 | 2018-03-09 | P1EWCC-PWP06-4040, P1EWCC-AWP01-5540, P1EWCC-PWP05-240 |  |  |  | 105d | 0d |  |  | AWH |  |
| P1EWCC-PWP06-9000 |  | Non-Intrusive Surveys (trial trenching) |  | 30d | 2018-05-04 | 2018-06-15 | P1EWCC-PWP06-4050, P1EWCC-PWP05-240 |  |  |  | 105d | 0d |  |  | AWH |  |
| P1EWCC-PWP06-4080 |  | Intrusive Surveys |  | 40d | 2018-10-01 | 2018-11-23 | P1EWCC-PWP06-4050, P1EWCC-PWP02-6710, P1EWCC-PWP06-9010, P1EWCC-AWP01-5550 |  |  |  | 69.88d | 0d |  |  | AWH |  |
|  | 7 | **Historic Environment** |  |  | 2017-12-15 | 2019-01-11 |  |  |  |  |  |  |  |  |  |  |
| P1EWCC-PWP06-4040 |  | Production and Approval of Project Plans & LS-WSI (non-intrusive surveys) |  | 40d | 2017-12-15 | 2018-02-09 | P1EWCC-PWP05-240 |  |  |  | 105d | 0d |  |  | AWH |  |
| P1EWCC-PWP06-4050 |  | Update of Project Plans and LS-WSI and Approval (intrusive surveys) |  | 40d | 2018-03-09 | 2018-05-04 | P1EWCC-PWP06-4060 |  |  |  | 105d | 0d |  |  | AWH |  |
| P1EWCC-PWP06-9010 |  | Update of Project Plans and LS-WSI and Approval (intrusive surveys) |  | 40d | 2018-06-15 | 2018-08-10 | P1EWCC-PWP06-9000 |  |  |  | 105d | 35.12d |  |  | AWH |  |
| P1EWCC-PWP06-4070 |  | Report of Findings And Approval (Archaeological Investigation) |  | 35d | 2018-11-26 | 2019-01-11 | P1EWCC-PWP06-4080 |  |  |  | 1045d |  |  |  | AWH |  |
|  | 2 | **Ecological Mitigation Works** |  |  | 2018-08-01 | 2018-09-29 |  |  |  |  |  |  |  |  |  |  |
|  | 5 | **Translocation of Species** |  |  | 2018-08-01 | 2018-09-29 |  |  |  |  |  |  |  |  |  |  |
| P1EWCC-PWP02-6710 |  | Species Translocation to Habitat Creation (047-M5w) |  | 60d | 2018-08-01 | 2018-09-29 | P1EWCC-AWP01-5550, P1EWCC-PWP02-12390 SS+60d, P1EWCC-PWP02-14610 |  |  |  | 97d | 1d | start on or after 2018-08-01 | HS2 - 8h x 7d Workweek (No Holidays) | AWE1 |  |
|  | 5 | **Noise and Vibration Works** |  |  |  |  |  |  |  |  |  |  |  |  |  |  |
|  | 4 | **SOW Completion Dates** |  |  | 2019-09-30 | 2019-09-30 |  |  |  |  |  |  |  |  |  |  |
| P1EWCC-PWP02-6720 |  | Completion of Species Translocation/ exclusion - Badgers | milestone | 0d | 2019-09-30 | 2019-09-30 | P1EWCC-PWP02-6710 |  |  |  | 0d | 860d | finish on 2019-09-30 |  | AWE1 |  |
| P1EWCC-PWP02-6730 |  | Completion of Species Translocation/ exclusion - Bats | milestone | 0d | 2019-09-30 | 2019-09-30 | P1EWCC-PWP02-6710 |  |  |  | 0d | 860d | finish on 2019-09-30 |  | AWE1 |  |
| P1EWCC-PWP02-6740 |  | Completion of Species Translocation/ exclusion - Reptiles | milestone | 0d | 2019-09-30 | 2019-09-30 | P1EWCC-PWP02-6710 |  |  |  | 0d | 860d | finish on 2019-09-30 |  | AWE1 |  |
| P1EWCC-PWP02-6750 |  | Completion of Species Translocation/ exclusion - GCN | milestone | 0d | 2019-09-30 | 2019-09-30 | P1EWCC-PWP02-6710 |  |  |  | 0d | 860d | finish on 2019-09-30 |  | AWE1 |  |

| ID | WBS | Activity | Type | Duration | Start | Finish | Predecessors | Complete | Planned start | Planned finish | Total float | Free float | Constraint | HS2 Filter | Fusion - WPS |
| --- | --- | --- | --- | --- | --- | --- | --- | --- | --- | --- | --- | --- | --- | --- | --- |
|  | 5 | **051-L3 - Small Dean South Embankment** |  |  | 2017-03-20 | 2019-09-30 |  |  |  |  |  |  |  |  |  |
|  | 8 | **Land Access** |  |  | 2017-04-17 | 2018-08-01 |  |  |  |  |  |  |  |  |  |
|  | 1 | **Survey Work** |  |  | 2017-04-17 | 2017-04-17 |  |  |  |  |  |  |  |  |  |
| P1EWCC-AWP01-5570 |  | Land Access Granted for Survey Work (Schedule 2) | milestone | 0d | 2017-04-17 A | 2017-04-17 A |  | 100% | 2017-04-03 | 2017-04-03 |  |  | as late as possible | y | AW1 |
|  | 2 | **Possession** |  |  | 2018-08-01 | 2018-08-01 |  |  |  |  |  |  |  |  |  |
| P1EWCC-AWP01-5580 |  | Land Access Possession Granted for Construction (Schedule 16) | milestone | 0d | 2018-08-01 | 2018-08-01 |  |  |  |  | 69d | 0d | as late as possible | y | AW1 |
|  | 6 | **Survey Works** |  |  | 2017-03-20 | 2018-11-23 |  |  |  |  |  |  |  |  |  |
| P1EWCC-AWP01-5560 |  | Planning Consent & Licensing for Survey Work |  | 10d | 2017-03-20 A | 2017-04-14 A | P1EWCC-AWP01-1230 | 100% | 2017-03-20 | 2017-03-31 |  |  |  |  | AW1 |
| P1EWCC-FWP01-1750 |  | Undertake Remaining Soil Surveys |  | 120d | 2017-12-15 | 2018-06-01 | P1EWCC-PWP01-5610 |  |  |  | 195d | 215.5d |  | y | AWS |
| P1EWCC-FWP01-1760 |  | Undertake Arboricultural Surveys |  | 125d | 2017-12-15 | 2018-06-08 | P1EWCC-PWP01-5610 |  |  |  | 190d | 210.5d |  | y | AWS |
| P1EWCC-AWP01-8410 |  | Planning Consent & Licensing for Demolition Survey Work |  | 64.88d | 2018-01-29 | 2018-04-27 |  |  |  |  | 85.12d | 0d | as late as possible |  | AW1 |
|  | 1 | **Ecological & Environmental Surveys** |  |  | 2017-04-17 | 2017-07-21 |  |  |  |  |  |  |  |  |  |
| P1EWCC-PWP01-3510 |  | Survey for Badgers, Bats, GCN & Reptiles |  | 25d | 2017-04-17 A | 2017-07-21 A | P1EWCC-AWP01-5570, P1EWCC-AWP01-5560 | 100% | 2017-04-03 | 2017-05-05 |  |  |  |  | UW1 |
|  | 2 | **Engineering Surveys** |  |  |  |  |  |  |  |  |  |  |  |  |  |
|  | 4 | **Demoltion Surveys** |  |  | 2018-04-27 | 2018-05-11 |  |  |  |  |  |  |  |  |  |
| P1EWCC-FWP03-5170 |  | Pre-Demolition Survey for Farmstead at Road Barn Farm (Heritage) |  | 10d | 2018-04-27 | 2018-05-11 | P1EWCC-FWP03-5180, P1EWCC-PWP01-5610, P1EWCC-AWP01-8410 |  |  |  | 85.12d | 0d |  |  | AWS |
|  | 3 | **Historic Environment** |  |  | 2018-02-09 | 2018-11-23 |  |  |  |  |  |  |  |  |  |
| P1EWCC-PWP06-4120 |  | Non-Intrusive Surveys (geophysics) |  | 20d | 2018-02-09 | 2018-03-09 | P1EWCC-PWP06-4100, P1EWCC-AWP01-5570, P1EWCC-PWP05-240 |  |  |  | 105d | 0d |  |  | AWH |
| P1EWCC-PWP06-9020 |  | Non-Intrusive Surveys (trial trenching) |  | 30d | 2018-05-04 | 2018-06-15 | P1EWCC-PWP06-4110, P1EWCC-PWP05-240 |  |  |  | 105d | 0d |  |  | AWH |
| P1EWCC-PWP06-4140 |  | Intrusive Surveys |  | 40d | 2018-10-01 | 2018-11-23 | P1EWCC-PWP06-4110, P1EWCC-PWP02-6760, P1EWCC-PWP06-9030, P1EWCC-AWP01-5580 |  |  |  | 69.88d | 0d |  |  | AWH |
|  | 7 | **Historic Environment** |  |  | 2017-12-15 | 2019-01-11 |  |  |  |  |  |  |  |  |  |
| P1EWCC-PWP06-4100 |  | Production and Approval of Project Plans & LS-WSI (non-intrusive surveys) |  | 40d | 2017-12-15 | 2018-02-09 | P1EWCC-PWP05-240 |  |  |  | 105d | 0d |  |  | AWH |
| P1EWCC-PWP06-4110 |  | Update of Project Plans and LS-WSI and Approval (intrusive surveys) |  | 40d | 2018-03-09 | 2018-05-04 | P1EWCC-PWP06-4120 |  |  |  | 105d | 0d |  |  | AWH |
| P1EWCC-PWP06-9030 |  | Update of Project Plans and LS-WSI and Approval (intrusive surveys) |  | 40d | 2018-06-15 | 2018-08-10 | P1EWCC-PWP06-9020 |  |  |  | 105d | 35.12d |  |  | AWH |
| P1EWCC-PWP06-4130 |  | Report of Findings And Approval (Archaeological Investigation) |  | 35d | 2018-11-26 | 2019-01-11 | P1EWCC-PWP06-4140 |  |  |  | 1045d |  |  |  | AWH |

| ID | WBS | Activity | Type | Duration | Start | Finish | Predecessors | Complete | Planned start | Planned finish | Total float | Free float | Constraint | Calendar | Fusion - WPS | HS2 Filter |
| --- | --- | --- | --- | --- | --- | --- | --- | --- | --- | --- | --- | --- | --- | --- | --- | --- |
|  | 3 | **Demolition** |  |  | 2017-12-15 | 2018-06-01 |  |  |  |  |  |  |  |  |  |  |
| P1EWCC-FWP03-5180 |  | Prepare Investigation Plans for Scoping and Planning Demolitions inc Approval at Farmstead at Road Barn Farm (Heritage) |  | 95d | 2017-12-15 | 2018-04-27 | P1EWCC-PWP01-5610 |  |  |  | 90d | 0d | as late as possible |  | AWS |  |
| P1EWCC-FWP03-5190 |  | Report on Demoliton Surveys and Approval at Farmstead at Road Barn Farm (Heritage) |  | 15d | 2018-05-11 | 2018-06-01 | P1EWCC-FWP03-5170, P1EWCC-PWP01-5610 |  |  |  | 85.12d |  |  |  | AWS |  |
|  | 2 | **Ecological Mitigation Works** |  |  | 2018-08-01 | 2018-12-14 |  |  |  |  |  |  |  |  |  |  |
|  | 5 | **Translocation of Species** |  |  | 2018-08-01 | 2018-09-29 |  |  |  |  |  |  |  |  |  |  |
| P1EWCC-PWP02-6760 |  | Species Translocation to Habitat Creation (047-M5w) |  | 60d | 2018-08-01 | 2018-09-29 | P1EWCC-PWP01-3510, P1EWCC-AWP01-5580, P1EWCC-PWP02-12390 SS+60d, P1EWCC-PWP02-14610 |  |  |  | 97d | 1d | start on or after 2018-08-01 | HS2 - 8h x 7d Workweek (No Holidays) | AWE1 |  |
|  | 1 | **Translocation of Hedgerow** |  |  | 2018-11-01 | 2018-12-14 |  |  |  |  |  |  |  |  |  |  |
| P1EWCC-PWP02-6810 |  | Translocation of hedgerows |  | 43d | 2018-11-01 | 2018-12-14 | P1EWCC-PWP02-6760, P1EWCC-PWP02-11910, P1EWCC-AWP01-5580 |  |  |  | 77.62d | 108d | start on or after 2018-11-01 | HS2 - 8h x 7d Workweek (No Holidays) | AWE2 |  |
|  | 5 | **Noise and Vibration Works** |  |  |  |  |  |  |  |  |  |  |  |  |  |  |
|  | 4 | **SOW Completion Dates** |  |  | 2017-09-18 | 2019-09-30 |  |  |  |  |  |  |  |  |  |  |
| P1EWCC-PWP01-2620 |  | Completion of Survey for Badgers (52+000) | milestone | 0d | 2017-09-18 | 2017-09-18 | P1EWCC-PWP01-3510 |  |  |  | -56d | 1390d | finish on 2017-06-30 |  | UW1 |  |
| P1EWCC-FWP03-5200 |  | Completion of Report on Demoliton Surveys and Approval | milestone | 0d | 2018-09-28 | 2018-09-28 | P1EWCC-FWP03-5190 |  |  |  | 0d | 1120d | finish on 2018-09-28 |  | AWS |  |
| P1EWCC-PWP02-6770 |  | Completion of Species Translocation/ exclusion - Badgers | milestone | 0d | 2019-09-30 | 2019-09-30 | P1EWCC-PWP02-6760 |  |  |  | 0d | 860d | finish on 2019-09-30 |  | AWE1 |  |
| P1EWCC-PWP02-6780 |  | Completion of Species Translocation/ exclusion - Bats | milestone | 0d | 2019-09-30 | 2019-09-30 | P1EWCC-PWP02-6760 |  |  |  | 0d | 860d | finish on 2019-09-30 |  | AWE1 |  |
| P1EWCC-PWP02-6790 |  | Completion of Translocation of hedgerows | milestone | 0d | 2019-09-30 | 2019-09-30 | P1EWCC-PWP02-6810 |  |  |  | 0d | 860d | finish on 2019-09-30 |  | AWE1 |  |
| P1EWCC-PWP02-6800 |  | Completion of Species Translocation/ exclusion - Reptiles | milestone | 0d | 2019-09-30 | 2019-09-30 | P1EWCC-PWP02-6760 |  |  |  | 0d | 860d | finish on 2019-09-30 |  | AWE1 |  |
| P1EWCC-PWP02-6820 |  | Completion of Species Translocation/ exclusion - GCN | milestone | 0d | 2019-09-30 | 2019-09-30 | P1EWCC-PWP02-6760 |  |  |  | 0d | 860d | finish on 2019-09-30 |  | AWE1 |  |
|  | C212 | **Wendover (Ch. 52530 To Ch. 55005)** |  |  | 2017-03-20 | 2019-09-30 |  |  |  |  |  |  |  |  |  |  |
|  | 1 | **052-L1 - Small Dean Viaduct** |  |  | 2017-03-20 | 2019-09-30 |  |  |  |  |  |  |  |  |  |  |
|  | 8 | **Land Access** |  |  | 2017-05-22 | 2018-08-30 |  |  |  |  |  |  |  |  |  |  |
|  | 1 | **Survey Work** |  |  | 2017-05-22 | 2017-05-22 |  |  |  |  |  |  |  |  |  |  |
| P1EWCC-AWP01-5600 |  | Land Access Granted for Survey Work (Schedule 2) | milestone | 0d | 2017-05-22 A | 2017-05-22 A |  | 100% | 2017-04-03 | 2017-04-03 |  |  | as late as possible |  | AW1 | y |
|  | 2 | **Possession** |  |  | 2018-08-30 | 2018-08-30 |  |  |  |  |  |  |  |  |  |  |
| P1EWCC-AWP01-5610 |  | Land Access Possession Granted for Construction (Schedule 16) | milestone | 0d | 2018-08-30 | 2018-08-30 |  |  |  |  | 48d | 0d | as late as possible |  | AW1 | y |

| ID | WBS | Activity | Duration | Start | Finish | Predecessors | Complete | Remaining | Planned start | Planned finish | Total float | Free float | Constraint | Expected finish | Calendar | Fusion - WPS | HS2 Filter |
| --- | --- | --- | --- | --- | --- | --- | --- | --- | --- | --- | --- | --- | --- | --- | --- | --- | --- |
|  | 6 | **Survey Works** |  | 2017-03-20 | 2018-12-21 |  |  |  |  |  |  |  |  |  |  |  |  |
| P1EWCC-AWP01-5590 |  | Planning Consent & Licensing for Survey Work | 10d | 2017-03-20 A | 2017-05-19 A | P1EWCC-AWP01-1230 | 100% |  | 2017-03-20 | 2017-03-31 |  |  |  |  |  | AW1 |  |
| P1EWCC-FWP01-1790 |  | Undertake Remaining Soil Surveys | 120d | 2017-12-15 | 2018-06-01 | P1EWCC-PWP01-5610 |  |  |  |  | 195d | 215.5d |  |  |  | AWS | y |
| P1EWCC-FWP01-1800 |  | Undertake Arboricultural Surveys | 125d | 2017-12-15 | 2018-06-08 | P1EWCC-PWP01-5610 |  |  |  |  | 190d | 210.5d |  |  |  | AWS | y |
| P1EWCC-AWP01-8420 |  | Planning Consent & Licensing for Demolition Survey Work | 64.88d | 2018-01-29 | 2018-04-27 |  |  |  |  |  | -109.88d | 0d | as late as possible |  |  | AW1 |  |
|  | 1 | **Ecological & Environmental Surveys** |  | 2017-05-22 | 2017-09-29 |  |  |  |  |  |  |  |  |  |  |  |  |
| P1EWCC-PWP01-3530 |  | Survey for Badgers, Bats, GCN & Reptiles | 25d | 2017-05-22 A | 2017-09-29 | P1EWCC-AWP01-5600, P1EWCC-AWP01-5590 | 60% | 9.88d | 2017-04-03 | 2017-05-05 | -65.88d | 0d |  | 2017-09-29 |  | UW1 |  |
|  | 2 | **Engineering Surveys** |  |  |  |  |  |  |  |  |  |  |  |  |  |  |  |
|  | 4 | **Demoltion Surveys** |  | 2018-04-27 | 2018-05-11 |  |  |  |  |  |  |  |  |  |  |  |  |
| P1EWCC-FWP03-5230 |  | Pre-Demolition Survey for Small Dean Overbridge | 10d | 2018-04-27 | 2018-05-11 | P1EWCC-PWP01-5610, P1EWCC-FWP03-5240, P1EWCC-AWP01-8420 |  |  |  |  | -109.88d | 0d |  |  |  | AWS |  |
|  | 3 | **Historic Environment** |  | 2018-02-09 | 2018-12-21 |  |  |  |  |  |  |  |  |  |  |  |  |
| P1EWCC-PWP06-4180 |  | Non-Intrusive Surveys (geophysics) | 20d | 2018-02-09 | 2018-03-09 | P1EWCC-PWP06-4160, P1EWCC-AWP01-5600, P1EWCC-PWP05-240 |  |  |  |  | 105d | 0d |  |  |  | AWH |  |
| P1EWCC-PWP06-9040 |  | Non-Intrusive Surveys (trial trenching) | 30d | 2018-05-04 | 2018-06-15 | P1EWCC-PWP06-4170, P1EWCC-PWP05-240 |  |  |  |  | 105d | 0d |  |  |  | AWH |  |
| P1EWCC-PWP06-4200 |  | Intrusive Surveys | 40d | 2018-10-29 | 2018-12-21 | P1EWCC-PWP06-4170, P1EWCC-PWP02-6830, P1EWCC-PWP06-9050, P1EWCC-AWP01-5610 |  |  |  |  | 49.88d | 0d |  |  |  | AWH |  |
|  | 7 | **Historic Environment** |  | 2017-12-15 | 2019-02-08 |  |  |  |  |  |  |  |  |  |  |  |  |
| P1EWCC-PWP06-4160 |  | Production and Approval of Project Plans & LS-WSI (non-intrusive surveys) | 40d | 2017-12-15 | 2018-02-09 | P1EWCC-PWP05-240 |  |  |  |  | 105d | 0d |  |  |  | AWH |  |
| P1EWCC-PWP06-4170 |  | Update of Project Plans and LS-WSI and Approval (intrusive surveys) | 40d | 2018-03-09 | 2018-05-04 | P1EWCC-PWP06-4180 |  |  |  |  | 105d | 0d |  |  |  | AWH |  |
| P1EWCC-PWP06-9050 |  | Update of Project Plans and LS-WSI and Approval (intrusive surveys) | 40d | 2018-06-15 | 2018-08-10 | P1EWCC-PWP06-9040 |  |  |  |  | 105d | 55.12d |  |  |  | AWH |  |
| P1EWCC-PWP06-4190 |  | Report of Findings And Approval (Archaeological Investigation) | 35d | 2018-12-24 | 2019-02-08 | P1EWCC-PWP06-4200 |  |  |  |  | 1025d |  |  |  |  | AWH |  |
|  | 3 | **Demolition** |  | 2017-12-15 | 2018-06-01 |  |  |  |  |  |  |  |  |  |  |  |  |
| P1EWCC-FWP03-5240 |  | Prepare Investigation Plans for Scoping and Planning Demolitions inc Approval at Small Dean Overbridge | 95d | 2017-12-15 | 2018-04-27 | P1EWCC-PWP01-5610 |  |  |  |  | -105d | 0d | as late as possible |  |  | AWS |  |
| P1EWCC-FWP03-5250 |  | Report on Demoliton Surveys and Approval at Small Dean Overbridge | 15d | 2018-05-11 | 2018-06-01 | P1EWCC-PWP01-5610, P1EWCC-FWP03-5230 |  |  |  |  | -109.88d | 0d |  |  |  | AWS |  |
|  | 2 | **Ecological Mitigation Works** |  | 2018-08-30 | 2018-10-28 |  |  |  |  |  |  |  |  |  |  |  |  |
|  | 5 | **Translocation of Species** |  | 2018-08-30 | 2018-10-28 |  |  |  |  |  |  |  |  |  |  |  |  |
| P1EWCC-PWP02-6830 |  | Species Translocation to Habitat Creation (057-M6W) | 60d | 2018-08-30 | 2018-10-28 | P1EWCC-PWP01-3530, P1EWCC-AWP01-5610, P1EWCC-PWP02-5040, P1EWCC-PWP02-14610 |  |  |  |  | 68d | 0d |  |  | HS2 - 8h x 7d Workweek (No Holidays) | AWE1 |  |

| ID | WBS | Activity | Type | Duration | Start | Finish | Predecessors | Complete | Planned start | Planned finish | Total float | Free float | Constraint | Fusion - WPS | HS2 Filter |
| --- | --- | --- | --- | --- | --- | --- | --- | --- | --- | --- | --- | --- | --- | --- | --- |
|  | 5 | **Noise and Vibration Works** |  |  |  |  |  |  |  |  |  |  |  |  |  |
|  | 4 | **SOW Completion Dates** |  |  | 2017-09-29 | 2019-09-30 |  |  |  |  |  |  |  |  |  |
| P1EWCC-PWP01-3520 |  | Completion of Survey for Badgers (52+000) | milestone | 0d | 2017-09-29 | 2017-09-29 | P1EWCC-PWP01-3530 |  |  |  | -65.88d | 1380.12d | finish on 2017-06-30 | UW1 |  |
| P1EWCC-FWP03-5260 |  | Completion of Report on Demoliton Surveys and Approval | milestone | 0d | 2018-06-01 | 2018-06-01 | P1EWCC-FWP03-5250 |  |  |  | -109.88d | 1205.12d | finish on 2017-12-29 | AWS |  |
| P1EWCC-PWP02-6840 |  | Completion of Species Translocation/ exclusion - Badgers | milestone | 0d | 2019-09-30 | 2019-09-30 | P1EWCC-PWP02-6830 |  |  |  | 0d | 860d | finish on 2019-09-30 | AWE1 |  |
| P1EWCC-PWP02-6850 |  | Completion of Species Translocation/ exclusion - Bats | milestone | 0d | 2019-09-30 | 2019-09-30 | P1EWCC-PWP02-6830 |  |  |  | 0d | 860d | finish on 2019-09-30 | AWE1 |  |
| P1EWCC-PWP02-6870 |  | Completion of Species Translocation/ exclusion - Reptiles | milestone | 0d | 2019-09-30 | 2019-09-30 | P1EWCC-PWP02-6830 |  |  |  | 0d | 860d | finish on 2019-09-30 | AWE1 |  |
|  | 2 | **053-L1 - Small Dean North Embankment** |  |  | 2017-03-20 | 2019-09-30 |  |  |  |  |  |  |  |  |  |
|  | 8 | **Land Access** |  |  | 2017-06-05 | 2018-08-30 |  |  |  |  |  |  |  |  |  |
|  | 1 | **Survey Work** |  |  | 2017-06-05 | 2017-06-05 |  |  |  |  |  |  |  |  |  |
| P1EWCC-AWP01-5640 |  | Land Access Granted for Survey Work (Schedule 2) | milestone | 0d | 2017-06-05 A | 2017-06-05 A |  | 100% | 2017-04-03 | 2017-04-03 |  |  | as late as possible | AW1 | y |
|  | 2 | **Possession** |  |  | 2018-08-30 | 2018-08-30 |  |  |  |  |  |  |  |  |  |
| P1EWCC-AWP01-5650 |  | Land Access Possession Granted for Construction (Schedule 16) | milestone | 0d | 2018-08-30 | 2018-08-30 |  |  |  |  | 48d | 0d | as late as possible | AW1 | y |
|  | 6 | **Survey Works** |  |  | 2017-03-20 | 2018-12-21 |  |  |  |  |  |  |  |  |  |
| P1EWCC-AWP01-5630 |  | Planning Consent & Licensing for Survey Work |  | 10d | 2017-03-20 A | 2017-06-02 A | P1EWCC-AWP01-1230 | 100% | 2017-03-20 | 2017-03-31 |  |  |  | AW1 |  |
| P1EWCC-FWP01-1840 |  | Undertake Arboricultural Surveys |  | 125d | 2017-12-15 | 2018-06-08 | P1EWCC-PWP01-5610 |  |  |  | 190d | 210.5d |  | AWS | y |
| P1EWCC-FWP01-1850 |  | Undertake Remaining Ecology & Environmental Surveys |  | 240d | 2017-12-15 | 2018-11-16 | P1EWCC-PWP01-5610 |  |  |  | 75d | 95.5d |  | AWS | y |
|  | 1 | **Ecological & Environmental Surveys** |  |  | 2017-06-05 | 2017-06-09 |  |  |  |  |  |  |  |  |  |
| P1EWCC-PWP01-3550 |  | Survey for Badgers, Bats, GCN & Reptiles |  | 25d | 2017-06-05 A | 2017-06-09 A | P1EWCC-AWP01-5640, P1EWCC-AWP01-5630 | 100% | 2017-04-03 | 2017-05-05 |  |  |  | UW1 |  |
|  | 2 | **Engineering Surveys** |  |  |  |  |  |  |  |  |  |  |  |  |  |
|  | 3 | **Historic Environment** |  |  | 2018-02-09 | 2018-12-21 |  |  |  |  |  |  |  |  |  |
| P1EWCC-PWP06-4240 |  | Non-Intrusive Surveys (geophysics) |  | 20d | 2018-02-09 | 2018-03-09 | P1EWCC-AWP01-5640, P1EWCC-PWP06-4220, P1EWCC-PWP05-240 |  |  |  | 105d | 0d |  | AWH |  |
| P1EWCC-PWP06-9060 |  | Non-Intrusive Surveys (trial trenching) |  | 30d | 2018-05-04 | 2018-06-15 | P1EWCC-PWP06-4230, P1EWCC-PWP05-240 |  |  |  | 105d | 0d |  | AWH |  |
| P1EWCC-PWP06-4260 |  | Intrusive Surveys |  | 40d | 2018-10-29 | 2018-12-21 | P1EWCC-PWP02-6880, P1EWCC-PWP06-4230, P1EWCC-PWP06-9070, P1EWCC-AWP01-5650 |  |  |  | 49.88d | 0d |  | AWH |  |

| ID | WBS | Activity | Type | Duration | Start | Finish | Predecessors | Complete | Planned start | Planned finish | Total float | Free float | Constraint | Calendar | Fusion - WPS | HS2 Filter |
| --- | --- | --- | --- | --- | --- | --- | --- | --- | --- | --- | --- | --- | --- | --- | --- | --- |
|  | 7 | **Historic Environment** |  |  | 2017-12-15 | 2019-02-08 |  |  |  |  |  |  |  |  |  |  |
| P1EWCC-PWP06-4220 |  | Production and Approval of Project Plans & LS-WSI (non-intrusive surveys) |  | 40d | 2017-12-15 | 2018-02-09 | P1EWCC-PWP05-240 |  |  |  | 105d | 0d |  |  | AWH |  |
| P1EWCC-PWP06-4230 |  | Update of Project Plans and LS-WSI and Approval (intrusive surveys) |  | 40d | 2018-03-09 | 2018-05-04 | P1EWCC-PWP06-4240 |  |  |  | 105d | 0d |  |  | AWH |  |
| P1EWCC-PWP06-9070 |  | Update of Project Plans and LS-WSI and Approval (intrusive surveys) |  | 40d | 2018-06-15 | 2018-08-10 | P1EWCC-PWP06-9060 |  |  |  | 105d | 55.12d |  |  | AWH |  |
| P1EWCC-PWP06-4250 |  | Report of Findings And Approval (Archaeological Investigation) |  | 35d | 2018-12-24 | 2019-02-08 | P1EWCC-PWP06-4260 |  |  |  | 1025d |  |  |  | AWH |  |
|  | 2 | **Ecological Mitigation Works** |  |  | 2018-08-30 | 2018-12-14 |  |  |  |  |  |  |  |  |  |  |
|  | 5 | **Translocation of Species** |  |  | 2018-08-30 | 2018-10-28 |  |  |  |  |  |  |  |  |  |  |
| P1EWCC-PWP02-6880 |  | Species Translocation to Habitat Creation (057-M6W) |  | 60d | 2018-08-30 | 2018-10-28 | P1EWCC-AWP01-5650, P1EWCC-PWP01-3550, P1EWCC-PWP02-5040, P1EWCC-PWP02-14610 |  |  |  | 68d | 0d |  | HS2 - 8h x 7d Workweek (No Holidays) | AWE1 |  |
|  | 1 | **Translocation of Hedgerow** |  |  | 2018-11-01 | 2018-12-14 |  |  |  |  |  |  |  |  |  |  |
| P1EWCC-PWP02-6930 |  | Translocation of hedgerows |  | 43d | 2018-11-01 | 2018-12-14 | P1EWCC-PWP02-11910, P1EWCC-PWP02-6880, P1EWCC-AWP01-5650 |  |  |  | 77.62d | 108d | start on or after 2018-11-01 | HS2 - 8h x 7d Workweek (No Holidays) | AWE2 |  |
|  | 5 | **Noise and Vibration Works** |  |  |  |  |  |  |  |  |  |  |  |  |  |  |
|  | 4 | **SOW Completion Dates** |  |  | 2017-09-18 | 2019-09-30 |  |  |  |  |  |  |  |  |  |  |
| P1EWCC-PWP01-2610 |  | Completion of Survey for Badgers (53+000) | milestone | 0d | 2017-09-18 | 2017-09-18 | P1EWCC-PWP01-3550 |  |  |  | -56d | 1390d | finish on 2017-06-30 |  | UW1 |  |
| P1EWCC-PWP01-2800 |  | Completion of Survey for Bats (53+000) | milestone | 0d | 2017-09-18 | 2017-09-18 | P1EWCC-PWP01-3550 |  |  |  | -56d | 1390d | finish on 2017-06-30 |  | UW1 |  |
| P1EWCC-PWP01-3540 |  | Completion of Survey for Badgers (52+000) | milestone | 0d | 2017-09-18 | 2017-09-18 | P1EWCC-PWP01-3550 |  |  |  | -56d | 1390d | finish on 2017-06-30 |  | UW1 |  |
| P1EWCC-PWP02-6890 |  | Completion of Species Translocation/ exclusion - Badgers | milestone | 0d | 2019-09-30 | 2019-09-30 | P1EWCC-PWP02-6880 |  |  |  | 0d | 860d | finish on 2019-09-30 |  | AWE1 |  |
| P1EWCC-PWP02-6900 |  | Completion of Species Translocation/ exclusion - Bats | milestone | 0d | 2019-09-30 | 2019-09-30 | P1EWCC-PWP02-6880 |  |  |  | 0d | 860d | finish on 2019-09-30 |  | AWE1 |  |
| P1EWCC-PWP02-6910 |  | Completion of Translocation of hedgerows | milestone | 0d | 2019-09-30 | 2019-09-30 | P1EWCC-PWP02-6930 |  |  |  | 0d | 860d | finish on 2019-09-30 |  | AWE2 |  |
| P1EWCC-PWP02-6920 |  | Completion of Species Translocation/ exclusion - Reptiles | milestone | 0d | 2019-09-30 | 2019-09-30 | P1EWCC-PWP02-6880 |  |  |  | 0d | 860d | finish on 2019-09-30 |  | AWE1 |  |
| P1EWCC-PWP02-6940 |  | Completion of Species Translocation/ exclusion - GCN | milestone | 0d | 2019-09-30 | 2019-09-30 | P1EWCC-PWP02-6880 |  |  |  | 0d | 860d | finish on 2019-09-30 |  | AWE1 |  |
|  | 3 | **053-L2 - Wendover Green Tunnel** |  |  | 2017-03-20 | 2019-09-30 |  |  |  |  |  |  |  |  |  |  |
|  | 8 | **Land Access** |  |  | 2017-06-05 | 2018-08-30 |  |  |  |  |  |  |  |  |  |  |
|  | 1 | **Survey Work** |  |  | 2017-06-05 | 2017-06-05 |  |  |  |  |  |  |  |  |  |  |
| P1EWCC-AWP01-5670 |  | Land Access Granted for Survey Work (Schedule 2) | milestone | 0d | 2017-06-05 A | 2017-06-05 A |  | 100% | 2017-09-18 | 2017-09-18 |  |  |  |  | AW1 | y |

| ID | WBS | Activity | Type | Duration | Start | Finish | Predecessors | Complete | Remaining | Planned start | Planned finish | Total float | Free float | Constraint | Expected finish | HS2 Filter | Fusion - WPS |
| --- | --- | --- | --- | --- | --- | --- | --- | --- | --- | --- | --- | --- | --- | --- | --- | --- | --- |
|  | 2 | **Possession** |  |  | 2018-08-30 | 2018-08-30 |  |  |  |  |  |  |  |  |  |  |  |
| P1EWCC-AWP01-5680 |  | Land Access Possession Granted for Construction (Schedule 16) | milestone | 0d | 2018-08-30 | 2018-08-30 |  |  |  |  |  | 46.62d | 0d | as late as possible |  | y | AW1 |
|  | 6 | **Survey Works** |  |  | 2017-03-20 | 2019-01-11 |  |  |  |  |  |  |  |  |  |  |  |
| P1EWCC-AWP01-5660 |  | Planning Consent & Licensing for Survey Work |  | 10d | 2017-03-20 A | 2017-06-02 A | P1EWCC-AWP01-1230 | 100% |  | 2017-03-20 | 2017-03-31 |  |  |  |  |  | AW1 |
| P1EWCC-FWP01-1870 |  | Undertake Remaining Soil Surveys |  | 120d | 2017-12-15 | 2018-06-01 | P1EWCC-PWP01-5610 |  |  |  |  | 195d | 215.5d |  |  | y | AWS |
| P1EWCC-FWP01-1880 |  | Undertake Arboricultural Surveys |  | 125d | 2017-12-15 | 2018-06-08 | P1EWCC-PWP01-5610 |  |  |  |  | 190d | 210.5d |  |  | y | AWS |
| P1EWCC-FWP01-1890 |  | Undertake Remaining Ecology & Environmental Surveys |  | 240d | 2017-12-15 | 2018-11-16 | P1EWCC-PWP01-5610 |  |  |  |  | 75d | 95.5d |  |  | y | AWS |
| P1EWCC-FWP01-1900 |  | Undertake Water Monitoring |  | 280d | 2017-12-15 | 2019-01-11 | P1EWCC-PWP01-5610 |  |  |  |  | 35d | 55.5d |  |  | y | AWS |
| P1EWCC-AWP01-8430 |  | Planning Consent & Licensing for Demolition Survey Work |  | 64.88d | 2018-01-29 | 2018-04-27 |  |  |  |  |  | 85.12d | 0d | as late as possible |  |  | AW1 |
|  | 1 | **Ecological & Environmental Surveys** |  |  | 2017-06-05 | 2017-11-24 |  |  |  |  |  |  |  |  |  |  |  |
| P1EWCC-PWP01-3570 |  | Survey for Badgers, Bats, GCN & Reptiles |  | 10d | 2017-06-05 A | 2017-11-24 | P1EWCC-AWP01-5670, P1EWCC-AWP01-5660 |  | 49.88d | 2017-09-18 | 2017-09-29 | -105.88d | 0d |  | 2017-11-24 |  | UW1 |
|  | 2 | **Engineering Surveys** |  |  |  |  |  |  |  |  |  |  |  |  |  |  |  |
|  | 4 | **Demoltion Surveys** |  |  | 2018-04-27 | 2018-05-11 |  |  |  |  |  |  |  |  |  |  |  |
| P1EWCC-FWP03-5320 |  | Pre-Demolition Survey for 30,32,24,26,28,40 Ellesborough Road & Wendover Cricket Club |  | 10d | 2018-04-27 | 2018-05-11 | P1EWCC-FWP03-5330, P1EWCC-PWP01-5610, P1EWCC-AWP01-8430 |  |  |  |  | 85.12d | 0d |  |  |  | AWS |
|  | 3 | **Historic Environment** |  |  | 2018-02-09 | 2018-12-21 |  |  |  |  |  |  |  |  |  |  |  |
| P1EWCC-PWP06-4300 |  | Non-Intrusive Surveys (geophysics) |  | 20d | 2018-02-09 | 2018-03-09 | P1EWCC-PWP06-4280, P1EWCC-AWP01-5670, P1EWCC-PWP05-240 |  |  |  |  | 105d | 0d |  |  |  | AWH |
| P1EWCC-PWP06-9080 |  | Non-Intrusive Surveys (trial trenching) |  | 30d | 2018-05-04 | 2018-06-15 | P1EWCC-PWP06-4290, P1EWCC-PWP05-240 |  |  |  |  | 105d | 0d |  |  |  | AWH |
| P1EWCC-PWP06-4320 |  | Intrusive Surveys |  | 40d | 2018-10-29 | 2018-12-21 | P1EWCC-PWP02-6950, P1EWCC-PWP06-4290, P1EWCC-PWP06-9090, P1EWCC-AWP01-5680 |  |  |  |  | 49.88d | 0d |  |  |  | AWH |
|  | 7 | **Historic Environment** |  |  | 2017-12-15 | 2019-02-08 |  |  |  |  |  |  |  |  |  |  |  |
| P1EWCC-PWP06-4280 |  | Production and Approval of Project Plans & LS-WSI (non-intrusive surveys) |  | 40d | 2017-12-15 | 2018-02-09 | P1EWCC-PWP05-240 |  |  |  |  | 105d | 0d |  |  |  | AWH |
| P1EWCC-PWP06-4290 |  | Update of Project Plans and LS-WSI and Approval (intrusive surveys) |  | 40d | 2018-03-09 | 2018-05-04 | P1EWCC-PWP06-4300 |  |  |  |  | 105d | 0d |  |  |  | AWH |
| P1EWCC-PWP06-9090 |  | Update of Project Plans and LS-WSI and Approval (intrusive surveys) |  | 40d | 2018-06-15 | 2018-08-10 | P1EWCC-PWP06-9080 |  |  |  |  | 105d | 55.12d |  |  |  | AWH |
| P1EWCC-PWP06-4310 |  | Report of Findings And Approval (Archaeological Investigation) |  | 35d | 2018-12-24 | 2019-02-08 | P1EWCC-PWP06-4320 |  |  |  |  | 1025d |  |  |  |  | AWH |
|  | 3 | **Demolition** |  |  | 2017-12-15 | 2018-06-01 |  |  |  |  |  |  |  |  |  |  |  |
| P1EWCC-FWP03-5330 |  | Prepare Investigation Plans for Scoping and Planning Demolitions inc Approval |  | 95d | 2017-12-15 | 2018-04-27 | P1EWCC-PWP01-5610 |  |  |  |  | 90d | 0d | as late as possible |  |  | AWS |
| P1EWCC-FWP03-5340 |  | Report on Demoliton Surveys and Approval |  | 15d | 2018-05-11 | 2018-06-01 | P1EWCC-PWP01-5610, P1EWCC-FWP03-5320 |  |  |  |  | 85.12d |  |  |  |  | AWS |

| ID | WBS | Activity | Type | Duration | Start | Finish | Predecessors | Total float | Free float | Constraint | Calendar | Fusion - WPS | HS2 Filter |
| --- | --- | --- | --- | --- | --- | --- | --- | --- | --- | --- | --- | --- | --- |
|  | 2 | **Ecological Mitigation Works** |  |  | 2018-03-01 | 2019-01-30 |  |  |  |  |  |  |  |
|  | 5 | **Translocation of Species** |  |  | 2018-08-30 | 2018-10-28 |  |  |  |  |  |  |  |
| P1EWCC-PWP02-6950 |  | Species Translocation to Habitat Creation (057-M6W) |  | 60d | 2018-08-30 | 2018-10-28 | P1EWCC-AWP01-5680, P1EWCC-PWP01-3570, P1EWCC-PWP02-5040, P1EWCC-PWP02-14610 | 64.75d | 0d |  | HS2 - 8h x 7d Workweek (No Holidays) | AWE1 |  |
|  | 9 | **Landscape Planting (not in AWE2)** |  |  | 2018-03-01 | 2019-01-30 |  |  |  |  |  |  |  |
|  | 1 | **Design** |  |  | 2018-03-01 | 2018-07-19 |  |  |  |  |  |  |  |
| P1EWCC-PWP02-14700 |  | Develop Scheme Design |  | 40d | 2018-03-01 | 2018-04-26 | P1EWCC-PWP02-11910 SS+5d | -109.75d | 0d |  |  | AWE2 | y |
| P1EWCC-PWP02-14730 |  | Develop Detailed Design |  | 50d | 2018-04-26 | 2018-07-05 | P1EWCC-PWP02-14700 | -109.75d | 0d |  |  | AWE2 | y |
| P1EWCC-PWP02-14720 |  | Schedule 17 Planning Consent Approval Period |  | 56d | 2018-04-27 | 2018-06-21 | P1EWCC-PWP02-14700 | 193.75d | 161d |  | HS2 - 8h x 7d Workweek (No Holidays) | AWE2 | y |
| P1EWCC-PWP02-14710 |  | HS2 approval period of vaildated design |  | 14d | 2018-07-06 | 2018-07-19 | P1EWCC-PWP02-14730 | 74.88d | 42d |  | HS2 - 8h x 7d Workweek (No Holidays) | AWE2 | y |
|  | 2 | **Installation** |  |  | 2018-08-31 | 2019-01-30 |  |  |  |  |  |  |  |
| P1EWCC-FWP03-5410 |  | Call off of Landscape Planting | milestone | 0d | 2018-08-31 | 2018-08-31 | P1EWCC-PWP02-11910, P1EWCC-PWP02-14710 | 22.75d | 0d | as late as possible |  | AWE2 | y |
| P1EWCC-FWP03-5420 |  | Call off period for Landscape Planting |  | 64.88d | 2018-08-31 | 2018-11-29 | P1EWCC-FWP03-5410 | 22.75d | 0d | as late as possible |  | AWE2 | y |
| P1EWCC-FWP03-5400 |  | Advance & Mitigation Planting (Ellesborough Road) (not in AWE2) |  | 43.25d | 2018-11-29 | 2019-01-30 | P1EWCC-FWP03-5420, P1EWCC-PWP02-6950, P1EWCC-AWP01-5680, P1EWCC-PWP02-14720, P1EWCC-PWP02-15070 | 22.75d | 42.88d | start on or after 2018-11-01 |  | AWE2 | y |
|  | 1 | **Water Resources** |  |  |  |  |  |  |  |  |  |  |  |
|  | 5 | **Noise and Vibration Works** |  |  |  |  |  |  |  |  |  |  |  |
|  | 4 | **SOW Completion Dates** |  |  | 2017-11-24 | 2019-09-30 |  |  |  |  |  |  |  |
| P1EWCC-PWP01-2600 |  | Completion of Survey for Badgers (54+000 & 55+000) | milestone | 0d | 2017-11-24 | 2017-11-24 | P1EWCC-PWP01-3570 | -105.88d | 1340.12d | finish on 2017-06-30 |  | UW1 |  |
| P1EWCC-PWP01-2630 |  | Completion of Survey for Bats (54+000 & 55+000) | milestone | 0d | 2017-11-24 | 2017-11-24 | P1EWCC-PWP01-3570 | -105.88d | 1340.12d | finish on 2017-06-30 |  | UW1 |  |
| P1EWCC-PWP01-2650 |  | Completion of Survey for Reptiles (54+000 & 55+000) | milestone | 0d | 2017-11-24 | 2017-11-24 | P1EWCC-PWP01-3570 | -105.88d | 1340.12d | finish on 2017-06-30 |  | UW1 |  |
| P1EWCC-PWP01-2920 |  | Completion of Survey for GCN (55+000) | milestone | 0d | 2017-11-24 | 2017-11-24 | P1EWCC-PWP01-3570 | -105.88d | 1340.12d | finish on 2017-06-30 |  | UW1 |  |
| P1EWCC-FWP03-5350 |  | Completion of Report on Demoliton Surveys and Approval | milestone | 0d | 2018-09-28 | 2018-09-28 | P1EWCC-FWP03-5340 | 0d | 1120d | finish on 2018-09-28 |  | UW1 |  |
| P1EWCC-FWP03-5380 |  | Completion of groundwater samples are to be taken quarterly for 24 months (8 rounds) | milestone | 0d | 2018-12-31 | 2018-12-31 |  | 0d | 1054d | finish on 2018-12-31 |  | AWS | y |
| P1EWCC-FWP03-5430 |  | Completion of Advance & Mitigation Planting (Ellesborough Road) | milestone | 0d | 2019-03-29 | 2019-03-29 | P1EWCC-FWP03-5400 | 0d | 990d | finish on 2019-03-29 |  | AWE2 | y |
| P1EWCC-PWP02-6960 |  | Completion of Species Translocation/ exclusion - Badgers | milestone | 0d | 2019-09-30 | 2019-09-30 | P1EWCC-PWP02-6950 | 0d | 860d | finish on 2019-09-30 |  | AWE1 |  |
| P1EWCC-PWP02-6970 |  | Completion of Species Translocation/ exclusion - Bats | milestone | 0d | 2019-09-30 | 2019-09-30 | P1EWCC-PWP02-6950 | 0d | 860d | finish on 2019-09-30 |  | AWE1 |  |

| ID | WBS | Activity | Type | Duration | Start | Finish | Predecessors | Complete | Remaining | Planned start | Planned finish | Total float | Free float | Constraint | Expected finish | HS2 Filter | Fusion - WPS |
| --- | --- | --- | --- | --- | --- | --- | --- | --- | --- | --- | --- | --- | --- | --- | --- | --- | --- |
|  | C213 | **Stoke Mandeville (Ch. 55005 To Ch. 58400)** |  |  | 2017-02-17 | 2019-11-13 |  |  |  |  |  |  |  |  |  |  |  |
|  | 3 | **055-L1 - Wendover North Cutting** |  |  | 2017-03-20 | 2019-09-30 |  |  |  |  |  |  |  |  |  |  |  |
|  | 8 | **Land Access** |  |  | 2017-03-20 | 2018-08-30 |  |  |  |  |  |  |  |  |  |  |  |
|  | 1 | **Survey Work** |  |  | 2017-03-20 | 2017-03-20 |  |  |  |  |  |  |  |  |  |  |  |
| P1EWCC-AWP01-5700 |  | Land Access Granted for Survey Work (Schedule 2) | milestone | 0d | 2017-03-20 A | 2017-03-20 A |  | 100% |  | 2017-04-03 | 2017-04-03 |  |  | as late as possible |  | y | AW1 |
|  | 2 | **Possession** |  |  | 2018-08-30 | 2018-08-30 |  |  |  |  |  |  |  |  |  |  |  |
| P1EWCC-AWP01-5710 |  | Land Access Possession Granted for Construction (Schedule 16) | milestone | 0d | 2018-08-30 | 2018-08-30 |  |  |  |  |  | 108d | 0d | as late as possible |  | y | AW1 |
|  | 6 | **Survey Works** |  |  | 2017-03-20 | 2019-06-28 |  |  |  |  |  |  |  |  |  |  |  |
| P1EWCC-AWP01-5690 |  | Planning Consent & Licensing for Survey Work |  | 10d | 2017-03-20 A | 2017-03-20 A | P1EWCC-AWP01-1230 | 100% |  | 2017-03-20 | 2017-03-31 |  |  |  |  |  | AW1 |
| P1EWCC-FWP01-1910 |  | Undertake Remaining Soil Surveys |  | 120d | 2017-12-15 | 2018-06-01 | P1EWCC-PWP01-5610 |  |  |  |  | 255d | 342.5d |  |  | y | AWS |
| P1EWCC-FWP01-1920 |  | Undertake Arboricultural Surveys |  | 125d | 2017-12-15 | 2018-06-08 | P1EWCC-PWP01-5610 |  |  |  |  | 250d | 337.5d |  |  | y | AWS |
| P1EWCC-FWP01-1930 |  | Undertake Remaining Ecology & Environmental Surveys |  | 400d | 2017-12-15 | 2019-06-28 | P1EWCC-PWP01-5610 |  |  |  |  | -25d | 62.5d |  |  | y | AWS |
| P1EWCC-FWP01-1940 |  | Undertake Water Monitoring |  | 360d | 2017-12-15 | 2019-05-03 | P1EWCC-PWP01-5610 |  |  |  |  | 15d | 102.5d |  |  | y | AWS |
| P1EWCC-AWP01-5720 |  | Planning Consent & Licensing for Demolition Survey Work |  | 64.88d | 2018-01-29 | 2018-04-27 | P1EWCC-AWP01-1230 |  |  |  |  | 85.12d | 0d | as late as possible |  |  | AW1 |
|  | 1 | **Ecological & Environmental Surveys** |  |  | 2017-03-20 | 2017-11-24 |  |  |  |  |  |  |  |  |  |  |  |
| P1EWCC-PWP01-3620 |  | Survey for Badgers, Bats, GCN & Reptiles |  | 25d | 2017-03-20 A | 2017-11-24 | P1EWCC-AWP01-5700, P1EWCC-AWP01-5690 |  | 49.88d | 2017-04-03 | 2017-05-05 | 306.12d | 0d |  | 2017-11-24 |  | UW1 |
|  | 2 | **Engineering Surveys** |  |  |  |  |  |  |  |  |  |  |  |  |  |  |  |
|  | 4 | **Demoltion Surveys** |  |  | 2018-04-27 | 2018-05-11 |  |  |  |  |  |  |  |  |  |  |  |
| P1EWCC-FWP03-5460 |  | Pre-Demolition Survey for St Mary's Church (site of) burial ground (Heritage) |  | 10d | 2018-04-27 | 2018-05-11 | P1EWCC-AWP01-5720, P1EWCC-FWP03-5470, P1EWCC-PWP01-5610 |  |  |  |  | 85.12d | 0d |  |  |  | AWS |
|  | 3 | **Historic Environment** |  |  | 2018-02-09 | 2018-12-21 |  |  |  |  |  |  |  |  |  |  |  |
| P1EWCC-PWP06-4360 |  | Non-Intrusive Surveys (geophysics) |  | 20d | 2018-02-09 | 2018-03-09 | P1EWCC-PWP06-4340, P1EWCC-AWP01-5700, P1EWCC-PWP05-240 |  |  |  |  | 165d | 0d |  |  |  | AWH |
| P1EWCC-PWP06-9100 |  | Non-Intrusive Surveys (trial trenching) |  | 30d | 2018-05-04 | 2018-06-15 | P1EWCC-PWP06-4350, P1EWCC-PWP05-240 |  |  |  |  | 165d | 0d |  |  |  | AWH |
| P1EWCC-PWP06-4380 |  | Intrusive Surveys |  | 40d | 2018-10-29 | 2018-12-21 | P1EWCC-PWP06-4350, P1EWCC-PWP02-6980, P1EWCC-PWP06-9110, P1EWCC-AWP01-5710 |  |  |  |  | 109.88d | 0d |  |  |  | AWH |
|  | 7 | **Historic Environment** |  |  | 2017-12-15 | 2019-02-08 |  |  |  |  |  |  |  |  |  |  |  |
| P1EWCC-PWP06-4340 |  | Production and Approval of LS-WSI (non-intrusive surveys) |  | 40d | 2017-12-15 | 2018-02-09 | P1EWCC-PWP05-240 |  |  |  |  | 165d | 0d |  |  |  | AWH |
| P1EWCC-PWP06-4350 |  | Update of Project Plans and LS-WSI and Approval (intrusive surveys) |  | 40d | 2018-03-09 | 2018-05-04 | P1EWCC-PWP06-4360 |  |  |  |  | 165d | 0d |  |  |  | AWH |
| P1EWCC-PWP06-9110 |  | Update of Project Plans and LS-WSI and Approval (intrusive surveys) |  | 40d | 2018-06-15 | 2018-08-10 | P1EWCC-PWP06-9100 |  |  |  |  | 165d | 55.12d |  |  |  | AWH |
| P1EWCC-PWP06-4370 |  | Report of Findings And Approval (Archaeological Investigation) |  | 35d | 2018-12-24 | 2019-02-08 | P1EWCC-PWP06-4380 |  |  |  |  | 1025d |  |  |  |  | AWH |

| ID | WBS | Activity | Type | Duration | Start | Finish | Predecessors | Complete | Planned start | Planned finish | Total float | Free float | Constraint | Calendar | Fusion - WPS | HS2 Filter |
| --- | --- | --- | --- | --- | --- | --- | --- | --- | --- | --- | --- | --- | --- | --- | --- | --- |
|  | 3 | **Demolition** |  |  | 2017-12-15 | 2018-06-01 |  |  |  |  |  |  |  |  |  |  |
| P1EWCC-FWP03-5470 |  | Prepare Investigation Plans for Scoping and Planning Demolitions inc Approval at St Mary's Church |  | 95d | 2017-12-15 | 2018-04-27 | P1EWCC-PWP01-5610 |  |  |  | 90d | 0d | as late as possible |  | AWS |  |
| P1EWCC-FWP03-5480 |  | Report on Demoliton Surveys and Approval at St Mary's Church |  | 15d | 2018-05-11 | 2018-06-01 | P1EWCC-PWP01-5610, P1EWCC-FWP03-5460 |  |  |  | 85.12d |  |  |  | AWS |  |
|  | 2 | **Ecological Mitigation Works** |  |  | 2018-08-30 | 2018-12-14 |  |  |  |  |  |  |  |  |  |  |
|  | 5 | **Translocation of Species** |  |  | 2018-08-30 | 2018-10-28 |  |  |  |  |  |  |  |  |  |  |
| P1EWCC-PWP02-6980 |  | Species Translocation to Habitat Creation (057-M6W) |  | 60d | 2018-08-30 | 2018-10-28 | P1EWCC-AWP01-5710, P1EWCC-PWP01-3620, P1EWCC-PWP02-5040, P1EWCC-PWP02-14610 |  |  |  | 152d | 0d |  | HS2 - 8h x 7d Workweek (No Holidays) | AWE1 |  |
|  | 1 | **Translocation of Hedgerow** |  |  | 2018-11-01 | 2018-12-14 |  |  |  |  |  |  |  |  |  |  |
| P1EWCC-PWP02-7020 |  | Translocation of hedgerows |  | 43d | 2018-11-01 | 2018-12-14 | P1EWCC-PWP02-11910, P1EWCC-AWP01-5710, P1EWCC-PWP02-6980 |  |  |  | 161.62d | 285d | start on or after 2018-11-01 | HS2 - 8h x 7d Workweek (No Holidays) | AWE2 |  |
|  | 1 | **Water Resources** |  |  |  |  |  |  |  |  |  |  |  |  |  |  |
|  | 5 | **Noise and Vibration Works** |  |  |  |  |  |  |  |  |  |  |  |  |  |  |
|  | 4 | **SOW Completion Dates** |  |  | 2018-09-28 | 2019-09-30 |  |  |  |  |  |  |  |  |  |  |
| P1EWCC-FWP03-5490 |  | Completion of Report on Demoliton Surveys and Approval | milestone | 0d | 2018-09-28 | 2018-09-28 | P1EWCC-FWP03-5480 |  |  |  | 0d | 1120d | finish on 2018-09-28 |  | AWS |  |
| P1EWCC-FWP03-5520 |  | Completion of groundwater samples are to be taken quarterly for 24 months (8 rounds) | milestone | 0d | 2018-12-31 | 2018-12-31 |  |  |  |  | 0d | 1054d | finish on 2018-12-31 |  | AWS | y |
| P1EWCC-PWP02-6990 |  | Completion of Species Translocation/ exclusion - Badgers | milestone | 0d | 2019-09-30 | 2019-09-30 | P1EWCC-PWP02-6980 |  |  |  | 0d | 860d | finish on 2019-09-30 |  | AWE1 |  |
| P1EWCC-PWP02-7000 |  | Completion of Species Translocation/ exclusion - Bats | milestone | 0d | 2019-09-30 | 2019-09-30 | P1EWCC-PWP02-6980 |  |  |  | 0d | 860d | finish on 2019-09-30 |  | AWE1 |  |
| P1EWCC-PWP02-7010 |  | Completion of Species Translocation/ exclusion - GCN | milestone | 0d | 2019-09-30 | 2019-09-30 | P1EWCC-PWP02-6980 |  |  |  | 0d | 860d | finish on 2019-09-30 |  | AWE1 |  |
| P1EWCC-PWP02-7030 |  | Completion of Translocation of hedgerows | milestone | 0d | 2019-09-30 | 2019-09-30 | P1EWCC-PWP02-7020 |  |  |  | 0d | 1201.62d | finish on 2019-09-30 | HS2 - 8h x 7d Workweek (No Holidays) | AWE2 |  |
|  | 1 | **056-L1 - Stoke Mandeville South Embankment** |  |  | 2017-02-17 | 2019-11-13 |  |  |  |  |  |  |  |  |  |  |
|  | 10 | **Land Access** |  |  | 2017-03-20 | 2018-07-30 |  |  |  |  |  |  |  |  |  |  |
|  | 1 | **Survey Work** |  |  | 2017-03-20 | 2017-03-20 |  |  |  |  |  |  |  |  |  |  |
| P1EWCC-AWP01-4080 |  | Land Access Granted for Survey Work (Schedule 2) | milestone | 0d | 2017-03-20 A | 2017-03-20 A |  | 100% | 2017-03-31 | 2017-03-31 |  |  | as late as possible |  | AW1 | y |
|  | 2 | **Possession** |  |  | 2017-10-03 | 2018-07-30 |  |  |  |  |  |  |  |  |  |  |
|  | 1 | **Ecological Mitigation Area** |  |  | 2017-10-03 | 2017-12-05 |  |  |  |  |  |  |  |  |  |  |
| P1EWCC-AWP01-4090 |  | Land Access Possession Granted for Ecolgical Mitigation Sites (Schedule 16) 056-M3E | milestone | 0d | 2017-10-03 | 2017-10-03 |  |  |  |  | -5.62d | 68.88d | start on 2017-10-03 |  | UW1 | y |
| P1EWCC-AWP01-8130 |  | Land Access Possession Granted for Ecolgical Mitigation Sites (Schedule 16) 057-M6W | milestone | 0d | 2017-12-05 | 2017-12-05 |  |  |  |  | 0d | 23.88d | start on 2017-12-05 |  | UW1 | y |

| ID | WBS | Activity | Type | Duration | Start | Finish | Predecessors | Complete | Remaining | Planned start | Planned finish | Total float | Free float | Constraint | Expected finish | HS2 Filter | Fusion - WPS |
| --- | --- | --- | --- | --- | --- | --- | --- | --- | --- | --- | --- | --- | --- | --- | --- | --- | --- |
|  | 2 | **056-L1 - Stoke Mandeville South Embankment** |  |  | 2018-07-30 | 2018-07-30 |  |  |  |  |  |  |  |  |  |  |  |
| P1EWCC-AWP01-4100 |  | Land Access Possession Granted for Stoke Mandeville South Embankment (Schedule 16) | milestone | 0d | 2018-07-30 | 2018-07-30 |  |  |  |  |  | -86.62d | 0d | as late as possible |  | y | AW1 |
|  | 1 | **Survey Works** |  |  | 2017-03-20 | 2019-09-25 |  |  |  |  |  |  |  |  |  |  |  |
| P1EWCC-AWP01-3810 |  | Planning Consent & Licensing for Survey Work |  | 9d | 2017-03-20 A | 2017-03-20 A | P1EWCC-AWP01-1230 | 100% |  | 2017-03-20 | 2017-03-30 |  |  |  |  |  | AW1 |
| P1EWCC-AWP01-5740 |  | Planning Consent & Licensing for Survey at OB Princes Risborough, A4219 Longwik Road |  | 50d | 2017-09-18 | 2017-11-24 | P1EWCC-AWP01-1230 |  |  |  |  | 1340d |  |  |  |  | AW1 |
| P1EWCC-FWP01-1950 |  | Undertake Remaining Soil Surveys |  | 120d | 2017-12-15 | 2018-06-01 | P1EWCC-PWP01-5610 |  |  |  |  | 255d | 342.5d |  |  | y | AWS |
| P1EWCC-FWP01-1960 |  | Undertake Arboricultural Surveys |  | 125d | 2017-12-15 | 2018-06-08 | P1EWCC-PWP01-5610 |  |  |  |  | 250d | 337.5d |  |  | y | AWS |
| P1EWCC-FWP01-1970 |  | Undertake Remaining Ecology & Environmental Surveys |  | 400d | 2017-12-15 | 2019-06-28 | P1EWCC-PWP01-5610 |  |  |  |  | -25d | 62.5d |  |  | y | AWS |
|  | 1 | **Ecological & Environmental Surveys** |  |  | 2017-03-20 | 2017-09-22 |  |  |  |  |  |  |  |  |  |  |  |
| P1EWCC-PWP01-3060 |  | Survey for Badgers, Bats, GCN & Reptiles |  | 25d | 2017-03-20 A | 2017-09-22 | P1EWCC-AWP01-3810, P1EWCC-AWP01-4080 | 80% | 4.88d | 2017-03-31 | 2017-05-04 | -60.88d | 0d |  | 2017-09-22 |  | UW1 |
|  | 2 | **Engineering Surveys** |  |  | 2017-04-04 | 2017-04-21 |  |  |  |  |  |  |  |  |  |  |  |
| P1EWCC-PWP03-3100 |  | Survey for Engineering (Topo, GPR, Utility, Soil) (Ecological Mitigation Sites) |  | 20d | 2017-04-04 A | 2017-04-21 A | P1EWCC-AWP01-4080, P1EWCC-AWP01-3810 | 100% |  | 2017-09-27 | 2017-10-24 |  |  |  |  |  | UW1 |
|  | 4 | **Structural Surveys** |  |  |  |  |  |  |  |  |  |  |  |  |  |  |  |
|  | 3 | **Historic Environment** |  |  | 2017-07-14 | 2019-09-25 |  |  |  |  |  |  |  |  |  |  |  |
|  | 1 | **Ecological Mitigation Sites Nash Lane 1438 (056-M3E)** |  |  | 2017-07-14 | 2017-12-22 |  |  |  |  |  |  |  |  |  |  |  |
| P1EWCC-PWP06-1430 |  | Geopphysics (Ecological Mitigation Sites) |  | 5d | 2017-07-14 A | 2017-07-14 A | P1EWCC-PWP06-1460, P1EWCC-AWP01-4080 | 100% |  | 2017-08-02 | 2017-08-08 |  |  |  |  |  | UW1 |
| P1EWCC-PWP06-1440 |  | Intrusive Surveys (Ecological Mitigation Sites) |  | 5d | 2017-12-15 | 2017-12-22 | P1EWCC-PWP06-1470, P1EWCC-PWP05-240 |  |  |  |  | -64.5d | 0d |  |  |  | AWH |
|  | 3 | **Ecological Mitigation Sites Stoke Mandeville CR01473 (057-M6W)** |  |  | 2017-10-09 | 2017-12-22 |  |  |  |  |  |  |  |  |  |  |  |
| P1EWCC-PWP06-11540 |  | Trial Trenching (Ecological Mitigation Sites) |  | 15d | 2017-10-09 | 2017-10-27 | P1EWCC-PWP06-11570 |  |  |  |  | 44d | 0d | start on or after 2017-10-09 |  |  | UW1 |
| P1EWCC-PWP06-11550 |  | Intrusive Surveys (Ecological Mitigation Sites) |  | 5d | 2017-12-15 | 2017-12-22 | P1EWCC-PWP06-11580, P1EWCC-PWP05-240 |  |  |  |  | 39.12d | 0d |  |  |  | AWH |
|  | 2 | **056-L1 - Stoke Mandeville South Embankment** |  |  | 2017-12-15 | 2019-09-25 |  |  |  |  |  |  |  |  |  |  |  |
| P1EWCC-PWP06-9150 |  | Non-Intrusive Surveys (geophysics) |  | 20d | 2017-12-15 | 2018-01-12 | P1EWCC-PWP06-9120, P1EWCC-PWP05-240 |  |  |  |  | -24.5d | 0d |  |  |  | AWH |
| P1EWCC-PWP06-9160 |  | Non-Intrusive Surveys (trial trenching) |  | 40d | 2018-03-09 | 2018-05-04 | P1EWCC-PWP06-9130, P1EWCC-PWP05-240 |  |  |  |  | -24.5d | 0d |  |  |  | AWH |
| P1EWCC-PWP06-1850 |  | Intrusive Surveys - Stoke Mandeville Medieval Burial Site |  | 259.5d | 2018-09-26 | 2019-09-25 | P1EWCC-PWP06-1440, P1EWCC-PWP06-9130, P1EWCC-PWP06-9140, P1EWCC-PWP02-4010, P1EWCC-AWP01-4100 |  |  |  |  | -87.5d | 0d |  |  |  | AWH |

| ID | WBS | Activity | Duration | Start | Finish | Predecessors | Complete | Remaining | Planned start | Planned finish | Total float | Free float | Expected finish | Fusion - WPS |
| --- | --- | --- | --- | --- | --- | --- | --- | --- | --- | --- | --- | --- | --- | --- |
|  | 9 | **Historic Environment** |  | 2017-04-17 | 2019-11-13 |  |  |  |  |  |  |  |  |  |
|  | 1 | **Ecological Mitigation Sites Nash Lane 1438 (056-M3E)** |  | 2017-04-17 | 2018-02-09 |  |  |  |  |  |  |  |  |  |
| P1EWCC-PWP06-1460 |  | Production and Approval of LS-WSI Bucks, Herts, LGA (non-intrusive surveys) | 20d | 2017-04-17 A | 2017-06-27 A | P1EWCC-UWP01-1000 | 100% |  | 2017-03-20 | 2017-04-14 |  |  |  | UW1 |
| P1EWCC-PWP06-1470 |  | Update of Project Plans and LS-WSI and Approval (intrusive surveys) | 20d | 2017-07-17 A | 2017-09-29 | P1EWCC-PWP06-1430, P1EWCC-PWP06-1450 FF | 51% | 9.88d | 2017-08-09 | 2017-09-05 | -9.5d | 0d | 2017-09-29 | UW1 |
| P1EWCC-PWP06-1450 |  | HS2 issue Project Plan | 1d | 2017-09-18 | 2017-09-18 |  |  |  |  |  | -0.62d | 8.88d |  | UW1 |
| P1EWCC-PWP06-1480 |  | Report of Findings And Approval (ecological mitigation site) | 35d | 2017-12-22 | 2018-02-09 | P1EWCC-PWP06-1440 |  |  |  |  | 1285.12d |  |  | AWH |
|  | 3 | **Ecological Mitigation Sites Stoke Mandeville CR01473 (057-M6W)** |  | 2017-04-17 | 2018-02-09 |  |  |  |  |  |  |  |  |  |
| P1EWCC-PWP06-11570 |  | Production and Approval of LS-WSI CR01473 (non-intrusive surveys) | 20d | 2017-04-17 A | 2017-09-22 | P1EWCC-UWP01-1000 | 76% | 4.88d | 2017-03-20 | 2017-04-14 | 54.12d | 0d | 2017-09-22 | UW1 |
| P1EWCC-PWP06-11560 |  | HS2 issue Project Plan | 1d | 2017-09-18 | 2017-09-18 |  |  |  |  |  | 103d | 59d |  | UW1 |
| P1EWCC-PWP06-11580 |  | Update of Project Plans and LS-WSI and Approval (intrusive surveys) | 30d | 2017-10-30 | 2017-12-08 | P1EWCC-PWP06-11560 FF, P1EWCC-PWP06-11540 |  |  |  |  | 44d | 4.88d |  | UW1 |
| P1EWCC-PWP06-11590 |  | Report of Findings And Approval (ecological mitigation site) | 35d | 2017-12-22 | 2018-02-09 | P1EWCC-PWP06-11550 |  |  |  |  | 1285.12d |  |  | AWH |
|  | 2 | **056-L1 - Stoke Mandeville South Embankment** |  | 2017-08-04 | 2019-11-13 |  |  |  |  |  |  |  |  |  |
| P1EWCC-PWP06-9120 |  | Production and Approval of LS-WSI (non-intrusive surveys) | 40d | 2017-08-04 A | 2017-10-13 | P1EWCC-PWP05-150 SS | 50% | 19.88d | 2017-09-18 | 2017-11-10 | 20.5d | 0d | 2017-10-13 | AWH |
| P1EWCC-PWP06-9130 |  | Update of Project Plans and LS-WSI and Approval (intrusive surveys) | 40d | 2018-01-12 | 2018-03-09 | P1EWCC-PWP06-9150 |  |  |  |  | -24.5d | 0d |  | AWH |
| P1EWCC-PWP06-9140 |  | Update of Project Plans and LS-WSI and Approval (intrusive surveys) | 40d | 2018-05-04 | 2018-06-29 | P1EWCC-PWP06-9160 |  |  |  |  | -24.5d | 63d |  | AWH |
| P1EWCC-PWP06-1860 |  | Report of Findings And Approval (056-L1 - Stoke Mandeville South Embankment) | 35d | 2019-09-25 | 2019-11-13 | P1EWCC-PWP06-1850 |  |  |  |  | 827.62d |  |  | AWH |
|  | 2 | **Ecological Mitigation Works** |  | 2017-02-17 | 2019-01-30 |  |  |  |  |  |  |  |  |  |
|  | 1 | **Design** |  | 2017-02-17 | 2017-11-03 |  |  |  |  |  |  |  |  |  |
|  | 1 | **056-M3E** |  | 2017-02-17 | 2017-10-06 |  |  |  |  |  |  |  |  |  |
| P1EWCC-PWP02-3980 |  | HS2 issue Prelimanry Design of Habitat Creation (056-M3E) | 1d | 2017-02-17 A | 2017-02-17 A |  | 100% |  |  |  |  |  |  | UW1 |
| P1EWCC-PWP02-3970 |  | Design of Habitat Creation (056-M3E) | 25d | 2017-03-30 A | 2017-09-15 A | P1EWCC-PWP02-3980 | 100% |  | 2017-02-20 | 2017-03-24 |  |  |  | UW1 |
| P1EWCC-AWP01-3800 |  | Planning Consent & Licensing for Habitat Creation (056-M3E) | 40d | 2017-05-26 A | 2017-10-06 | P1EWCC-PWP02-3970 SS | 63% | 14.88d | 2017-07-05 | 2017-08-29 | -9.5d | 0d | 2017-10-06 | UW1 |
|  | 2 | **057-M6W** |  | 2017-04-13 | 2017-11-03 |  |  |  |  |  |  |  |  |  |
| P1EWCC-PWP02-4990 |  | Design of Habitat Creation (057-M6W) | 25d | 2017-04-13 A | 2017-10-06 | P1EWCC-PWP03-3100 FF | 40% | 14.88d | 2017-04-28 | 2017-06-01 | 74.12d | 0d | 2017-10-06 | UW1 |
| P1EWCC-AWP01-4390 |  | Planning Consent & Licensing for Habitat Creation (057-M6W) | 40d | 2017-06-19 A | 2017-11-03 | P1EWCC-PWP02-4990 SS | 13% | 34.88d | 2017-07-19 | 2017-09-12 | 74.12d | 0d | 2017-11-03 | UW1 |

| ID | WBS | Activity | Type | Duration | Start | Finish | Predecessors | Total float | Free float | Constraint | Calendar | Fusion - WPS | HS2 Filter |
| --- | --- | --- | --- | --- | --- | --- | --- | --- | --- | --- | --- | --- | --- |
|  | 3 | **Habitat Creation** |  |  | 2018-01-05 | 2018-08-29 |  |  |  |  |  |  |  |
|  | 1 | **056-M3E** |  |  | 2018-01-05 | 2018-08-29 |  |  |  |  |  |  |  |
| P1EWCC-PWP02-3950 |  | Habitat Creation (056-M3E) |  | 25d | 2018-01-05 | 2018-02-09 | P1EWCC-PWP01-3060, P1EWCC-PWP06-1440, P1EWCC-AWP01-3800, P1EWCC-PWP03-3100 FF, P1EWCC-PWP02-9220, P1EWCC-AWP01-4090, P1EWCC-PWP02-3970 | -74.5d | 13.12d |  |  | AWE1 |  |
| P1EWCC-PWP02-3960 |  | Habitat Creation Maturity Period(056-M3E) |  | 182d | 2018-03-01 | 2018-08-29 | P1EWCC-PWP02-3950 | -121.62d | 0d | start on or after 2018-03-01 | HS2 - 8h x 7d Workweek (No Holidays) | AWE1 |  |
|  | 2 | **057-M6W** |  |  | 2018-01-05 | 2018-08-29 |  |  |  |  |  |  |  |
| P1EWCC-PWP02-5030 |  | Habitat Creation (057-M6W) |  | 30d | 2018-01-05 | 2018-02-16 | P1EWCC-AWP01-4390, P1EWCC-PWP02-9220, P1EWCC-AWP01-8130, P1EWCC-PWP02-4990, P1EWCC-PWP06-11550 | 29.12d | 8.12d |  |  | AWE1 |  |
| P1EWCC-PWP02-5040 |  | Habitat Creation Maturity Period (057-M6W) |  | 182d | 2018-03-01 | 2018-08-29 | P1EWCC-PWP02-5030 | 29d | 0d | start on or after 2018-03-01 | HS2 - 8h x 7d Workweek (No Holidays) | AWE1 |  |
|  | 5 | **Translocation of Species** |  |  | 2018-07-29 | 2018-09-26 |  |  |  |  |  |  |  |
|  | 1 | **056-M3E** |  |  | 2018-07-29 | 2018-09-26 |  |  |  |  |  |  |  |
| P1EWCC-PWP02-4010 |  | Species Translocation to Habitat Creation (056-M3E) |  | 60d | 2018-07-29 | 2018-09-26 | P1EWCC-PWP02-3960 SS+150d, P1EWCC-AWP01-4100, P1EWCC-PWP02-14610 | -121.62d | 0d |  | HS2 - 8h x 7d Workweek (No Holidays) | AWE1 |  |
|  | 2 | **057-M6W** |  |  | 2018-07-29 | 2018-09-26 |  |  |  |  |  |  |  |
| P1EWCC-PWP02-5050 |  | Species Translocation to Habitat Creation (057-M6W) |  | 60d | 2018-07-29 | 2018-09-26 | P1EWCC-PWP02-5040 SS+150d, P1EWCC-AWP01-4100, P1EWCC-PWP02-14610 | 124.88d | 35.38d |  | HS2 - 8h x 7d Workweek (No Holidays) | AWE1 |  |
|  | 4 | **Translocation of Hedgerow** |  |  | 2018-11-01 | 2018-12-14 |  |  |  |  |  |  |  |
| P1EWCC-PWP02-9180 |  | Translocation of hedgerows |  | 43d | 2018-11-01 | 2018-12-14 | P1EWCC-PWP02-11910, P1EWCC-AWP01-4100, P1EWCC-PWP02-4010, P1EWCC-PWP02-5050 | 161.62d | 285d | start on or after 2018-11-01 | HS2 - 8h x 7d Workweek (No Holidays) | AWE2 |  |
|  | 7 | **Landscape Planting (not in AWE2)** |  |  | 2018-03-01 | 2019-01-30 |  |  |  |  |  |  |  |
|  | 1 | **Design** |  |  | 2018-03-01 | 2018-07-19 |  |  |  |  |  |  |  |
| P1EWCC-PWP02-14740 |  | Develop Scheme Design |  | 40d | 2018-03-01 | 2018-04-26 | P1EWCC-PWP02-11910 SS+5d | -109.75d | 0d |  |  | AWE2 | y |
| P1EWCC-PWP02-14770 |  | Develop Detailed Design |  | 50d | 2018-04-26 | 2018-07-05 | P1EWCC-PWP02-14740 | -109.75d | 0d |  |  | AWE2 | y |
| P1EWCC-PWP02-14760 |  | Schedule 17 Planning Consent Approval Period |  | 56d | 2018-04-27 | 2018-06-21 | P1EWCC-PWP02-14740 | 221.88d | 161d |  | HS2 - 8h x 7d Workweek (No Holidays) | AWE2 | y |
| P1EWCC-PWP02-14750 |  | HS2 approval period of vaildated design |  | 14d | 2018-07-06 | 2018-07-19 | P1EWCC-PWP02-14770 | 103d | 42d |  | HS2 - 8h x 7d Workweek (No Holidays) | AWE2 | y |
|  | 2 | **Installation** |  |  | 2018-08-31 | 2019-01-30 |  |  |  |  |  |  |  |
| P1EWCC-FWP03-1110 |  | Call off of Landscape Planting | milestone | 0d | 2018-08-31 | 2018-08-31 | P1EWCC-PWP02-11910, P1EWCC-PWP02-14750 | 42.88d | 0d | as late as possible |  | AWE2 | y |
| P1EWCC-FWP03-1250 |  | Call off period for Landscape Planting |  | 64.88d | 2018-08-31 | 2018-11-29 | P1EWCC-FWP03-1110 | 42.88d | 0d | as late as possible |  | AWE2 | y |
| P1EWCC-FWP03-1240 |  | Advanced Landscape Planting (2018-2019 season) (not in AWE2) |  | 43.25d | 2018-11-29 | 2019-01-30 | P1EWCC-AWP01-4100, P1EWCC-FWP03-1250, P1EWCC-PWP02-4010, P1EWCC-PWP02-5050, P1EWCC-PWP02-14760, P1EWCC-PWP02-15070 | 42.88d |  | start on or after 2018-11-01 |  | AWE2 | y |

| ID | WBS | Activity | Type | Duration | Start | Finish | Predecessors | Complete | Planned start | Planned finish | Total float | Free float | Constraint | Fusion - WPS | HS2 Filter |
| --- | --- | --- | --- | --- | --- | --- | --- | --- | --- | --- | --- | --- | --- | --- | --- |
|  | 8 | **Water Resources** |  |  |  |  |  |  |  |  |  |  |  |  |  |
|  | 1 | **Flood Risk Assessement and Design** |  |  |  |  |  |  |  |  |  |  |  |  |  |
|  | 2 | **Stoke Brook Diversion** |  |  |  |  |  |  |  |  |  |  |  |  |  |
|  | 6 | **Ground Water Monitoring** |  |  |  |  |  |  |  |  |  |  |  |  |  |
|  | 5 | **Compound Works** |  |  |  |  |  |  |  |  |  |  |  |  |  |
|  | 3 | **Noise and Vibration Works** |  |  |  |  |  |  |  |  |  |  |  |  |  |
|  | 4 | **SOW Completion Dates** |  |  | 2017-09-22 | 2019-03-29 |  |  |  |  |  |  |  |  |  |
| P1EWCC-PWP01-3360 |  | Completion of Survey for Bats (57+000) | milestone | 0d | 2017-09-22 | 2017-09-22 | P1EWCC-PWP01-3060 |  |  |  | -60.88d | 1385.12d | finish on 2017-06-30 | UW1 |  |
| P1EWCC-PWP02-4020 |  | Completion of Habitat Creation (056-M3E) | milestone | 0d | 2018-09-28 | 2018-09-28 | P1EWCC-PWP02-3960 |  |  |  | 0d | 1121d | finish on 2018-09-28 | AWE1 |  |
| P1EWCC-PWP02-4025 |  | Completion of Habitat Creation (057-M6W) | milestone | 0d | 2018-09-28 | 2018-09-28 | P1EWCC-PWP02-5040 |  |  |  | 0d | 1121d | finish on 2018-09-28 | AWE1 |  |
| P1EWCC-PWP02-4030 |  | Completion of Species Translocation/ exclusion - Badgers | milestone | 0d | 2018-09-28 | 2018-09-28 | P1EWCC-PWP02-4010 |  |  |  | 0d | 1121d | finish on 2018-09-28 | AWE1 |  |
| P1EWCC-PWP02-4040 |  | Completion of Species Translocation/ exclusion - Bats | milestone | 0d | 2018-09-28 | 2018-09-28 | P1EWCC-PWP02-4010 |  |  |  | 0d | 1121d | finish on 2018-09-28 | AWE1 |  |
| P1EWCC-PWP02-4050 |  | Completion of Species Translocation/ exclusion - Great Crested Newts | milestone | 0d | 2018-09-28 | 2018-09-28 | P1EWCC-PWP02-4010 |  |  |  | 0d | 1121d | finish on 2018-09-28 | AWE1 |  |
| P1EWCC-PWP02-4060 |  | Completion of Species Translocation/ exclusion - Reptiles | milestone | 0d | 2018-09-28 | 2018-09-28 | P1EWCC-PWP02-4010 |  |  |  | 0d | 1121d | finish on 2018-09-28 | AWE1 |  |
| P1EWCC-PWP02-4070 |  | Completion of Translocation of Hedgerows | milestone | 0d | 2018-09-28 | 2018-09-28 |  |  |  |  | 0d | 1121d | finish on 2018-09-28 | AWE2 |  |
| P1EWCC-PWP02-4080 |  | Completion of Species Translocation/ exclusion - Otters | milestone | 0d | 2018-09-28 | 2018-09-28 | P1EWCC-PWP02-4010 |  |  |  | 0d | 1121d | finish on 2018-09-28 | AWE1 |  |
| P1EWCC-FWP03-1120 |  | Completion of Landscape Planting | milestone | 0d | 2019-03-29 | 2019-03-29 | P1EWCC-FWP03-1240 |  |  |  | 0d | 990d | finish on 2019-03-29 | AWE2 | y |
|  | C22 | **Aylesbury South To Quainton (Ch. 58400 to Ch. 71850)** |  |  | 2017-02-24 | 2020-01-10 |  |  |  |  |  |  |  |  |  |
|  | C221 | **Aylesbury (Ch. 58400 to Ch. 62450)** |  |  | 2017-03-20 | 2019-09-30 |  |  |  |  |  |  |  |  |  |
|  | 2 | **058-L1 - Aylesbury South Cutting** |  |  | 2017-05-22 | 2019-09-27 |  |  |  |  |  |  |  |  |  |
|  | 4 | **Land Access** |  |  | 2017-05-22 | 2018-07-27 |  |  |  |  |  |  |  |  |  |
|  | 1 | **Survey Work** |  |  | 2017-05-22 | 2017-05-22 |  |  |  |  |  |  |  |  |  |
| P1EWCC-AWP01-1210 |  | Land Access Granted for Survey Work (Schedule 2) | milestone | 0d | 2017-05-22 A | 2017-05-22 A | P1EWCC-AWP01-1230 | 100% | 2017-03-20 | 2017-03-20 |  |  | as late as possible | AW1 | y |
|  | 2 | **Possession** |  |  | 2018-07-27 | 2018-07-27 |  |  |  |  |  |  |  |  |  |
|  | 2 | **Stoke Mandeville and Princes Risborough Area** |  |  | 2018-07-27 | 2018-07-27 |  |  |  |  |  |  |  |  |  |
| P1EWCC-AWP01-1200 |  | Land Access Possession Granted for Stoke Mandeville & Princes Risborough | milestone | 0d | 2018-07-27 | 2018-07-27 | P1EWCC-AWP01-1230 |  |  |  | 230d | 0d | as late as possible | AW1 | y |

| ID | WBS | Activity | Type | Duration | Start | Finish | Predecessors | Complete | Planned start | Planned finish | Total float | Free float | Constraint | Calendar | HS2 Filter | Fusion - WPS |
| --- | --- | --- | --- | --- | --- | --- | --- | --- | --- | --- | --- | --- | --- | --- | --- | --- |
|  | 5 | **Consents & Licensing** |  |  |  |  |  |  |  |  |  |  |  |  |  |  |
|  | 1 | **Network Rail** |  |  |  |  |  |  |  |  |  |  |  |  |  |  |
|  | 1 | **Survey Works** |  |  | 2017-05-22 | 2019-06-28 |  |  |  |  |  |  |  |  |  |  |
| P1EWCC-FWP01-1990 |  | Undertake Remaining Soil Surveys |  | 120d | 2017-12-15 | 2018-06-01 | P1EWCC-PWP01-5610 |  |  |  | 375d |  |  |  | y | AWS |
| P1EWCC-FWP01-2000 |  | Undertake Arboricultural Surveys |  | 125d | 2017-12-15 | 2018-06-08 | P1EWCC-PWP01-5610 |  |  |  | 370d |  |  |  | y | AWS |
| P1EWCC-FWP01-2010 |  | Undertake Remaining Ecology & Environmental Surveys |  | 400d | 2017-12-15 | 2019-06-28 | P1EWCC-PWP01-5610 |  |  |  | 95d |  |  |  | y | AWS |
|  | 1 | **Engineering Works** |  |  |  |  |  |  |  |  |  |  |  |  |  |  |
|  | 5 | **Ecological & Environmental** |  |  | 2017-05-22 | 2017-07-21 |  |  |  |  |  |  |  |  |  |  |
| P1EWCC-PWP01-3000 |  | Survey for Badgers, Bats, GCN & Reptiles |  | 20d | 2017-05-22 A | 2017-07-21 A | P1EWCC-AWP01-1220, P1EWCC-AWP01-1210 | 100% | 2017-03-20 | 2017-04-14 |  |  |  |  | y | UW1 |
|  | 2 | **Historic Environment** |  |  |  |  |  |  |  |  |  |  |  |  |  |  |
|  | 3 | **Network Rail** |  |  |  |  |  |  |  |  |  |  |  |  |  |  |
|  | 13 | **Ecological Mitigation Works** |  |  | 2018-07-29 | 2018-12-14 |  |  |  |  |  |  |  |  |  |  |
|  | 8 | **Translocation of Species** |  |  | 2018-07-29 | 2018-09-26 |  |  |  |  |  |  |  |  |  |  |
| P1EWCC-PWP02-3700 |  | Species Translocation to Habitat Creation (056-M3E) |  | 60d | 2018-07-29 | 2018-09-26 | P1EWCC-PWP02-3960 SS+150d, P1EWCC-AWP01-1200, P1EWCC-PWP02-14610 |  |  |  | 322d | 35.38d |  | HS2 - 8h x 7d Workweek (No Holidays) | y | AWE1 |
|  | 1 | **Translocation of Hedgerow** |  |  | 2018-11-01 | 2018-12-14 |  |  |  |  |  |  |  |  |  |  |
| P1EWCC-PWP02-9170 |  | Translocation of hedgerows |  | 43d | 2018-11-01 | 2018-12-14 | P1EWCC-PWP02-11910, P1EWCC-AWP01-1200, P1EWCC-PWP02-3700 |  |  |  | 286.62d |  | start on or after 2018-11-01 | HS2 - 8h x 7d Workweek (No Holidays) |  | AWE2 |
|  | 11 | **Historic Environment** |  |  |  |  |  |  |  |  |  |  |  |  |  |  |
|  | 1 | **Ecological Mitigation Site** |  |  |  |  |  |  |  |  |  |  |  |  |  |  |
|  | 2 | **058-L1 - Aylesbury South Cutting** |  |  |  |  |  |  |  |  |  |  |  |  |  |  |
|  | 9 | **Site Clearance** |  |  |  |  |  |  |  |  |  |  |  |  |  |  |
|  | 7 | **Site Compound** |  |  |  |  |  |  |  |  |  |  |  |  |  |  |
|  | 10 | **Utilities** |  |  |  |  |  |  |  |  |  |  |  |  |  |  |
|  | 1 | **CSO-02-6215 (Thames Water 12" Watermain under new road)** |  |  |  |  |  |  |  |  |  |  |  |  |  |  |
|  | 3 | **CSO-02-6207 & CSO-02-6214 (Thames Water 12" crossing Marsh Lane)** |  |  |  |  |  |  |  |  |  |  |  |  |  |  |
|  | 4 | **CSO-02-3111 (BT Cable under HS2 and new road)** |  |  |  |  |  |  |  |  |  |  |  |  |  |  |
|  | 5 | **CSO-02-1208 (UKPN 11kV overhead diverted via UTX under HS2, new road and rail)** |  |  |  |  |  |  |  |  |  |  |  |  |  |  |
|  | 6 | **CSO-02-6208 (Thames Water 12"main diverted under HS2, new road and rail)** |  |  |  |  |  |  |  |  |  |  |  |  |  |  |
|  | 7 | **CSO-02-1209 & CSO-02-1210 (UKPN 33kv overhead under HS2 and rail)** |  |  |  |  |  |  |  |  |  |  |  |  |  |  |
|  | 6 | **Highway & Public Rights of Way** |  |  |  |  |  |  |  |  |  |  |  |  |  |  |
|  | 1 | **Stoke Mandeville Bypass** |  |  |  |  |  |  |  |  |  |  |  |  |  |  |
|  | 2 | **Princes Risboruough Rail Overbridge** |  |  |  |  |  |  |  |  |  |  |  |  |  |  |
|  | 1 | **Network Rail Grip 4 Process (Single Option Development)** |  |  |  |  |  |  |  |  |  |  |  |  |  |  |
|  | 2 | **Network Rail Grip 5 Process (Detailed Design)** |  |  |  |  |  |  |  |  |  |  |  |  |  |  |
|  | 3 | **Noise and Vibration Works** |  |  |  |  |  |  |  |  |  |  |  |  |  |  |
|  | 2 | **SOW Completion Dates** |  |  | 2017-09-18 | 2019-09-27 |  |  |  |  |  |  |  |  |  |  |
| P1EWCC-PWP01-3010 |  | Completion of Ecological & Environmental Surveys (57+000 to 59+500) | milestone | 0d | 2017-09-18 | 2017-09-18 | P1EWCC-PWP01-3000 |  |  |  | -56d | 1390d | finish on 2017-06-30 |  | y | UW1 |
| P1EWCC-PWP02-3540 |  | Completion of Species Translocation/ exclusion - Badgers | milestone | 0d | 2019-09-27 | 2019-09-27 | P1EWCC-PWP02-3700 |  |  |  | 0d | 861d | finish on 2019-09-27 |  | y | AWE1 |
| P1EWCC-PWP02-3550 |  | Completion of Create Nest Site & Habitat Establishment | milestone | 0d | 2019-09-27 | 2019-09-27 | P1EWCC-PWP02-3700 |  |  |  | 0d | 861d | finish on 2019-09-27 |  | y | AWE1 |
| P1EWCC-PWP02-3560 |  | Completion of Species Translocation/ exclusion - GCN | milestone | 0d | 2019-09-27 | 2019-09-27 | P1EWCC-PWP02-3700 |  |  |  | 0d | 861d | finish on 2019-09-27 |  | y | AWE1 |
| P1EWCC-PWP02-3570 |  | Completion of Species Translocation/ exclusion - Bats | milestone | 0d | 2019-09-27 | 2019-09-27 | P1EWCC-PWP02-3700 |  |  |  | 0d | 861d | finish on 2019-09-27 |  | y | AWE1 |
| P1EWCC-PWP02-3580 |  | Completion of Translocation of hedgerows | milestone | 0d | 2019-09-27 | 2019-09-27 | P1EWCC-PWP02-9170 |  |  |  | 0d | 861d | finish on 2019-09-27 |  | y | AWE1 |

| ID | WBS | Activity | Type | Duration | Start | Finish | Predecessors | Complete | Planned start | Planned finish | Total float | Free float | Constraint | Calendar | HS2 Filter | Fusion - WPS |
| --- | --- | --- | --- | --- | --- | --- | --- | --- | --- | --- | --- | --- | --- | --- | --- | --- |
|  | 1 | **060-L1 - Aylesbury Embankment** |  |  | 2017-03-20 | 2019-09-30 |  |  |  |  |  |  |  |  |  |  |
|  | 8 | **Land Access** |  |  | 2017-06-19 | 2018-07-30 |  |  |  |  |  |  |  |  |  |  |
|  | 1 | **Survey Work** |  |  | 2017-06-19 | 2017-06-19 |  |  |  |  |  |  |  |  |  |  |
| P1EWCC-AWP01-5770 |  | Land Access Granted for Survey Work (Schedule 2) | milestone | 0d | 2017-06-19 A | 2017-06-19 A |  | 100% | 2017-04-03 | 2017-04-03 |  |  | as late as possible |  | y | AW1 |
|  | 2 | **Possession** |  |  | 2018-07-30 | 2018-07-30 |  |  |  |  |  |  |  |  |  |  |
| P1EWCC-AWP01-5780 |  | Land Access Possession Granted for Construction (Schedule 16) | milestone | 0d | 2018-07-30 | 2018-07-30 |  |  |  |  | 230d | 0d | as late as possible |  | y | AW1 |
|  | 1 | **Survey Works** |  |  | 2017-03-20 | 2019-06-26 |  |  |  |  |  |  |  |  |  |  |
| P1EWCC-AWP01-5760 |  | Planning Consent & Licensing for Survey Work |  | 10d | 2017-03-20 A | 2017-06-16 A | P1EWCC-AWP01-1230 | 100% | 2017-03-20 | 2017-03-31 |  |  |  |  |  | AW1 |
| P1EWCC-FWP01-2030 |  | Undertake Remaining Soil Surveys |  | 120d | 2017-12-15 | 2018-06-01 | P1EWCC-PWP01-5610 |  |  |  | 375d |  |  |  | y | AWS |
| P1EWCC-FWP01-2040 |  | Undertake Arboricultural Surveys |  | 125d | 2017-12-15 | 2018-06-08 | P1EWCC-PWP01-5610 |  |  |  | 370d |  |  |  | y | AWS |
| P1EWCC-FWP01-2050 |  | Undertake Remaining Ecology & Environmental Surveys |  | 398d | 2017-12-15 | 2019-06-26 | P1EWCC-PWP01-5610 |  |  |  | 97d |  |  |  | y | AWS |
|  | 1 | **Ecological & Environmental Surveys** |  |  | 2017-06-19 | 2017-06-30 |  |  |  |  |  |  |  |  |  |  |
| P1EWCC-PWP01-3630 |  | Survey for Badgers, Bats, GCN & Reptiles |  | 25d | 2017-06-19 A | 2017-06-30 A | P1EWCC-AWP01-5760, P1EWCC-AWP01-5770 | 100% | 2017-04-03 | 2017-05-05 |  |  |  |  |  | UW1 |
|  | 2 | **Engineering Surveys** |  |  |  |  |  |  |  |  |  |  |  |  |  |  |
|  | 3 | **Historic Environment** |  |  | 2018-02-09 | 2018-11-21 |  |  |  |  |  |  |  |  |  |  |
| P1EWCC-PWP06-4500 |  | Non-Intrusive Surveys (geophysics) |  | 20d | 2018-02-09 | 2018-03-09 | P1EWCC-PWP06-4480, P1EWCC-AWP01-5770, P1EWCC-PWP05-240 |  |  |  | 285d | 0d |  |  |  | AWH |
| P1EWCC-PWP06-9170 |  | Non-Intrusive Surveys (trial trenching) |  | 30d | 2018-05-04 | 2018-06-15 | P1EWCC-PWP06-4490, P1EWCC-PWP05-240 |  |  |  | 285d | 0d |  |  |  | AWH |
| P1EWCC-PWP06-4520 |  | Intrusive Surveys |  | 40d | 2018-09-26 | 2018-11-21 | P1EWCC-PWP06-4490, P1EWCC-PWP02-7040, P1EWCC-PWP06-9180, P1EWCC-AWP01-5780 |  |  |  | 252d | 0d |  |  |  | AWH |
|  | 7 | **Historic Environment** |  |  | 2017-12-15 | 2019-01-09 |  |  |  |  |  |  |  |  |  |  |
| P1EWCC-PWP06-4480 |  | Production and Approval of LS-WSI (non-intrusive surveys) |  | 40d | 2017-12-15 | 2018-02-09 | P1EWCC-PWP05-240 |  |  |  | 285d | 0d |  |  |  | AWH |
| P1EWCC-PWP06-4490 |  | Update of Project Plans and LS-WSI and Approval (intrusive surveys) |  | 40d | 2018-03-09 | 2018-05-04 | P1EWCC-PWP06-4500 |  |  |  | 285d | 0d |  |  |  | AWH |
| P1EWCC-PWP06-9180 |  | Update of Project Plans and LS-WSI and Approval (intrusive surveys) |  | 40d | 2018-06-15 | 2018-08-10 | P1EWCC-PWP06-9170 |  |  |  | 285d | 33d |  |  |  | AWH |
| P1EWCC-PWP06-4510 |  | Report of Findings And Approval (Archaeological Investigation) |  | 35d | 2018-11-21 | 2019-01-09 | P1EWCC-PWP06-4520 |  |  |  | 1047.12d |  |  |  |  | AWH |
|  | 2 | **Ecological Mitigation Works** |  |  | 2018-07-29 | 2018-12-14 |  |  |  |  |  |  |  |  |  |  |
|  | 5 | **Translocation of Species** |  |  | 2018-07-29 | 2018-09-26 |  |  |  |  |  |  |  |  |  |  |
| P1EWCC-PWP02-7040 |  | Species Translocation to Habitat Creation (056-M3E) |  | 60d | 2018-07-29 | 2018-09-26 | P1EWCC-PWP01-3630, P1EWCC-AWP01-5780, P1EWCC-PWP02-3960 SS+150d, P1EWCC-PWP02-14610 |  |  |  | 323d | 0d |  | HS2 - 8h x 7d Workweek (No Holidays) |  | AWE1 |

| ID | WBS | Activity | Type | Duration | Start | Finish | Predecessors | Complete | Remaining | Planned start | Planned finish | Total float | Free float | Constraint | Expected finish | Calendar | Fusion - WPS | HS2 Filter |
| --- | --- | --- | --- | --- | --- | --- | --- | --- | --- | --- | --- | --- | --- | --- | --- | --- | --- | --- |
|  | 1 | **Translocation of Hedgerow** |  |  | 2018-11-01 | 2018-12-14 |  |  |  |  |  |  |  |  |  |  |  |  |
| P1EWCC-PWP02-7090 |  | Translocation of hedgerows |  | 43d | 2018-11-01 | 2018-12-14 | P1EWCC-PWP02-11910, P1EWCC-PWP02-7040, P1EWCC-AWP01-5780 |  |  |  |  | 287.62d | 289.62d | start on or after 2018-11-01 |  | HS2 - 8h x 7d Workweek (No Holidays) | AWE2 |  |
|  | 5 | **Noise and Vibration Works** |  |  |  |  |  |  |  |  |  |  |  |  |  |  |  |  |
|  | 4 | **SOW Completion Dates** |  |  | 2019-09-30 | 2019-09-30 |  |  |  |  |  |  |  |  |  |  |  |  |
| P1EWCC-PWP02-7050 |  | Completion of Species Translocation/ exclusion - Badgers | milestone | 0d | 2019-09-30 | 2019-09-30 | P1EWCC-PWP02-7040 |  |  |  |  | 0d | 860d | finish on 2019-09-30 |  |  | AWE1 |  |
| P1EWCC-PWP02-7060 |  | Completion of Species Translocation/ exclusion - Bats | milestone | 0d | 2019-09-30 | 2019-09-30 | P1EWCC-PWP02-7040 |  |  |  |  | 0d | 860d | finish on 2019-09-30 |  |  | AWE1 |  |
| P1EWCC-PWP02-7070 |  | Completion of Translocation of hedgerows | milestone | 0d | 2019-09-30 | 2019-09-30 | P1EWCC-PWP02-7090 |  |  |  |  | 0d | 860d | finish on 2019-09-30 |  |  | AWE2 |  |
|  | 3 | **061-L3 - Aylesbury North Cutting** |  |  | 2017-03-20 | 2019-09-30 |  |  |  |  |  |  |  |  |  |  |  |  |
|  | 8 | **Land Access** |  |  | 2017-06-19 | 2018-07-30 |  |  |  |  |  |  |  |  |  |  |  |  |
|  | 1 | **Survey Work** |  |  | 2017-06-19 | 2017-06-19 |  |  |  |  |  |  |  |  |  |  |  |  |
| P1EWCC-AWP01-5800 |  | Land Access Granted for Survey Work (Schedule 2) | milestone | 0d | 2017-06-19 A | 2017-06-19 A |  | 100% |  | 2017-06-13 | 2017-06-13 |  |  | as late as possible |  |  | AW1 | y |
|  | 2 | **Possession** |  |  | 2018-07-30 | 2018-07-30 |  |  |  |  |  |  |  |  |  |  |  |  |
| P1EWCC-AWP01-5810 |  | Land Access Possession Granted for Construction (Schedule 16) | milestone | 0d | 2018-07-30 | 2018-07-30 |  |  |  |  |  | 230d | 0d | as late as possible |  |  | AW1 | y |
|  | 1 | **Survey Works** |  |  | 2017-03-20 | 2019-06-26 |  |  |  |  |  |  |  |  |  |  |  |  |
| P1EWCC-AWP01-5790 |  | Planning Consent & Licensing for Survey Work |  | 10d | 2017-03-20 A | 2017-06-16 A | P1EWCC-AWP01-1230 | 100% |  | 2017-03-20 | 2017-03-31 |  |  |  |  |  | AW1 |  |
| P1EWCC-FWP01-2070 |  | Undertake Remaining Soil Surveys |  | 120d | 2017-12-15 | 2018-06-01 | P1EWCC-PWP01-5610 |  |  |  |  | 421d |  |  |  |  | AWS | y |
| P1EWCC-FWP01-2080 |  | Undertake Arboricultural Surveys |  | 125d | 2017-12-15 | 2018-06-08 | P1EWCC-PWP01-5610 |  |  |  |  | 416d |  |  |  |  | AWS | y |
| P1EWCC-FWP01-2090 |  | Undertake Remaining Ecology & Environmental Surveys |  | 398d | 2017-12-15 | 2019-06-26 | P1EWCC-PWP01-5610 |  |  |  |  | 143d |  |  |  |  | AWS | y |
| P1EWCC-AWP01-5830 |  | Planning Consent & Licensing for Demolition Survey Work |  | 64.88d | 2018-01-29 | 2018-04-27 | P1EWCC-AWP01-1230 |  |  |  |  | 85.12d | 0d | as late as possible |  |  | AW1 |  |
|  | 1 | **Ecological & Environmental Surveys** |  |  | 2017-06-19 | 2017-09-18 |  |  |  |  |  |  |  |  |  |  |  |  |
| P1EWCC-PWP01-3640 |  | Survey for Badgers, Bats, GCN & Reptiles |  | 25d | 2017-06-19 A | 2017-09-18 | P1EWCC-AWP01-5800, P1EWCC-AWP01-5790 | 100% | 0d | 2017-06-13 | 2017-07-17 | 455d | 0d |  | 2017-09-15 |  | UW1 |  |
|  | 2 | **Engineering Surveys** |  |  |  |  |  |  |  |  |  |  |  |  |  |  |  |  |
|  | 3 | **Historic Environment** |  |  | 2018-02-09 | 2018-11-21 |  |  |  |  |  |  |  |  |  |  |  |  |
| P1EWCC-PWP06-4560 |  | Non-Intrusive Surveys (geophysics) |  | 20d | 2018-02-09 | 2018-03-09 | P1EWCC-PWP06-4540, P1EWCC-AWP01-5800, P1EWCC-PWP05-240 |  |  |  |  | 331d | 0d |  |  |  | AWH |  |
| P1EWCC-PWP06-9190 |  | Non-Intrusive Surveys (trial trenching) |  | 30d | 2018-05-04 | 2018-06-15 | P1EWCC-PWP06-4550, P1EWCC-PWP05-240 |  |  |  |  | 331d | 0d |  |  |  | AWH |  |
| P1EWCC-PWP06-4580 |  | Intrusive Surveys |  | 40d | 2018-09-26 | 2018-11-21 | P1EWCC-PWP06-4550, P1EWCC-PWP02-7100, P1EWCC-PWP06-9200, P1EWCC-AWP01-5810 |  |  |  |  | 298d | 0d |  |  |  | AWH |  |

| ID | WBS | Activity | Type | Duration | Start | Finish | Predecessors | Total float | Free float | Constraint | Calendar | Fusion - WPS | HS2 Filter |
| --- | --- | --- | --- | --- | --- | --- | --- | --- | --- | --- | --- | --- | --- |
|  | 4 | **Demoltion Surveys** |  |  | 2018-04-27 | 2018-05-11 |  |  |  |  |  |  |  |
| P1EWCC-FWP03-5780 |  | Pre-Demolition Survey for Glebe House off the Oxford Road - (Grade II Listed - Heritage) |  | 10d | 2018-04-27 | 2018-05-11 | P1EWCC-FWP03-5760, P1EWCC-PWP01-5610, P1EWCC-AWP01-5830 | 85.12d | 0d |  |  | AWS |  |
|  | 7 | **Historic Environment** |  |  | 2017-12-15 | 2019-01-09 |  |  |  |  |  |  |  |
| P1EWCC-PWP06-4540 |  | Production and Approval of Proejct Plans & LS-WSI (non-intrusive surveys) |  | 40d | 2017-12-15 | 2018-02-09 | P1EWCC-PWP05-240 | 331d | 0d |  |  | AWH |  |
| P1EWCC-PWP06-4550 |  | Update of Project Plans and LS-WSI and Approval (intrusive surveys) |  | 40d | 2018-03-09 | 2018-05-04 | P1EWCC-PWP06-4560 | 331d | 0d |  |  | AWH |  |
| P1EWCC-PWP06-9200 |  | Update of Project Plans and LS-WSI and Approval (intrusive surveys) |  | 40d | 2018-06-15 | 2018-08-10 | P1EWCC-PWP06-9190 | 331d | 33d |  |  | AWH |  |
| P1EWCC-PWP06-4570 |  | Report of Findings And Approval (Archaeological Investigation) |  | 35d | 2018-11-21 | 2019-01-09 | P1EWCC-PWP06-4580 | 1047.12d |  |  |  | AWH |  |
|  | 3 | **Demolition** |  |  | 2017-12-15 | 2018-06-01 |  |  |  |  |  |  |  |
| P1EWCC-FWP03-5760 |  | Prepare Investigation Plans for Scoping and Planning Demolitions inc Approval |  | 95d | 2017-12-15 | 2018-04-27 | P1EWCC-PWP01-5610 | 90d | 0d | as late as possible |  | AWS |  |
| P1EWCC-FWP03-5770 |  | Report on Demoliton Surveys and Approval |  | 15d | 2018-05-11 | 2018-06-01 | P1EWCC-PWP01-5610, P1EWCC-FWP03-5780 | 85.12d |  |  |  | AWS |  |
|  | 2 | **Ecological Mitigation Works** |  |  | 2018-03-01 | 2019-01-30 |  |  |  |  |  |  |  |
|  | 5 | **Translocation of Species** |  |  | 2018-07-29 | 2018-09-26 |  |  |  |  |  |  |  |
| P1EWCC-PWP02-7100 |  | Species Translocation to Habitat Creation (056-M3E) |  | 60d | 2018-07-29 | 2018-09-26 | P1EWCC-AWP01-5810, P1EWCC-PWP02-3960 SS+150d, P1EWCC-PWP01-3640, P1EWCC-PWP02-14610 | 323d | 0d |  | HS2 - 8h x 7d Workweek (No Holidays) | AWE1 |  |
|  | 2 | **Landscape Planting - Hartwell House (062-M1C)** |  |  | 2018-03-01 | 2019-01-30 |  |  |  |  |  |  |  |
|  | 1 | **Design** |  |  | 2018-03-01 | 2018-07-19 |  |  |  |  |  |  |  |
| P1EWCC-PWP02-13350 |  | Develop Scheme Design |  | 40d | 2018-03-01 | 2018-04-26 | P1EWCC-PWP02-11910 SS+5d | -109.75d | 0d |  |  | AWE2 | y |
| P1EWCC-PWP02-13360 |  | Develop Detailed Design |  | 50d | 2018-04-26 | 2018-07-05 | P1EWCC-PWP02-13350 | -109.75d | 0d |  |  | AWE2 | y |
| P1EWCC-PWP02-13330 |  | Schedule 17 Planning Consent Approval Period |  | 56d | 2018-04-27 | 2018-06-21 | P1EWCC-PWP02-13350 | 509.75d | 161d |  | HS2 - 8h x 7d Workweek (No Holidays) | AWE2 | y |
| P1EWCC-PWP02-13320 |  | HS2 approval period of vaildated design |  | 14d | 2018-07-06 | 2018-07-19 | P1EWCC-PWP02-13360 | 390.88d | 0d |  | HS2 - 8h x 7d Workweek (No Holidays) | AWE2 | y |
|  | 2 | **Installation** |  |  | 2018-07-19 | 2019-01-30 |  |  |  |  |  |  |  |
| P1EWCC-FWP03-6030 |  | Call off of Landscape Planting | milestone | 0d | 2018-07-19 | 2018-07-19 | P1EWCC-PWP02-13320 | 278.88d | 0d |  |  | AWE2 | y |
| P1EWCC-FWP03-6040 |  | Call off period for Landscape Planting |  | 64.88d | 2018-07-19 | 2018-10-18 | P1EWCC-FWP03-6030 | 278.88d | 30.12d |  |  | AWE2 | y |
| P1EWCC-FWP03-6020 |  | Advance Planting to visual screening for Hartwell House |  | 43.25d | 2018-11-29 | 2019-01-30 | P1EWCC-FWP03-6040, P1EWCC-AWP01-5810, P1EWCC-PWP02-7100, P1EWCC-PWP02-13330, P1EWCC-PWP02-15070 | 248.75d |  | start on or after 2018-11-01 |  | AWE2 | y |
|  | 1 | **Translocation of Hedgerow** |  |  | 2018-11-01 | 2018-12-14 |  |  |  |  |  |  |  |
| P1EWCC-PWP02-7140 |  | Translocation of hedgerows |  | 43d | 2018-11-01 | 2018-12-14 | P1EWCC-PWP02-7100, P1EWCC-PWP02-11910, P1EWCC-AWP01-5810 | 287.62d | 289.62d | start on or after 2018-11-01 | HS2 - 8h x 7d Workweek (No Holidays) | AWE2 |  |

| ID | WBS | Activity | Type | Duration | Start | Finish | Predecessors | Complete | Planned start | Planned finish | Total float | Free float | Constraint | Fusion - WPS | HS2 Filter |
| --- | --- | --- | --- | --- | --- | --- | --- | --- | --- | --- | --- | --- | --- | --- | --- |
|  | 9 | **Highway Works** |  |  |  |  |  |  |  |  |  |  |  |  |  |
|  | 5 | **Noise and Vibration Works** |  |  |  |  |  |  |  |  |  |  |  |  |  |
|  | 4 | **SOW Completion Dates** |  |  | 2018-09-28 | 2019-09-30 |  |  |  |  |  |  |  |  |  |
| P1EWCC-FWP03-5790 |  | Report on Demoliton Surveys and Approval | milestone | 0d | 2018-09-28 | 2018-09-28 | P1EWCC-FWP03-5770 |  |  |  | 0d | 1120d | finish on 2018-09-28 | AWS |  |
| P1EWCC-FWP03-5720 |  | Completion of Advance Planting | milestone | 0d | 2019-03-29 | 2019-03-29 | P1EWCC-FWP03-5710 |  |  |  | 0d | 990d | finish on 2019-03-29 | AWE2 | y |
| P1EWCC-PWP02-7110 |  | Completion of Species Translocation/ exclusion - Badgers | milestone | 0d | 2019-09-30 | 2019-09-30 | P1EWCC-PWP02-7100 |  |  |  | 0d | 860d | finish on 2019-09-30 | AWE1 |  |
| P1EWCC-PWP02-7120 |  | Completion of Species Translocation/ exclusion - Bats | milestone | 0d | 2019-09-30 | 2019-09-30 | P1EWCC-PWP02-7100 |  |  |  | 0d | 860d | finish on 2019-09-30 | AWE1 |  |
| P1EWCC-PWP02-7130 |  | Completion of Translocation of hedgerows | milestone | 0d | 2019-09-30 | 2019-09-30 | P1EWCC-PWP02-7140 |  |  |  | 0d | 860d | finish on 2019-09-30 | AWE1 |  |
| P1EWCC-PWP02-7150 |  | Completion of Species Translocation/ exclusion - Reptiles | milestone | 0d | 2019-09-30 | 2019-09-30 | P1EWCC-PWP02-7100 |  |  |  | 0d | 860d | finish on 2019-09-30 | AWE1 |  |
| P1EWCC-PWP02-7160 |  | Completion of Species Translocation/ exclusion - Otters | milestone | 0d | 2019-09-30 | 2019-09-30 | P1EWCC-PWP02-7100 |  |  |  | 0d | 860d | finish on 2019-09-30 | AWE1 |  |
|  | C222 | **Thame Valley (Ch. 62450 to Ch. 65450)** |  |  | 2017-03-20 | 2020-01-10 |  |  |  |  |  |  |  |  |  |
|  | 1 | **062-L1 - Oxford Road Embankment** |  |  | 2017-03-20 | 2019-09-30 |  |  |  |  |  |  |  |  |  |
|  | 8 | **Land Access** |  |  | 2017-06-12 | 2018-08-01 |  |  |  |  |  |  |  |  |  |
|  | 1 | **Survey Work** |  |  | 2017-06-12 | 2017-06-12 |  |  |  |  |  |  |  |  |  |
| P1EWCC-AWP01-5860 |  | Land Access Granted for Survey Work (Schedule 2) | milestone | 0d | 2017-06-12 A | 2017-06-12 A |  | 100% | 2017-04-03 | 2017-04-03 |  |  | as late as possible | AW1 | y |
|  | 2 | **Possession** |  |  | 2018-08-01 | 2018-08-01 |  |  |  |  |  |  |  |  |  |
| P1EWCC-AWP01-5870 |  | Land Access Possession Granted for Construction (Schedule 16) | milestone | 0d | 2018-08-01 | 2018-08-01 |  |  |  |  | 87.75d | 0d | as late as possible | AW1 | y |
|  | 3 | **Survey Works** |  |  | 2017-03-20 | 2019-06-26 |  |  |  |  |  |  |  |  |  |
| P1EWCC-AWP01-5850 |  | Planning Consent & Licensing for Survey Work |  | 10d | 2017-03-20 A | 2017-06-09 A | P1EWCC-AWP01-1230 | 100% | 2017-03-20 | 2017-03-31 |  |  |  | AW1 |  |
| P1EWCC-FWP01-2110 |  | Undertake Remaining Soil Surveys |  | 120d | 2017-12-15 | 2018-06-01 | P1EWCC-PWP01-5610 |  |  |  | 421d |  |  | AWS | y |
| P1EWCC-FWP01-2120 |  | Undertake Arboricultural Surveys |  | 125d | 2017-12-15 | 2018-06-08 | P1EWCC-PWP01-5610 |  |  |  | 416d |  |  | AWS | y |
| P1EWCC-FWP01-2130 |  | Undertake Remaining Ecology & Environmental Surveys |  | 398d | 2017-12-15 | 2019-06-26 | P1EWCC-PWP01-5610 |  |  |  | 143d |  |  | AWS | y |
|  | 1 | **Ecological & Environmental Surveys** |  |  |  |  |  |  |  |  |  |  |  |  |  |
|  | 2 | **Engineering Surveys** |  |  |  |  |  |  |  |  |  |  |  |  |  |
|  | 3 | **Historic Environment** |  |  | 2018-02-09 | 2018-11-23 |  |  |  |  |  |  |  |  |  |
| P1EWCC-PWP06-4620 |  | Non-Intrusive Surveys (geophysics) |  | 20d | 2018-02-09 | 2018-03-09 | P1EWCC-PWP06-4600, P1EWCC-AWP01-5860, P1EWCC-PWP05-240 |  |  |  | 331d | 0d |  | AWH |  |
| P1EWCC-PWP06-9210 |  | Non-Intrusive Surveys (trial trenching) |  | 30d | 2018-05-04 | 2018-06-15 | P1EWCC-PWP06-4610, P1EWCC-PWP05-240 |  |  |  | 331d | 0d |  | AWH |  |
| P1EWCC-PWP06-4640 |  | Intrusive Surveys |  | 40d | 2018-10-01 | 2018-11-23 | P1EWCC-PWP06-4610, P1EWCC-PWP02-7170, P1EWCC-PWP06-9220, P1EWCC-AWP01-5870 |  |  |  | 295.88d | 0d |  | AWH |  |

| ID | WBS | Activity | Type | Duration | Start | Finish | Predecessors | Total float | Free float | Constraint | Calendar | Fusion - WPS | HS2 Filter |
| --- | --- | --- | --- | --- | --- | --- | --- | --- | --- | --- | --- | --- | --- |
|  | 7 | **Historic Environment** |  |  | 2017-12-15 | 2019-01-11 |  |  |  |  |  |  |  |
| P1EWCC-PWP06-4600 |  | Production and Approval of Proejct Plans & LS-WSI (non-intrusive surveys) |  | 40d | 2017-12-15 | 2018-02-09 | P1EWCC-PWP05-240 | 331d | 0d |  |  | AWH |  |
| P1EWCC-PWP06-4610 |  | Update of Project Plans and LS-WSI and Approval (intrusive surveys) |  | 40d | 2018-03-09 | 2018-05-04 | P1EWCC-PWP06-4620 | 331d | 0d |  |  | AWH |  |
| P1EWCC-PWP06-9220 |  | Update of Project Plans and LS-WSI and Approval (intrusive surveys) |  | 40d | 2018-06-15 | 2018-08-10 | P1EWCC-PWP06-9210 | 331d | 35.12d |  |  | AWH |  |
| P1EWCC-PWP06-4630 |  | Report of Findings And Approval (Archaeological Investigation) |  | 35d | 2018-11-26 | 2019-01-11 | P1EWCC-PWP06-4640 | 1045d |  |  |  | AWH |  |
|  | 6 | **Ecological Mitigation Works** |  |  | 2018-03-01 | 2019-01-30 |  |  |  |  |  |  |  |
|  | 5 | **Translocation of Species** |  |  | 2018-08-01 | 2018-09-29 |  |  |  |  |  |  |  |
| P1EWCC-PWP02-7170 |  | Species Translocation to Habitat Creation (065-M1W) |  | 60d | 2018-08-01 | 2018-09-29 | P1EWCC-PWP02-5100 SS+150d, P1EWCC-AWP01-5870, P1EWCC-PWP02-14610 | 121.88d | 1d | start on or after 2018-08-01 | HS2 - 8h x 7d Workweek (No Holidays) | AWE1 |  |
|  | 2 | **Landscape Planting** |  |  | 2018-03-01 | 2019-01-30 |  |  |  |  |  |  |  |
|  | 3 | **Landscape Planting - Aylesbury Golf Course (062-M3E)** |  |  | 2018-03-01 | 2019-01-30 |  |  |  |  |  |  |  |
|  | 1 | **Design** |  |  | 2018-03-01 | 2018-07-19 |  |  |  |  |  |  |  |
| P1EWCC-PWP02-13210 |  | Develop Scheme Design |  | 40d | 2018-03-01 | 2018-04-26 | P1EWCC-PWP02-11910 SS+5d | -109.75d | 0d |  |  | AWE2 | y |
| P1EWCC-PWP02-13240 |  | Develop Detailed Design |  | 50d | 2018-04-26 | 2018-07-05 | P1EWCC-PWP02-13210 | -109.75d | 0d |  |  | AWE2 | y |
| P1EWCC-PWP02-13230 |  | Schedule 17 Planning Consent Approval Period |  | 56d | 2018-04-27 | 2018-06-21 | P1EWCC-PWP02-13210 | 221.88d | 161d |  | HS2 - 8h x 7d Workweek (No Holidays) | AWE2 | y |
| P1EWCC-PWP02-13220 |  | HS2 approval period of vaildated design |  | 14d | 2018-07-06 | 2018-07-19 | P1EWCC-PWP02-13240 | 103d | 0d |  | HS2 - 8h x 7d Workweek (No Holidays) | AWE2 | y |
|  | 2 | **Installation** |  |  | 2018-07-19 | 2019-01-30 |  |  |  |  |  |  |  |
| P1EWCC-FWP03-5730 |  | Call off of Landscape Planting | milestone | 0d | 2018-07-19 | 2018-07-19 | P1EWCC-PWP02-11910, P1EWCC-PWP02-13220 | 73d | 0d |  |  | AWE2 | y |
| P1EWCC-FWP03-5740 |  | Call off period for Landscape Planting |  | 64.88d | 2018-07-19 | 2018-10-18 | P1EWCC-FWP03-5730 | 73d | 30.12d |  |  | AWE2 | y |
| P1EWCC-FWP03-5710 |  | Advance Planting to north of the golf club to provide screening to Aylesbury |  | 43.25d | 2018-11-29 | 2019-01-30 | P1EWCC-FWP03-5740, P1EWCC-AWP01-5870, P1EWCC-PWP02-7170, P1EWCC-PWP02-13230, P1EWCC-PWP02-15070 | 42.88d |  | start on or after 2018-11-01 |  | AWE2 | y |
|  | 1 | **Landscape Planting - Aylesbury Golf Course (062-M2E)** |  |  | 2018-03-01 | 2019-01-30 |  |  |  |  |  |  |  |
|  | 1 | **Design** |  |  | 2018-03-01 | 2018-07-19 |  |  |  |  |  |  |  |
| P1EWCC-PWP02-13280 |  | Develop Scheme Design |  | 40d | 2018-03-01 | 2018-04-26 | P1EWCC-PWP02-11910 SS+5d | -109.75d | 0d |  |  | AWE2 | y |
| P1EWCC-PWP02-14780 |  | Develop Detailed Design |  | 50d | 2018-04-26 | 2018-07-05 | P1EWCC-PWP02-13280 | -109.75d | 0d |  |  | AWE2 | y |
| P1EWCC-PWP02-13270 |  | Schedule 17 Planning Consent Approval Period |  | 56d | 2018-04-27 | 2018-06-21 | P1EWCC-PWP02-13280 | 509.75d | 161d |  | HS2 - 8h x 7d Workweek (No Holidays) | AWE2 | y |
| P1EWCC-PWP02-13260 |  | HS2 approval period of vaildated design |  | 14d | 2018-07-06 | 2018-07-19 | P1EWCC-PWP02-13280, P1EWCC-PWP02-14780 | 390.88d | 0d |  | HS2 - 8h x 7d Workweek (No Holidays) | AWE2 | y |

| ID | WBS | Activity | Type | Duration | Start | Finish | Predecessors | Total float | Free float | Constraint | Calendar | HS2 Filter | Fusion - WPS |
| --- | --- | --- | --- | --- | --- | --- | --- | --- | --- | --- | --- | --- | --- |
|  | 2 | **Installation** |  |  | 2018-07-19 | 2019-01-30 |  |  |  |  |  |  |  |
| P1EWCC-FWP03-5970 |  | Call off of Landscape Planting | milestone | 0d | 2018-07-19 | 2018-07-19 | P1EWCC-PWP02-13260 | 278.88d | 0d |  |  | y | AWE2 |
| P1EWCC-FWP03-5980 |  | Call off period for Landscape Planting |  | 64.88d | 2018-07-19 | 2018-10-18 | P1EWCC-FWP03-5970 | 278.88d | 30.12d |  |  | y | AWE2 |
| P1EWCC-FWP03-5960 |  | Advance Planting to north of the golf club to provide screening to Aylesbury |  | 43.25d | 2018-11-29 | 2019-01-30 | P1EWCC-FWP03-5980, P1EWCC-AWP01-5870, P1EWCC-PWP02-7170, P1EWCC-PWP02-13270, P1EWCC-PWP02-15070 | 248.75d |  | start on or after 2018-11-01 |  | y | AWE2 |
|  | 2 | **Landscape Planting - Hartwell House (062-M1B)** |  |  | 2018-03-01 | 2019-01-30 |  |  |  |  |  |  |  |
|  | 1 | **Design** |  |  | 2018-03-01 | 2018-07-05 |  |  |  |  |  |  |  |
| P1EWCC-PWP02-13310 |  | Review and Vaildate HS2 design for planning |  | 80d | 2018-03-01 | 2018-06-21 | P1EWCC-PWP02-11910 SS+5d | -99.75d | 0d |  |  | y | AWE2 |
| P1EWCC-PWP02-13300 |  | Schedule 17 Planning Consent Approval Period |  | 56d | 2018-04-27 | 2018-06-21 | P1EWCC-PWP02-13310 FF | 509.75d | 161d |  | HS2 - 8h x 7d Workweek (No Holidays) | y | AWE2 |
| P1EWCC-PWP02-13290 |  | HS2 approval period of vaildated design |  | 14d | 2018-06-22 | 2018-07-05 | P1EWCC-PWP02-13310 | 404.88d | 0d |  | HS2 - 8h x 7d Workweek (No Holidays) | y | AWE2 |
|  | 2 | **Installation** |  |  | 2018-07-05 | 2019-01-30 |  |  |  |  |  |  |  |
| P1EWCC-FWP03-6000 |  | Call off of Landscape Planting | milestone | 0d | 2018-07-05 | 2018-07-05 | P1EWCC-PWP02-13290 | 288.88d | 0d |  |  | y | AWE2 |
| P1EWCC-FWP03-6010 |  | Call off period for Landscape Planting |  | 64.88d | 2018-07-05 | 2018-10-04 | P1EWCC-FWP03-6000 | 288.88d | 40.12d |  |  | y | AWE2 |
| P1EWCC-FWP03-5990 |  | Advance Planting to avenue of trees to restore and enhance feature and vista to Hartwell House (062-M1B) |  | 43.25d | 2018-11-29 | 2019-01-30 | P1EWCC-FWP03-6010, P1EWCC-AWP01-5870, P1EWCC-PWP02-7170, P1EWCC-PWP02-13300, P1EWCC-PWP02-15070 | 248.75d |  | start on or after 2018-11-01 |  | y | AWE2 |
|  | 1 | **Water Resources** |  |  | 2017-10-13 | 2018-03-07 |  |  |  |  |  |  |  |
| P1EWCC-PWP04-1420 |  | Hydrological Modelling - Hartwell Ditch |  | 103d | 2017-10-13 | 2018-03-07 | P1EWCC-PWP02-12060 | 147.12d |  |  |  | y | AWE3 |
|  | 1 | **Hydrological Modelling** |  |  |  |  |  |  |  |  |  |  |  |
|  | 5 | **Noise and Vibration Works** |  |  |  |  |  |  |  |  |  |  |  |
|  | 4 | **SOW Completion Dates** |  |  | 2017-09-18 | 2019-09-30 |  |  |  |  |  |  |  |
| P1EWCC-PWP01-2900 |  | Completion of Survey for GCN (63+000) | milestone | 0d | 2017-09-18 | 2017-09-18 |  | -56d | 1390d | finish on 2017-06-30 |  |  | UW1 |
| P1EWCC-PWP01-2970 |  | Completion of Survey for Badgers (63+000) | milestone | 0d | 2017-09-18 | 2017-09-18 |  | -56d | 1390d | finish on 2017-06-30 |  |  | UW1 |
| P1EWCC-PWP04-1430 |  | Hydrological Modelling - Hartwell Ditch | milestone | 0d | 2018-09-28 | 2018-09-28 | P1EWCC-PWP04-1420 | 0d | 1120d | finish on 2018-09-28 |  | y | AWE3 |
| P1EWCC-PWP02-7180 |  | Completion of Species Translocation/ exclusion - Badgers | milestone | 0d | 2019-09-30 | 2019-09-30 | P1EWCC-PWP02-7170 | 0d | 860d | finish on 2019-09-30 |  |  | AWE1 |
| P1EWCC-PWP02-7190 |  | Completion of Species Translocation/ exclusion - Bats | milestone | 0d | 2019-09-30 | 2019-09-30 | P1EWCC-PWP02-7170 | 0d | 860d | finish on 2019-09-30 |  |  | AWE1 |
| P1EWCC-PWP02-7220 |  | Completion of Species Translocation/ exclusion - Reptiles | milestone | 0d | 2019-09-30 | 2019-09-30 | P1EWCC-PWP02-7170 | 0d | 860d | finish on 2019-09-30 |  |  | AWE1 |
| P1EWCC-PWP02-7230 |  | Completion of Species Translocation/ exclusion - GCN | milestone | 0d | 2019-09-30 | 2019-09-30 | P1EWCC-PWP02-7170 | 0d | 860d | finish on 2019-09-30 |  |  | AWE1 |
| P1EWCC-PWP02-7240 |  | Completion of Species Translocation/ exclusion - Otters | milestone | 0d | 2019-09-30 | 2019-09-30 | P1EWCC-PWP02-7170 | 0d | 860d | finish on 2019-09-30 |  |  | AWE1 |

| ID | WBS | Activity | Type | Duration | Start | Finish | Predecessors | Complete | Planned start | Planned finish | Total float | Free float | Constraint | HS2 Filter | Fusion - WPS |
| --- | --- | --- | --- | --- | --- | --- | --- | --- | --- | --- | --- | --- | --- | --- | --- |
|  | 2 | **063-L2 - Whaddon Hill Cutting** |  |  | 2017-03-20 | 2020-01-10 |  |  |  |  |  |  |  |  |  |
|  | 7 | **Land Access** |  |  | 2017-04-05 | 2019-08-01 |  |  |  |  |  |  |  |  |  |
|  | 1 | **Survey Work** |  |  | 2017-04-05 | 2017-04-05 |  |  |  |  |  |  |  |  |  |
| P1EWCC-AWP01-4420 |  | Land Access Granted for Survey Work (Schedule 2) | milestone | 0d | 2017-04-05 A | 2017-04-05 A |  | 100% | 2017-03-20 | 2017-03-20 |  |  | as late as possible | y | UW1 |
|  | 2 | **Possession** |  |  | 2017-09-18 | 2019-08-01 |  |  |  |  |  |  |  |  |  |
|  | 1 | **Ecological Mitigation Area** |  |  | 2017-09-18 | 2017-09-18 |  |  |  |  |  |  |  |  |  |
| P1EWCC-AWP01-4430 |  | Land Access Possession Granted for Ecolgical Mitigation Site (Schedule 16) | milestone | 0d | 2017-09-18 | 2017-09-18 |  |  |  |  | 165d | 0d | start on or after 2017-09-13 | y | UW1 |
|  | 2 | **063-L2 - Whaddon Hill Cutting** |  |  | 2019-08-01 | 2019-08-01 |  |  |  |  |  |  |  |  |  |
| P1EWCC-AWP01-4440 |  | Land Access Possession Granted for Construction of 063-L2 - Whaddon Hill Cutting (Schedule 16) | milestone | 0d | 2019-08-01 | 2019-08-01 |  |  |  |  | -2d | 0d | as late as possible | y | AW1 |
|  | 10 | **Survey Works** |  |  | 2017-03-20 | 2019-11-22 |  |  |  |  |  |  |  |  |  |
| P1EWCC-AWP01-4410 |  | Planning Consent & Licensing for Survey Work |  | 0d | 2017-03-20 A | 2017-04-04 A | P1EWCC-AWP01-1230 | 100% | 2017-03-20 | 2017-03-20 |  |  |  |  | UW1 |
| P1EWCC-FWP01-2150 |  | Undertake Remaining Soil Surveys |  | 120d | 2017-12-15 | 2018-06-01 | P1EWCC-PWP01-5610 |  |  |  | 421d |  |  | y | AWS |
| P1EWCC-FWP01-2160 |  | Undertake Arboricultural Surveys |  | 125d | 2017-12-15 | 2018-06-08 | P1EWCC-PWP01-5610 |  |  |  | 416d |  |  | y | AWS |
| P1EWCC-FWP01-2170 |  | Undertake Remaining Ecology & Environmental Surveys |  | 398d | 2017-12-15 | 2019-06-26 | P1EWCC-PWP01-5610 |  |  |  | 143d |  |  | y | AWS |
|  | 1 | **Ecological & Environmental Surveys** |  |  |  |  |  |  |  |  |  |  |  |  |  |
|  | 2 | **Engineering Surveys** |  |  | 2017-04-05 | 2017-05-09 |  |  |  |  |  |  |  |  |  |
| P1EWCC-PWP03-3230 |  | Survey for Engineering (Topo, GPR, Utility, Soil) |  | 15d | 2017-04-05 A | 2017-05-09 A | P1EWCC-AWP01-4420, P1EWCC-AWP01-4410 | 100% | 2017-03-20 | 2017-04-07 |  |  |  |  | UW1 |
|  | 3 | **Historic Environment Surveys** |  |  | 2017-09-25 | 2019-11-22 |  |  |  |  |  |  |  |  |  |
|  | 1 | **Ecological Mitigation Site Whaddon Hill Farm 1374 (065-M1W)** |  |  | 2017-09-25 | 2017-12-22 |  |  |  |  |  |  |  |  |  |
| P1EWCC-PWP06-2150 |  | Geophysics (ecological mitigation site) (Whaddon Hill Farm North) |  | 1d | 2017-09-25 | 2017-09-25 | P1EWCC-PWP06-2140, P1EWCC-AWP01-4420, P1EWCC-AWP01-4410 |  |  |  | 149d | 0d | start on or after 2017-09-25 |  | UW1 |
| P1EWCC-PWP06-2170 |  | Intrusive Surveys (ecological mitigation site) (Whaddon Hill Farm North) |  | 5d | 2017-12-15 | 2017-12-22 | P1EWCC-PWP06-2160, P1EWCC-PWP02-5120, P1EWCC-PWP05-240 |  |  |  | 120.12d | 0d |  |  | AWH |
|  | 2 | **063-L2 - Whaddon Hill Cutting** |  |  | 2018-02-09 | 2019-11-22 |  |  |  |  |  |  |  |  |  |
| P1EWCC-PWP06-9230 |  | Non-Intrusive Surveys (geophysics) |  | 20d | 2018-02-09 | 2018-03-09 | P1EWCC-PWP06-9250, P1EWCC-PWP05-240 |  |  |  | 331d | 0d |  |  | AWH |
| P1EWCC-PWP06-9240 |  | Non-Intrusive Surveys (trial trenching) |  | 30d | 2018-05-04 | 2018-06-15 | P1EWCC-PWP06-9260, P1EWCC-PWP05-240 |  |  |  | 331d | 0d |  |  | AWH |
| P1EWCC-PWP06-2190 |  | Intrusive Surveys (063-L2 - Whaddon Hill Cutting) |  | 40d | 2019-09-30 | 2019-11-22 | P1EWCC-PWP02-5140, P1EWCC-PWP06-9270, P1EWCC-AWP01-4440 |  |  |  | 35.88d | 0d |  |  | AWH |

| ID | WBS | Activity | Type | Duration | Start | Finish | Predecessors | Complete | Remaining | Planned start | Planned finish | Total float | Free float | Constraint | Expected finish | Calendar | Fusion - WPS |
| --- | --- | --- | --- | --- | --- | --- | --- | --- | --- | --- | --- | --- | --- | --- | --- | --- | --- |
|  | 6 | **Historic Environment** |  |  | 2017-04-17 | 2020-01-10 |  |  |  |  |  |  |  |  |  |  |  |
|  | 1 | **Ecological Mitigation Site Whaddon Hill Farm 1374 (065-M1W)** |  |  | 2017-04-17 | 2018-02-09 |  |  |  |  |  |  |  |  |  |  |  |
| P1EWCC-PWP06-2140 |  | Production and Approval of LS-WSI Bucks, Herts, LGA (non-intrusive surveys) (Whaddon Hill Farm North) |  | 20d | 2017-04-17 A | 2017-06-27 A | P1EWCC-UWP01-1000 | 100% |  | 2017-03-20 | 2017-04-14 |  |  |  |  |  | UW1 |
| P1EWCC-PWP06-3430 |  | HS2 issue Project Plan |  | 1d | 2017-09-18 | 2017-09-18 |  |  |  |  |  | 184d | 35d |  |  |  | UW1 |
| P1EWCC-PWP06-2160 |  | Update of Project Plans and LS-WSI and Approval (intrusive surveys) |  | 30d | 2017-09-26 | 2017-11-06 | P1EWCC-PWP06-2150, P1EWCC-PWP06-3430 FF |  |  |  |  | 149d | 28.88d |  |  |  | UW1 |
| P1EWCC-PWP06-2180 |  | Report of Findings And Approval (ecological mitigation site) |  | 35d | 2017-12-22 | 2018-02-09 | P1EWCC-PWP06-2170 |  |  |  |  | 120.12d | 10d |  |  |  | AWH |
|  | 2 | **063-L2 - Whaddon Hill Cutting** |  |  | 2017-12-15 | 2020-01-10 |  |  |  |  |  |  |  |  |  |  |  |
| P1EWCC-PWP06-9250 |  | Production and Approval of Proejct Plans & LS-WSI (non-intrusive surveys) |  | 40d | 2017-12-15 | 2018-02-09 | P1EWCC-PWP05-240 |  |  |  |  | 331d | 0d |  |  |  | AWH |
| P1EWCC-PWP06-9260 |  | Update of Project Plans and LS-WSI and Approval (intrusive surveys) |  | 40d | 2018-03-09 | 2018-05-04 | P1EWCC-PWP06-9230 |  |  |  |  | 331d | 0d |  |  |  | AWH |
| P1EWCC-PWP06-9270 |  | Update of Project Plans and LS-WSI and Approval (intrusive surveys) |  | 40d | 2018-06-15 | 2018-08-10 | P1EWCC-PWP06-9240 |  |  |  |  | 331d | 295.12d |  |  |  | AWH |
| P1EWCC-PWP06-2200 |  | Report of Findings And Approval (063-L2 - Whaddon Hill Cutting) |  | 35d | 2019-11-25 | 2020-01-10 | P1EWCC-PWP06-2190 |  |  |  |  | 785d |  |  |  |  | AWH |
|  | 11 | **Ecological Mitigation Works** |  |  | 2017-04-13 | 2019-09-29 |  |  |  |  |  |  |  |  |  |  |  |
|  | 1 | **Design** |  |  | 2017-04-13 | 2017-11-03 |  |  |  |  |  |  |  |  |  |  |  |
| P1EWCC-PWP02-5110 |  | Design of Habitat Creation (065-M1W) |  | 25d | 2017-04-13 A | 2017-10-06 | P1EWCC-PWP03-3230 FF | 40% | 14.88d | 2017-04-10 | 2017-05-12 | 155.12d | 0d |  | 2017-10-06 |  | UW1 |
| P1EWCC-AWP01-4400 |  | Planning Consent & Licensing for Habitat Creation (065-M1W) |  | 40d | 2017-06-19 A | 2017-11-03 | P1EWCC-PWP02-5110 SS | 13% | 34.88d | 2017-07-19 | 2017-09-12 | 155.12d | 0d |  | 2017-11-03 |  | UW1 |
|  | 2 | **Species Removal from Habitat Area** |  |  | 2017-07-31 | 2017-10-17 |  |  |  |  |  |  |  |  |  |  |  |
| P1EWCC-PWP02-5130 |  | MS/RAMS for GCN/Reptile Clearance from Habitat Creation Site (065-M1W) |  | 15d | 2017-07-31 A | 2017-09-12 A |  | 100% |  | 2017-08-23 | 2017-09-12 |  |  |  |  |  | UW1 |
| P1EWCC-PWP02-5120 |  | Exclude GCN/Reptile from Habitat Creation (065-M1W) |  | 35d | 2017-09-13 A | 2017-10-17 | P1EWCC-PWP02-5130, P1EWCC-AWP01-4430, P1EWCC-PWP03-3230 | 14% | 30d | 2017-09-18 | 2017-10-22 | 229d | 0d |  | 2017-10-17 | HS2 - 8h x 7d Workweek (No Holidays) | UW1 |
|  | 3 | **Habitat Creation** |  |  | 2018-01-05 | 2018-08-29 |  |  |  |  |  |  |  |  |  |  |  |
| P1EWCC-PWP02-5090 |  | Habitat Creation (065-M1W) |  | 60d | 2018-01-05 | 2018-03-30 | P1EWCC-PWP06-2170, P1EWCC-PWP06-2180 SS, P1EWCC-PWP02-5120, P1EWCC-AWP01-4400, P1EWCC-PWP02-9220, P1EWCC-PWP02-5110 |  |  |  |  | 110.12d | 38.12d |  |  |  | AWE1 |
| P1EWCC-PWP02-5100 |  | Habitat Creation Maturity Period (065-M1W) |  | 182d | 2018-03-01 | 2018-08-29 | P1EWCC-PWP02-5090 SS |  |  |  |  | 100d | 3d | start on or after 2018-03-01 |  | HS2 - 8h x 7d Workweek (No Holidays) | AWE1 |
|  | 5 | **Translocation of Species** |  |  | 2019-08-01 | 2019-09-29 |  |  |  |  |  |  |  |  |  |  |  |
| P1EWCC-PWP02-5140 |  | Species Translocation to Habitat Creation (065-M1W) |  | 60d | 2019-08-01 | 2019-09-29 | P1EWCC-AWP01-4440, P1EWCC-PWP02-5100 SS+150d, P1EWCC-PWP02-14610 |  |  |  |  | -2d | 0d | start on or after 2019-08-01 |  | HS2 - 8h x 7d Workweek (No Holidays) | AWE1 |
|  | 4 | **Noise and Vibration Works** |  |  |  |  |  |  |  |  |  |  |  |  |  |  |  |
|  | 12 | **SOW Completion Dates** |  |  | 2019-09-30 | 2019-09-30 |  |  |  |  |  |  |  |  |  |  |  |
| P1EWCC-PWP02-5060 |  | Completion of Species Translocation/ exclusion - Bats | milestone | 0d | 2019-09-30 | 2019-09-30 | P1EWCC-PWP02-5140 |  |  |  |  | 0d | 860d | finish on 2019-09-30 |  |  | AWE1 |
| P1EWCC-PWP02-5070 |  | Completion of Species Translocation/ exclusion - Badgers | milestone | 0d | 2019-09-30 | 2019-09-30 | P1EWCC-PWP02-5140 |  |  |  |  | 0d | 860d | finish on 2019-09-30 |  |  | AWE1 |
| P1EWCC-PWP02-5080 |  | Completion of Species Translocation/ exclusion - Reptiles | milestone | 0d | 2019-09-30 | 2019-09-30 | P1EWCC-PWP02-5140 |  |  |  |  | 0d | 860d | finish on 2019-09-30 |  |  | AWE1 |
| P1EWCC-PWP02-5150 |  | Completion of Species Translocation/ exclusion - GCN | milestone | 0d | 2019-09-30 | 2019-09-30 | P1EWCC-PWP02-5140 |  |  |  |  | 0d | 860d | finish on 2019-09-30 |  |  | AWE1 |

| ID | WBS | Activity | Type | Duration | Start | Finish | Predecessors | Complete | Planned start | Planned finish | Total float | Free float | Constraint | Calendar | HS2 Filter | Fusion - WPS |
| --- | --- | --- | --- | --- | --- | --- | --- | --- | --- | --- | --- | --- | --- | --- | --- | --- |
|  | 3 | **064-L1 - Thame Valley South Embankment** |  |  | 2017-03-20 | 2019-09-30 |  |  |  |  |  |  |  |  |  |  |
|  | 8 | **Land Access** |  |  | 2017-05-29 | 2018-08-01 |  |  |  |  |  |  |  |  |  |  |
|  | 1 | **Survey Work** |  |  | 2017-05-29 | 2017-05-29 |  |  |  |  |  |  |  |  |  |  |
| P1EWCC-AWP01-5890 |  | Land Access Granted for Survey Work (Schedule 2) | milestone | 0d | 2017-05-29 A | 2017-05-29 A |  | 100% | 2017-04-03 | 2017-04-03 |  |  | as late as possible |  | y | AW1 |
|  | 2 | **Possession** |  |  | 2018-08-01 | 2018-08-01 |  |  |  |  |  |  |  |  |  |  |
| P1EWCC-AWP01-5900 |  | Land Access Possession Granted for Construction (Schedule 16) | milestone | 0d | 2018-08-01 | 2018-08-01 |  |  |  |  | 69d | 0d | as late as possible |  | y | AW1 |
|  | 1 | **Survey Works** |  |  | 2017-03-20 | 2018-11-23 |  |  |  |  |  |  |  |  |  |  |
| P1EWCC-AWP01-5880 |  | Planning Consent & Licensing for Survey Work |  | 10d | 2017-03-20 A | 2017-05-26 A | P1EWCC-AWP01-1230 | 100% | 2017-03-20 | 2017-03-31 |  |  |  |  |  | AW1 |
| P1EWCC-FWP01-2200 |  | Undertake Arboricultural Surveys |  | 125d | 2017-12-15 | 2018-06-08 | P1EWCC-PWP01-5610 |  |  |  | 190d |  |  |  | y | AWS |
|  | 1 | **Ecological & Environmental Surveys** |  |  |  |  |  |  |  |  |  |  |  |  |  |  |
|  | 2 | **Engineering Surveys** |  |  |  |  |  |  |  |  |  |  |  |  |  |  |
|  | 3 | **Historic Environment** |  |  | 2018-02-09 | 2018-11-23 |  |  |  |  |  |  |  |  |  |  |
| P1EWCC-PWP06-4680 |  | Non-Intrusive Surveys (geophysics) |  | 20d | 2018-02-09 | 2018-03-09 | P1EWCC-AWP01-5890, P1EWCC-PWP06-4660, P1EWCC-PWP05-240 |  |  |  | 105d | 0d |  |  |  | AWH |
| P1EWCC-PWP06-9280 |  | Non-Intrusive Surveys (trial trenching) |  | 30d | 2018-05-04 | 2018-06-15 | P1EWCC-PWP06-4670, P1EWCC-PWP05-240 |  |  |  | 105d | 0d |  |  |  | AWH |
| P1EWCC-PWP06-4700 |  | Intrusive Surveys |  | 40d | 2018-10-01 | 2018-11-23 | P1EWCC-PWP06-4670, P1EWCC-PWP02-7250, P1EWCC-PWP06-9290, P1EWCC-AWP01-5900 |  |  |  | 69.88d | 0d |  |  |  | AWH |
|  | 7 | **Historic Environment** |  |  | 2017-12-15 | 2019-01-11 |  |  |  |  |  |  |  |  |  |  |
| P1EWCC-PWP06-4660 |  | Production and Approval of LS-WSI (non-intrusive surveys) |  | 40d | 2017-12-15 | 2018-02-09 | P1EWCC-PWP05-240 |  |  |  | 105d | 0d |  |  |  | AWH |
| P1EWCC-PWP06-4670 |  | Update of Project Plans and LS-WSI and Approval (intrusive surveys) |  | 40d | 2018-03-09 | 2018-05-04 | P1EWCC-PWP06-4680 |  |  |  | 105d | 0d |  |  |  | AWH |
| P1EWCC-PWP06-9290 |  | Update of Project Plans and LS-WSI and Approval (intrusive surveys) |  | 40d | 2018-06-15 | 2018-08-10 | P1EWCC-PWP06-9280 |  |  |  | 105d | 35.12d |  |  |  | AWH |
| P1EWCC-PWP06-4690 |  | Report of Findings And Approval (Archaeological Investigation) |  | 35d | 2018-11-26 | 2019-01-11 | P1EWCC-PWP06-4700 |  |  |  | 1045d |  |  |  |  | AWH |
|  | 2 | **Ecological Mitigation Works** |  |  | 2018-08-01 | 2018-09-29 |  |  |  |  |  |  |  |  |  |  |
|  | 5 | **Translocation of Species** |  |  | 2018-08-01 | 2018-09-29 |  |  |  |  |  |  |  |  |  |  |
| P1EWCC-PWP02-7250 |  | Species Translocation to Habitat Creation (065-M1W) |  | 60d | 2018-08-01 | 2018-09-29 | P1EWCC-PWP02-5100 SS+150d, P1EWCC-AWP01-5900, P1EWCC-PWP02-14610 |  |  |  | 97d | 1d | start on or after 2018-08-01 | HS2 - 8h x 7d Workweek (No Holidays) |  | AWE1 |
|  | 5 | **Noise and Vibration Works** |  |  |  |  |  |  |  |  |  |  |  |  |  |  |
|  | 4 | **SOW Completion Dates** |  |  | 2019-09-30 | 2019-09-30 |  |  |  |  |  |  |  |  |  |  |
| P1EWCC-PWP02-7260 |  | Completion of Species Translocation/ exclusion - Badgers | milestone | 0d | 2019-09-30 | 2019-09-30 | P1EWCC-PWP02-7250 |  |  |  | 0d | 860d | finish on 2019-09-30 |  |  | AWE1 |
| P1EWCC-PWP02-7270 |  | Completion of Species Translocation/ exclusion - Bats | milestone | 0d | 2019-09-30 | 2019-09-30 | P1EWCC-PWP02-7250 |  |  |  | 0d | 860d | finish on 2019-09-30 |  |  | AWE1 |
| P1EWCC-PWP02-7340 |  | Completion of Species Translocation/ exclusion - Reptiles | milestone | 0d | 2019-09-30 | 2019-09-30 | P1EWCC-PWP02-7250 |  |  |  | 0d | 860d | finish on 2019-09-30 |  |  | AWE1 |
| P1EWCC-PWP02-7350 |  | Completion of Species Translocation/ exclusion - GCN | milestone | 0d | 2019-09-30 | 2019-09-30 | P1EWCC-PWP02-7250 |  |  |  | 0d | 860d | finish on 2019-09-30 |  |  | AWE1 |

| ID | WBS | Activity | Type | Duration | Start | Finish | Predecessors | Complete | Planned start | Planned finish | Total float | Free float | Constraint | Calendar | HS2 Filter | Fusion - WPS |
| --- | --- | --- | --- | --- | --- | --- | --- | --- | --- | --- | --- | --- | --- | --- | --- | --- |
|  | 4 | **064-L2 - Thame Valley Viaduct** |  |  | 2017-03-20 | 2019-09-30 |  |  |  |  |  |  |  |  |  |  |
|  | 8 | **Land Access** |  |  | 2017-05-01 | 2018-08-01 |  |  |  |  |  |  |  |  |  |  |
|  | 1 | **Survey Work** |  |  | 2017-05-01 | 2017-05-01 |  |  |  |  |  |  |  |  |  |  |
| P1EWCC-AWP01-5920 |  | Land Access Granted for Survey Work (Schedule 2) | milestone | 0d | 2017-05-01 A | 2017-05-01 A |  | 100% | 2017-04-03 | 2017-04-03 |  |  | as late as possible |  | y | AW1 |
|  | 2 | **Possession** |  |  | 2018-08-01 | 2018-08-01 |  |  |  |  |  |  |  |  |  |  |
| P1EWCC-AWP01-5930 |  | Land Access Possession Granted for Construction (Schedule 16) | milestone | 0d | 2018-08-01 | 2018-08-01 |  |  |  |  | 69d | 0d | as late as possible |  | y | AW1 |
|  | 1 | **Survey Works** |  |  | 2017-03-20 | 2018-11-23 |  |  |  |  |  |  |  |  |  |  |
| P1EWCC-AWP01-5910 |  | Planning Consent & Licensing for Survey Work |  | 10d | 2017-03-20 A | 2017-04-28 A | P1EWCC-AWP01-1230 | 100% | 2017-03-20 | 2017-03-31 |  |  |  |  |  | AW1 |
| P1EWCC-FWP01-2240 |  | Undertake Arboricultural Surveys |  | 125d | 2017-12-15 | 2018-06-08 | P1EWCC-PWP01-5610 |  |  |  | 190d |  |  |  | y | AWS |
| P1EWCC-FWP01-2250 |  | Undertake Remaining Ecology & Environmental Surveys |  | 240d | 2017-12-15 | 2018-11-16 | P1EWCC-PWP01-5610 |  |  |  | 75d |  |  |  | y | AWS |
|  | 1 | **Ecological & Environmental Surveys** |  |  |  |  |  |  |  |  |  |  |  |  |  |  |
|  | 2 | **Engineering Surveys** |  |  |  |  |  |  |  |  |  |  |  |  |  |  |
|  | 3 | **Historic Environment** |  |  | 2018-02-09 | 2018-11-23 |  |  |  |  |  |  |  |  |  |  |
| P1EWCC-PWP06-4740 |  | Non-Intrusive Surveys (geophysics) |  | 20d | 2018-02-09 | 2018-03-09 | P1EWCC-PWP06-4720, P1EWCC-AWP01-5920, P1EWCC-PWP05-240 |  |  |  | 115d | 0d |  |  |  | AWH |
| P1EWCC-PWP06-9300 |  | Non-Intrusive Surveys (trial trenching) |  | 20d | 2018-05-04 | 2018-06-01 | P1EWCC-PWP06-9310, P1EWCC-PWP05-240 |  |  |  | 115d | 0d |  |  |  | AWH |
| P1EWCC-PWP06-6050 |  | Intrusive Surveys |  | 40d | 2018-10-01 | 2018-11-23 | P1EWCC-PWP06-6070, P1EWCC-PWP06-6070 FF, P1EWCC-PWP02-7280, P1EWCC-AWP01-5930 |  |  |  | 69.88d | 0d |  |  |  | AWH |
|  | 7 | **Historic Environment** |  |  | 2017-12-15 | 2019-01-11 |  |  |  |  |  |  |  |  |  |  |
| P1EWCC-PWP06-4720 |  | Production and Approval of Project Plans & LS-WSI (non-intrusive surveys) |  | 40d | 2017-12-15 | 2018-02-09 | P1EWCC-PWP05-240 |  |  |  | 115d | 0d |  |  |  | AWH |
| P1EWCC-PWP06-9310 |  | Update of Project Plans & LS-WSI (non-intrusive surveys) |  | 40d | 2018-03-09 | 2018-05-04 | P1EWCC-PWP06-4740 |  |  |  | 115d | 0d |  |  |  | AWH |
| P1EWCC-PWP06-6070 |  | Update of Project Plans and LS-WSI and Approval (intrusive surveys) - Remaining Site |  | 40d | 2018-06-01 | 2018-07-27 | P1EWCC-PWP06-9300 |  |  |  | 115d | 45.12d |  |  |  | AWH |
| P1EWCC-PWP06-6060 |  | Report of Findings And Approval (Archaeological Investigation) - Remaining Site |  | 35d | 2018-11-26 | 2019-01-11 | P1EWCC-PWP06-6050 |  |  |  | 1045d |  |  |  |  | AWH |
|  | 2 | **Ecological Mitigation Works** |  |  | 2018-08-01 | 2018-09-29 |  |  |  |  |  |  |  |  |  |  |
|  | 5 | **Translocation of Species** |  |  | 2018-08-01 | 2018-09-29 |  |  |  |  |  |  |  |  |  |  |
| P1EWCC-PWP02-7280 |  | Species Translocation to Habitat Creation (066-M3W & 067-M2E) |  | 60d | 2018-08-01 | 2018-09-29 | P1EWCC-AWP01-5930, P1EWCC-PWP02-4100 SS+150d, P1EWCC-PWP02-14610 |  |  |  | 97d | 1d | start on or after 2018-08-01 | HS2 - 8h x 7d Workweek (No Holidays) |  | AWE1 |

| ID | WBS | Activity | Type | Duration | Start | Finish | Predecessors | Complete | Planned start | Planned finish | Total float | Free float | Constraint | HS2 Filter | Fusion - WPS |
| --- | --- | --- | --- | --- | --- | --- | --- | --- | --- | --- | --- | --- | --- | --- | --- |
|  | 5 | **Noise and Vibration Works** |  |  |  |  |  |  |  |  |  |  |  |  |  |
|  | 3 | **Water Resources** |  |  | 2017-10-13 | 2018-06-21 |  |  |  |  |  |  |  |  |  |
| P1EWCC-PWP04-2200 |  | Hydrological Modelling - River Thame |  | 179d | 2017-10-13 | 2018-06-21 | P1EWCC-PWP02-12060 |  |  |  | 181d |  |  | y | AWE3 |
|  | 1 | **Hydrological Modelling** |  |  |  |  |  |  |  |  |  |  |  |  |  |
|  | 4 | **SOW Completion Dates** |  |  | 2019-09-30 | 2019-09-30 |  |  |  |  |  |  |  |  |  |
| P1EWCC-PWP02-7290 |  | Completion of Species Translocation/ exclusion - Badgers | milestone | 0d | 2019-09-30 | 2019-09-30 | P1EWCC-PWP02-7280 |  |  |  | 0d | 860d | finish on 2019-09-30 |  | AWE1 |
| P1EWCC-PWP02-7300 |  | Completion of Species Translocation/ exclusion - Bats | milestone | 0d | 2019-09-30 | 2019-09-30 | P1EWCC-PWP02-7280 |  |  |  | 0d | 860d | finish on 2019-09-30 |  | AWE1 |
| P1EWCC-PWP02-7310 |  | Completion of Species Translocation/ exclusion - Reptiles | milestone | 0d | 2019-09-30 | 2019-09-30 | P1EWCC-PWP02-7280 |  |  |  | 0d | 860d | finish on 2019-09-30 |  | AWE1 |
| P1EWCC-PWP02-7320 |  | Completion of Species Translocation/ exclusion - GCN | milestone | 0d | 2019-09-30 | 2019-09-30 | P1EWCC-PWP02-7280 |  |  |  | 0d | 860d | finish on 2019-09-30 |  | AWE1 |
| P1EWCC-PWP02-7330 |  | Completion of Species Translocation/ exclusion - Otters | milestone | 0d | 2019-09-30 | 2019-09-30 | P1EWCC-PWP02-7280 |  |  |  | 0d | 860d | finish on 2019-09-30 |  | AWE1 |
|  | 5 | **065-L1 - Thame Valley North Embankment** |  |  | 2017-03-20 | 2019-01-11 |  |  |  |  |  |  |  |  |  |
|  | 8 | **Land Access** |  |  | 2017-05-01 | 2018-08-01 |  |  |  |  |  |  |  |  |  |
|  | 1 | **Survey Work** |  |  | 2017-05-01 | 2017-05-01 |  |  |  |  |  |  |  |  |  |
| P1EWCC-AWP01-5960 |  | Land Access Granted for Survey Work (Schedule 2) | milestone | 0d | 2017-05-01 A | 2017-05-01 A |  | 100% | 2017-04-03 | 2017-04-03 |  |  | as late as possible | y | AW1 |
|  | 2 | **Possession** |  |  | 2018-08-01 | 2018-08-01 |  |  |  |  |  |  |  |  |  |
| P1EWCC-AWP01-5970 |  | Land Access Possession Granted for Construction (Schedule 16) | milestone | 0d | 2018-08-01 | 2018-08-01 |  |  |  |  | -2d | 0d | as late as possible | y | AW1 |
|  | 1 | **Survey Works** |  |  | 2017-03-20 | 2018-11-23 |  |  |  |  |  |  |  |  |  |
| P1EWCC-AWP01-5950 |  | Planning Consent & Licensing for Survey Work |  | 10d | 2017-03-20 A | 2017-04-28 A | P1EWCC-AWP01-1230 | 100% | 2017-03-20 | 2017-03-31 |  |  |  |  | AW1 |
| P1EWCC-FWP01-2280 |  | Undertake Arboricultural Surveys |  | 125d | 2017-12-15 | 2018-06-08 | P1EWCC-PWP01-5610 |  |  |  | 190d |  |  | y | AWS |
|  | 1 | **Ecological & Environmental Surveys** |  |  |  |  |  |  |  |  |  |  |  |  |  |
|  | 2 | **Engineering Surveys** |  |  |  |  |  |  |  |  |  |  |  |  |  |
|  | 3 | **Historic Environment** |  |  | 2018-02-09 | 2018-11-23 |  |  |  |  |  |  |  |  |  |
| P1EWCC-PWP06-4800 |  | Non-Intrusive Surveys (geophysics) |  | 20d | 2018-02-09 | 2018-03-09 | P1EWCC-PWP06-4780, P1EWCC-AWP01-5960, P1EWCC-PWP05-240 |  |  |  | 105d | 0d |  |  | AWH |
| P1EWCC-PWP06-9320 |  | Non-Intrusive Surveys (trial trenching) |  | 30d | 2018-05-04 | 2018-06-15 | P1EWCC-PWP06-4790, P1EWCC-PWP05-240 |  |  |  | 105d | 0d |  |  | AWH |
| P1EWCC-PWP06-4820 |  | Intrusive Surveys |  | 40d | 2018-10-01 | 2018-11-23 | P1EWCC-PWP02-7360, P1EWCC-PWP06-4790, P1EWCC-PWP06-9330, P1EWCC-AWP01-5970 |  |  |  | 69.88d | 0d |  |  | AWH |

| ID | WBS | Activity | Type | Duration | Start | Finish | Predecessors | Complete | Planned start | Planned finish | Total float | Free float | Constraint | Calendar | Fusion - WPS | HS2 Filter |
| --- | --- | --- | --- | --- | --- | --- | --- | --- | --- | --- | --- | --- | --- | --- | --- | --- |
|  | 7 | **Historic Environment** |  |  | 2017-12-15 | 2019-01-11 |  |  |  |  |  |  |  |  |  |  |
| P1EWCC-PWP06-4780 |  | Production and Approval of Project Plans & LS-WSI (non-intrusive surveys) |  | 40d | 2017-12-15 | 2018-02-09 | P1EWCC-PWP05-240 |  |  |  | 105d | 0d |  |  | AWH |  |
| P1EWCC-PWP06-4790 |  | Update of Project Plans and LS-WSI and Approval (intrusive surveys) |  | 40d | 2018-03-09 | 2018-05-04 | P1EWCC-PWP06-4800 |  |  |  | 105d | 0d |  |  | AWH |  |
| P1EWCC-PWP06-9330 |  | Update of Project Plans and LS-WSI and Approval (intrusive surveys) |  | 40d | 2018-06-15 | 2018-08-10 | P1EWCC-PWP06-9320 |  |  |  | 105d | 35.12d |  |  | AWH |  |
| P1EWCC-PWP06-4810 |  | Report of Findings And Approval (Archaeological Investigation) |  | 35d | 2018-11-26 | 2019-01-11 | P1EWCC-PWP06-4820 |  |  |  | 1045d |  |  |  | AWH |  |
|  | 2 | **Ecological Mitigation Works** |  |  | 2018-08-01 | 2018-09-29 |  |  |  |  |  |  |  |  |  |  |
|  | 5 | **Translocation of Species** |  |  | 2018-08-01 | 2018-09-29 |  |  |  |  |  |  |  |  |  |  |
| P1EWCC-PWP02-7360 |  | Species Translocation to Habitat Creation (066-M3W & 067-M2E) |  | 60d | 2018-08-01 | 2018-09-29 | P1EWCC-PWP02-4100 SS+150d, P1EWCC-AWP01-5970, P1EWCC-PWP02-14610 |  |  |  | -2d | 1d | start on or after 2018-08-01 | HS2 - 8h x 7d Workweek (No Holidays) | AWE1 |  |
|  | 5 | **Noise and Vibration Works** |  |  |  |  |  |  |  |  |  |  |  |  |  |  |
|  | 4 | **SOW Completion Dates** |  |  | 2018-10-01 | 2018-10-01 |  |  |  |  |  |  |  |  |  |  |
| P1EWCC-PWP02-7370 |  | Completion of Species Translocation/ exclusion - Badgers | milestone | 0d | 2018-10-01 | 2018-10-01 | P1EWCC-PWP02-7360 |  |  |  | -1d | 1120d | finish on 2018-09-28 |  | AWE1 |  |
| P1EWCC-PWP02-7380 |  | Completion of Species Translocation/ exclusion - Bats | milestone | 0d | 2018-10-01 | 2018-10-01 | P1EWCC-PWP02-7360 |  |  |  | -1d | 1120d | finish on 2018-09-28 |  | AWE1 |  |
| P1EWCC-PWP02-7390 |  | Completion of Species Translocation/ exclusion - Reptiles | milestone | 0d | 2018-10-01 | 2018-10-01 | P1EWCC-PWP02-7360 |  |  |  | -1d | 1120d | finish on 2018-09-28 |  | AWE1 |  |
| P1EWCC-PWP02-7400 |  | Completion of Species Translocation/ exclusion - GCN | milestone | 0d | 2018-10-01 | 2018-10-01 | P1EWCC-PWP02-7360 |  |  |  | -1d | 1120d | finish on 2018-09-28 |  | AWE1 |  |
| P1EWCC-PWP02-7410 |  | Completion of Species Translocation/ exclusion - Water Vole | milestone | 0d | 2018-10-01 | 2018-10-01 | P1EWCC-PWP02-7360 |  |  |  | -1d | 1120d | finish on 2018-09-28 |  | AWE1 |  |
|  | C223 | **Putlowes To Quainton (Ch. 65450 to Ch. 71850)** |  |  | 2017-02-24 | 2019-11-15 |  |  |  |  |  |  |  |  |  |  |
|  | 1 | **065-L2 - Putlowes Cutting** |  |  | 2017-03-20 | 2019-11-15 |  |  |  |  |  |  |  |  |  |  |
|  | 8 | **Land Access** |  |  | 2017-05-01 | 2018-07-31 |  |  |  |  |  |  |  |  |  |  |
|  | 1 | **Survey Work** |  |  | 2017-05-01 | 2017-05-01 |  |  |  |  |  |  |  |  |  |  |
| P1EWCC-AWP01-5990 |  | Land Access Granted for Survey Work (Schedule 2) | milestone | 0d | 2017-05-01 A | 2017-05-01 A |  | 100% | 2017-04-03 | 2017-04-03 |  |  | as late as possible |  | AW1 | y |
|  | 2 | **Possession** |  |  | 2018-07-31 | 2018-07-31 |  |  |  |  |  |  |  |  |  |  |
| P1EWCC-AWP01-6000 |  | Land Access Possession Granted for Construction (Schedule 16) | milestone | 0d | 2018-07-31 | 2018-07-31 |  |  |  |  | -1d | 0d | as late as possible |  | AW1 | y |
|  | 3 | **Survey Works** |  |  | 2017-03-20 | 2019-09-27 |  |  |  |  |  |  |  |  |  |  |
| P1EWCC-AWP01-5980 |  | Planning Consent & Licensing for Survey Work |  | 10d | 2017-03-20 A | 2017-04-28 A | P1EWCC-AWP01-1230 | 100% | 2017-03-20 | 2017-03-31 |  |  |  |  | AW1 |  |
| P1EWCC-FWP01-2320 |  | Undertake Arboricultural Surveys |  | 125d | 2017-12-15 | 2018-06-08 | P1EWCC-PWP01-5610 |  |  |  | 370d |  |  |  | AWS | y |
| P1EWCC-FWP01-2330 |  | Undertake Remaining Ecology & Environmental Surveys |  | 398d | 2017-12-15 | 2019-06-26 | P1EWCC-PWP01-5610 |  |  |  | 97d |  |  |  | AWS | y |

| ID | WBS | Activity | Type | Duration | Start | Finish | Predecessors | Complete | Planned start | Planned finish | Total float | Free float | Constraint | Calendar | Fusion - WPS | HS2 Filter |
| --- | --- | --- | --- | --- | --- | --- | --- | --- | --- | --- | --- | --- | --- | --- | --- | --- |
|  | 1 | **Ecological & Environmental Surveys** |  |  |  |  |  |  |  |  |  |  |  |  |  |  |
|  | 2 | **Engineering Surveys** |  |  |  |  |  |  |  |  |  |  |  |  |  |  |
|  | 3 | **Historic Environment** |  |  | 2018-02-09 | 2019-09-27 |  |  |  |  |  |  |  |  |  |  |
| P1EWCC-PWP06-4860 |  | Non-Intrusive Surveys (geophysics) |  | 20d | 2018-02-09 | 2018-03-09 | P1EWCC-AWP01-5990, P1EWCC-PWP06-4840, P1EWCC-PWP05-240 |  |  |  | 65.5d | 0d |  |  | AWH |  |
| P1EWCC-PWP06-9340 |  | Non-Intrusive Surveys (trial trenching) |  | 30d | 2018-05-04 | 2018-06-15 | P1EWCC-PWP06-4850, P1EWCC-PWP05-240 |  |  |  | 65.5d | 0d |  |  | AWH |  |
| P1EWCC-PWP06-4880 |  | Intrusive Surveys - (Fleet Marston Roman Town) |  | 259.5d | 2018-09-28 | 2019-09-27 | P1EWCC-PWP06-4850, P1EWCC-PWP02-7420, P1EWCC-PWP06-9350, P1EWCC-AWP01-6000 |  |  |  | 30.5d | 0d |  |  | AWH |  |
|  | 7 | **Historic Environment** |  |  | 2017-12-15 | 2019-11-15 |  |  |  |  |  |  |  |  |  |  |
| P1EWCC-PWP06-4840 |  | Production and Approval of LS-WSI (non-intrusive surveys) |  | 40d | 2017-12-15 | 2018-02-09 | P1EWCC-PWP05-240 |  |  |  | 65.5d | 0d |  |  | AWH |  |
| P1EWCC-PWP06-4850 |  | Update of Project Plans and LS-WSI and Approval (intrusive surveys) |  | 40d | 2018-03-09 | 2018-05-04 | P1EWCC-PWP06-4860 |  |  |  | 65.5d | 0d |  |  | AWH |  |
| P1EWCC-PWP06-9350 |  | Update of Project Plans and LS-WSI and Approval (intrusive surveys) |  | 40d | 2018-06-15 | 2018-08-10 | P1EWCC-PWP06-9340 |  |  |  | 65.5d | 35d |  |  | AWH |  |
| P1EWCC-PWP06-4870 |  | Report of Findings And Approval (Archaeological Investigation) |  | 35d | 2019-09-27 | 2019-11-15 | P1EWCC-PWP06-4880 |  |  |  | 825.62d |  |  |  | AWH |  |
|  | 2 | **Ecological Mitigation Works** |  |  | 2018-07-31 | 2018-09-28 |  |  |  |  |  |  |  |  |  |  |
|  | 5 | **Translocation of Species** |  |  | 2018-07-31 | 2018-09-28 |  |  |  |  |  |  |  |  |  |  |
| P1EWCC-PWP02-7420 |  | Species Translocation to Habitat Creation (066-M3W & 067-M2E) |  | 60d | 2018-07-31 | 2018-09-28 | P1EWCC-PWP02-4100 SS+150d, P1EWCC-AWP01-6000, P1EWCC-PWP02-14610 |  |  |  | -1d | 0d |  | HS2 - 8h x 7d Workweek (No Holidays) | AWE1 |  |
|  | 5 | **Noise and Vibration Works** |  |  |  |  |  |  |  |  |  |  |  |  |  |  |
|  | 1 | **SOW Completion Dates** |  |  | 2017-09-18 | 2018-09-28 |  |  |  |  |  |  |  |  |  |  |
| P1EWCC-PWP01-2940 |  | Completion of Survey for GCN (65+500) | milestone | 0d | 2017-09-18 | 2017-09-18 |  |  |  |  | -56d | 1390d | finish on 2017-06-30 |  | UW1 |  |
| P1EWCC-PWP02-7430 |  | Completion of Species Translocation/ exclusion - Badgers | milestone | 0d | 2018-09-28 | 2018-09-28 | P1EWCC-PWP02-7420 |  |  |  | -0.88d | 1120.12d | finish on 2018-09-28 |  | AWE1 |  |
| P1EWCC-PWP02-7440 |  | Completion of Species Translocation/ exclusion - Bats | milestone | 0d | 2018-09-28 | 2018-09-28 | P1EWCC-PWP02-7420 |  |  |  | -0.88d | 1120.12d | finish on 2018-09-28 |  | AWE1 |  |
| P1EWCC-PWP02-7460 |  | Completion of Species Translocation/ exclusion - GCN | milestone | 0d | 2018-09-28 | 2018-09-28 | P1EWCC-PWP02-7420 |  |  |  | -0.88d | 1120.12d | finish on 2018-09-28 |  | AWE1 |  |
|  | 2 | **066-L1 - Bicester Road Embankment** |  |  | 2017-02-24 | 2019-11-15 |  |  |  |  |  |  |  |  |  |  |
|  | 10 | **Land Access** |  |  | 2017-04-05 | 2018-07-30 |  |  |  |  |  |  |  |  |  |  |
|  | 1 | **Survey Work** |  |  | 2017-04-05 | 2017-04-05 |  |  |  |  |  |  |  |  |  |  |
| P1EWCC-AWP01-4110 |  | Land Access Granted for Survey Work (Schedule 2) | milestone | 0d | 2017-04-05 A | 2017-04-05 A |  | 100% | 2017-03-20 | 2017-03-20 |  |  |  |  | UW1 | y |

| ID | WBS | Activity | Type | Duration | Start | Finish | Predecessors | Complete | Remaining | Planned start | Planned finish | Total float | Free float | Constraint | Expected finish | HS2 Filter | Fusion - WPS |
| --- | --- | --- | --- | --- | --- | --- | --- | --- | --- | --- | --- | --- | --- | --- | --- | --- | --- |
|  | 2 | **Possession** |  |  | 2017-09-18 | 2018-07-30 |  |  |  |  |  |  |  |  |  |  |  |
|  | 1 | **Ecological Mitigation Area** |  |  | 2017-09-18 | 2017-11-30 |  |  |  |  |  |  |  |  |  |  |  |
| P1EWCC-AWP01-4120 |  | Land Access Possession Granted for Ecolgical Mitigation Sites (Schedule 16) 066-M3W | milestone | 0d | 2017-09-18 | 2017-09-18 |  |  |  |  |  | 51d | 0d | start on or after 2017-09-14 |  | y | UW1 |
| P1EWCC-AWP01-8280 |  | Land Access Possession Granted for Ecolgical Mitigation Sites (Schedule 16) 067-M2E | milestone | 0d | 2017-09-18 | 2017-09-18 |  |  |  |  |  | 1220d | 98d | start on or after 2017-09-14 |  | y | UW1 |
| P1EWCC-AWP01-8290 |  | Land Access Possession Granted for Ecolgical Mitigation Sites (Schedule 16) 068-M5W | milestone | 0d | 2017-11-30 | 2017-11-30 |  |  |  |  |  | 86d | 26.88d | start on or after 2017-11-30 |  | y | UW1 |
|  | 2 | **066-L1 - Bicester Road Embankment** |  |  | 2018-07-30 | 2018-07-30 |  |  |  |  |  |  |  |  |  |  |  |
| P1EWCC-AWP01-4130 |  | Land Access Possession Granted for Bicester Road Embankment (Schedule 16) | milestone | 0d | 2018-07-30 | 2018-07-30 |  |  |  |  |  | 0d |  | as late as possible |  | y | AW1 |
|  | 1 | **Survey Works** |  |  | 2017-03-20 | 2019-09-27 |  |  |  |  |  |  |  |  |  |  |  |
| P1EWCC-AWP01-3840 |  | Planning Consent & Licensing for Survey Work |  | 0d | 2017-03-20 A | 2017-06-09 A | P1EWCC-AWP01-1230 | 100% |  | 2017-03-20 | 2017-03-20 |  |  |  |  |  | UW1 |
| P1EWCC-FWP01-2350 |  | Undertake Remaining Soil Surveys |  | 120d | 2017-12-15 | 2018-06-01 | P1EWCC-PWP01-5610 |  |  |  |  | 375d |  |  |  | y | AWS |
| P1EWCC-FWP01-2360 |  | Undertake Arboricultural Surveys |  | 125d | 2017-12-15 | 2018-06-08 | P1EWCC-PWP01-5610 |  |  |  |  | 370d |  |  |  | y | AWS |
| P1EWCC-FWP01-2370 |  | Undertake Remaining Ecology & Environmental Surveys |  | 240d | 2017-12-15 | 2018-11-16 | P1EWCC-PWP01-5610 |  |  |  |  | 255d |  |  |  | y | AWS |
|  | 1 | **Ecological & Environmental Surveys** |  |  | 2017-06-12 | 2017-09-29 |  |  |  |  |  |  |  |  |  |  |  |
| P1EWCC-PWP01-3070 |  | Survey for Badgers, Bats, GCN & Reptiles |  | 25d | 2017-06-12 A | 2017-09-29 | P1EWCC-AWP01-4110, P1EWCC-AWP01-3840 | 60% | 9.88d | 2017-03-20 | 2017-04-21 | 69.12d | 0d |  | 2017-09-29 |  | UW1 |
|  | 2 | **Engineering Surveys** |  |  | 2017-04-05 | 2017-04-21 |  |  |  |  |  |  |  |  |  |  |  |
| P1EWCC-PWP03-3130 |  | Survey for Engineering (Topo, GPR, Utility, Soil) |  | 20d | 2017-04-05 A | 2017-04-21 A | P1EWCC-AWP01-4110, P1EWCC-AWP01-3840 | 100% |  | 2017-03-20 | 2017-04-14 |  |  |  |  |  | UW1 |
|  | 3 | **Historic Environment** |  |  | 2017-08-10 | 2019-09-27 |  |  |  |  |  |  |  |  |  |  |  |
|  | 1 | **Ecological Mitigation Site Fleet Martson Cottages 1437 (067-M2E)** |  |  | 2017-10-09 | 2017-12-22 |  |  |  |  |  |  |  |  |  |  |  |
| P1EWCC-PWP06-1500 |  | Trial Trenching (ecological mitigation site) |  | 15d | 2017-10-09 | 2017-10-27 | P1EWCC-PWP06-1530 |  |  |  |  | 14d | 0d | start on or after 2017-10-09 |  |  | UW1 |
| P1EWCC-PWP06-1510 |  | Intrusive Surveys ( (ecological mitigation site) |  | 5d | 2017-12-15 | 2017-12-22 | P1EWCC-PWP06-1540, P1EWCC-PWP02-4130, P1EWCC-PWP05-240 |  |  |  |  | 9.12d | 0d |  |  |  | AWH |
|  | 3 | **Ecological Mitigation Site Putlowes Cottages 1434 (066-M3W)** |  |  | 2017-08-10 | 2017-12-22 |  |  |  |  |  |  |  |  |  |  |  |
| P1EWCC-PWP06-11600 |  | Geophysics (ecological mitigation site) |  | 2d | 2017-08-10 A | 2017-08-11 A | P1EWCC-PWP06-11650 | 100% |  | 2017-08-01 | 2017-08-02 |  |  |  |  |  | UW1 |
| P1EWCC-PWP06-11610 |  | Intrusive Surveys ( (ecological mitigation site) |  | 5d | 2017-12-15 | 2017-12-22 | P1EWCC-PWP06-11660, P1EWCC-PWP05-240 |  |  |  |  | 9.12d | 0d |  |  |  | AWH |
|  | 4 | **Ecological Mitigation Site Wayside Farm East 1368 (068-M5W)** |  |  | 2017-09-01 | 2017-12-22 |  |  |  |  |  |  |  |  |  |  |  |
| P1EWCC-PWP06-11620 |  | Geophysics (ecological mitigation site) |  | 3d | 2017-09-01 A | 2017-09-05 A | P1EWCC-PWP06-11690 | 100% |  | 2017-09-18 | 2017-09-20 |  |  |  |  |  | UW1 |
| P1EWCC-PWP06-11630 |  | Intrusive Surveys ( (ecological mitigation site) |  | 5d | 2017-12-15 | 2017-12-22 | P1EWCC-PWP06-11700, P1EWCC-PWP05-240 |  |  |  |  | 69.12d | 0d |  |  |  | AWH |

| ID | WBS | Activity | Duration | Start | Finish | Predecessors | Complete | Remaining | Planned start | Planned finish | Total float | Free float | Expected finish | Fusion - WPS |
| --- | --- | --- | --- | --- | --- | --- | --- | --- | --- | --- | --- | --- | --- | --- |
|  | 2 | **066-L1 - Bicester Road Embankment** |  | 2018-02-09 | 2019-09-27 |  |  |  |  |  |  |  |  |  |
| P1EWCC-PWP06-9390 |  | Non-Intrusive Surveys (geophysics) | 20d | 2018-02-09 | 2018-03-09 | P1EWCC-PWP06-9360, P1EWCC-PWP05-240 |  |  |  |  | 65.5d | 0d |  | AWH |
| P1EWCC-PWP06-9400 |  | Non-Intrusive Surveys (trial trenching) | 30d | 2018-05-04 | 2018-06-15 | P1EWCC-PWP06-9370, P1EWCC-PWP05-240 |  |  |  |  | 65.5d | 0d |  | AWH |
| P1EWCC-PWP06-1870 |  | Intrusive Surveys - (Fleet Marston Roman Town) | 259.5d | 2018-09-28 | 2019-09-27 | P1EWCC-PWP06-1510, P1EWCC-PWP06-9380, P1EWCC-PWP02-4150, P1EWCC-PWP02-5210, P1EWCC-AWP01-4130 |  |  |  |  | 30.5d | 0d |  | AWH |
|  | 9 | **Historic Environment** |  | 2017-04-17 | 2019-11-15 |  |  |  |  |  |  |  |  |  |
|  | 1 | **Ecological Mitigation Site Fleet Martson Cottages 1437 (067-M2E)** |  | 2017-04-17 | 2018-02-09 |  |  |  |  |  |  |  |  |  |
| P1EWCC-PWP06-1530 |  | Production and Approval of LS-WSI Bicester Road East (non-intrusive surveys) Code 1 | 20d | 2017-04-17 A | 2017-08-01 A | P1EWCC-UWP01-1000 | 100% |  | 2017-03-20 | 2017-04-14 |  |  |  | UW1 |
| P1EWCC-PWP06-1520 |  | HS2 issue Project Plan | 1d | 2017-09-18 | 2017-09-18 |  |  |  |  |  | 73d | 59d |  | UW1 |
| P1EWCC-PWP06-1540 |  | Update of Project Plans and LS-WSI and Approval (intrusive surveys) | 30d | 2017-10-30 | 2017-12-08 | P1EWCC-PWP06-1500, P1EWCC-PWP06-1520 FF |  |  |  |  | 14d | 4.88d |  | UW1 |
| P1EWCC-PWP06-1550 |  | Report of Findings And Approval (ecological mitigation site) | 35d | 2017-12-22 | 2018-02-09 | P1EWCC-PWP06-1510 |  |  |  |  | 9.12d | 10d |  | AWH |
|  | 3 | **Ecological Mitigation Site Putlowes Cottages 1434 (066-M3W)** |  | 2017-04-17 | 2018-02-09 |  |  |  |  |  |  |  |  |  |
| P1EWCC-PWP06-11650 |  | Production and Approval of LS-WSI Bucks, Herts, LGA (non-intrusive surveys) Code 2 | 20d | 2017-04-17 A | 2017-06-27 A | P1EWCC-UWP01-1000 | 100% |  | 2017-03-20 | 2017-04-14 |  |  |  | UW1 |
| P1EWCC-PWP06-11660 |  | Update of Project Plans and LS-WSI and Approval (intrusive surveys) | 20d | 2017-08-14 A | 2017-09-29 | P1EWCC-PWP06-11640 FF, P1EWCC-PWP06-11600 | 51% | 9.88d | 2017-09-19 | 2017-10-16 | 64.12d | 0d | 2017-09-29 | UW1 |
| P1EWCC-PWP06-11640 |  | HS2 issue Project Plan | 1d | 2017-09-18 | 2017-09-18 |  |  |  |  |  | 73d | 8.88d |  | UW1 |
| P1EWCC-PWP06-11670 |  | Report of Findings And Approval (ecological mitigation site) | 35d | 2017-12-22 | 2018-02-09 | P1EWCC-PWP06-11610 |  |  |  |  | 1285.12d |  |  | AWH |
|  | 4 | **Ecological Mitigation Site Wayside Farm East 1368 (068-M5W)** |  | 2017-04-17 | 2018-02-09 |  |  |  |  |  |  |  |  |  |
| P1EWCC-PWP06-11690 |  | Production and Approval of LS-WSI Bucks, Herts, LGA (non-intrusive surveys) Code 2 | 20d | 2017-04-17 A | 2017-06-27 A | P1EWCC-UWP01-1000 | 100% |  | 2017-03-20 | 2017-04-14 |  |  |  | UW1 |
| P1EWCC-PWP06-11700 |  | Update of Project Plans and LS-WSI and Approval (intrusive surveys) | 20d | 2017-09-06 A | 2017-10-17 | P1EWCC-PWP06-11680 FF, P1EWCC-PWP06-11620 |  | 22d | 2017-09-21 | 2017-10-18 | 112d | 0d | 2017-10-18 | UW1 |
| P1EWCC-PWP06-11680 |  | HS2 issue Project Plan | 1d | 2017-09-18 | 2017-09-18 |  |  |  |  |  | 133d | 21d |  | UW1 |
| P1EWCC-PWP06-11710 |  | Report of Findings And Approval (ecological mitigation site) | 35d | 2017-12-22 | 2018-02-09 | P1EWCC-PWP06-11630 |  |  |  |  | 1285.12d |  |  | AWH |
|  | 2 | **066-L1 - Bicester Road Embankment** |  | 2017-12-15 | 2019-11-15 |  |  |  |  |  |  |  |  |  |
| P1EWCC-PWP06-9360 |  | Production and Approval of LS-WSI (non-intrusive surveys) | 40d | 2017-12-15 | 2018-02-09 | P1EWCC-PWP05-240 |  |  |  |  | 65.5d | 0d |  | AWH |
| P1EWCC-PWP06-9370 |  | Update of Project Plans and LS-WSI and Approval (intrusive surveys) | 40d | 2018-03-09 | 2018-05-04 | P1EWCC-PWP06-9390 |  |  |  |  | 65.5d | 0d |  | AWH |
| P1EWCC-PWP06-9380 |  | Update of Project Plans and LS-WSI and Approval (intrusive surveys) | 40d | 2018-06-15 | 2018-08-10 | P1EWCC-PWP06-9400 |  |  |  |  | 65.5d | 35d |  | AWH |
| P1EWCC-PWP06-1880 |  | Report of Findings And Approval (066-L1 Bicester Road Embankment) | 35d | 2019-09-27 | 2019-11-15 | P1EWCC-PWP06-1870 |  |  |  |  | 825.62d |  |  | AWH |

| ID | WBS | Activity | Duration | Start | Finish | Predecessors | Complete | Remaining | Planned start | Planned finish | Total float | Free float | Constraint | Expected finish | Calendar | Fusion - WPS |
| --- | --- | --- | --- | --- | --- | --- | --- | --- | --- | --- | --- | --- | --- | --- | --- | --- |
|  | 2 | **Ecological Mitigation Works** |  | 2017-02-24 | 2018-12-14 |  |  |  |  |  |  |  |  |  |  |  |
|  | 1 | **Design** |  | 2017-02-24 | 2017-11-21 |  |  |  |  |  |  |  |  |  |  |  |
|  | 1 | **066-M3W** |  | 2017-02-24 | 2017-10-31 |  |  |  |  |  |  |  |  |  |  |  |
| P1EWCC-PWP02-4120 |  | HS2 issue Prelimanry Design of Habitat Creation (066-M3W) | 1d | 2017-02-24 A | 2017-02-24 A |  | 100% |  |  |  |  |  |  |  |  | UW1 |
| P1EWCC-PWP02-4110 |  | Design of Habitat Creation ((066-M3W) | 25d | 2017-03-30 A | 2017-09-15 A | P1EWCC-PWP02-4120, P1EWCC-PWP03-3130 FF | 100% |  | 2017-02-27 | 2017-03-31 |  |  |  |  |  | UW1 |
| P1EWCC-AWP01-3830 |  | Planning Consent & Licensing for Habitat Creation (066-M3W) | 40d | 2017-05-26 A | 2017-10-31 | P1EWCC-PWP02-4110 SS | 20% | 31.88d | 2017-07-05 | 2017-08-29 | 47.12d | 0d |  | 2017-10-31 |  | UW1 |
|  | 2 | **067-M2E** |  | 2017-02-24 | 2017-11-21 |  |  |  |  |  |  |  |  |  |  |  |
| P1EWCC-PWP02-12430 |  | HS2 issue Prelimanry Design of Habitat Creation (067-M2E) | 1d | 2017-02-24 A | 2017-02-24 A |  | 100% |  |  |  |  |  |  |  |  | UW1 |
| P1EWCC-PWP02-12420 |  | Design of Habitat Creation (067-M2E) TBC - EW15 ON HOLD | 25d | 2017-03-30 A | 2017-09-26 | P1EWCC-PWP02-12430, P1EWCC-PWP03-3130 FF | 72% | 6.88d | 2017-02-27 | 2017-03-31 | 1173.12d | 0d |  | 2017-09-26 |  | UW1 |
| P1EWCC-AWP01-8300 |  | Planning Consent & Licensing for Habitat Creation (067-M2E) TBC - EW15 | 40d | 2017-05-26 A | 2017-11-21 | P1EWCC-PWP02-12420 SS |  | 46.88d | 2017-07-05 | 2017-08-29 | 1173.12d | 0d |  | 2017-11-21 |  | UW1 |
|  | 4 | **068-M5W** |  | 2017-04-13 | 2017-11-21 |  |  |  |  |  |  |  |  |  |  |  |
| P1EWCC-PWP02-5160 |  | Design of Habitat Creation (068-M5W) | 25d | 2017-04-13 A | 2017-09-26 | P1EWCC-PWP03-3130 FF | 72% | 6.88d | 2017-04-17 | 2017-05-19 | 92.12d | 0d |  | 2017-09-26 |  | UW1 |
| P1EWCC-AWP01-4450 |  | Planning Consent & Licensing for Habitat Creation (068-M5W) | 40d | 2017-06-19 A | 2017-11-21 | P1EWCC-PWP02-5160 SS |  | 46.88d | 2017-07-19 | 2017-09-12 | 92.12d | 0d |  | 2017-11-21 |  | UW1 |
|  | 2 | **Species Removal from Habitat Area** |  | 2017-07-31 | 2017-10-18 |  |  |  |  |  |  |  |  |  |  |  |
|  | 1 | **066-M3W** |  | 2017-07-31 | 2017-10-18 |  |  |  |  |  |  |  |  |  |  |  |
| P1EWCC-PWP02-4140 |  | MS/RAMS for GCN/Reptile Clearance from Habitat Creation Site (066-M3W) | 15d | 2017-07-31 A | 2017-09-13 A | P1EWCC-AWP01-1230 | 100% |  | 2017-07-24 | 2017-08-11 |  |  |  |  |  | UW1 |
| P1EWCC-PWP02-4130 |  | Exclude GCN/Reptile from Habitat Creation (066-M3W) | 35d | 2017-09-14 A | 2017-10-18 | P1EWCC-PWP02-4140, P1EWCC-AWP01-4120 | 11% | 31d | 2017-09-18 | 2017-10-22 | 71d | 0d |  | 2017-10-18 | HS2 - 8h x 7d Workweek (No Holidays) | UW1 |
|  | 3 | **Habitat Creation** |  | 2018-01-05 | 2018-09-26 |  |  |  |  |  |  |  |  |  |  |  |
|  | 1 | **066-M3W** |  | 2018-01-05 | 2018-08-31 |  |  |  |  |  |  |  |  |  |  |  |
| P1EWCC-PWP02-4090 |  | Habitat Creation (066-M3W) | 40d | 2018-01-05 | 2018-03-02 | P1EWCC-AWP01-3830, P1EWCC-PWP02-4130, P1EWCC-PWP06-1550 SS, P1EWCC-PWP01-3070, P1EWCC-PWP02-9220, P1EWCC-PWP02-4110, P1EWCC-PWP06-11610 |  |  |  |  | -0.88d | 0.12d |  |  |  | AWE1 |
| P1EWCC-PWP02-4100 |  | Habitat Creation Maturity Period (066-M3W) | 182d | 2018-03-03 | 2018-08-31 | P1EWCC-PWP02-4090 |  |  |  |  | -1d | 0d | start on or after 2018-03-01 |  | HS2 - 8h x 7d Workweek (No Holidays) | AWE1 |
|  | 2 | **067-M2E** |  | 2018-02-01 | 2018-09-26 |  |  |  |  |  |  |  |  |  |  |  |
| P1EWCC-PWP02-12400 |  | Habitat Creation (067-M2E) | 40d | 2018-02-01 | 2018-03-28 | P1EWCC-AWP01-8280, P1EWCC-AWP01-8300, P1EWCC-PWP06-1510, P1EWCC-PWP02-9220, P1EWCC-PWP02-12420 |  |  |  |  | 1122d | 0d | start on or after 2018-02-01 |  |  | AWE1 |
| P1EWCC-PWP02-12410 |  | Habitat Creation Maturity Period (067-M2E) | 182d | 2018-03-29 | 2018-09-26 | P1EWCC-PWP02-12400 |  |  |  |  | 1570d |  | start on or after 2018-03-01 |  | HS2 - 8h x 7d Workweek (No Holidays) | AWE1 |

| ID | WBS | Activity | Type | Duration | Start | Finish | Predecessors | Complete | Planned start | Planned finish | Total float | Free float | Constraint | Calendar | Fusion - WPS | HS2 Filter |
| --- | --- | --- | --- | --- | --- | --- | --- | --- | --- | --- | --- | --- | --- | --- | --- | --- |
|  | 7 | **068-M5W** |  |  | 2018-01-05 | 2018-08-29 |  |  |  |  |  |  |  |  |  |  |
| P1EWCC-PWP02-5190 |  | Habitat Creation (068-M5W) |  | 55d | 2018-01-05 | 2018-03-23 | P1EWCC-AWP01-4450, P1EWCC-PWP02-9220, P1EWCC-AWP01-8290, P1EWCC-PWP02-5160, P1EWCC-PWP06-11630 |  |  |  | 59.12d | 38.12d |  |  | AWE1 |  |
| P1EWCC-PWP02-5200 |  | Habitat Creation Maturity Period (068-M5W) |  | 182d | 2018-03-01 | 2018-08-29 | P1EWCC-PWP02-5190 SS |  |  |  | 29d | 0d | start on or after 2018-03-01 | HS2 - 8h x 7d Workweek (No Holidays) | AWE1 |  |
|  | 5 | **Translocation of Species** |  |  | 2018-07-29 | 2018-09-28 |  |  |  |  |  |  |  |  |  |  |
|  | 1 | **066-M3W & 067-M2E** |  |  | 2018-07-31 | 2018-09-28 |  |  |  |  |  |  |  |  |  |  |
| P1EWCC-PWP02-4150 |  | Species Translocation to Habitat Creation (066-M3W & 067-M2E) |  | 60d | 2018-07-31 | 2018-09-28 | P1EWCC-PWP02-4100 SS+150d, P1EWCC-AWP01-4130, P1EWCC-PWP02-14610 |  |  |  | -1d | 0d |  | HS2 - 8h x 7d Workweek (No Holidays) | AWE1 |  |
|  | 8 | **068-M5W** |  |  | 2018-07-29 | 2018-09-26 |  |  |  |  |  |  |  |  |  |  |
| P1EWCC-PWP02-5210 |  | Species Translocation to Habitat Creation (068-M5W) |  | 60d | 2018-07-29 | 2018-09-26 | P1EWCC-PWP02-5200 SS+150d, P1EWCC-AWP01-4130, P1EWCC-PWP02-14610 |  |  |  | 46.38d | 2d |  | HS2 - 8h x 7d Workweek (No Holidays) | AWE1 |  |
|  | 4 | **Translocation of Hedgerow** |  |  | 2018-11-01 | 2018-12-14 |  |  |  |  |  |  |  |  |  |  |
| P1EWCC-PWP02-7470 |  | Translocation of hedgerows |  | 43d | 2018-11-01 | 2018-12-14 | P1EWCC-PWP02-11910, P1EWCC-PWP02-4150, P1EWCC-AWP01-4130, P1EWCC-PWP02-5210 |  |  |  | 329.62d |  | start on or after 2018-11-01 | HS2 - 8h x 7d Workweek (No Holidays) | AWE2 |  |
|  | 8 | **Water Resources** |  |  | 2017-06-07 | 2017-09-15 |  |  |  |  |  |  |  |  |  |  |
| P1EWCC-FWP03-1200 |  | Hydrological Modelling - Tributary of Fleet Marston Brook |  | 195d | 2017-06-07 A | 2017-09-15 A | P1EWCC-UWP01-1000 | 100% | 2017-09-28 | 2018-06-27 |  |  |  |  | UW1 | y |
|  | 3 | **Noise and Vibration Works** |  |  |  |  |  |  |  |  |  |  |  |  |  |  |
|  | 4 | **SOW Completion Dates** |  |  | 2018-09-28 | 2018-09-28 |  |  |  |  |  |  |  |  |  |  |
| P1EWCC-PWP02-4160 |  | Completion of Habitat Creation (066-M3W & 067-M2E, 068-M5W) | milestone | 0d | 2018-09-28 | 2018-09-28 | P1EWCC-PWP02-5200, P1EWCC-PWP02-4100 |  |  |  | 0d | 1121d | finish on 2018-09-28 |  | AWE1 |  |
| P1EWCC-PWP02-4210 |  | Completion of Translocation of Hedgerows | milestone | 0d | 2018-09-28 | 2018-09-28 |  |  |  |  | 0d | 1121d | finish on 2018-09-28 |  | AWE2 |  |
| P1EWCC-PWP02-4170 |  | Completion of Species Translocation/ exclusion - Badgers | milestone | 0d | 2018-09-28 | 2018-09-28 | P1EWCC-PWP02-4150 |  |  |  | -0.88d | 1120.12d | finish on 2018-09-28 |  | AWE1 |  |
| P1EWCC-PWP02-4180 |  | Completion of Species Translocation/ exclusion - Bats | milestone | 0d | 2018-09-28 | 2018-09-28 | P1EWCC-PWP02-4150 |  |  |  | -0.88d | 1120.12d | finish on 2018-09-28 |  | AWE1 |  |
| P1EWCC-PWP02-4190 |  | Completion of Species Translocation/ exclusion - Great Crested Newts | milestone | 0d | 2018-09-28 | 2018-09-28 | P1EWCC-PWP02-4150 |  |  |  | -0.88d | 1120.12d | finish on 2018-09-28 |  | AWE1 |  |
| P1EWCC-PWP02-4200 |  | Completion of Species Translocation/ exclusion - Reptiles | milestone | 0d | 2018-09-28 | 2018-09-28 | P1EWCC-PWP02-4150 |  |  |  | -0.88d | 1120.12d | finish on 2018-09-28 |  | AWE1 |  |
| P1EWCC-FWP03-1210 |  | Completion of Preliminary Floodplain compensation design- Fleet Marston Brook | milestone | 0d | 2018-09-28 | 2018-09-28 | P1EWCC-FWP03-1200 |  |  |  | 0d | 1120d | finish on 2018-09-28 |  | UW1 | y |
|  | 3 | **068-L1 - Waddesdon South Cutting** |  |  | 2017-03-20 | 2019-09-30 |  |  |  |  |  |  |  |  |  |  |
|  | 8 | **Land Access** |  |  | 2017-06-05 | 2018-07-31 |  |  |  |  |  |  |  |  |  |  |
|  | 1 | **Survey Work** |  |  | 2017-06-05 | 2017-06-05 |  |  |  |  |  |  |  |  |  |  |
| P1EWCC-AWP01-6020 |  | Land Access Granted for Survey Work (Schedule 2) | milestone | 0d | 2017-06-05 A | 2017-06-05 A |  | 100% | 2017-04-03 | 2017-04-03 |  |  | as late as possible |  | AW1 | y |

| ID | WBS | Activity | Type | Duration | Start | Finish | Predecessors | Complete | Planned start | Planned finish | Total float | Free float | Constraint | Calendar | HS2 Filter | Fusion - WPS |
| --- | --- | --- | --- | --- | --- | --- | --- | --- | --- | --- | --- | --- | --- | --- | --- | --- |
|  | 2 | **Possession** |  |  | 2018-07-31 | 2018-07-31 |  |  |  |  |  |  |  |  |  |  |
| P1EWCC-AWP01-6030 |  | Land Access Possession Granted for Construction (Schedule 16) | milestone | 0d | 2018-07-31 | 2018-07-31 |  |  |  |  | 94d | 0d | as late as possible |  | y | AW1 |
|  | 3 | **Survey Works** |  |  | 2017-03-20 | 2019-03-22 |  |  |  |  |  |  |  |  |  |  |
| P1EWCC-AWP01-6010 |  | Planning Consent & Licensing for Survey Work |  | 10d | 2017-03-20 A | 2017-06-02 A | P1EWCC-AWP01-1230 | 100% | 2017-03-20 | 2017-03-31 |  |  |  |  |  | AW1 |
| P1EWCC-FWP01-2380 |  | Undertake Remaining Soil Surveys |  | 120d | 2017-12-15 | 2018-06-01 | P1EWCC-PWP01-5610 |  |  |  | 218d |  |  |  | y | AWS |
| P1EWCC-FWP01-2390 |  | Undertake Arboricultural Surveys |  | 125d | 2017-12-15 | 2018-06-08 | P1EWCC-PWP01-5610 |  |  |  | 213d |  |  |  | y | AWS |
| P1EWCC-FWP01-2400 |  | Undertake Remaining Ecology & Environmental Surveys |  | 330d | 2017-12-15 | 2019-03-22 | P1EWCC-PWP01-5610 |  |  |  | 8d |  |  |  | y | AWS |
|  | 1 | **Ecological & Environmental Surveys** |  |  | 2017-06-05 | 2017-07-07 |  |  |  |  |  |  |  |  |  |  |
| P1EWCC-PWP01-3710 |  | Survey for Badgers, Bats, GCN & Reptiles |  | 25d | 2017-06-05 A | 2017-07-07 A | P1EWCC-AWP01-6010, P1EWCC-AWP01-6020 | 100% | 2017-04-03 | 2017-05-05 |  |  |  |  |  | UW1 |
|  | 2 | **Engineering Surveys** |  |  |  |  |  |  |  |  |  |  |  |  |  |  |
|  | 3 | **Historic Environment** |  |  | 2018-02-09 | 2018-11-23 |  |  |  |  |  |  |  |  |  |  |
| P1EWCC-PWP06-4920 |  | Non-Intrusive Surveys (geophysics) |  | 20d | 2018-02-09 | 2018-03-09 | P1EWCC-PWP06-4900, P1EWCC-AWP01-6020, P1EWCC-PWP05-240 |  |  |  | 128d | 0d |  |  |  | AWH |
| P1EWCC-PWP06-9410 |  | Non-Intrusive Surveys (trial trenching) |  | 30d | 2018-05-04 | 2018-06-15 | P1EWCC-PWP06-4910, P1EWCC-PWP05-240 |  |  |  | 128d | 0d |  |  |  | AWH |
| P1EWCC-PWP06-4940 |  | Intrusive Surveys |  | 40d | 2018-09-28 | 2018-11-23 | P1EWCC-PWP06-4910, P1EWCC-PWP02-7480, P1EWCC-PWP06-9420, P1EWCC-AWP01-6030 |  |  |  | 93d | 0d |  |  |  | AWH |
|  | 7 | **Historic Environment** |  |  | 2017-12-15 | 2019-01-11 |  |  |  |  |  |  |  |  |  |  |
| P1EWCC-PWP06-4900 |  | Production and Approval of Proejct Plan & LS-WSI (non-intrusive surveys) |  | 40d | 2017-12-15 | 2018-02-09 | P1EWCC-PWP05-240 |  |  |  | 128d | 0d |  |  |  | AWH |
| P1EWCC-PWP06-4910 |  | Update of Project Plans and LS-WSI and Approval (intrusive surveys) |  | 40d | 2018-03-09 | 2018-05-04 | P1EWCC-PWP06-4920 |  |  |  | 128d | 0d |  |  |  | AWH |
| P1EWCC-PWP06-9420 |  | Update of Project Plans and LS-WSI and Approval (intrusive surveys) |  | 40d | 2018-06-15 | 2018-08-10 | P1EWCC-PWP06-9410 |  |  |  | 128d | 35d |  |  |  | AWH |
| P1EWCC-PWP06-4930 |  | Report of Findings And Approval (Archaeological Investigation) |  | 35d | 2018-11-23 | 2019-01-11 | P1EWCC-PWP06-4940 |  |  |  | 1045.12d |  |  |  |  | AWH |
|  | 2 | **Ecological Mitigation Works** |  |  | 2018-07-31 | 2018-12-14 |  |  |  |  |  |  |  |  |  |  |
|  | 5 | **Translocation of Species** |  |  | 2018-07-31 | 2018-09-28 |  |  |  |  |  |  |  |  |  |  |
| P1EWCC-PWP02-7480 |  | Species Translocation to Habitat Creation (066-M3W & 067-M2E) |  | 60d | 2018-07-31 | 2018-09-28 | P1EWCC-AWP01-6030, P1EWCC-PWP02-4100 SS+150d, P1EWCC-PWP01-3710, P1EWCC-PWP02-14610 |  |  |  | 131d | 0d |  | HS2 - 8h x 7d Workweek (No Holidays) |  | AWE1 |
|  | 4 | **Translocation of Hedgerow** |  |  | 2018-11-01 | 2018-12-14 |  |  |  |  |  |  |  |  |  |  |
| P1EWCC-PWP02-7520 |  | Translocation of hedgerows |  | 43d | 2018-11-01 | 2018-12-14 | P1EWCC-PWP02-11910, P1EWCC-PWP02-7480, P1EWCC-AWP01-6030 |  |  |  | 110.62d |  | start on or after 2018-11-01 | HS2 - 8h x 7d Workweek (No Holidays) |  | AWE2 |

| ID | WBS | Activity | Type | Duration | Start | Finish | Predecessors | Complete | Planned start | Planned finish | Total float | Free float | Constraint | Fusion - WPS | HS2 Filter |
| --- | --- | --- | --- | --- | --- | --- | --- | --- | --- | --- | --- | --- | --- | --- | --- |
|  | 5 | **Noise and Vibration Works** |  |  |  |  |  |  |  |  |  |  |  |  |  |
|  | 1 | **SOW Completion Dates** |  |  | 2019-09-30 | 2019-09-30 |  |  |  |  |  |  |  |  |  |
| P1EWCC-PWP02-7490 |  | Completion of Species Translocation/ exclusion - Reptiles | milestone | 0d | 2019-09-30 | 2019-09-30 | P1EWCC-PWP02-7480 |  |  |  | 0d | 860d | finish on 2019-09-30 | AWE1 |  |
| P1EWCC-PWP02-7500 |  | Completion of Species Translocation/ exclusion - Bats | milestone | 0d | 2019-09-30 | 2019-09-30 | P1EWCC-PWP02-7480 |  |  |  | 0d | 860d | finish on 2019-09-30 | AWE1 |  |
| P1EWCC-PWP02-7510 |  | Completion of Species Translocation/ exclusion - GCN | milestone | 0d | 2019-09-30 | 2019-09-30 | P1EWCC-PWP02-7480 |  |  |  | 0d | 860d | finish on 2019-09-30 | AWE1 |  |
| P1EWCC-PWP02-7530 |  | Completion of Translocation of Hedgerows | milestone | 0d | 2019-09-30 | 2019-09-30 | P1EWCC-PWP02-7520 |  |  |  | 0d | 860d | finish on 2019-09-30 | AWE2 |  |
|  | 4 | **069-L1 - Waddesdon Embankment** |  |  | 2017-03-20 | 2019-09-30 |  |  |  |  |  |  |  |  |  |
|  | 7 | **Land Access** |  |  | 2017-04-05 | 2019-03-01 |  |  |  |  |  |  |  |  |  |
|  | 1 | **Survey Work** |  |  | 2017-04-05 | 2017-04-05 |  |  |  |  |  |  |  |  |  |
| P1EWCC-AWP01-4480 |  | Land Access Granted for Survey Work (Schedule 2) | milestone | 0d | 2017-04-05 A | 2017-04-05 A |  | 100% | 2017-03-20 | 2017-03-20 |  |  | as late as possible | UW1 | y |
|  | 2 | **Possession** |  |  | 2019-03-01 | 2019-03-01 |  |  |  |  |  |  |  |  |  |
|  | 1 | **Ecological Mitigation Area** |  |  |  |  |  |  |  |  |  |  |  |  |  |
|  | 2 | **069-L1 - Waddesdon Embankment** |  |  | 2019-03-01 | 2019-03-01 |  |  |  |  |  |  |  |  |  |
| P1EWCC-AWP01-4500 |  | Land Access Possession Granted for Construction of 069-L1 - Waddesdon Embankment (Schedule 16) | milestone | 0d | 2019-03-01 | 2019-03-01 |  |  |  |  | 91d | 0d | as late as possible | AW1 | y |
|  | 10 | **Survey Works** |  |  | 2017-03-20 | 2019-06-24 |  |  |  |  |  |  |  |  |  |
| P1EWCC-AWP01-4470 |  | Planning Consent & Licensing for Survey Work |  | 0d | 2017-03-20 A | 2017-04-04 A | P1EWCC-AWP01-1230 | 100% | 2017-03-20 | 2017-03-20 |  |  |  | UW1 |  |
| P1EWCC-FWP01-2430 |  | Undertake Arboricultural Surveys |  | 125d | 2017-12-15 | 2018-06-08 | P1EWCC-PWP01-5610 |  |  |  | 363d |  |  | AWS | y |
| P1EWCC-FWP01-2440 |  | Undertake Remaining Ecology & Environmental Surveys |  | 340d | 2017-12-15 | 2019-04-05 | P1EWCC-PWP01-5610 |  |  |  | 148d |  |  | AWS | y |
|  | 1 | **Ecological & Environmental Surveys** |  |  | 2017-06-19 | 2017-09-15 |  |  |  |  |  |  |  |  |  |
| P1EWCC-PWP01-3170 |  | Survey for Badgers, Bats, GCN & Reptiles |  | 25d | 2017-06-19 A | 2017-09-15 A | P1EWCC-AWP01-4480, P1EWCC-AWP01-4470 | 100% | 2017-03-20 | 2017-04-21 |  |  |  | UW1 |  |
|  | 2 | **Engineering Surveys** |  |  | 2017-04-05 | 2017-05-09 |  |  |  |  |  |  |  |  |  |
| P1EWCC-PWP03-3240 |  | Survey for Engineering (Topo, GPR, Utility, Soil) |  | 15d | 2017-04-05 A | 2017-05-09 A | P1EWCC-AWP01-4470, P1EWCC-AWP01-4480 | 100% | 2017-03-20 | 2017-04-07 |  |  |  | UW1 |  |
|  | 3 | **Historic Environment Surveys** |  |  | 2018-02-09 | 2019-06-24 |  |  |  |  |  |  |  |  |  |
|  | 1 | **Ecological Mitigation Site** |  |  |  |  |  |  |  |  |  |  |  |  |  |
|  | 2 | **069-L1 - Waddesdon Embankment** |  |  | 2018-02-09 | 2019-06-24 |  |  |  |  |  |  |  |  |  |
| P1EWCC-PWP06-9430 |  | Non-Intrusive Surveys (geophysics) |  | 20d | 2018-02-09 | 2018-03-09 | P1EWCC-PWP06-9450, P1EWCC-PWP05-240 |  |  |  | 278d | 0d |  | AWH |  |
| P1EWCC-PWP06-9440 |  | Non-Intrusive Surveys (trial trenching) |  | 30d | 2018-05-04 | 2018-06-15 | P1EWCC-PWP06-9460, P1EWCC-PWP05-240 |  |  |  | 278d | 0d |  | AWH |  |
| P1EWCC-PWP06-2260 |  | Intrusive Surveys (063-L2 - Whaddon Hill Cutting) |  | 40d | 2019-04-29 | 2019-06-24 | P1EWCC-PWP06-9470, P1EWCC-AWP01-4500, P1EWCC-PWP02-12680 |  |  |  | 92d | 0d |  | AWH |  |

| ID | WBS | Activity | Type | Duration | Start | Finish | Predecessors | Complete | Remaining | Planned start | Planned finish | Total float | Free float | Constraint | Expected finish | Calendar | Fusion - WPS | HS2 Filter |
| --- | --- | --- | --- | --- | --- | --- | --- | --- | --- | --- | --- | --- | --- | --- | --- | --- | --- | --- |
|  | 6 | **Historic Environment** |  |  | 2017-12-15 | 2019-08-12 |  |  |  |  |  |  |  |  |  |  |  |  |
|  | 1 | **Ecological Mitigation Site** |  |  |  |  |  |  |  |  |  |  |  |  |  |  |  |  |
|  | 2 | **069-L1 - Waddesdon Embankment** |  |  | 2017-12-15 | 2019-08-12 |  |  |  |  |  |  |  |  |  |  |  |  |
| P1EWCC-PWP06-9450 |  | Production and Approval of Proejct Plan & LS-WSI (non-intrusive surveys) |  | 40d | 2017-12-15 | 2018-02-09 | P1EWCC-PWP05-240 |  |  |  |  | 278d | 0d |  |  |  | AWH |  |
| P1EWCC-PWP06-9460 |  | Update of Project Plans and LS-WSI and Approval (intrusive surveys) |  | 40d | 2018-03-09 | 2018-05-04 | P1EWCC-PWP06-9430 |  |  |  |  | 278d | 0d |  |  |  | AWH |  |
| P1EWCC-PWP06-9470 |  | Update of Project Plans and LS-WSI and Approval (intrusive surveys) |  | 40d | 2018-06-15 | 2018-08-10 | P1EWCC-PWP06-9440 |  |  |  |  | 278d | 186d |  |  |  | AWH |  |
| P1EWCC-PWP06-2270 |  | Report of Findings And Approval (069-L1 - Waddesdon Embankment) |  | 35d | 2019-06-24 | 2019-08-12 | P1EWCC-PWP06-2260 |  |  |  |  | 894.12d |  |  |  |  | AWH |  |
|  | 11 | **Ecological Mitigation Works** |  |  | 2017-04-14 | 2019-04-29 |  |  |  |  |  |  |  |  |  |  |  |  |
|  | 1 | **Design** |  |  | 2017-04-14 | 2017-10-25 |  |  |  |  |  |  |  |  |  |  |  |  |
| P1EWCC-PWP02-5240 |  | Design of Habitat Creation (070-M3W) (deleted PMI 9) |  | 25d | 2017-04-14 A | 2017-10-25 | P1EWCC-PWP03-3240 FF |  | 27.88d | 2017-04-10 | 2017-05-12 | 1362.12d | 0d |  | 2017-10-25 |  | UW1 |  |
|  | 2 | **Species Removal from Habitat Area** |  |  | 2019-03-01 | 2019-04-29 |  |  |  |  |  |  |  |  |  |  |  |  |
| P1EWCC-PWP02-12680 |  | Species Translocation to Habitat Creation (071-M4W) |  | 60d | 2019-03-01 | 2019-04-29 | P1EWCC-PWP02-5310 SS+150d, P1EWCC-AWP01-4500, P1EWCC-PWP01-3170, P1EWCC-PWP02-14610 |  |  |  |  | 128d | 0d | start on or after 2019-03-01 |  | HS2 - 8h x 7d Workweek (No Holidays) | AWE1 |  |
|  | 3 | **Habitat Creation** |  |  |  |  |  |  |  |  |  |  |  |  |  |  |  |  |
|  | 5 | **Translocation of Species** |  |  |  |  |  |  |  |  |  |  |  |  |  |  |  |  |
|  | 4 | **Noise and Vibration Works** |  |  |  |  |  |  |  |  |  |  |  |  |  |  |  |  |
|  | 1 | **SOW Completion Dates** |  |  | 2017-09-18 | 2019-09-30 |  |  |  |  |  |  |  |  |  |  |  |  |
| P1EWCC-PWP01-2710 |  | Completion of Survey for Bats (70+000) | milestone | 0d | 2017-09-18 | 2017-09-18 | P1EWCC-PWP01-3170 |  |  |  |  | -56d | 1390d | finish on 2017-06-30 |  |  | UW1 |  |
| P1EWCC-PWP02-5280 |  | Completion of Species Translocation/ exclusion - Great Crested Newts | milestone | 0d | 2019-09-30 | 2019-09-30 | P1EWCC-PWP02-12680 |  |  |  |  | 0d | 860d | finish on 2019-09-30 |  |  | AWE1 |  |
| P1EWCC-PWP02-5290 |  | Completion of Species Translocation/ exclusion - Reptiles | milestone | 0d | 2019-09-30 | 2019-09-30 | P1EWCC-PWP02-12680 |  |  |  |  | 0d | 860d | finish on 2019-09-30 |  |  | AWE1 |  |
|  | 5 | **070-L1 - Waddesdon North Cutting** |  |  | 2017-03-20 | 2019-09-30 |  |  |  |  |  |  |  |  |  |  |  |  |
|  | 8 | **Land Access** |  |  | 2017-04-10 | 2018-07-30 |  |  |  |  |  |  |  |  |  |  |  |  |
|  | 1 | **Survey Work** |  |  | 2017-04-10 | 2017-04-10 |  |  |  |  |  |  |  |  |  |  |  |  |
| P1EWCC-AWP01-6050 |  | Land Access Granted for Survey Work (Schedule 2) | milestone | 0d | 2017-04-10 A | 2017-04-10 A |  | 100% |  | 2017-04-03 | 2017-04-03 |  |  | as late as possible |  |  | AW1 | y |
|  | 2 | **Possession** |  |  | 2018-07-30 | 2018-07-30 |  |  |  |  |  |  |  |  |  |  |  |  |
| P1EWCC-AWP01-6060 |  | Land Access Possession Granted for Construction (Schedule 16) | milestone | 0d | 2018-07-30 | 2018-07-30 |  |  |  |  |  | 230d | 0d | as late as possible |  |  | AW1 | y |

| ID | WBS | Activity | Type | Duration | Start | Finish | Predecessors | Complete | Remaining | Planned start | Planned finish | Total float | Free float | Constraint | Expected finish | Calendar | Fusion - WPS | HS2 Filter |
| --- | --- | --- | --- | --- | --- | --- | --- | --- | --- | --- | --- | --- | --- | --- | --- | --- | --- | --- |
|  | 3 | **Survey Works** |  |  | 2017-03-20 | 2018-11-21 |  |  |  |  |  |  |  |  |  |  |  |  |
| P1EWCC-AWP01-6040 |  | Planning Consent & Licensing for Survey Work |  | 10d | 2017-03-20 A | 2017-04-07 A | P1EWCC-AWP01-1230 | 100% |  | 2017-03-20 | 2017-03-31 |  |  |  |  |  | AW1 |  |
| P1EWCC-FWP01-2470 |  | Undertake Arboricultural Surveys |  | 125d | 2017-12-15 | 2018-06-08 | P1EWCC-PWP01-5610 |  |  |  |  | 363d |  |  |  |  | AWS | y |
| P1EWCC-FWP01-2480 |  | Undertake Remaining Ecology & Environmental Surveys |  | 240d | 2017-12-15 | 2018-11-16 | P1EWCC-PWP01-5610 |  |  |  |  | 248d |  |  |  |  | AWS | y |
|  | 1 | **Ecological & Environmental Surveys** |  |  | 2017-04-10 | 2017-09-29 |  |  |  |  |  |  |  |  |  |  |  |  |
| P1EWCC-PWP01-3720 |  | Survey for Badgers, Bats, GCN & Reptiles |  | 25d | 2017-04-10 A | 2017-09-29 | P1EWCC-AWP01-6040, P1EWCC-AWP01-6050 | 60% | 9.88d | 2017-04-03 | 2017-05-05 | -65.88d | 0d |  | 2017-09-29 |  | UW1 |  |
|  | 2 | **Engineering Surveys** |  |  |  |  |  |  |  |  |  |  |  |  |  |  |  |  |
|  | 3 | **Historic Environment** |  |  | 2018-02-09 | 2018-11-21 |  |  |  |  |  |  |  |  |  |  |  |  |
| P1EWCC-PWP06-4980 |  | Non-Intrusive Surveys (geophysics) |  | 20d | 2018-02-09 | 2018-03-09 | P1EWCC-PWP06-4960, P1EWCC-AWP01-6050, P1EWCC-PWP05-240 |  |  |  |  | 278d | 0d |  |  |  | AWH |  |
| P1EWCC-PWP06-9480 |  | Non-Intrusive Surveys (trial trenching) |  | 30d | 2018-05-04 | 2018-06-15 | P1EWCC-PWP06-4970, P1EWCC-PWP05-240 |  |  |  |  | 278d | 0d |  |  |  | AWH |  |
| P1EWCC-PWP06-5000 |  | Intrusive Surveys |  | 40d | 2018-09-26 | 2018-11-21 | P1EWCC-PWP02-7540, P1EWCC-PWP06-4970, P1EWCC-PWP06-9490, P1EWCC-AWP01-6060 |  |  |  |  | 245d | 0d |  |  |  | AWH |  |
|  | 7 | **Historic Environment** |  |  | 2017-12-15 | 2019-01-09 |  |  |  |  |  |  |  |  |  |  |  |  |
| P1EWCC-PWP06-4960 |  | Production and Approval of Project Plan & LS-WSI (non-intrusive surveys) |  | 40d | 2017-12-15 | 2018-02-09 | P1EWCC-PWP05-240 |  |  |  |  | 278d | 0d |  |  |  | AWH |  |
| P1EWCC-PWP06-4970 |  | Update of Project Plans and LS-WSI and Approval (intrusive surveys) |  | 40d | 2018-03-09 | 2018-05-04 | P1EWCC-PWP06-4980 |  |  |  |  | 278d | 0d |  |  |  | AWH |  |
| P1EWCC-PWP06-9490 |  | Update of Project Plans and LS-WSI and Approval (intrusive surveys) |  | 40d | 2018-06-15 | 2018-08-10 | P1EWCC-PWP06-9480 |  |  |  |  | 278d | 33d |  |  |  | AWH |  |
| P1EWCC-PWP06-4990 |  | Report of Findings And Approval (Archaeological Investigation) |  | 35d | 2018-11-21 | 2019-01-09 | P1EWCC-PWP06-5000 |  |  |  |  | 1047.12d |  |  |  |  | AWH |  |
|  | 4 | **Ecological Mitigation Works** |  |  | 2018-07-29 | 2018-12-14 |  |  |  |  |  |  |  |  |  |  |  |  |
|  | 5 | **Translocation of Species** |  |  | 2018-07-29 | 2018-09-26 |  |  |  |  |  |  |  |  |  |  |  |  |
| P1EWCC-PWP02-7540 |  | Species Translocation to Habitat Creation (071-M4W) |  | 60d | 2018-07-29 | 2018-09-26 | P1EWCC-PWP01-3720, P1EWCC-AWP01-6060, P1EWCC-PWP02-5310 SS+150d, P1EWCC-PWP02-14610 |  |  |  |  | 323d | 0d |  |  | HS2 - 8h x 7d Workweek (No Holidays) | AWE1 |  |
|  | 4 | **Translocation of Hedgerow** |  |  | 2018-11-01 | 2018-12-14 |  |  |  |  |  |  |  |  |  |  |  |  |
| P1EWCC-PWP02-7580 |  | Translocation of hedgerows |  | 43d | 2018-11-01 | 2018-12-14 | P1EWCC-PWP02-11910, P1EWCC-PWP02-7540, P1EWCC-AWP01-6060 |  |  |  |  | 287.62d | 289.62d | start on or after 2018-11-01 |  | HS2 - 8h x 7d Workweek (No Holidays) | AWE2 |  |
|  | 5 | **Noise and Vibration Works** |  |  |  |  |  |  |  |  |  |  |  |  |  |  |  |  |
|  | 6 | **SOW Completion Dates** |  |  | 2017-09-29 | 2019-09-30 |  |  |  |  |  |  |  |  |  |  |  |  |
| P1EWCC-PWP01-2720 |  | Completion of Survey for Water Voles (70+500) | milestone | 0d | 2017-09-29 | 2017-09-29 | P1EWCC-PWP01-3720 |  |  |  |  | -65.88d | 1380.12d | finish on 2017-06-30 |  |  | UW1 |  |
| P1EWCC-PWP02-7550 |  | Completion of Species Translocation/ exclusion - Reptiles | milestone | 0d | 2019-09-30 | 2019-09-30 | P1EWCC-PWP02-7540 |  |  |  |  | 0d | 860d | finish on 2019-09-30 |  |  | AWE1 |  |
| P1EWCC-PWP02-7560 |  | Completion of Species Translocation/ exclusion - Bats | milestone | 0d | 2019-09-30 | 2019-09-30 | P1EWCC-PWP02-7540 |  |  |  |  | 0d | 860d | finish on 2019-09-30 |  |  | AWE1 |  |
| P1EWCC-PWP02-7570 |  | Completion of Species Translocation/ exclusion - GCN | milestone | 0d | 2019-09-30 | 2019-09-30 | P1EWCC-PWP02-7540 |  |  |  |  | 0d | 860d | finish on 2019-09-30 |  |  | AWE1 |  |
| P1EWCC-PWP02-7590 |  | Completion of Translocation of Hedgerows | milestone | 0d | 2019-09-30 | 2019-09-30 | P1EWCC-PWP02-7580 |  |  |  |  | 0d | 860d | finish on 2019-09-30 |  |  | AWE2 |  |

| ID | WBS | Activity | Type | Duration | Start | Finish | Predecessors | Complete | Remaining | Planned start | Planned finish | Total float | Free float | Constraint | Expected finish | HS2 Filter | Fusion - WPS |
| --- | --- | --- | --- | --- | --- | --- | --- | --- | --- | --- | --- | --- | --- | --- | --- | --- | --- |
|  | 6 | **070-L2 - Quainton South Embankment** |  |  | 2017-03-20 | 2019-09-30 |  |  |  |  |  |  |  |  |  |  |  |
|  | 7 | **Land Access** |  |  | 2017-03-27 | 2018-07-30 |  |  |  |  |  |  |  |  |  |  |  |
|  | 1 | **Survey Work** |  |  | 2017-03-27 | 2017-03-27 |  |  |  |  |  |  |  |  |  |  |  |
| P1EWCC-AWP01-4530 |  | Land Access Granted for Survey Work (Schedule 2) | milestone | 0d | 2017-03-27 A | 2017-03-27 A |  | 100% |  | 2017-03-20 | 2017-03-20 |  |  | as late as possible |  | y | UW1 |
|  | 2 | **Possession** |  |  | 2017-08-21 | 2018-07-30 |  |  |  |  |  |  |  |  |  |  |  |
|  | 1 | **Ecological Mitigation Area** |  |  | 2017-08-21 | 2017-08-21 |  |  |  |  |  |  |  |  |  |  |  |
| P1EWCC-AWP01-4540 |  | Land Access Possession Granted for Ecolgical Mitigation Site (Schedule 16) 071-M4W | milestone | 0d | 2017-08-21 A | 2017-08-21 A |  | 100% |  | 2017-09-18 | 2017-09-18 |  |  |  |  | y | UW1 |
|  | 2 | **070-L2 - Quainton South Embankment** |  |  | 2018-07-30 | 2018-07-30 |  |  |  |  |  |  |  |  |  |  |  |
| P1EWCC-AWP01-4550 |  | Land Access Possession Granted for Construction of 070-L2 - Quainton South Embankment (Schedule 16) | milestone | 0d | 2018-07-30 | 2018-07-30 |  |  |  |  |  | 219d | 0d | as late as possible |  | y | AW1 |
|  | 10 | **Survey Works** |  |  | 2017-03-20 | 2019-06-28 |  |  |  |  |  |  |  |  |  |  |  |
| P1EWCC-AWP01-4520 |  | Planning Consent & Licensing for Survey Work |  | 0d | 2017-03-20 A | 2017-03-24 A | P1EWCC-AWP01-1230 | 100% |  | 2017-03-20 | 2017-03-20 |  |  |  |  |  | UW1 |
| P1EWCC-FWP01-2500 |  | Undertake Remaining Soil Surveys |  | 120d | 2017-12-15 | 2018-06-01 | P1EWCC-PWP01-5610 |  |  |  |  | 368d |  |  |  | y | AWS |
| P1EWCC-FWP01-2510 |  | Undertake Arboricultural Surveys |  | 125d | 2017-12-15 | 2018-06-08 | P1EWCC-PWP01-5610 |  |  |  |  | 363d |  |  |  | y | AWS |
| P1EWCC-FWP01-2520 |  | Undertake Remaining Ecology & Environmental Surveys |  | 400d | 2017-12-15 | 2019-06-28 | P1EWCC-PWP01-5610 |  |  |  |  | 88d |  |  |  | y | AWS |
| P1EWCC-AWP01-4560 |  | Planning Consent & Licensing for Demoliton/Structural Survey Work |  | 64.88d | 2018-01-15 | 2018-04-13 | P1EWCC-AWP01-1230 |  |  |  |  | -49.88d | 0d | as late as possible |  |  | AW1 |
|  | 1 | **Ecological & Environmental Surveys** |  |  | 2017-03-27 | 2017-11-24 |  |  |  |  |  |  |  |  |  |  |  |
| P1EWCC-PWP01-3180 |  | Survey for Badgers, Bats, GCN & Reptiles |  | 25d | 2017-03-27 A | 2017-11-24 | P1EWCC-AWP01-4530, P1EWCC-AWP01-4520 |  | 49.88d | 2017-03-20 | 2017-04-21 | -105.88d | 0d |  | 2017-11-24 |  | UW1 |
|  | 2 | **Engineering Surveys** |  |  | 2017-04-10 | 2017-05-09 |  |  |  |  |  |  |  |  |  |  |  |
| P1EWCC-PWP03-3250 |  | Survey for Engineering (Topo, GPR, Utility, Soil) |  | 15d | 2017-04-10 A | 2017-05-09 A | P1EWCC-AWP01-4530, P1EWCC-AWP01-4520 | 100% |  | 2017-03-20 | 2017-04-07 |  |  |  |  |  | UW1 |
|  | 3 | **Historic Environment Surveys** |  |  | 2017-07-14 | 2018-11-21 |  |  |  |  |  |  |  |  |  |  |  |
|  | 1 | **Ecological Mitigation Site Cross Roads Farm 1352, 1352b (071-M4W)** |  |  | 2017-07-14 | 2017-11-24 |  |  |  |  |  |  |  |  |  |  |  |
| P1EWCC-PWP06-2290 |  | Geophysics (ecological mitigation site) |  | 5d | 2017-07-14 A | 2017-07-18 A | P1EWCC-AWP01-4530, P1EWCC-AWP01-4520, P1EWCC-PWP06-2280 | 100% |  | 2017-07-24 | 2017-07-28 |  |  |  |  |  | UW1 |
| P1EWCC-PWP06-2310 |  | Intrusive Surveys (ecological mitigation site) |  | 5d | 2017-11-20 | 2017-11-24 | P1EWCC-PWP06-2300, P1EWCC-PWP02-5330 |  |  |  |  | 261d | 0d |  |  |  | AWH |
|  | 2 | **070-L2 - Quainton South Embankment** |  |  | 2018-02-09 | 2018-11-21 |  |  |  |  |  |  |  |  |  |  |  |
| P1EWCC-PWP06-9500 |  | Non-Intrusive Surveys (geophysics) |  | 20d | 2018-02-09 | 2018-03-09 | P1EWCC-PWP06-9520, P1EWCC-PWP05-240 |  |  |  |  | 278d | 0d |  |  |  | AWH |
| P1EWCC-PWP06-9510 |  | Non-Intrusive Surveys (trial trenching) |  | 30d | 2018-05-04 | 2018-06-15 | P1EWCC-PWP06-9530, P1EWCC-PWP05-240 |  |  |  |  | 278d | 0d |  |  |  | AWH |
| P1EWCC-PWP06-2330 |  | Intrusive Surveys (070-L2 - Quainton South Embankment) |  | 40d | 2018-09-26 | 2018-11-21 | P1EWCC-PWP02-5350, P1EWCC-PWP06-9540, P1EWCC-AWP01-4550 |  |  |  |  | 245d | 0d |  |  |  | AWH |

| ID | WBS | Activity | Duration | Start | Finish | Predecessors | Complete | Remaining | Planned start | Planned finish | Total float | Free float | Constraint | Expected finish | Calendar | Fusion - WPS |
| --- | --- | --- | --- | --- | --- | --- | --- | --- | --- | --- | --- | --- | --- | --- | --- | --- |
|  | 4 | **Demolition Surveys** |  | 2018-04-27 | 2018-05-11 |  |  |  |  |  |  |  |  |  |  |  |
| P1EWCC-FWP04-1200 |  | Demolition survey's for Outbuilding (Farmshed), Fidlers Field Road (aka Quainton Rd) | 10d | 2018-04-27 | 2018-05-11 | P1EWCC-AWP01-4560, P1EWCC-FWP04-4910 |  |  |  |  | 85.12d | 0d |  |  |  | AWS |
|  | 5 | **Structural Surveys** |  | 2018-04-13 | 2018-05-04 |  |  |  |  |  |  |  |  |  |  |  |
| P1EWCC-FWP04-1370 |  | Structural Survey for Watercourse Underbridge west of Buckinghamshire Railway, Quainton road | 15d | 2018-04-13 | 2018-05-04 | P1EWCC-AWP01-4560, P1EWCC-FWP04-4930 |  |  |  |  | -49.88d | 0d |  |  |  | AWS |
|  | 6 | **Historic Environment** |  | 2017-04-17 | 2019-01-09 |  |  |  |  |  |  |  |  |  |  |  |
|  | 1 | **Ecological Mitigation Site Cross Roads Farm 1352, 1352b (071-M4W)** |  | 2017-04-17 | 2018-01-12 |  |  |  |  |  |  |  |  |  |  |  |
| P1EWCC-PWP06-2280 |  | Production and Approval of LS-WSI Bucks, Herts, LGA (non-intrusive surveys) Code 2 | 20d | 2017-04-17 A | 2017-06-27 A | P1EWCC-UWP01-1000 | 100% |  | 2017-03-20 | 2017-04-14 |  |  |  |  |  | UW1 |
| P1EWCC-PWP06-2300 |  | Update of Project Plans and LS-WSI and Approval (intrusive surveys) | 20d | 2017-07-17 A | 2017-09-29 | P1EWCC-PWP06-2290, P1EWCC-PWP06-3450 FF | 51% | 9.88d | 2017-07-31 | 2017-08-25 | 296.12d | 0d |  | 2017-09-29 |  | UW1 |
| P1EWCC-PWP06-3450 |  | HS2 issue Project Plan | 1d | 2017-09-18 | 2017-09-18 |  |  |  |  |  | 305d | 8.88d |  |  |  | UW1 |
| P1EWCC-PWP06-2320 |  | Report of Findings And Approval (ecological mitigation site) | 35d | 2017-11-27 | 2018-01-12 | P1EWCC-PWP06-2310 |  |  |  |  | 261d | 29.88d |  |  |  | AWH |
|  | 2 | **070-L2 - Quainton South Embankment** |  | 2017-12-15 | 2019-01-09 |  |  |  |  |  |  |  |  |  |  |  |
| P1EWCC-PWP06-9520 |  | Production and Approval of Project Plan & LS-WSI (non-intrusive surveys) | 40d | 2017-12-15 | 2018-02-09 | P1EWCC-PWP05-240 |  |  |  |  | 278d | 0d |  |  |  | AWH |
| P1EWCC-PWP06-9530 |  | Update of Project Plans and LS-WSI and Approval (intrusive surveys) | 40d | 2018-03-09 | 2018-05-04 | P1EWCC-PWP06-9500 |  |  |  |  | 278d | 0d |  |  |  | AWH |
| P1EWCC-PWP06-9540 |  | Update of Project Plans and LS-WSI and Approval (intrusive surveys) | 40d | 2018-06-15 | 2018-08-10 | P1EWCC-PWP06-9510 |  |  |  |  | 278d | 33d |  |  |  | AWH |
| P1EWCC-PWP06-2340 |  | Report of Findings And Approval (070-L2 - Quainton South Embankment) | 35d | 2018-11-21 | 2019-01-09 | P1EWCC-PWP06-2330 |  |  |  |  | 1047.12d |  |  |  |  | AWH |
|  | 11 | **Ecological Mitigation Works** |  | 2017-04-17 | 2018-11-25 |  |  |  |  |  |  |  |  |  |  |  |
|  | 1 | **Design** |  | 2017-04-17 | 2017-11-03 |  |  |  |  |  |  |  |  |  |  |  |
| P1EWCC-PWP02-5320 |  | Design of Habitat Creation (071-M4W) | 25d | 2017-04-17 A | 2017-10-06 | P1EWCC-PWP03-3250 FF | 40% | 14.88d | 2017-04-10 | 2017-05-12 | 276.12d | 0d |  | 2017-10-06 |  | UW1 |
| P1EWCC-AWP01-4510 |  | Planning Consent & Licensing for Habitat Creation (071-M4W) | 40d | 2017-06-19 A | 2017-11-03 | P1EWCC-PWP02-5320 SS | 13% | 34.88d | 2017-07-19 | 2017-09-12 | 276.12d | 0d |  | 2017-11-03 |  | UW1 |
|  | 2 | **Species Removal from Habitat Area** |  | 2017-07-31 | 2017-11-18 |  |  |  |  |  |  |  |  |  |  |  |
| P1EWCC-PWP02-5340 |  | MS/RAMS for GCN/Reptile Clearance from Habitat Creation Site (071-M4W) | 15d | 2017-07-31 A | 2017-09-14 A |  | 100% |  | 2017-07-24 | 2017-08-11 |  |  |  |  |  | UW1 |
| P1EWCC-PWP02-5330 |  | Exclude GCN/Reptile from Habitat Creation (071-M4W) | 65d | 2017-09-15 A | 2017-11-18 | P1EWCC-PWP03-3250, P1EWCC-AWP01-4540, P1EWCC-PWP02-5340 | 2% | 64d | 2017-09-18 | 2017-11-21 | 366d | 0d |  | 2017-11-18 | HS2 - 8h x 7d Workweek (No Holidays) | UW1 |
|  | 3 | **Habitat Creation** |  | 2018-01-05 | 2018-08-29 |  |  |  |  |  |  |  |  |  |  |  |
| P1EWCC-PWP02-5300 |  | Habitat Creation (071-M4W) | 25d | 2018-01-05 | 2018-02-09 | P1EWCC-AWP01-4510, P1EWCC-PWP06-2320 SS, P1EWCC-PWP06-2310, P1EWCC-PWP02-5330, P1EWCC-PWP02-9220, P1EWCC-PWP02-5320 |  |  |  |  | 231.12d | 13.12d |  |  |  | AWE1 |
| P1EWCC-PWP02-5310 |  | Habitat Creation Maturity Period (071-M4W) | 182d | 2018-03-01 | 2018-08-29 | P1EWCC-PWP02-5300 |  |  |  |  | 306d | 0d | start on or after 2018-03-01 |  | HS2 - 8h x 7d Workweek (No Holidays) | AWE1 |

| ID | WBS | Activity | Type | Duration | Start | Finish | Predecessors | Complete | Remaining | Planned start | Planned finish | Total float | Free float | Constraint | Expected finish | Calendar | Fusion - WPS | HS2 Filter |
| --- | --- | --- | --- | --- | --- | --- | --- | --- | --- | --- | --- | --- | --- | --- | --- | --- | --- | --- |
|  | 5 | **Translocation of Species** |  |  | 2018-07-29 | 2018-09-26 |  |  |  |  |  |  |  |  |  |  |  |  |
| P1EWCC-PWP02-5350 |  | Species Translocation to Habitat Creation (071-M4W) |  | 60d | 2018-07-29 | 2018-09-26 | P1EWCC-PWP02-5310 SS+150d, P1EWCC-AWP01-4550, P1EWCC-PWP02-14610 |  |  |  |  | 306d | 0d |  |  | HS2 - 8h x 7d Workweek (No Holidays) | AWE1 |  |
|  | 4 | **Translocation of Hedgerows** |  |  | 2018-09-27 | 2018-11-25 |  |  |  |  |  |  |  |  |  |  |  |  |
| P1EWCC-PWP02-5400 |  | Translocation of hedgerows (where age, structure, density indicates sufficient value/suitable for relocation) |  | 60d | 2018-09-27 | 2018-11-25 | P1EWCC-PWP02-11910, P1EWCC-PWP02-5350, P1EWCC-AWP01-4550 |  |  |  |  | 306d | 308d | start on or after 2017-11-01 |  | HS2 - 8h x 7d Workweek (No Holidays) | AWE2 |  |
|  | 4 | **Noise and Vibration Works** |  |  |  |  |  |  |  |  |  |  |  |  |  |  |  |  |
|  | 5 | **Demolition** |  |  | 2017-12-15 | 2018-06-01 |  |  |  |  |  |  |  |  |  |  |  |  |
| P1EWCC-FWP04-4910 |  | Prepare Investigation Plans for Scoping and Planning Demolitions inc Approval |  | 95d | 2017-12-15 | 2018-04-27 | P1EWCC-PWP01-5610 |  |  |  |  | 90d | 0d | as late as possible |  |  | AWS |  |
| P1EWCC-FWP04-4920 |  | Report on Demoliton Surveys and Approval |  | 15d | 2018-05-11 | 2018-06-01 | P1EWCC-PWP01-5610, P1EWCC-FWP04-1200 |  |  |  |  | 85.12d |  |  |  |  | AWS |  |
|  | 2 | **Structural Work** |  |  | 2017-12-15 | 2018-06-08 |  |  |  |  |  |  |  |  |  |  |  |  |
| P1EWCC-FWP04-4930 |  | Prepare Investigation Plans for Watercourse Underbridge west of Buckinghamshire Railway, Quainton road and approval |  | 85d | 2017-12-15 | 2018-04-13 | P1EWCC-PWP01-5610 |  |  |  |  | -45d | 0d | as late as possible |  |  | AWS |  |
| P1EWCC-FWP04-4940 |  | Report on Watercourse Underbridge west of Buckinghamshire Railway, Quainton road and approval |  | 25d | 2018-05-04 | 2018-06-08 | P1EWCC-FWP04-1370, P1EWCC-PWP01-5610 |  |  |  |  | -49.88d | 0d |  |  |  | AWS |  |
|  | 8 | **Water Resources** |  |  | 2017-06-07 | 2018-02-02 |  |  |  |  |  |  |  |  |  |  |  |  |
| P1EWCC-FWP03-6050 |  | Hydrological Modelling - Fleet Marston Brook |  | 195d | 2017-06-07 A | 2017-09-29 | P1EWCC-UWP01-1000 | 95% | 9.88d | 2017-09-28 | 2018-06-27 | 463d | 0d |  | 2017-09-29 |  | UW1 | y |
| P1EWCC-FWP03-6060 |  | Preliminary Floodplain Storage Design - Fleet Marston Brook & Tetchwick Brook |  | 80d | 2017-10-13 | 2018-02-02 | P1EWCC-FWP03-6050, P1EWCC-PWP02-12060 |  |  |  |  | 453d |  |  |  |  | AWE3 | y |
|  | 1 | **SOW Completion Dates** |  |  | 2017-11-24 | 2019-09-30 |  |  |  |  |  |  |  |  |  |  |  |  |
| P1EWCC-PWP01-2440 |  | Completion of Survey for GCN (71+300 & 71+700) | milestone | 0d | 2017-11-24 | 2017-11-24 | P1EWCC-PWP01-3180 |  |  |  |  | -105.88d | 1340.12d | finish on 2017-06-30 |  |  | UW1 |  |
| P1EWCC-PWP01-2670 |  | Completion of Survey for Badgers (71+000) | milestone | 0d | 2017-11-24 | 2017-11-24 | P1EWCC-PWP01-3180 |  |  |  |  | -105.88d | 1340.12d | finish on 2017-06-30 |  |  | UW1 |  |
| P1EWCC-PWP01-2680 |  | Completion of Survey for Bats (71+000, 71+400 & 71+600) | milestone | 0d | 2017-11-24 | 2017-11-24 | P1EWCC-PWP01-3180 |  |  |  |  | -105.88d | 1340.12d | finish on 2017-06-30 |  |  | UW1 |  |
| P1EWCC-FWP04-1380 |  | Completion of Structural survey's for Watercourse Underbridge west of Buckinghamshire Railway, Quainton road | milestone | 0d | 2018-06-08 | 2018-06-08 | P1EWCC-FWP04-4940 |  |  |  |  | -49.88d | 1200.12d | finish on 2018-03-30 |  |  | UW1 |  |
| P1EWCC-FWP04-1360 |  | Completion of Demolition survey's for Outbuilding (Farmshed), Fidlers Field Road (aka Quainton Rd) | milestone | 0d | 2018-09-28 | 2018-09-28 | P1EWCC-FWP04-4920 |  |  |  |  | 0d | 1120d | finish on 2018-09-28 |  |  | AWS |  |
| P1EWCC-PWP02-5360 |  | Completion of Species Translocation/ exclusion - Great Crested Newts | milestone | 0d | 2019-09-30 | 2019-09-30 | P1EWCC-PWP02-5350 |  |  |  |  | 0d | 860d | finish on 2019-09-30 |  |  | AWE1 |  |
| P1EWCC-PWP02-5370 |  | Completion of Species Translocation/ exclusion - Reptiles | milestone | 0d | 2019-09-30 | 2019-09-30 | P1EWCC-PWP02-5350 |  |  |  |  | 0d | 860d | finish on 2019-09-30 |  |  | AWE1 |  |
| P1EWCC-PWP02-5380 |  | Completion of Species Translocation/ exclusion - Bats | milestone | 0d | 2019-09-30 | 2019-09-30 | P1EWCC-PWP02-5350 |  |  |  |  | 0d | 860d | finish on 2019-09-30 |  |  | AWE1 |  |
| P1EWCC-PWP02-5390 |  | Completion of Species Translocation/ exclusion - Badgers | milestone | 0d | 2019-09-30 | 2019-09-30 | P1EWCC-PWP02-5350 |  |  |  |  | 0d | 860d | finish on 2019-09-30 |  |  | AWE1 |  |
| P1EWCC-PWP02-5410 |  | Completion of Translocation of hedgerows | milestone | 0d | 2019-09-30 | 2019-09-30 | P1EWCC-PWP02-5400 |  |  |  |  | 0d | 860d | finish on 2019-09-30 |  |  | AWE2 |  |

| ID | WBS | Activity | Type | Duration | Start | Finish | Predecessors | Complete | Remaining | Planned start | Planned finish | Total float | Free float | Constraint | Expected finish | HS2 Filter | Fusion - WPS |
| --- | --- | --- | --- | --- | --- | --- | --- | --- | --- | --- | --- | --- | --- | --- | --- | --- | --- |
|  | C23 | **Quainton To Grendon Underwood (Ch.71850 To Ch. 77500)** |  |  | 2017-03-20 | 2020-01-03 |  |  |  |  |  |  |  |  |  |  |  |
|  | C231 | **Quainton To Grendon Underwood (Ch. 71850 To Ch. 77500)** |  |  | 2017-03-20 | 2020-01-03 |  |  |  |  |  |  |  |  |  |  |  |
|  | 1 | **071-L1 Quainton Cutting** |  |  | 2017-03-20 | 2019-09-30 |  |  |  |  |  |  |  |  |  |  |  |
|  | 8 | **Land Access** |  |  | 2017-03-27 | 2018-09-18 |  |  |  |  |  |  |  |  |  |  |  |
|  | 1 | **Survey Work** |  |  | 2017-03-27 | 2017-03-27 |  |  |  |  |  |  |  |  |  |  |  |
| P1EWCC-AWP01-6080 |  | Land Access Granted for Survey Work (Schedule 2) | milestone | 0d | 2017-03-27 A | 2017-03-27 A |  | 100% |  | 2017-04-03 | 2017-04-03 |  |  | as late as possible |  | y | AW1 |
|  | 2 | **Possession** |  |  | 2018-09-18 | 2018-09-18 |  |  |  |  |  |  |  |  |  |  |  |
| P1EWCC-AWP01-6090 |  | Land Access Possession Granted for Construction (Schedule 16) | milestone | 0d | 2018-09-18 | 2018-09-18 |  |  |  |  |  | 169d | 0d | as late as possible |  | y | AW1 |
|  | 3 | **Survey Works** |  |  | 2017-03-20 | 2019-06-28 |  |  |  |  |  |  |  |  |  |  |  |
| P1EWCC-AWP01-6070 |  | Planning Consent & Licensing for Survey Work |  | 10d | 2017-03-20 A | 2017-03-24 A | P1EWCC-AWP01-1230 | 100% |  | 2017-03-20 | 2017-03-31 |  |  |  |  |  | AW1 |
| P1EWCC-FWP01-2540 |  | Undertake Remaining Soil Surveys |  | 120d | 2017-12-15 | 2018-06-01 | P1EWCC-PWP01-5610 |  |  |  |  | 329d | 379.5d |  |  | y | AWS |
| P1EWCC-FWP01-2550 |  | Undertake Arboricultural Surveys |  | 125d | 2017-12-15 | 2018-06-08 | P1EWCC-PWP01-5610 |  |  |  |  | 324d | 374.5d |  |  | y | AWS |
| P1EWCC-FWP01-2560 |  | Undertake Remaining Ecology & Environmental Surveys |  | 400d | 2017-12-15 | 2019-06-28 | P1EWCC-PWP01-5610 |  |  |  |  | 49d | 99.5d |  |  | y | AWS |
| P1EWCC-AWP01-6100 |  | Planning Consent & Licensing for Demoliton/Structural Survey Work |  | 64.88d | 2018-01-15 | 2018-04-13 | P1EWCC-AWP01-1230 |  |  |  |  | -49.88d | 0d | as late as possible |  |  | AW1 |
|  | 1 | **Ecological & Environmental Surveys** |  |  | 2017-03-27 | 2017-10-06 |  |  |  |  |  |  |  |  |  |  |  |
| P1EWCC-PWP01-3740 |  | Survey for Badgers, Bats, GCN & Reptiles |  | 25d | 2017-03-27 A | 2017-10-06 | P1EWCC-AWP01-6080, P1EWCC-AWP01-6070 | 40% | 14.88d | 2017-04-03 | 2017-05-05 | 415.12d | 0d |  | 2017-10-06 |  | UW1 |
|  | 2 | **Engineering Surveys** |  |  |  |  |  |  |  |  |  |  |  |  |  |  |  |
|  | 3 | **Historic Environment** |  |  | 2018-02-09 | 2019-01-11 |  |  |  |  |  |  |  |  |  |  |  |
| P1EWCC-PWP06-5040 |  | Non-Intrusive Surveys (geophysics) |  | 20d | 2018-02-09 | 2018-03-09 | P1EWCC-AWP01-6080, P1EWCC-PWP06-5020, P1EWCC-PWP05-240 |  |  |  |  | 239d | 0d |  |  |  | AWH |
| P1EWCC-PWP06-9550 |  | Non-Intrusive Surveys (trial trenching) |  | 30d | 2018-05-04 | 2018-06-15 | P1EWCC-PWP06-5030, P1EWCC-PWP05-240 |  |  |  |  | 239d | 0d |  |  |  | AWH |
| P1EWCC-PWP06-5060 |  | Intrusive Surveys |  | 40d | 2018-11-16 | 2019-01-11 | P1EWCC-PWP06-5030, P1EWCC-PWP02-7600, P1EWCC-PWP06-9560, P1EWCC-AWP01-6090 |  |  |  |  | 169d | 0d |  |  |  | AWH |
|  | 4 | **Demolition Surveys** |  |  | 2018-04-27 | 2018-05-11 |  |  |  |  |  |  |  |  |  |  |  |
| P1EWCC-FWP04-5130 |  | Demolition survey's for The Lodge (Heritage) |  | 10d | 2018-04-27 | 2018-05-11 | P1EWCC-FWP04-5110, P1EWCC-PWP01-5610, P1EWCC-AWP01-6100 |  |  |  |  | 85.12d | 0d |  |  |  | AWS |
|  | 5 | **Structural Surveys** |  |  | 2018-04-13 | 2018-05-04 |  |  |  |  |  |  |  |  |  |  |  |
| P1EWCC-FWP04-5150 |  | Structural Survey for Watercourse underbridge north of Westcott |  | 15d | 2018-04-13 | 2018-05-04 | P1EWCC-AWP01-6100, P1EWCC-PWP01-5610, P1EWCC-FWP04-5160 |  |  |  |  | -49.88d | 0d |  |  |  | AWS |

| ID | WBS | Activity | Type | Duration | Start | Finish | Predecessors | Total float | Free float | Constraint | Calendar | Fusion - WPS |
| --- | --- | --- | --- | --- | --- | --- | --- | --- | --- | --- | --- | --- |
|  | 7 | **Historic Environment** |  |  | 2017-12-15 | 2019-03-01 |  |  |  |  |  |  |
| P1EWCC-PWP06-5020 |  | Production and Approval of Project Plan & LS-WSI (non-intrusive surveys) |  | 40d | 2017-12-15 | 2018-02-09 | P1EWCC-PWP05-240 | 239d | 0d |  |  | AWH |
| P1EWCC-PWP06-5030 |  | Update of Project Plans and LS-WSI and Approval (intrusive surveys) |  | 40d | 2018-03-09 | 2018-05-04 | P1EWCC-PWP06-5040 | 239d | 0d |  |  | AWH |
| P1EWCC-PWP06-9560 |  | Update of Project Plans and LS-WSI and Approval (intrusive surveys) |  | 40d | 2018-06-15 | 2018-08-10 | P1EWCC-PWP06-9550 | 239d | 70d |  |  | AWH |
| P1EWCC-PWP06-5050 |  | Report of Findings And Approval (Archaeological Investigation) |  | 35d | 2019-01-11 | 2019-03-01 | P1EWCC-PWP06-5060 | 1010.12d |  |  |  | AWH |
|  | 4 | **Ecological Mitigation Works** |  |  | 2018-09-18 | 2018-12-29 |  |  |  |  |  |  |
|  | 5 | **Translocation of Species** |  |  | 2018-09-18 | 2018-11-16 |  |  |  |  |  |  |
| P1EWCC-PWP02-7600 |  | Species Translocation to Habitat Creation (072-M4) |  | 60d | 2018-09-18 | 2018-11-16 | P1EWCC-AWP01-6090, P1EWCC-PWP01-3740, P1EWCC-PWP02-5430 SS+150d, P1EWCC-PWP02-14610 | 237d | 0d |  | HS2 - 8h x 7d Workweek (No Holidays) | AWE1 |
|  | 4 | **Translocation of Hedgerow** |  |  | 2018-11-17 | 2018-12-29 |  |  |  |  |  |  |
| P1EWCC-PWP02-7640 |  | Translocation of hedgerows |  | 43d | 2018-11-17 | 2018-12-29 | P1EWCC-PWP02-7600, P1EWCC-PWP02-11910, P1EWCC-AWP01-6090 | 250d | 274d | start on or after 2018-11-01 | HS2 - 8h x 7d Workweek (No Holidays) | AWE2 |
|  | 5 | **Noise and Vibration Works** |  |  |  |  |  |  |  |  |  |  |
|  | 1 | **Demolition** |  |  | 2017-12-15 | 2018-06-01 |  |  |  |  |  |  |
| P1EWCC-FWP04-5110 |  | Prepare Investigation Plans for Scoping and Planning Demolitions inc Approval - The Lodge (Heritage) |  | 95d | 2017-12-15 | 2018-04-27 | P1EWCC-PWP01-5610 | 90d | 0d | as late as possible |  | AWS |
| P1EWCC-FWP04-5120 |  | Report on Demoliton Surveys and Approval - The Lodge (Heritage) |  | 15d | 2018-05-11 | 2018-06-01 | P1EWCC-PWP01-5610, P1EWCC-FWP04-5130 | 85.12d |  |  |  | AWS |
|  | 2 | **Structural Work** |  |  | 2017-12-15 | 2018-06-08 |  |  |  |  |  |  |
| P1EWCC-FWP04-5160 |  | Prepare Investigation Plans for Watercourse underbridge north of Westcott and approval |  | 85d | 2017-12-15 | 2018-04-13 | P1EWCC-PWP01-5610 | -45d | 0d | as late as possible |  | AWS |
| P1EWCC-FWP04-5170 |  | Report on Watercourse underbridge north of Westcott and approval |  | 25d | 2018-05-04 | 2018-06-08 | P1EWCC-PWP01-5610, P1EWCC-FWP04-5150 | -49.88d | 0d |  |  | AWS |
|  | 6 | **SOW Completion Dates** |  |  | 2018-06-08 | 2019-09-30 |  |  |  |  |  |  |
| P1EWCC-FWP04-5180 |  | Completion of Structural survey's for Watercourse underbridge north of Westcott | milestone | 0d | 2018-06-08 | 2018-06-08 | P1EWCC-FWP04-5170 | -49.88d | 1200.12d | finish on 2018-03-30 |  | AWS |
| P1EWCC-FWP04-5140 |  | Completion of Demolition survey's - The Lodge (Heritage) | milestone | 0d | 2018-09-28 | 2018-09-28 | P1EWCC-FWP04-5120 | 0d | 1120d | finish on 2018-09-28 |  | AWS |
| P1EWCC-PWP02-7610 |  | Completion of Species Translocation/ exclusion - Reptiles | milestone | 0d | 2019-09-30 | 2019-09-30 | P1EWCC-PWP02-7600 | 0d | 860d | finish on 2019-09-30 |  | AWE1 |
| P1EWCC-PWP02-7620 |  | Completion of Species Translocation/ exclusion - Bats | milestone | 0d | 2019-09-30 | 2019-09-30 | P1EWCC-PWP02-7600 | 0d | 860d | finish on 2019-09-30 |  | AWE1 |
| P1EWCC-PWP02-7630 |  | Completion of Species Translocation/ exclusion - GCN | milestone | 0d | 2019-09-30 | 2019-09-30 | P1EWCC-PWP02-7600 | 0d | 860d | finish on 2019-09-30 |  | AWE1 |
| P1EWCC-PWP02-7650 |  | Completion of Translocation of Hedgerows | milestone | 0d | 2019-09-30 | 2019-09-30 | P1EWCC-PWP02-7640 | 0d | 860d | finish on 2019-09-30 |  | AWE2 |
| P1EWCC-PWP02-7660 |  | Completion of Species Translocation/ exclusion - Badgers | milestone | 0d | 2019-09-30 | 2019-09-30 | P1EWCC-PWP02-7600 | 0d | 860d | finish on 2019-09-30 |  | AWE1 |

| ID | WBS | Activity | Type | Duration | Start | Finish | Predecessors | Complete | Planned start | Planned finish | Total float | Free float | Constraint | HS2 Filter | Fusion - WPS |
| --- | --- | --- | --- | --- | --- | --- | --- | --- | --- | --- | --- | --- | --- | --- | --- |
|  | 2 | **072-L1 - Doddershall Embankment** |  |  | 2017-03-20 | 2020-01-03 |  |  |  |  |  |  |  |  |  |
|  | 7 | **Land Access** |  |  | 2017-03-20 | 2018-09-18 |  |  |  |  |  |  |  |  |  |
|  | 1 | **Survey Work** |  |  | 2017-03-20 | 2017-03-20 |  |  |  |  |  |  |  |  |  |
| P1EWCC-AWP01-4600 |  | Land Access Granted for Survey Work (Schedule 2) | milestone | 0d | 2017-03-20 A | 2017-03-20 A |  | 100% |  |  |  |  | as late as possible | y | UW1 |
|  | 2 | **Possession** |  |  | 2017-12-01 | 2018-09-18 |  |  |  |  |  |  |  |  |  |
|  | 1 | **Ecological Mitigation Area** |  |  | 2017-12-01 | 2017-12-01 |  |  |  |  |  |  |  |  |  |
| P1EWCC-AWP01-4610 |  | Land Access Possession Granted for Ecolgical Mitigation Site (Schedule 16) | milestone | 0d | 2017-12-01 | 2017-12-01 |  |  |  |  | -51.62d | 0d | start on or after 2017-12-01 | y | UW1 |
|  | 2 | **072-L1 - Doddershall Embankment** |  |  | 2018-09-18 | 2018-09-18 |  |  |  |  |  |  |  |  |  |
| P1EWCC-AWP01-4620 |  | Land Access Possession Granted for Construction of 072-L1 - Doddershall Embankment (Schedule 16) | milestone | 0d | 2018-09-18 | 2018-09-18 |  |  |  |  | -50.62d | 0d | as late as possible | y | AW1 |
|  | 10 | **Survey Works** |  |  | 2017-03-20 | 2019-11-15 |  |  |  |  |  |  |  |  |  |
| P1EWCC-AWP01-4590 |  | Planning Consent & Licensing for Survey Work |  | 0d | 2017-03-20 A | 2017-03-20 A | P1EWCC-AWP01-1230 | 100% | 2017-05-22 | 2017-05-22 |  |  |  |  | UW1 |
| P1EWCC-FWP01-2590 |  | Undertake Arboricultural Surveys |  | 125d | 2017-12-15 | 2018-06-08 | P1EWCC-PWP01-5610 |  |  |  | 324d | 374.5d |  | y | AWS |
| P1EWCC-FWP01-2600 |  | Undertake Remaining Ecology & Environmental Surveys |  | 400d | 2017-12-15 | 2019-06-28 | P1EWCC-PWP01-5610 |  |  |  | 49d | 99.5d |  | y | AWS |
| P1EWCC-AWP01-4630 |  | Planning Consent & Licensing for Structural Survey Work |  | 64.88d | 2018-01-15 | 2018-04-13 | P1EWCC-AWP01-1230 |  |  |  | 15.12d | 0d | as late as possible |  | AW1 |
|  | 1 | **Ecological & Environmental Surveys** |  |  | 2017-03-20 | 2017-07-07 |  |  |  |  |  |  |  |  |  |
| P1EWCC-PWP01-3190 |  | Survey for Badgers, Bats, GCN & Reptiles |  | 25d | 2017-03-20 A | 2017-07-07 A | P1EWCC-AWP01-4590, P1EWCC-AWP01-4600 | 100% | 2017-03-20 | 2017-04-21 |  |  |  |  | UW1 |
|  | 2 | **Engineering Surveys** |  |  | 2017-04-10 | 2017-05-09 |  |  |  |  |  |  |  |  |  |
| P1EWCC-PWP03-3260 |  | Survey for Engineering (Topo, GPR, Utility, Soil) |  | 15d | 2017-04-10 A | 2017-05-09 A | P1EWCC-AWP01-4590, P1EWCC-AWP01-4600 | 100% | 2017-03-20 | 2017-04-07 |  |  |  |  | UW1 |
|  | 3 | **Historic Environment Surveys** |  |  | 2017-09-18 | 2019-11-15 |  |  |  |  |  |  |  |  |  |
|  | 1 | **Ecological Mitigation Works Doddershall CR01443** |  |  | 2017-09-18 | 2017-10-20 |  |  |  |  |  |  |  |  |  |
| P1EWCC-PWP06-2380 |  | Trial Trenching (ecological mitigation site) |  | 25d | 2017-09-18 | 2017-10-20 | P1EWCC-PWP06-2370 |  |  |  | 24.38d | 0d | start on or after 2017-09-04 |  | UW1 |
|  | 2 | **072-L1 - Doddershall Embankment** |  |  | 2018-02-09 | 2019-11-15 |  |  |  |  |  |  |  |  |  |
| P1EWCC-PWP06-9610 |  | Non-Intrusive Surveys (trial trenching) |  | 30d | 2018-02-09 | 2018-03-23 | P1EWCC-PWP06-9580, P1EWCC-PWP06-9570, P1EWCC-PWP05-240 |  |  |  | 79.5d | 0d |  |  | AWH |
| P1EWCC-PWP06-2400 |  | Intrusive Surveys - Doddershalls Medieval Settlement |  | 259.5d | 2018-11-16 | 2019-11-15 | P1EWCC-PWP06-2380, P1EWCC-PWP06-9590, P1EWCC-PWP02-5470, P1EWCC-AWP01-4620 |  |  |  | -50.5d | 0d |  |  | AWH |

| ID | WBS | Activity | Duration | Start | Finish | Predecessors | Complete | Remaining | Planned start | Planned finish | Total float | Free float | Constraint | Expected finish | Calendar | Fusion - WPS |
| --- | --- | --- | --- | --- | --- | --- | --- | --- | --- | --- | --- | --- | --- | --- | --- | --- |
|  | 5 | **Structural Surveys** |  | 2018-04-13 | 2018-05-04 |  |  |  |  |  |  |  |  |  |  |  |
| P1EWCC-FWP04-5010 |  | Structural Survey for Captain Piggot’s u/b, Network Rail Culverts, Watercourse u/b south of Woodham industry | 15d | 2018-04-13 | 2018-05-04 | P1EWCC-FWP04-4990, P1EWCC-AWP01-4630 |  |  |  |  | 15.12d | 0d |  |  |  | AWS |
|  | 6 | **Historic Environment** |  | 2017-05-23 | 2020-01-03 |  |  |  |  |  |  |  |  |  |  |  |
|  | 1 | **Ecological Mitigation Works Doddershall CR01443** |  | 2017-05-23 | 2017-12-01 |  |  |  |  |  |  |  |  |  |  |  |
| P1EWCC-PWP06-2370 |  | Update of Project Plans and LS-WSI Doddershall and Approval (intrusive surveys) | 20d | 2017-05-23 A | 2017-09-08 A | P1EWCC-UWP01-1000 | 100% |  | 2017-05-23 | 2017-06-19 |  |  |  |  |  | UW1 |
| P1EWCC-PWP06-3460 |  | HS2 issue Project Plan | 1d | 2017-09-18 | 2017-09-18 |  |  |  |  |  | 78.38d | 54d |  |  |  | UW1 |
| P1EWCC-PWP06-2390 |  | Report of Findings And Approval (ecological mitigation site) | 30d | 2017-10-23 | 2017-12-01 | P1EWCC-PWP06-2380, P1EWCC-PWP06-3460 FF |  |  |  |  | 24.38d | 75d |  |  |  | UW1 |
|  | 2 | **072-L1 - Doddershall Embankment** |  | 2017-08-04 | 2020-01-03 |  |  |  |  |  |  |  |  |  |  |  |
| P1EWCC-PWP06-9570 |  | Production and Approval of Project Plan & LS-WSI (non-intrusive surveys) | 40d | 2017-08-04 A | 2017-10-13 | P1EWCC-PWP05-150 SS | 50% | 19.88d | 2017-09-18 | 2017-11-10 | 164.5d | 0d |  | 2017-10-13 |  | AWH |
| P1EWCC-PWP06-9580 |  | Update of Project Plans and LS-WSI and Approval (intrusive surveys) | 40d | 2017-12-15 | 2018-02-09 | P1EWCC-PWP05-240 |  |  |  |  | 79.5d | 0d |  |  |  | AWH |
| P1EWCC-PWP06-9590 |  | Update of Project Plans and LS-WSI and Approval (intrusive surveys) | 40d | 2018-03-23 | 2018-05-18 | P1EWCC-PWP06-9610 |  |  |  |  | 79.5d | 130d |  |  |  | AWH |
| P1EWCC-PWP06-2410 |  | Report of Findings And Approval (072-L1 - Doddershall Embankment) | 35d | 2019-11-15 | 2020-01-03 | P1EWCC-PWP06-2400 |  |  |  |  | 790.62d |  |  |  |  | AWH |
|  | 11 | **Ecological Mitigation Works** |  | 2017-04-17 | 2018-11-16 |  |  |  |  |  |  |  |  |  |  |  |
|  | 1 | **Design** |  | 2017-04-17 | 2017-11-06 |  |  |  |  |  |  |  |  |  |  |  |
| P1EWCC-PWP02-5440 |  | Design of Habitat Creation (072-M4) | 25d | 2017-04-17 A | 2017-10-06 | P1EWCC-PWP03-3260 FF | 40% | 14.88d | 2017-04-10 | 2017-05-12 | 13.5d | 0d |  | 2017-10-06 |  | UW1 |
| P1EWCC-AWP01-4580 |  | Planning Consent & Licensing for Habitat Creation (072-M4) | 76d | 2017-07-07 A | 2017-11-06 | P1EWCC-PWP02-5440 SS | 53% | 35.88d | 2017-07-07 | 2017-10-20 | 13.5d | 0d |  | 2017-11-06 |  | UW1 |
|  | 2 | **Species Removal from Habitat Area** |  | 2017-07-31 | 2018-02-03 |  |  |  |  |  |  |  |  |  |  |  |
| P1EWCC-PWP02-5460 |  | MS/RAMS for GCN/Reptile Clearance from Habitat Creation Site (072-M4) | 15d | 2017-07-31 A | 2017-09-15 A | P1EWCC-PWP01-3190 FF | 100% |  | 2017-08-14 | 2017-09-01 |  |  |  |  |  | UW1 |
| P1EWCC-PWP02-5450 |  | Exclude GCN/Reptile from Habitat Creation (072-M4) | 65d | 2017-12-01 | 2018-02-03 | P1EWCC-PWP02-5460, P1EWCC-AWP01-4610, P1EWCC-PWP03-3260 |  |  |  |  | -71.62d | 1d |  |  | HS2 - 8h x 7d Workweek (No Holidays) | UW1 |
|  | 3 | **Habitat Creation** |  | 2018-02-05 | 2018-10-19 |  |  |  |  |  |  |  |  |  |  |  |
| P1EWCC-PWP02-5420 |  | Habitat Creation (072-M4) | 55d | 2018-02-05 | 2018-04-20 | P1EWCC-AWP01-4580, P1EWCC-PWP02-5450, P1EWCC-PWP06-2380, P1EWCC-PWP06-2390 SS, P1EWCC-PWP02-9220, P1EWCC-PWP02-5440 |  |  |  |  | -50.62d | 0d |  |  |  | AWE1 |
| P1EWCC-PWP02-5430 |  | Habitat Creation Maturity Period (072-M4) | 182d | 2018-04-21 | 2018-10-19 | P1EWCC-PWP02-5420 |  |  |  |  | -70.62d | 0d | start on or after 2018-03-01 |  | HS2 - 8h x 7d Workweek (No Holidays) | AWE1 |
|  | 5 | **Translocation of Species** |  | 2018-09-18 | 2018-11-16 |  |  |  |  |  |  |  |  |  |  |  |
| P1EWCC-PWP02-5470 |  | Species Translocation to Habitat Creation (072-M4) | 60d | 2018-09-18 | 2018-11-16 | P1EWCC-PWP02-5430 SS+150d, P1EWCC-AWP01-4620, P1EWCC-PWP02-14610 |  |  |  |  | -70.62d | 0d |  |  | HS2 - 8h x 7d Workweek (No Holidays) | AWE1 |

| ID | WBS | Activity | Type | Duration | Start | Finish | Predecessors | Complete | Remaining | Planned start | Planned finish | Total float | Free float | Constraint | Expected finish | Fusion - WPS | HS2 Filter |
| --- | --- | --- | --- | --- | --- | --- | --- | --- | --- | --- | --- | --- | --- | --- | --- | --- | --- |
|  | 4 | **Noise and Vibration Works** |  |  |  |  |  |  |  |  |  |  |  |  |  |  |  |
|  | 3 | **Structural Work** |  |  | 2017-12-15 | 2018-06-08 |  |  |  |  |  |  |  |  |  |  |  |
| P1EWCC-FWP04-4990 |  | Prepare Investigation Plans for Captain Piggot’s u/b, Network Rail Culverts, Watercourse u/b south of Woodham industry |  | 85d | 2017-12-15 | 2018-04-13 | P1EWCC-PWP01-5610 |  |  |  |  | 20d | 0d | as late as possible |  | AWS |  |
| P1EWCC-FWP04-5000 |  | Report on Captain Piggot’s u/b, Network Rail Culverts, Watercourse u/b south of Woodham industry and approval |  | 25d | 2018-05-04 | 2018-06-08 | P1EWCC-PWP01-5610, P1EWCC-FWP04-5010 |  |  |  |  | 15.12d |  |  |  | AWS |  |
|  | 2 | **Water Resources** |  |  | 2017-06-12 | 2017-10-13 |  |  |  |  |  |  |  |  |  |  |  |
|  | 1 | **Hydrological Modelling** |  |  | 2017-06-12 | 2017-10-13 |  |  |  |  |  |  |  |  |  |  |  |
| P1EWCC-PWP04-1540 |  | Hydrological Modelling - Doddershall Brook |  | 195d | 2017-06-12 A | 2017-10-13 | P1EWCC-UWP01-1000 | 90% | 19.88d | 2017-09-28 | 2018-06-27 | 249.88d | 0d |  | 2017-10-13 | UW1 | y |
|  | 1 | **SOW Completion Dates** |  |  | 2017-09-18 | 2019-09-30 |  |  |  |  |  |  |  |  |  |  |  |
| P1EWCC-PWP01-2460 |  | Completion of Survey for GCN (72+000, 72+500 & 73+000) | milestone | 0d | 2017-09-18 | 2017-09-18 | P1EWCC-PWP01-3190 |  |  |  |  | -56d | 1390d | finish on 2017-06-30 |  | UW1 |  |
| P1EWCC-PWP01-2660 |  | Completion of Survey for Badgers (73+000) | milestone | 0d | 2017-09-18 | 2017-09-18 | P1EWCC-PWP01-3190 |  |  |  |  | -56d | 1390d | finish on 2017-06-30 |  | UW1 |  |
| P1EWCC-PWP01-2690 |  | Completion of Survey for Bats (72+000, 72+900 & 73+500) | milestone | 0d | 2017-09-18 | 2017-09-18 | P1EWCC-PWP01-3190 |  |  |  |  | -56d | 1390d | finish on 2017-06-30 |  | UW1 |  |
| P1EWCC-FWP04-5020 |  | Completion of Structural survey's for Captain Piggot’s u/b, Watercourse u/b south of Woodham industry | milestone | 0d | 2018-06-29 | 2018-06-29 | P1EWCC-FWP04-5000 |  |  |  |  | 0d | 1185d | finish on 2018-06-29 |  | AWS |  |
| P1EWCC-PWP04-1550 |  | Completion of Doddershall Brook - site visit, survey brief, inception report, survey, modelling and modelling report | milestone | 0d | 2018-09-28 | 2018-09-28 | P1EWCC-PWP04-1540 |  |  |  |  | 0d | 1120.25d | finish on 2018-09-28 |  | UW1 | y |
| P1EWCC-FWP04-5030 |  | Completion of Structural survey's for Network Rail Culverts | milestone | 0d | 2018-12-31 | 2018-12-31 | P1EWCC-FWP04-5000 |  |  |  |  | 0d | 1054d | finish on 2018-12-31 |  | AWS |  |
| P1EWCC-PWP02-5490 |  | Completion of Species Translocation/ exclusion - Great Crested Newts | milestone | 0d | 2019-09-30 | 2019-09-30 | P1EWCC-PWP02-5470 |  |  |  |  | 0d | 860d | finish on 2019-09-30 |  | AWE1 |  |
| P1EWCC-PWP02-5500 |  | Completion of Species Translocation/ exclusion - Reptiles | milestone | 0d | 2019-09-30 | 2019-09-30 | P1EWCC-PWP02-5470 |  |  |  |  | 0d | 860d | finish on 2019-09-30 |  | AWE1 |  |
| P1EWCC-PWP02-5510 |  | Completion of Species Translocation/ exclusion - Bats | milestone | 0d | 2019-09-30 | 2019-09-30 | P1EWCC-PWP02-5470 |  |  |  |  | 0d | 860d | finish on 2019-09-30 |  | AWE1 |  |
| P1EWCC-PWP02-5520 |  | Completion of Species Translocation/ exclusion - Badgers | milestone | 0d | 2019-09-30 | 2019-09-30 | P1EWCC-PWP02-5470 |  |  |  |  | 0d | 860d | finish on 2019-09-30 |  | AWE1 |  |
|  | 3 | **073-L1 - Woodlands Cutting** |  |  | 2017-03-20 | 2019-09-30 |  |  |  |  |  |  |  |  |  |  |  |
|  | 8 | **Land Access** |  |  | 2017-04-10 | 2018-07-26 |  |  |  |  |  |  |  |  |  |  |  |
|  | 1 | **Survey Work** |  |  | 2017-04-10 | 2017-04-10 |  |  |  |  |  |  |  |  |  |  |  |
| P1EWCC-AWP01-6120 |  | Land Access Granted for Survey Work (Schedule 2) | milestone | 0d | 2017-04-10 A | 2017-04-10 A |  | 100% |  | 2017-04-03 | 2017-04-03 |  |  | as late as possible |  | AW1 | y |
|  | 2 | **Possession** |  |  | 2018-07-26 | 2018-07-26 |  |  |  |  |  |  |  |  |  |  |  |
| P1EWCC-AWP01-6130 |  | Land Access Possession Granted for Construction (Schedule 16) | milestone | 0d | 2018-07-26 | 2018-07-26 |  |  |  |  |  | 90.75d | 0d | as late as possible |  | AW1 | y |

| ID | WBS | Activity | Duration | Start | Finish | Predecessors | Complete | Planned start | Planned finish | Total float | Free float | Constraint | Calendar | Fusion - WPS | HS2 Filter |
| --- | --- | --- | --- | --- | --- | --- | --- | --- | --- | --- | --- | --- | --- | --- | --- |
|  | 3 | **Survey Works** |  | 2017-03-20 | 2018-11-16 |  |  |  |  |  |  |  |  |  |  |
| P1EWCC-AWP01-6110 |  | Planning Consent & Licensing for Survey Work | 10d | 2017-03-20 A | 2017-04-07 A | P1EWCC-AWP01-1230 | 100% | 2017-03-20 | 2017-03-31 |  |  |  |  | AW1 |  |
| P1EWCC-FWP01-2620 |  | Undertake Remaining Soil Surveys | 120d | 2017-12-15 | 2018-06-01 | P1EWCC-PWP01-5610 |  |  |  | 224d |  |  |  | AWS | y |
| P1EWCC-FWP01-2630 |  | Undertake Arboricultural Surveys | 125d | 2017-12-15 | 2018-06-08 | P1EWCC-PWP01-5610 |  |  |  | 219d |  |  |  | AWS | y |
| P1EWCC-FWP01-2640 |  | Undertake Remaining Ecology & Environmental Surveys | 139d | 2017-12-15 | 2018-06-28 | P1EWCC-PWP01-5610 |  |  |  | 205d |  |  |  | AWS | y |
| P1EWCC-AWP01-6140 |  | Planning Consent & Licensing for Structural Survey Work | 64.88d | 2018-01-15 | 2018-04-13 | P1EWCC-AWP01-1230 |  |  |  | 15.12d | 0d | as late as possible |  | AW1 |  |
|  | 1 | **Ecological & Environmental Surveys** |  | 2017-04-10 | 2017-06-16 |  |  |  |  |  |  |  |  |  |  |
| P1EWCC-PWP01-3750 |  | Survey for Badgers, Bats, GCN & Reptiles | 25d | 2017-04-10 A | 2017-06-16 A | P1EWCC-AWP01-6120, P1EWCC-AWP01-6110 | 100% | 2017-04-03 | 2017-05-05 |  |  |  |  | UW1 |  |
|  | 2 | **Engineering Surveys** |  |  |  |  |  |  |  |  |  |  |  |  |  |
|  | 3 | **Historic Environment** |  | 2018-02-09 | 2018-11-16 |  |  |  |  |  |  |  |  |  |  |
| P1EWCC-PWP06-5100 |  | Non-Intrusive Surveys (geophysics) | 20d | 2018-02-09 | 2018-03-09 | P1EWCC-PWP06-5080, P1EWCC-AWP01-6120, P1EWCC-PWP05-240 |  |  |  | 134d | 0d |  |  | AWH |  |
| P1EWCC-PWP06-9620 |  | Non-Intrusive Surveys (trial trenching) | 30d | 2018-05-04 | 2018-06-15 | P1EWCC-PWP06-5090, P1EWCC-PWP05-240 |  |  |  | 134d | 0d |  |  | AWH |  |
| P1EWCC-PWP06-5120 |  | Intrusive Surveys | 40d | 2018-09-24 | 2018-11-16 | P1EWCC-PWP06-5090, P1EWCC-PWP02-7670, P1EWCC-PWP06-9630, P1EWCC-AWP01-6130 |  |  |  | 103.88d | 0d |  |  | AWH |  |
|  | 5 | **Structural Surveys** |  | 2018-04-13 | 2018-05-04 |  |  |  |  |  |  |  |  |  |  |
| P1EWCC-FWP04-5250 |  | Structural Survey for Overbridge assessment east of Grendon Underwood | 15d | 2018-04-13 | 2018-05-04 | P1EWCC-FWP04-5260, P1EWCC-PWP01-5610, P1EWCC-AWP01-6140 |  |  |  | 15.12d | 0d |  |  | AWS |  |
|  | 7 | **Historic Environment** |  | 2017-12-15 | 2019-01-04 |  |  |  |  |  |  |  |  |  |  |
| P1EWCC-PWP06-5080 |  | Production and Approval of LS-WSI (non-intrusive surveys) | 40d | 2017-12-15 | 2018-02-09 | P1EWCC-PWP05-240 |  |  |  | 134d | 0d |  |  | AWH |  |
| P1EWCC-PWP06-5090 |  | Update of Project Plans and LS-WSI and Approval (intrusive surveys) | 40d | 2018-03-09 | 2018-05-04 | P1EWCC-PWP06-5100 |  |  |  | 134d | 0d |  |  | AWH |  |
| P1EWCC-PWP06-9630 |  | Update of Project Plans and LS-WSI and Approval (intrusive surveys) | 40d | 2018-06-15 | 2018-08-10 | P1EWCC-PWP06-9620 |  |  |  | 134d | 30.12d |  |  | AWH |  |
| P1EWCC-PWP06-5110 |  | Report of Findings And Approval (Archaeological Investigation) | 35d | 2018-11-19 | 2019-01-04 | P1EWCC-PWP06-5120 |  |  |  | 1050d |  |  |  | AWH |  |
|  | 4 | **Ecological Mitigation Works** |  | 2018-03-01 | 2019-01-30 |  |  |  |  |  |  |  |  |  |  |
|  | 5 | **Translocation of Species** |  | 2018-07-26 | 2018-09-23 |  |  |  |  |  |  |  |  |  |  |
| P1EWCC-PWP02-7670 |  | Species Translocation to Habitat Creation (Woodlands Farm) | 60d | 2018-07-26 | 2018-09-23 | P1EWCC-AWP01-6130, P1EWCC-PWP01-3750, P1EWCC-PWP02-5540 SS+60d, P1EWCC-PWP02-14610 |  |  |  | 126.88d | 0d |  | HS2 - 8h x 7d Workweek (No Holidays) | AWE1 |  |
|  | 4 | **Translocation of Hedgerow** |  | 2018-11-01 | 2018-12-14 |  |  |  |  |  |  |  |  |  |  |
| P1EWCC-PWP02-7710 |  | Translocation of hedgerows | 43d | 2018-11-01 | 2018-12-14 | P1EWCC-PWP02-11910, P1EWCC-PWP02-7670, P1EWCC-AWP01-6130 |  |  |  | 118.62d |  | start on or after 2018-11-01 | HS2 - 8h x 7d Workweek (No Holidays) | AWE2 |  |

| ID | WBS | Activity | Type | Duration | Start | Finish | Predecessors | Total float | Free float | Constraint | Calendar | HS2 Filter | Fusion - WPS |
| --- | --- | --- | --- | --- | --- | --- | --- | --- | --- | --- | --- | --- | --- |
|  | 1 | **Landscape Planting (not in AWE2)** |  |  | 2018-03-01 | 2019-01-30 |  |  |  |  |  |  |  |
|  | 1 | **Design** |  |  | 2018-03-01 | 2018-07-19 |  |  |  |  |  |  |  |
| P1EWCC-PWP02-14790 |  | Develop Scheme Design |  | 40d | 2018-03-01 | 2018-04-26 | P1EWCC-PWP02-11910 SS+5d | -109.75d | 0d |  |  | y | AWE2 |
| P1EWCC-PWP02-14820 |  | Develop Detailed Design |  | 50d | 2018-04-26 | 2018-07-05 | P1EWCC-PWP02-14790 | -109.75d | 0d |  |  | y | AWE2 |
| P1EWCC-PWP02-14810 |  | Schedule 17 Planning Consent Approval Period |  | 56d | 2018-04-27 | 2018-06-21 | P1EWCC-PWP02-14790 | 220.88d | 161d |  | HS2 - 8h x 7d Workweek (No Holidays) | y | AWE2 |
| P1EWCC-PWP02-14800 |  | HS2 approval period of vaildated design |  | 14d | 2018-07-06 | 2018-07-19 | P1EWCC-PWP02-14820 | 102d | 42d |  | HS2 - 8h x 7d Workweek (No Holidays) | y | AWE2 |
|  | 2 | **Installation** |  |  | 2018-08-31 | 2019-01-30 |  |  |  |  |  |  |  |
| P1EWCC-FWP04-5920 |  | Call off of Landscape Planting | milestone | 0d | 2018-08-31 | 2018-08-31 | P1EWCC-PWP02-11910, P1EWCC-PWP02-14800 | 41.88d | 0d | as late as possible |  | y | AWE2 |
| P1EWCC-FWP04-5930 |  | Call off period for Landscape Planting |  | 64.88d | 2018-08-31 | 2018-11-29 | P1EWCC-FWP04-5920 | 41.88d | 0d | as late as possible |  | y | AWE2 |
| P1EWCC-FWP04-5910 |  | Advance Planting (2018 - 2019 season) (not in AWE2) |  | 43.25d | 2018-11-29 | 2019-01-30 | P1EWCC-FWP04-5930, P1EWCC-AWP01-6130, P1EWCC-PWP02-7670, P1EWCC-PWP02-14810, P1EWCC-PWP02-15070 | 41.88d |  | start on or after 2018-11-01 |  | y | AWE2 |
|  | 5 | **Noise and Vibration Works** |  |  |  |  |  |  |  |  |  |  |  |
|  | 10 | **Structural Work** |  |  | 2017-12-15 | 2018-06-08 |  |  |  |  |  |  |  |
| P1EWCC-FWP04-5260 |  | Prepare Investigation Plans for Overbridge assessment east of Grendon Underwood and approval |  | 85d | 2017-12-15 | 2018-04-13 | P1EWCC-PWP01-5610 | 20d | 0d | as late as possible |  |  | AWS |
| P1EWCC-FWP04-5270 |  | Report on Overbridge assessment east of Grendon Underwood and approval |  | 25d | 2018-05-04 | 2018-06-08 | P1EWCC-PWP01-5610, P1EWCC-FWP04-5250 | 15.12d |  |  |  |  | AWS |
|  | 6 | **SOW Completion Dates** |  |  | 2017-09-18 | 2019-09-30 |  |  |  |  |  |  |  |
| P1EWCC-PWP01-2450 |  | Completion of Survey for GCN (74+000) | milestone | 0d | 2017-09-18 | 2017-09-18 | P1EWCC-PWP01-3750 | -56d | 1390d | finish on 2017-06-30 |  |  | UW1 |
| P1EWCC-PWP01-2700 |  | Completion of Survey for Bats (74+000) | milestone | 0d | 2017-09-18 | 2017-09-18 | P1EWCC-PWP01-3750 | -56d | 1390d | finish on 2017-06-30 |  |  | UW1 |
| P1EWCC-FWP04-5280 |  | Completion of Structural survey's for Overbridge assessment east of Grendon Underwood | milestone | 0d | 2018-06-29 | 2018-06-29 | P1EWCC-FWP04-5270 | 0d | 1185d | finish on 2018-06-29 |  |  | AWS |
| P1EWCC-FWP04-5940 |  | Advance Planting (2018 - 2019 season) | milestone | 0d | 2019-03-29 | 2019-03-29 | P1EWCC-FWP04-5910 | 0d | 991d | finish on 2019-03-29 |  | y | AWE2 |
| P1EWCC-PWP02-7680 |  | Completion of Species Translocation/ exclusion - Reptiles | milestone | 0d | 2019-09-30 | 2019-09-30 | P1EWCC-PWP02-7670 | 0d | 860d | finish on 2019-09-30 |  |  | AWE1 |
| P1EWCC-PWP02-7690 |  | Completion of Species Translocation/ exclusion - Bats | milestone | 0d | 2019-09-30 | 2019-09-30 | P1EWCC-PWP02-7670 | 0d | 860d | finish on 2019-09-30 |  |  | AWE1 |
| P1EWCC-PWP02-7700 |  | Completion of Species Translocation/ exclusion - GCN | milestone | 0d | 2019-09-30 | 2019-09-30 | P1EWCC-PWP02-7670 | 0d | 860d | finish on 2019-09-30 |  |  | AWE1 |
| P1EWCC-PWP02-7720 |  | Completion of Translocation of Hedgerows | milestone | 0d | 2019-09-30 | 2019-09-30 | P1EWCC-PWP02-7710 | 0d | 860d | finish on 2019-09-30 |  |  | AWE2 |
| P1EWCC-PWP02-7730 |  | Completion of Species Translocation/ exclusion - Badgers | milestone | 0d | 2019-09-30 | 2019-09-30 | P1EWCC-PWP02-7670 | 0d | 860d | finish on 2019-09-30 |  |  | AWE1 |

| ID | WBS | Activity | Type | Duration | Start | Finish | Predecessors | Complete | Planned start | Planned finish | Total float | Free float | Constraint | HS2 Filter | Fusion - WPS |
| --- | --- | --- | --- | --- | --- | --- | --- | --- | --- | --- | --- | --- | --- | --- | --- |
|  | 4 | **074-L5 - Grendon Underwood Embankment** |  |  | 2017-03-20 | 2019-09-30 |  |  |  |  |  |  |  |  |  |
|  | 7 | **Land Access** |  |  | 2017-03-27 | 2018-07-26 |  |  |  |  |  |  |  |  |  |
|  | 1 | **Survey Work** |  |  | 2017-03-27 | 2017-03-27 |  |  |  |  |  |  |  |  |  |
| P1EWCC-AWP01-4660 |  | Land Access Granted for Survey Work (Schedule 2) | milestone | 0d | 2017-03-27 A | 2017-03-27 A |  | 100% | 2017-03-20 | 2017-03-20 |  |  | as late as possible | y | UW1 |
|  | 2 | **Possession** |  |  | 2017-08-25 | 2018-07-26 |  |  |  |  |  |  |  |  |  |
|  | 1 | **Ecological Mitigation Area** |  |  | 2017-08-25 | 2017-08-25 |  |  |  |  |  |  |  |  |  |
| P1EWCC-AWP01-4670 |  | Land Access Possession Granted for Ecolgical Mitigation Site (Schedule 16) Woodlands Farm | milestone | 0d | 2017-08-25 A | 2017-08-25 A |  | 100% | 2017-09-18 | 2017-09-18 |  |  |  | y | UW1 |
|  | 2 | **074-L5 - Grendon Underwood Embankment** |  |  | 2018-07-26 | 2018-07-26 |  |  |  |  |  |  |  |  |  |
| P1EWCC-AWP01-4680 |  | Land Access Possession Granted for Construction of 074-L5 - Grendon Underwood Embankment (Schedule 16) | milestone | 0d | 2018-07-26 | 2018-07-26 |  |  |  |  | 210d | 0d | as late as possible | y | AW1 |
|  | 10 | **Survey Works** |  |  | 2017-03-20 | 2019-06-28 |  |  |  |  |  |  |  |  |  |
| P1EWCC-AWP01-4650 |  | Planning Consent & Licensing for Survey Work |  | 0d | 2017-03-20 A | 2017-03-24 A | P1EWCC-AWP01-1230 | 100% | 2017-03-20 | 2017-03-20 |  |  |  |  | UW1 |
| P1EWCC-FWP01-2660 |  | Undertake Remaining Soil Surveys |  | 120d | 2017-12-15 | 2018-06-01 | P1EWCC-PWP01-5610 |  |  |  | 456d |  |  | y | AWS |
| P1EWCC-FWP01-2670 |  | Undertake Arboricultural Surveys |  | 125d | 2017-12-15 | 2018-06-08 | P1EWCC-PWP01-5610 |  |  |  | 451d |  |  | y | AWS |
| P1EWCC-FWP01-2680 |  | Undertake Remaining Ecology & Environmental Surveys |  | 400d | 2017-12-15 | 2019-06-28 | P1EWCC-PWP01-5610 |  |  |  | 176d |  |  | y | AWS |
| P1EWCC-AWP01-6810 |  | Planning Consent & Licensing for Demoliton/Structural Survey Work |  | 64.88d | 2018-01-15 | 2018-04-13 | P1EWCC-AWP01-1230 |  |  |  | 15d | 0d | as late as possible |  | AW1 |
|  | 1 | **Ecological & Environmental Surveys** |  |  | 2017-03-27 | 2017-07-21 |  |  |  |  |  |  |  |  |  |
| P1EWCC-PWP01-3200 |  | Survey for Badgers, Bats, GCN & Reptiles |  | 25d | 2017-03-27 A | 2017-07-21 A | P1EWCC-AWP01-4660, P1EWCC-AWP01-4650 | 100% | 2017-03-20 | 2017-04-21 |  |  |  |  | UW1 |
|  | 2 | **Engineering Surveys** |  |  | 2017-04-10 | 2017-05-09 |  |  |  |  |  |  |  |  |  |
| P1EWCC-PWP03-3270 |  | Survey for Engineering (Topo, GPR, Utility, Soil) |  | 15d | 2017-04-10 A | 2017-05-09 A | P1EWCC-AWP01-4660, P1EWCC-AWP01-4650 | 100% | 2017-03-20 | 2017-04-07 |  |  |  |  | UW1 |
|  | 3 | **Historic Environment Surveys** |  |  | 2017-06-27 | 2018-11-16 |  |  |  |  |  |  |  |  |  |
|  | 1 | **Ecological Mitigation Site Woodland Farm Cottages 1343, 1351, 1351a & b, 1472** |  |  | 2017-06-27 | 2017-11-24 |  |  |  |  |  |  |  |  |  |
| P1EWCC-PWP06-2430 |  | Geophysics (ecological mitigation site) |  | 31d | 2017-06-27 A | 2017-09-15 A | P1EWCC-PWP06-2420, P1EWCC-AWP01-4660, P1EWCC-AWP01-4650 | 100% | 2017-06-27 | 2017-08-08 |  |  |  |  | UW1 |
| P1EWCC-PWP06-2450 |  | Intrusive Surveys (ecological mitigation site) |  | 5d | 2017-11-20 | 2017-11-24 | P1EWCC-PWP06-2440, P1EWCC-PWP02-5560 |  |  |  | 149.12d | 0d |  |  | AWH |
|  | 2 | **074-L5 - Grendon Underwood Embankment** |  |  | 2018-02-09 | 2018-11-16 |  |  |  |  |  |  |  |  |  |
| P1EWCC-PWP06-9670 |  | Non-Intrusive Surveys (geophysics) |  | 20d | 2018-02-09 | 2018-03-09 | P1EWCC-PWP06-9640, P1EWCC-PWP05-240 |  |  |  | 366d | 0d |  |  | AWH |
| P1EWCC-PWP06-9680 |  | Non-Intrusive Surveys (trial trenching) |  | 30d | 2018-05-04 | 2018-06-15 | P1EWCC-PWP06-9650, P1EWCC-PWP05-240 |  |  |  | 366d | 0d |  |  | AWH |
| P1EWCC-PWP06-2470 |  | Intrusive Surveys (074-L5 - Grendon Underwood Embankment) |  | 40d | 2018-09-24 | 2018-11-16 | P1EWCC-PWP02-5580, P1EWCC-PWP06-9660, P1EWCC-AWP01-4680 |  |  |  | 335.88d | 0d |  |  | AWH |

| ID | WBS | Activity | Duration | Start | Finish | Predecessors | Complete | Remaining | Planned start | Planned finish | Total float | Free float | Expected finish | Calendar | Fusion - WPS |
| --- | --- | --- | --- | --- | --- | --- | --- | --- | --- | --- | --- | --- | --- | --- | --- |
|  | 4 | **Demolition Surveys** |  | 2018-04-27 | 2018-05-11 |  |  |  |  |  |  |  |  |  |  |
| P1EWCC-FWP04-6410 |  | Demolition survey's for Woodlands Farm (Heritage) | 10d | 2018-04-27 | 2018-05-11 | P1EWCC-AWP01-6810, P1EWCC-PWP01-5610, P1EWCC-FWP04-6390 |  |  |  |  | 85d | 0d |  |  | AWS |
|  | 5 | **Structural Surveys** |  | 2018-04-13 | 2018-05-04 |  |  |  |  |  |  |  |  |  |  |
| P1EWCC-FWP04-6430 |  | Structural Survey for 2no Underbridges, 2no Overbridges, 2no Watercourse Underbridges | 15d | 2018-04-13 | 2018-05-04 | P1EWCC-AWP01-6810, P1EWCC-PWP01-5610, P1EWCC-FWP04-6440 |  |  |  |  | 15d | 0d |  |  | AWS |
|  | 6 | **Historic Environment** |  | 2017-04-17 | 2019-01-04 |  |  |  |  |  |  |  |  |  |  |
|  | 1 | **Ecological Mitigation Site Woodland Farm Cottages 1343, 1351, 1351a & b, 1472** |  | 2017-04-17 | 2018-01-12 |  |  |  |  |  |  |  |  |  |  |
| P1EWCC-PWP06-2420 |  | Production and Approval of LS-WSI Bucks, Herts, LGA (non-intrusive surveys) | 20d | 2017-04-17 A | 2017-06-27 A | P1EWCC-UWP01-1000 | 100% |  | 2017-02-27 | 2017-03-24 |  |  |  |  | UW1 |
| P1EWCC-PWP06-2440 |  | Update of Project Plans and LS-WSI and Approval (intrusive surveys) | 30d | 2017-09-18 | 2017-10-27 | P1EWCC-PWP06-2430, P1EWCC-PWP06-3470 FF |  |  |  |  | 164.12d | 15d |  |  | UW1 |
| P1EWCC-PWP06-3470 |  | HS2 issue Project Plan | 1d | 2017-09-18 | 2017-09-18 |  |  |  |  |  | 193.12d | 29d |  |  | UW1 |
| P1EWCC-PWP06-2460 |  | Report of Findings And Approval (ecological mitigation site) | 35d | 2017-11-27 | 2018-01-12 | P1EWCC-PWP06-2450 |  |  |  |  | 149.12d | 29.88d |  |  | AWH |
|  | 2 | **074-L5 - Grendon Underwood Embankment** |  | 2017-12-15 | 2019-01-04 |  |  |  |  |  |  |  |  |  |  |
| P1EWCC-PWP06-9640 |  | Production and Approval of Project Plans & LS-WSI (non-intrusive surveys) | 40d | 2017-12-15 | 2018-02-09 | P1EWCC-PWP05-240 |  |  |  |  | 366d | 0d |  |  | AWH |
| P1EWCC-PWP06-9650 |  | Update of Project Plans and LS-WSI and Approval (intrusive surveys) | 40d | 2018-03-09 | 2018-05-04 | P1EWCC-PWP06-9670 |  |  |  |  | 366d | 0d |  |  | AWH |
| P1EWCC-PWP06-9660 |  | Update of Project Plans and LS-WSI and Approval (intrusive surveys) | 40d | 2018-06-15 | 2018-08-10 | P1EWCC-PWP06-9680 |  |  |  |  | 366d | 30.12d |  |  | AWH |
| P1EWCC-PWP06-2480 |  | Report of Findings And Approval (074-L5 - Grendon Underwood Embankment) | 35d | 2018-11-19 | 2019-01-04 | P1EWCC-PWP06-2470 |  |  |  |  | 1050d |  |  |  | AWH |
|  | 11 | **Ecological Mitigation Works** |  | 2017-04-18 | 2019-02-14 |  |  |  |  |  |  |  |  |  |  |
|  | 1 | **Design** |  | 2017-04-18 | 2017-11-28 |  |  |  |  |  |  |  |  |  |  |
|  | 1 | **Woodlands Farm** |  | 2017-04-18 | 2017-11-28 |  |  |  |  |  |  |  |  |  |  |
| P1EWCC-PWP02-5550 |  | Design of Habitat Creation (Woodlands Farm) | 25d | 2017-04-18 A | 2017-10-06 | P1EWCC-PWP03-3270 FF | 40% | 14.88d | 2017-04-17 | 2017-05-19 | 147.25d | 0d | 2017-10-06 |  | UW1 |
| P1EWCC-AWP01-4640 |  | Full TCPA Planning Consent & Licensing for Habitat Creation (Woodlands Farm) | 86d | 2017-07-24 A | 2017-11-28 | P1EWCC-PWP02-5550 SS | 40% | 51.88d | 2017-07-24 | 2017-11-20 | 147.25d | 0d | 2017-11-28 |  | UW1 |
|  | 2 | **076-M1E** |  | 2017-04-18 | 2017-10-25 |  |  |  |  |  |  |  |  |  |  |
| P1EWCC-PWP02-12460 |  | Design of Habitat Creation (076-M1E) (deleted PMI9) | 25d | 2017-04-18 A | 2017-10-25 | P1EWCC-PWP03-3270 FF |  | 27.88d | 2017-04-17 | 2017-05-19 | 1362.12d | 0d | 2017-10-25 |  | UW1 |
|  | 2 | **Species Removal from Habitat Area** |  | 2017-07-31 | 2017-11-19 |  |  |  |  |  |  |  |  |  |  |
| P1EWCC-PWP02-5570 |  | MS/RAMS for GCN/Reptile Clearance from Habitat Creation Site (Woodlands Farm) | 15d | 2017-07-31 A | 2017-09-15 A | P1EWCC-PWP01-3200 FF-15d | 100% |  | 2017-07-24 | 2017-08-11 |  |  |  |  | UW1 |
| P1EWCC-PWP02-5560 |  | Exclude GCN/Reptile from Habitat Creation (Woodlands Farm) | 65d | 2017-09-16 | 2017-11-19 | P1EWCC-AWP01-4670, P1EWCC-PWP03-3270, P1EWCC-PWP02-5570 |  |  |  |  | 207.12d | 0d |  | HS2 - 8h x 7d Workweek (No Holidays) | UW1 |

| ID | WBS | Activity | Type | Duration | Start | Finish | Predecessors | Total float | Free float | Constraint | Calendar | Fusion - WPS | Key Milestones | HS2 Filter |
| --- | --- | --- | --- | --- | --- | --- | --- | --- | --- | --- | --- | --- | --- | --- |
|  | 3 | **Habitat Creation** |  |  | 2018-01-05 | 2019-02-14 |  |  |  |  |  |  |  |  |
|  | 1 | **Woodlands Farm** |  |  | 2018-01-05 | 2018-09-07 |  |  |  |  |  |  |  |  |
| P1EWCC-PWP02-5530 |  | Habitat Creation (Woodlands Farm) |  | 45d | 2018-01-05 | 2018-03-09 | P1EWCC-PWP02-5560, P1EWCC-PWP06-2460 SS, P1EWCC-AWP01-4640, P1EWCC-PWP02-9220, P1EWCC-PWP06-2450, P1EWCC-PWP02-5550 | 119.25d | 0.12d |  |  | AWE1 | Key MS |  |
| P1EWCC-PWP02-5540 |  | Habitat Creation Maturity Period (Woodlands Farm) |  | 182d | 2018-03-10 | 2018-09-07 | P1EWCC-PWP02-5530 | 167.12d | 78d | start on or after 2018-03-01 | HS2 - 8h x 7d Workweek (No Holidays) | AWE1 | Key MS |  |
|  | 3 | **076-M1E** |  |  |  |  |  |  |  |  |  |  |  |  |
|  | 2 | **Woodland Habitat Creation Site - River Ray (074-M6 & 074-M8)** |  |  | 2018-03-01 | 2019-02-14 |  |  |  |  |  |  |  |  |
|  | 1 | **Design** |  |  | 2018-03-01 | 2018-07-05 |  |  |  |  |  |  |  |  |
| P1EWCC-PWP02-13390 |  | Review and Vaildate HS2 design for planning |  | 80d | 2018-03-01 | 2018-06-21 | P1EWCC-PWP02-14440, P1EWCC-PWP02-11910 SS+5d | -99.75d | 0d |  |  | AWE2 |  | y |
| P1EWCC-PWP02-13380 |  | Schedule 17 Planning Consent Approval Period |  | 56d | 2018-04-27 | 2018-06-21 | P1EWCC-PWP02-13390 FF | 388d | 161d |  | HS2 - 8h x 7d Workweek (No Holidays) | AWE2 |  | y |
| P1EWCC-PWP02-13370 |  | HS2 approval period of vaildated design |  | 14d | 2018-06-22 | 2018-07-05 | P1EWCC-PWP02-13390 | 283.12d | 0d |  | HS2 - 8h x 7d Workweek (No Holidays) | AWE2 |  | y |
|  | 3 | **Installation** |  |  | 2018-07-05 | 2019-02-14 |  |  |  |  |  |  |  |  |
| P1EWCC-PWP02-8800 |  | Call off of Create Habitat - Woodland Habitat Creation | milestone | 0d | 2018-07-05 | 2018-07-05 | P1EWCC-PWP02-13370 | 201.25d | 0d |  |  | AWE2 |  | y |
| P1EWCC-PWP02-8810 |  | Call off period for Create Habitat - Woodland Habitat Creation |  | 64.88d | 2018-07-05 | 2018-10-04 | P1EWCC-PWP02-8800 | 201.25d | 40.12d |  |  | AWE2 |  | y |
| P1EWCC-PWP02-8770 |  | Habitat woodland, scrub, grassland planting for bats in woods & loss of ancient woodland from Sheephouse Wood |  | 55d | 2018-11-29 | 2019-02-14 | P1EWCC-PWP02-8810, P1EWCC-AWP01-4680, P1EWCC-PWP02-13380, P1EWCC-PWP02-11910, P1EWCC-PWP02-5580, P1EWCC-PWP02-15070 | 161.12d |  | start on or after 2018-11-01 |  | AWE2 |  |  |
|  | 4 | **Woodland Habitat Creation Site - Hewin's Wood (075-M1W)** |  |  | 2018-03-01 | 2019-02-14 |  |  |  |  |  |  |  |  |
|  | 1 | **Design** |  |  | 2018-03-01 | 2018-07-05 |  |  |  |  |  |  |  |  |
| P1EWCC-PWP02-13450 |  | Review and Vaildate HS2 design for planning |  | 80d | 2018-03-01 | 2018-06-21 | P1EWCC-PWP02-14440, P1EWCC-PWP02-11910 SS+5d | -99.75d | 0d |  |  | AWE2 |  | y |
| P1EWCC-PWP02-13440 |  | Schedule 17 Planning Consent Approval Period |  | 56d | 2018-04-27 | 2018-06-21 | P1EWCC-PWP02-13450 FF | 543d | 161d |  | HS2 - 8h x 7d Workweek (No Holidays) | AWE2 |  | y |
| P1EWCC-PWP02-13430 |  | HS2 approval period of vaildated design |  | 14d | 2018-06-22 | 2018-07-05 | P1EWCC-PWP02-13450 | 438d | 0d |  | HS2 - 8h x 7d Workweek (No Holidays) | AWE2 |  | y |
|  | 3 | **Installation** |  |  | 2018-07-05 | 2019-02-14 |  |  |  |  |  |  |  |  |
| P1EWCC-PWP02-13410 |  | Call off of Create Habitat - Woodland Habitat Creation | milestone | 0d | 2018-07-05 | 2018-07-05 | P1EWCC-PWP02-13430 | 312.12d | 0d |  |  | AWE2 |  | y |
| P1EWCC-PWP02-13420 |  | Call off period for Create Habitat - Woodland Habitat Creation |  | 64.88d | 2018-07-05 | 2018-10-04 | P1EWCC-PWP02-13410 | 312.12d | 40.12d |  |  | AWE2 |  | y |
| P1EWCC-PWP02-13400 |  | Habitat woodland, scrub, grassland planting for bats in Finmere Wood & Grendon & Doddershall Woods |  | 55d | 2018-11-29 | 2019-02-14 | P1EWCC-PWP02-13420, P1EWCC-AWP01-4680, P1EWCC-PWP02-13440, P1EWCC-PWP02-11910, P1EWCC-PWP02-5580, P1EWCC-PWP02-15070 | 272d |  | start on or after 2018-11-01 |  | AWE2 |  |  |
|  | 5 | **Translocation of Species** |  |  | 2018-07-26 | 2018-09-23 |  |  |  |  |  |  |  |  |
| P1EWCC-PWP02-5580 |  | Species Translocation to Habitat Creation (Woodlands Farm) |  | 60d | 2018-07-26 | 2018-09-23 | P1EWCC-AWP01-4680, P1EWCC-PWP02-5540 SS+60d, P1EWCC-PWP02-14610 | 294d | 0d |  | HS2 - 8h x 7d Workweek (No Holidays) | AWE1 |  |  |

| ID | WBS | Activity | Type | Duration | Start | Finish | Predecessors | Total float | Free float | Constraint | Calendar | HS2 Filter | Fusion - WPS |
| --- | --- | --- | --- | --- | --- | --- | --- | --- | --- | --- | --- | --- | --- |
|  | 8 | **Landscape Planting - FCC Siding Mitigation Planting (076-M1E)** |  |  | 2018-03-01 | 2019-02-14 |  |  |  |  |  |  |  |
|  | 1 | **Design** |  |  | 2018-03-01 | 2018-07-05 |  |  |  |  |  |  |  |
| P1EWCC-PWP02-13530 |  | Review and Vaildate HS2 design for planning |  | 80d | 2018-03-01 | 2018-06-21 | P1EWCC-PWP02-14440, P1EWCC-PWP02-11910 SS+5d | -99.75d | 0d |  |  | y | AWE2 |
| P1EWCC-PWP02-13500 |  | Schedule 17 Planning Consent Approval Period |  | 56d | 2018-04-27 | 2018-06-21 | P1EWCC-PWP02-13530 FF | 543d | 161d |  | HS2 - 8h x 7d Workweek (No Holidays) | y | AWE2 |
| P1EWCC-PWP02-13490 |  | HS2 approval period of vaildated design |  | 14d | 2018-06-22 | 2018-07-05 | P1EWCC-PWP02-13530 | 438d | 0d |  | HS2 - 8h x 7d Workweek (No Holidays) | y | AWE2 |
|  | 3 | **Installation** |  |  | 2018-07-05 | 2019-02-14 |  |  |  |  |  |  |  |
| P1EWCC-PWP02-13470 |  | Call off of Create Habitat - Woodland Habitat Creation | milestone | 0d | 2018-07-05 | 2018-07-05 | P1EWCC-PWP02-13490 | 312.12d | 0d |  |  | y | AWE2 |
| P1EWCC-PWP02-13480 |  | Call off period for Create Habitat - Woodland Habitat Creation |  | 64.88d | 2018-07-05 | 2018-10-04 | P1EWCC-PWP02-13470 | 312.12d | 40.12d |  |  | y | AWE2 |
| P1EWCC-PWP02-13460 |  | Advance Planting for the FCC siding compensation planting (076-M1E) |  | 55d | 2018-11-29 | 2019-02-14 | P1EWCC-PWP02-13480, P1EWCC-AWP01-4680, P1EWCC-PWP02-13500, P1EWCC-PWP02-11910, P1EWCC-PWP02-5580, P1EWCC-PWP02-15070 | 272d |  | start on or after 2018-11-01 |  |  | AWE2 |
|  | 2 | **Demolition** |  |  | 2017-12-15 | 2018-06-01 |  |  |  |  |  |  |  |
| P1EWCC-FWP04-6390 |  | Prepare Investigation Plans for Scoping and Planning Demolitions inc Approval - Woodlands Farm (Heritage) |  | 95d | 2017-12-15 | 2018-04-27 | P1EWCC-PWP01-5610 | 90d | 0d | as late as possible |  |  | AWS |
| P1EWCC-FWP04-6400 |  | Report on Demoliton Surveys and Approval - Woodlands Farm (Heritage) |  | 15d | 2018-05-11 | 2018-06-01 | P1EWCC-FWP04-6410, P1EWCC-PWP01-5610 | 85d |  |  |  |  | AWS |
|  | 3 | **Structural Work** |  |  | 2017-12-15 | 2018-06-08 |  |  |  |  |  |  |  |
| P1EWCC-FWP04-6440 |  | Prepare Investigation Plans for 2no Underbridges, 2no Overbridges, 2no Watercourse Underbridges and approval |  | 85d | 2017-12-15 | 2018-04-13 | P1EWCC-PWP01-5610 | 20d | 0d | as late as possible |  |  | AWS |
| P1EWCC-FWP04-6450 |  | Report on 2no Underbridges, 2no Overbridges, 2no Watercourse Underbridges and approval |  | 25d | 2018-05-04 | 2018-06-08 | P1EWCC-PWP01-5610, P1EWCC-FWP04-6430 | 15d |  |  |  |  | AWS |
|  | 5 | **Water Resources** |  |  | 2017-10-13 | 2018-03-02 |  |  |  |  |  |  |  |
| P1EWCC-FWP04-1560 |  | Preliminary Floodplain compensation design- Muxwell brook / River Ray |  | 100d | 2017-10-13 | 2018-03-02 | P1EWCC-PWP02-12060 | 149.88d |  |  |  | y | AWE3 |
|  | 4 | **Noise and Vibration Works** |  |  |  |  |  |  |  |  |  |  |  |
|  | 1 | **SOW Completion Dates** |  |  | 2017-09-18 | 2019-09-30 |  |  |  |  |  |  |  |
| P1EWCC-PWP01-2430 |  | Completion of Survey for GCN (74+300, 74+500, 74+600, 75+000, 75+400 & 76+200) | milestone | 0d | 2017-09-18 | 2017-09-18 | P1EWCC-PWP01-3200 | -56d | 1390d | finish on 2017-06-30 |  |  | UW1 |
| P1EWCC-PWP01-2890 |  | Completion of Survey for Badgers (74+300 & 76+200) | milestone | 0d | 2017-09-18 | 2017-09-18 | P1EWCC-PWP01-3200 | -56d | 1390d | finish on 2017-06-30 |  |  | UW1 |
| P1EWCC-PWP01-2990 |  | Completion of Survey for Bats (74+300, 74+500, 74+600, 74+700, 75+000, 75+400, 75+500, 76+000, 76+200, 76+600 & 77+000) | milestone | 0d | 2017-09-18 | 2017-09-18 | P1EWCC-PWP01-3200 | -56d | 1390d | finish on 2017-06-30 |  |  | UW1 |
| P1EWCC-FWP04-6460 |  | Completion of Report on 2no Underbridges, 2no Overbridges, 2no Watercourse Underbridges and approval | milestone | 0d | 2018-06-29 | 2018-06-29 | P1EWCC-FWP04-6450 | 0d | 1185.12d | finish on 2018-06-29 |  |  | AWS |
| P1EWCC-FWP04-1570 |  | Completion of Preliminary Floodplain compensation design- Muxwell brook / River Ray | milestone | 0d | 2018-09-28 | 2018-09-28 | P1EWCC-FWP04-1560 | 0d | 1120.25d | finish on 2018-09-28 |  | y | AWE3 |
| P1EWCC-FWP04-6420 |  | Completion of Report on Demoliton Surveys and Approval - Woodlands Farm (Heritage) | milestone | 0d | 2018-09-28 | 2018-09-28 | P1EWCC-FWP04-6400 | 0d | 1120.12d | finish on 2018-09-28 |  |  | AWS |
| P1EWCC-PWP02-5590 |  | Completion of Species Translocation/ exclusion - Great Crested Newts | milestone | 0d | 2019-09-30 | 2019-09-30 | P1EWCC-PWP02-5580 | 0d | 860d | finish on 2019-09-30 |  |  | AWE1 |
| P1EWCC-PWP02-5600 |  | Completion of Species Translocation/ exclusion - Reptiles | milestone | 0d | 2019-09-30 | 2019-09-30 | P1EWCC-PWP02-5580 | 0d | 860d | finish on 2019-09-30 |  |  | AWE1 |
| P1EWCC-PWP02-5610 |  | Completion of Species Translocation/ exclusion - Bats | milestone | 0d | 2019-09-30 | 2019-09-30 | P1EWCC-PWP02-5580 | 0d | 860d | finish on 2019-09-30 |  |  | AWE1 |
| P1EWCC-PWP02-5620 |  | Completion of Species Translocation/ exclusion - Badgers | milestone | 0d | 2019-09-30 | 2019-09-30 | P1EWCC-PWP02-5580 | 0d | 860d | finish on 2019-09-30 |  |  | AWE1 |
| P1EWCC-PWP02-5630 |  | Completion of Species Translocation/ exclusion - Otters | milestone | 0d | 2019-09-30 | 2019-09-30 | P1EWCC-PWP02-5580 | 0d | 860d | finish on 2019-09-30 |  |  | AWE1 |
| P1EWCC-PWP02-8780 |  | Completion of Habitat woodland in Bernwood Forest & Sheephouse Wood | milestone | 0d | 2019-09-30 | 2019-09-30 | P1EWCC-PWP02-8770 | 0d | 860d | finish on 2019-09-30 |  |  | AWE2 |

| ID | WBS | Activity | Type | Duration | Start | Finish | Predecessors | Complete | Remaining | Planned start | Planned finish | Total float | Free float | Constraint | Expected finish | HS2 Filter | Fusion - WPS | Key Milestones |
| --- | --- | --- | --- | --- | --- | --- | --- | --- | --- | --- | --- | --- | --- | --- | --- | --- | --- | --- |
|  | C24 | **Calvert To Turweston (Ch. 77500 To Ch. 95340)** |  |  | 2017-02-24 | 2019-09-30 |  |  |  |  |  |  |  |  |  |  |  |  |
|  | C241 | **Calvert (Ch. 77500 To 81450)** |  |  | 2017-03-20 | 2019-09-30 |  |  |  |  |  |  |  |  |  |  |  |  |
|  | 5 | **077-L1 - Calvert Cutting** |  |  | 2017-03-20 | 2019-09-30 |  |  |  |  |  |  |  |  |  |  |  |  |
|  | 8 | **Land Access** |  |  | 2017-03-20 | 2018-07-24 |  |  |  |  |  |  |  |  |  |  |  |  |
|  | 1 | **Survey Work** |  |  | 2017-03-20 | 2017-03-20 |  |  |  |  |  |  |  |  |  |  |  |  |
| P1EWCC-AWP01-6670 |  | Land Access Granted for Survey Work (Schedule 2) | milestone | 0d | 2017-03-20 A | 2017-03-20 A |  | 100% |  | 2017-04-03 | 2017-04-03 |  |  | as late as possible |  | y | AW1 |  |
|  | 2 | **Possession** |  |  | 2018-07-24 | 2018-07-24 |  |  |  |  |  |  |  |  |  |  |  |  |
| P1EWCC-AWP01-6680 |  | Land Access Possession Granted for Construction (Schedule 16) | milestone | 0d | 2018-07-24 | 2018-07-24 |  |  |  |  |  | -96.88d | 0d | as late as possible |  | y | AW1 |  |
|  | 3 | **Survey Works** |  |  | 2017-03-20 | 2019-06-28 |  |  |  |  |  |  |  |  |  |  |  |  |
| P1EWCC-AWP01-6660 |  | Planning Consent & Licensing for Survey Work |  | 10d | 2017-03-20 A | 2017-03-20 A | P1EWCC-AWP01-1230 | 100% |  | 2017-03-20 | 2017-03-31 |  |  |  |  |  | AW1 |  |
| P1EWCC-FWP01-2700 |  | Undertake Remaining Soil Surveys |  | 120d | 2017-12-15 | 2018-06-01 | P1EWCC-PWP01-5610 |  |  |  |  | 252d | 312d |  |  | y | AWS |  |
| P1EWCC-FWP01-2710 |  | Undertake Arboricultural Surveys |  | 125d | 2017-12-15 | 2018-06-08 | P1EWCC-PWP01-5610 |  |  |  |  | 247d | 307d |  |  | y | AWS |  |
| P1EWCC-FWP01-2720 |  | Undertake Remaining Ecology & Environmental Surveys |  | 400d | 2017-12-15 | 2019-06-28 | P1EWCC-PWP01-5610 |  |  |  |  | -28d | 32d |  |  | y | AWS |  |
| P1EWCC-AWP01-6690 |  | Planning Consent & Licensing for Demolition/Structural Survey Work |  | 64.88d | 2018-01-15 | 2018-04-13 | P1EWCC-AWP01-1230 |  |  |  |  | 146.12d | 0d | as late as possible |  |  | AW1 |  |
|  | 1 | **Ecological & Environmental Surveys** |  |  | 2017-03-20 | 2017-11-24 |  |  |  |  |  |  |  |  |  |  |  |  |
| P1EWCC-PWP01-4010 |  | Survey for Badgers, Bats, GCN & Reptiles |  | 25d | 2017-03-20 A | 2017-11-24 | P1EWCC-AWP01-6670, P1EWCC-AWP01-6660 |  | 49.88d | 2017-04-03 | 2017-05-05 | -105.88d | 0d |  | 2017-11-24 |  | UW1 |  |
|  | 2 | **Engineering Surveys** |  |  |  |  |  |  |  |  |  |  |  |  |  |  |  |  |
|  | 3 | **Historic Environment** |  |  | 2017-09-25 | 2018-11-13 |  |  |  |  |  |  |  |  |  |  |  |  |
| P1EWCC-PWP06-6020 |  | Non-Intrusive Surveys (geophysics) |  | 20d | 2018-02-09 | 2018-03-09 | P1EWCC-AWP01-6670, P1EWCC-PWP06-6000, P1EWCC-PWP05-240 |  |  |  |  | 90.25d | 0d |  |  |  | AWH | Key MS |
| P1EWCC-PWP06-9690 |  | Non-Intrusive Surveys (trial trenching) |  | 30d | 2018-05-04 | 2018-06-15 | P1EWCC-PWP06-6010, P1EWCC-PWP05-240 |  |  |  |  | 90.25d | 0d |  |  |  | AWH | Key MS |
| P1EWCC-PWP06-6040 |  | Intrusive Surveys |  | 40d | 2018-09-18 | 2018-11-13 | P1EWCC-PWP02-8660, P1EWCC-PWP06-6010, P1EWCC-PWP06-9700, P1EWCC-AWP01-6680 |  |  |  |  | 63.25d | 0d |  |  |  | AWH | Key MS |
|  | 2 | **WPD Substation Site 1050 PMI 9** |  |  | 2017-09-25 | 2017-10-13 |  |  |  |  |  |  |  |  |  |  |  |  |
| P1EWCC-PWP06-11750 |  | Trial Trenching (WPD Substation, AWA Potable) |  | 15d | 2017-09-25 | 2017-10-13 | P1EWCC-PWP06-11720 |  |  |  |  | 1340d | 0d | start on or after 2017-09-25 |  |  | UW1 |  |
|  | 4 | **Demolition Surveys** |  |  | 2018-04-27 | 2018-05-11 |  |  |  |  |  |  |  |  |  |  |  |  |
| P1EWCC-FWP04-6310 |  | Demolition survey's for Shepherd Furze Farm |  | 10d | 2018-04-27 | 2018-05-11 | P1EWCC-PWP01-5610, P1EWCC-FWP04-6290, P1EWCC-AWP01-6690 |  |  |  |  | 151.12d | 0d |  |  |  | AWS |  |

| ID | WBS | Activity | Type | Duration | Start | Finish | Predecessors | Complete | Planned start | Planned finish | Total float | Free float | Constraint | Calendar | Fusion - WPS | Key Milestones | HS2 Filter |
| --- | --- | --- | --- | --- | --- | --- | --- | --- | --- | --- | --- | --- | --- | --- | --- | --- | --- |
|  | 5 | **Structural Surveys** |  |  | 2018-04-13 | 2018-05-04 |  |  |  |  |  |  |  |  |  |  |  |
| P1EWCC-FWP04-6240 |  | Structural Survey for 2no Watercourse Underbridges and 1no Overbridge |  | 15d | 2018-04-13 | 2018-05-04 | P1EWCC-PWP01-5610, P1EWCC-AWP01-6690, P1EWCC-FWP04-6360 |  |  |  | 146.12d | 0d |  |  | AWS |  |  |
|  | 7 | **Historic Environment** |  |  | 2017-05-23 | 2019-01-01 |  |  |  |  |  |  |  |  |  |  |  |
| P1EWCC-PWP06-6000 |  | Production and Approval of Project Plans & LS-WSI (non-intrusive surveys) |  | 40d | 2017-12-15 | 2018-02-09 | P1EWCC-PWP05-240 |  |  |  | 90.25d | 0d |  |  | AWH |  |  |
| P1EWCC-PWP06-6010 |  | Update of Project Plans and LS-WSI and Approval (intrusive surveys) |  | 40d | 2018-03-09 | 2018-05-04 | P1EWCC-PWP06-6020 |  |  |  | 90.25d | 0d |  |  | AWH |  |  |
| P1EWCC-PWP06-9700 |  | Update of Project Plans and LS-WSI and Approval (intrusive surveys) |  | 40d | 2018-06-15 | 2018-08-10 | P1EWCC-PWP06-9690 |  |  |  | 90.25d | 27d |  |  | AWH |  |  |
| P1EWCC-PWP06-6030 |  | Report of Findings And Approval (Archaeological Investigation) |  | 35d | 2018-11-13 | 2019-01-01 | P1EWCC-PWP06-6040 |  |  |  | 1053.12d |  |  |  | AWH |  |  |
|  | 9 | **WPD Substation Site 1050 PMI 9** |  |  | 2017-05-23 | 2017-11-24 |  |  |  |  |  |  |  |  |  |  |  |
| P1EWCC-PWP06-11720 |  | Update of Project Plans and LS-WSI WPD Substation and Approval (intrusive surveys) |  | 20d | 2017-05-23 A | 2017-09-07 A | P1EWCC-UWP01-1000 | 100% | 2017-05-23 | 2017-06-19 |  |  |  |  | UW1 |  |  |
| P1EWCC-PWP06-11740 |  | HS2 issue Project Plan |  | 1d | 2017-09-18 | 2017-09-18 |  |  |  |  | 1389d | 49d |  |  | UW1 |  |  |
| P1EWCC-PWP06-11730 |  | Report of Findings And Approval (ecological mitigation site) |  | 30d | 2017-10-16 | 2017-11-24 | P1EWCC-PWP06-11740 FF, P1EWCC-PWP06-11750 |  |  |  | 1340d |  |  |  | UW1 |  |  |
|  | 4 | **Ecological Mitigation Works** |  |  | 2018-03-01 | 2019-02-14 |  |  |  |  |  |  |  |  |  |  |  |
|  | 5 | **Translocation of Species** |  |  | 2018-07-26 | 2018-09-18 |  |  |  |  |  |  |  |  |  |  |  |
| P1EWCC-PWP02-8660 |  | Species Translocation to Habitat Creation (Woodlands Farm) |  | 55d | 2018-07-26 | 2018-09-18 | P1EWCC-PWP01-4010, P1EWCC-AWP01-6680, P1EWCC-PWP02-5540 SS+60d, P1EWCC-PWP02-14610 |  |  |  | 89.12d | 0d |  | HS2 - 8h x 7d Workweek (No Holidays) | AWE1 | Key MS |  |
|  | 15 | **Woodland Habitat Creation Site - Decoypond Wood (078-M1E)** |  |  | 2018-03-01 | 2019-02-14 |  |  |  |  |  |  |  |  |  |  |  |
|  | 1 | **Design** |  |  | 2018-03-01 | 2018-07-05 |  |  |  |  |  |  |  |  |  |  |  |
| P1EWCC-PWP02-13590 |  | Review and Vaildate HS2 design for planning |  | 80d | 2018-03-01 | 2018-06-21 | P1EWCC-PWP02-14440, P1EWCC-PWP02-11910 SS+5d |  |  |  | -99.75d | 0d |  |  | AWE2 |  | y |
| P1EWCC-PWP02-13580 |  | Schedule 17 Planning Consent Approval Period |  | 56d | 2018-04-27 | 2018-06-21 | P1EWCC-PWP02-13590 FF |  |  |  | 257d | 161d |  | HS2 - 8h x 7d Workweek (No Holidays) | AWE2 |  | y |
| P1EWCC-PWP02-13570 |  | HS2 approval period of vaildated design |  | 14d | 2018-06-22 | 2018-07-05 | P1EWCC-PWP02-13590 |  |  |  | 152d | 0d |  | HS2 - 8h x 7d Workweek (No Holidays) | AWE2 |  | y |
|  | 3 | **Installation** |  |  | 2018-07-05 | 2019-02-14 |  |  |  |  |  |  |  |  |  |  |  |
| P1EWCC-PWP02-9100 |  | Call off of Create Habitat - Woodland Habitat Creation | milestone | 0d | 2018-07-05 | 2018-07-05 | P1EWCC-PWP02-13570 |  |  |  | 108.12d | 0d |  |  | AWE2 |  | y |
| P1EWCC-PWP02-9110 |  | Call off period for Create Habitat - Woodland Habitat Creation |  | 64.88d | 2018-07-05 | 2018-10-04 | P1EWCC-PWP02-9100 |  |  |  | 108.12d | 40.12d |  |  | AWE2 |  | y |
| P1EWCC-PWP02-9120 |  | Extensive habitat woodland, scrub and grassland planting for bats in the Calvert Landfill and Nature Reserve |  | 55d | 2018-11-29 | 2019-02-14 | P1EWCC-PWP02-9110, P1EWCC-AWP01-6680, P1EWCC-PWP02-13580, P1EWCC-PWP02-11910, P1EWCC-PWP02-8660, P1EWCC-PWP02-15070 |  |  |  | 68d | 128d | start on or after 2018-11-01 |  | AWE2 |  | y |
|  | 9 | **Landscape Planting** |  |  | 2018-03-01 | 2019-01-30 |  |  |  |  |  |  |  |  |  |  |  |
|  | 2 | **Advance Planting - Calvert IMD Planting (080-M2E & 080-M4E)** |  |  | 2018-03-01 | 2019-01-30 |  |  |  |  |  |  |  |  |  |  |  |
|  | 1 | **Design** |  |  | 2018-03-01 | 2018-07-19 |  |  |  |  |  |  |  |  |  |  |  |
| P1EWCC-PWP02-13600 |  | Develop Scheme Design |  | 40d | 2018-03-01 | 2018-04-26 | P1EWCC-PWP02-11910 SS+5d |  |  |  | -109.75d | 0d |  |  | AWE2 |  | y |
| P1EWCC-PWP02-13610 |  | Develop Detailed Design |  | 50d | 2018-04-26 | 2018-07-05 | P1EWCC-PWP02-13600 |  |  |  | -109.75d | 0d |  |  | AWE2 |  | y |
| P1EWCC-PWP02-13630 |  | Schedule 17 Planning Consent Approval Period |  | 56d | 2018-04-27 | 2018-06-21 | P1EWCC-PWP02-13600 |  |  |  | 220.88d | 161d |  | HS2 - 8h x 7d Workweek (No Holidays) | AWE2 |  | y |
| P1EWCC-PWP02-13620 |  | HS2 approval period of vaildated design |  | 14d | 2018-07-06 | 2018-07-19 | P1EWCC-PWP02-13610 |  |  |  | 102d | 0d |  | HS2 - 8h x 7d Workweek (No Holidays) | AWE2 |  | y |

| ID | WBS | Activity | Type | Duration | Start | Finish | Predecessors | Total float | Free float | Constraint | Calendar | HS2 Filter | Fusion - WPS | Key Milestones |
| --- | --- | --- | --- | --- | --- | --- | --- | --- | --- | --- | --- | --- | --- | --- |
|  | 3 | **Installation** |  |  | 2018-07-19 | 2019-01-30 |  |  |  |  |  |  |  |  |
| P1EWCC-FWP04-6260 |  | Call off of Landscape Planting | milestone | 0d | 2018-07-19 | 2018-07-19 | P1EWCC-PWP02-11910, P1EWCC-PWP02-13620 | 72d | 0d |  |  | y | AWE2 |  |
| P1EWCC-FWP04-6270 |  | Call off period for Landscape Planting |  | 64.88d | 2018-07-19 | 2018-10-18 | P1EWCC-FWP04-6260 | 72d | 30.12d |  |  | y | AWE2 |  |
| P1EWCC-FWP04-6250 |  | Advance Planting to Calvert IMD Site (080-M2E & 080-M4E) |  | 43.25d | 2018-11-29 | 2019-01-30 | P1EWCC-FWP04-6270, P1EWCC-AWP01-6680, P1EWCC-PWP02-8660, P1EWCC-PWP02-13630, P1EWCC-PWP02-15070 | 41.88d |  | start on or after 2018-11-01 |  | y | AWE2 |  |
|  | 4 | **Translocation of Hedgerow** |  |  | 2018-11-01 | 2018-12-14 |  |  |  |  |  |  |  |  |
| P1EWCC-PWP02-8700 |  | Translocation of hedgerows |  | 43d | 2018-11-01 | 2018-12-14 | P1EWCC-PWP02-11910, P1EWCC-PWP02-8660, P1EWCC-AWP01-6680 | 158.62d | 242.62d | start on or after 2018-11-01 | HS2 - 8h x 7d Workweek (No Holidays) |  | AWE2 |  |
|  | 1 | **Demolition** |  |  | 2017-12-15 | 2018-06-01 |  |  |  |  |  |  |  |  |
| P1EWCC-FWP04-6290 |  | Prepare Investigation Plans for Scoping and Planning Demolitions inc Approval - Shepherd Furze Farm |  | 95d | 2017-12-15 | 2018-04-27 | P1EWCC-PWP01-5610 | 156d | 0d | as late as possible |  |  | AWS |  |
| P1EWCC-FWP04-6300 |  | Report on Demoliton Surveys and Approval - Shepherd Furze Farm |  | 15d | 2018-05-11 | 2018-06-01 | P1EWCC-PWP01-5610, P1EWCC-FWP04-6310 | 151.12d |  |  |  |  | AWS |  |
|  | 10 | **Structural Work** |  |  | 2017-12-15 | 2018-06-08 |  |  |  |  |  |  |  |  |
| P1EWCC-FWP04-6360 |  | Prepare Investigation Plans for 2no Watercourse Underbridges and 1no Overbridge |  | 85d | 2017-12-15 | 2018-04-13 | P1EWCC-PWP01-5610 | 151d | 0d | as late as possible |  |  | AWS |  |
| P1EWCC-FWP04-6370 |  | Report on 2no Watercourse Underbridges and 1no Overbridge |  | 25d | 2018-05-04 | 2018-06-08 | P1EWCC-FWP04-6240, P1EWCC-PWP01-5610 | 146.12d |  |  |  |  | AWS |  |
|  | 5 | **Noise and Vibration Works** |  |  |  |  |  |  |  |  |  |  |  |  |
|  | 2 | **Water Resources** |  |  | 2017-10-13 | 2018-04-03 |  |  |  |  |  |  |  |  |
| P1EWCC-PWP04-1510 |  | Preliminary Floodplain compensation design- Tributary of Padbury Brook/Twin (Glebe) Lake |  | 122d | 2017-10-13 | 2018-04-03 | P1EWCC-PWP02-12060 | 128.12d |  |  |  | y | AWE3 |  |
|  | 14 | **Utility Works** |  |  | 2017-10-05 | 2019-08-13 |  |  |  |  |  |  |  |  |
|  | 8 | **School Hill Under Track Crossing** |  |  | 2017-10-20 | 2019-08-13 |  |  |  |  |  |  |  |  |
| P1EWCC-PWP03-4080 |  | Scheme Design & Approval of School Hill Under Track Crossing (inc Utilities) |  | 151d | 2017-10-20 | 2018-05-21 | P1EWCC-PWP01-7350, P1EWCC-PWP01-11730 | 118.12d | 0d |  |  | y | DC2B | Key MS |
| P1EWCC-PWP03-4660 |  | Detailed Design & Approval of School Hill Under Track Crossing (inc Utilities) |  | 106d | 2018-05-21 | 2018-10-16 | P1EWCC-PWP03-4080 | 118.12d | 215d |  |  | y | DC2E | Key MS |
| P1EWCC-PWP08-1770 |  | Procurement of School Hill Under Track Crossing (inc Utilities) |  | 51d | 2018-05-21 | 2018-07-31 | P1EWCC-PWP03-4080, P1EWCC-PWP03-4080 FF | 173.12d | 270d |  |  | y | DC2E |  |
| P1EWCC-EWP02-1770 |  | Installation of School Hill Under Track Crossing (inc Utilities) |  | 255d | 2018-08-21 | 2019-08-13 | P1EWCC-PWP08-1770 FF, P1EWCC-AWP01-6680, P1EWCC-EWP04-6460, P1EWCC-PWP03-4660 FF, P1EWCC-PWP01-11850 | -96.88d | 0d |  |  | y | DC2E | Key MS |
|  | 1 | **CS0-03-6104 AWA Water Diversion** |  |  | 2017-10-05 | 2018-02-26 |  |  |  |  |  |  |  |  |
| P1EWCC-PWP03-4740 |  | Scheme Design & Approval of CS0-03-6104 AWA Water Diversion |  | 5d | 2017-10-05 | 2017-10-12 | P1EWCC-PWP01-7350 | 321d | 0d |  |  | y | DC2B | Key MS |
| P1EWCC-PWP03-4750 |  | Detailed Design & Approval of CS0-03-6104 AWA Water Diversion |  | 27d | 2017-10-12 | 2017-11-20 | P1EWCC-PWP03-4740 | 337d | 16d |  |  | y | DC2B | Key MS |
| P1EWCC-PWP08-1910 |  | Procurement of CS0-03-6104 AWA Water Diversion |  | 27d | 2017-10-12 | 2017-11-20 | P1EWCC-PWP03-4740 | 321d | 0d |  |  | y | DC2B |  |
| P1EWCC-EWP02-1820 |  | Installation of CS0-03-6104 AWA Water Diversion |  | 86d | 2017-10-27 | 2018-02-26 | P1EWCC-PWP08-1910 FS-16d, P1EWCC-PWP03-4750 FS-32d | 321d | 381d |  |  | y | DC2B | Key MS |

| ID | WBS | Activity | Type | Duration | Start | Finish | Predecessors | Total float | Free float | Constraint | HS2 Filter | Fusion - WPS |
| --- | --- | --- | --- | --- | --- | --- | --- | --- | --- | --- | --- | --- |
|  | 11 | **Site Clearance Works** |  |  | 2017-10-20 | 2018-07-31 |  |  |  |  |  |  |
|  | 1 | **School Hill Lane Bridge Satellite Compound** |  |  | 2017-10-20 | 2018-07-31 |  |  |  |  |  |  |
| P1EWCC-PWP10-1190 |  | Scheme Design and Approval of Site Clearance at School Hill Lane Bridge Satellite Compound (inc Utilities) |  | 151d | 2017-10-20 | 2018-05-21 | P1EWCC-PWP01-7350, P1EWCC-PWP01-11730 | -96.88d | 0d |  | y | DC2B |
| P1EWCC-AWP01-6700 |  | Planning Consent & Licensing for Site Clearance at School Hill Lane Bridge Satellite Compound (inc Utilities) |  | 50d | 2018-05-15 | 2018-07-24 | P1EWCC-PWP10-1040 FF | -96.88d | 0d |  |  | DC2E |
| P1EWCC-PWP10-1040 |  | Detailed Design and Approval of Site Clearance at School Hill Lane Bridge Satellite Compound (inc Utilities) |  | 46d | 2018-05-21 | 2018-07-24 | P1EWCC-PWP10-1190 | -96.88d | 0d |  | y | DC2E |
| P1EWCC-EWP04-5730 |  | Site Clearance at School Hill Lane Bridge Satellite Compound (inc Utilities) |  | 5d | 2018-07-24 | 2018-07-31 | P1EWCC-AWP01-6700, P1EWCC-AWP01-6680, P1EWCC-PWP01-11850 | -96.88d | 0d |  | y | DC2E |
|  | 12 | **Site Compound Works** |  |  | 2017-10-20 | 2018-08-21 |  |  |  |  |  |  |
|  | 1 | **School Hill Lane Bridge Satellite Compound** |  |  | 2017-10-20 | 2018-08-21 |  |  |  |  |  |  |
| P1EWCC-PWP10-1090 |  | Scheme Design and Approval of Site Compound at School Hill Lane Bridge Satellite Compound (inc Utilities) |  | 151d | 2017-10-20 | 2018-05-21 | P1EWCC-PWP01-7350, P1EWCC-PWP01-11730 | -95.88d | 0d |  | y | DC2B |
| P1EWCC-AWP01-6750 |  | Planning Consent & Licensing for Site Compound at School Hill Lane Bridge Satellite Compound (inc Utilities) |  | 50d | 2018-05-21 | 2018-07-30 | P1EWCC-PWP10-1090, P1EWCC-PWP10-1200 FF | -95.88d | 1d |  |  | DC2E |
| P1EWCC-PWP10-1200 |  | Detailed Design and Approval of Site Compound at School Hill Lane Bridge Satellite Compound (inc Utilities) |  | 46d | 2018-05-21 | 2018-07-24 | P1EWCC-PWP10-1090 | -91.88d | 4d |  | y | DC2E |
| P1EWCC-EWP04-6460 |  | Site Compound at School Hill Lane Bridge Satellite Compound (inc Utilities) |  | 15d | 2018-07-31 | 2018-08-21 | P1EWCC-AWP01-6750, P1EWCC-EWP04-5730, P1EWCC-AWP01-6680, P1EWCC-PWP01-11850 | -96.88d | 0d |  | y | DC2E |
|  | 13 | **Highway & Public Rights of Way** |  |  | 2017-10-20 | 2019-01-18 |  |  |  |  |  |  |
|  | 1 | **Great Moor Sailing Club Access Road** |  |  | 2017-10-20 | 2019-01-18 |  |  |  |  |  |  |
| P1EWCC-PWP09-1330 |  | Scheme Design & Approval : Great Moor Sailing Club Access Road |  | 127d | 2017-10-20 | 2018-04-17 | P1EWCC-PWP01-11790 | 50.12d | 0d |  | y | DC2B |
| P1EWCC-PWP09-1320 |  | Detailed Design & Approval : Great Moor Sailing Club Access Road |  | 53.25d | 2018-08-07 | 2018-10-22 | P1EWCC-PWP09-1330, P1EWCC-PWP01-7410 | 50d | 0d |  | y | DC2E |
| P1EWCC-AWP01-6780 |  | Schedule 17 Application for Highway Design |  | 50d | 2018-08-13 | 2018-10-22 | P1EWCC-PWP09-1320 FF | 50d | 0d |  | y | DC2E |
| P1EWCC-EWP04-5690 |  | Construction of Great Moor Sailing Club Access Road ? |  | 64.88d | 2018-10-22 | 2019-01-18 | P1EWCC-PWP09-1320, P1EWCC-AWP01-6780, P1EWCC-PWP06-6040 SS+10d, P1EWCC-AWP01-6680 | 50d |  |  | y | DC2E |
|  | 6 | **SOW Completion Dates** |  |  | 2017-11-24 | 2019-09-30 |  |  |  |  |  |  |
| P1EWCC-PWP01-2470 |  | Completion of Survey for GCN (78+400, 79200, 79+500, 80+000 & 81+000) | milestone | 0d | 2017-11-24 | 2017-11-24 | P1EWCC-PWP01-4010 | -105.88d | 1340.12d | finish on 2017-06-30 |  | UW1 |
| P1EWCC-PWP01-2520 |  | Completion of Survey for Bats (78+000, 78+300, 78+400, 78+500, 78+800, 78+900, 79+000 & 80+000) | milestone | 0d | 2017-11-24 | 2017-11-24 | P1EWCC-PWP01-4010 | -105.88d | 1340.12d | finish on 2017-06-30 |  | UW1 |
| P1EWCC-PWP01-2740 |  | Completion of Survey for Badgers (78+500, 80+000 & 81+000) | milestone | 0d | 2017-11-24 | 2017-11-24 | P1EWCC-PWP01-4010 | -105.88d | 1340.12d | finish on 2017-06-30 |  | UW1 |
| P1EWCC-PWP01-2810 |  | Completion of Survey for Bats (78+000, 78+850, 79+000, 80+000 & 80+200) | milestone | 0d | 2017-11-24 | 2017-11-24 | P1EWCC-PWP01-4010 | -105.88d | 1340.12d | finish on 2017-06-30 |  | UW1 |
| P1EWCC-PWP01-2820 |  | Completion of Survey for Reptiles (79+000) | milestone | 0d | 2017-11-24 | 2017-11-24 | P1EWCC-PWP01-4010 | -105.88d | 1340.12d | finish on 2017-06-30 |  | UW1 |
| P1EWCC-PWP04-1520 |  | Completion of Preliminary Floodplain compensation design- Tributary of Padbury Brook/Twin (Glebe) Lake | milestone | 0d | 2018-09-28 | 2018-09-28 | P1EWCC-PWP04-1510 | 0d | 1120d | finish on 2018-09-28 |  | AWE3 |
| P1EWCC-EWP04-6390 |  | Completion of Site Clearance at School Hill Lane Bridge Satellite Compound (inc Utilities) | milestone | 0d | 2018-12-31 | 2018-12-31 | P1EWCC-EWP04-5730 | 0d | 1054d | finish on 2018-12-31 |  | DC2E |
| P1EWCC-EWP04-6510 |  | Completion of Site Compound at School Hill Lane Bridge Satellite Compound (inc Utilities) | milestone | 0d | 2018-12-31 | 2018-12-31 | P1EWCC-EWP04-6460 | 0d | 1054d | finish on 2018-12-31 |  | DC2E |
| P1EWCC-FWP04-6320 |  | Completion of Report on Demoliton Surveys and Approval - Shepherd Furze Farm | milestone | 0d | 2018-12-31 | 2018-12-31 | P1EWCC-FWP04-6300 | 0d | 1054d | finish on 2018-12-31 |  | AWS |
| P1EWCC-FWP04-6380 |  | Completion of Report on Structural Surveys and Approval - 2no U/B and 1no O/B | milestone | 0d | 2018-12-31 | 2018-12-31 | P1EWCC-FWP04-6370 | 0d | 1054d | finish on 2018-12-31 |  | AWS |
| P1EWCC-FWP04-6280 |  | Completion of Advance Planting (2018 - 2019 season) | milestone | 0d | 2019-03-29 | 2019-03-29 | P1EWCC-FWP04-6250 | 0d | 991d | finish on 2019-03-29 | y | AWE2 |
| P1EWCC-EWP04-6520 |  | Completion of Construction of Great Moor Sailing Club Access Road | milestone | 0d | 2019-03-29 | 2019-03-29 | P1EWCC-EWP04-5690 | 0d | 990d | finish on 2019-03-29 | y | DC2E |
| P1EWCC-EWP04-6550 |  | Completion of Construction of School Hill Under Track Crossing (inc Utilities) | milestone | 0d | 2019-08-13 | 2019-08-13 | P1EWCC-EWP02-1770 | -96.88d | 893.12d | finish on 2019-03-29 | y | DC2E |
| P1EWCC-PWP02-8670 |  | Completion of Species Translocation/ exclusion - Reptiles | milestone | 0d | 2019-09-30 | 2019-09-30 | P1EWCC-PWP02-8660 | 0d | 860d | finish on 2019-09-30 |  | AWE1 |
| P1EWCC-PWP02-8680 |  | Completion of Species Translocation/ exclusion - Bats | milestone | 0d | 2019-09-30 | 2019-09-30 | P1EWCC-PWP02-8660 | 0d | 860d | finish on 2019-09-30 |  | AWE1 |
| P1EWCC-PWP02-8690 |  | Completion of Species Translocation/ exclusion - GCN | milestone | 0d | 2019-09-30 | 2019-09-30 | P1EWCC-PWP02-8660 | 0d | 860d | finish on 2019-09-30 |  | AWE1 |
| P1EWCC-PWP02-8710 |  | Completion of Translocation of Hedgerows | milestone | 0d | 2019-09-30 | 2019-09-30 | P1EWCC-PWP02-8700 | 0d | 860d | finish on 2019-09-30 |  | AWE2 |
| P1EWCC-PWP02-8720 |  | Completion of Species Translocation/ exclusion - Otters | milestone | 0d | 2019-09-30 | 2019-09-30 | P1EWCC-PWP02-8660 | 0d | 860d | finish on 2019-09-30 |  | AWE1 |
| P1EWCC-PWP02-8730 |  | Completion of Species Translocation/ exclusion - Badgers | milestone | 0d | 2019-09-30 | 2019-09-30 | P1EWCC-PWP02-8660 | 0d | 860d | finish on 2019-09-30 |  | AWE1 |
| P1EWCC-PWP02-8740 |  | Completion of Create Habitat - Woodland Habitat Creation Sheephouse Wood & Bernwood Forest | milestone | 0d | 2019-09-30 | 2019-09-30 | P1EWCC-PWP02-9120 | 0d | 860d | finish on 2019-09-30 |  | AWE2 |

| ID | WBS | Activity | Type | Duration | Start | Finish | Predecessors | Complete | Planned start | Planned finish | Total float | Free float | Constraint | HS2 Filter | Fusion - WPS |
| --- | --- | --- | --- | --- | --- | --- | --- | --- | --- | --- | --- | --- | --- | --- | --- |
|  | C242 | **Twyford To Chetwode (Ch. 81450 To 86850)** |  |  | 2017-02-24 | 2019-09-30 |  |  |  |  |  |  |  |  |  |
|  | 2 | **080-L1 - Twyford Embankment** |  |  | 2017-03-20 | 2019-09-30 |  |  |  |  |  |  |  |  |  |
|  | 8 | **Land Access** |  |  | 2017-03-20 | 2018-07-30 |  |  |  |  |  |  |  |  |  |
|  | 1 | **Survey Work** |  |  | 2017-03-20 | 2017-03-20 |  |  |  |  |  |  |  |  |  |
| P1EWCC-AWP01-6160 |  | Land Access Granted for Survey Work (Schedule 2) | milestone | 0d | 2017-03-20 A | 2017-03-20 A |  | 100% | 2017-04-03 | 2017-04-03 |  |  | as late as possible | y | AW1 |
|  | 2 | **Possession** |  |  | 2018-07-30 | 2018-07-30 |  |  |  |  |  |  |  |  |  |
| P1EWCC-AWP01-6170 |  | Land Access Possession Granted for Construction (Schedule 16) | milestone | 0d | 2018-07-30 | 2018-07-30 |  |  |  |  | 88.75d | 0d | as late as possible | y | AW1 |
|  | 3 | **Survey Works** |  |  | 2017-03-20 | 2018-11-21 |  |  |  |  |  |  |  |  |  |
| P1EWCC-AWP01-6150 |  | Planning Consent & Licensing for Survey Work |  | 10d | 2017-03-20 A | 2017-03-20 A | P1EWCC-AWP01-1230 | 100% | 2017-03-20 | 2017-03-31 |  |  |  |  | AW1 |
| P1EWCC-FWP01-2730 |  | Undertake Remaining Soil Surveys |  | 120d | 2017-12-15 | 2018-06-01 | P1EWCC-PWP01-5610 |  |  |  | 268d |  |  | y | AWS |
| P1EWCC-FWP01-2740 |  | Undertake Arboricultural Surveys |  | 125d | 2017-12-15 | 2018-06-08 | P1EWCC-PWP01-5610 |  |  |  | 263d |  |  | y | AWS |
| P1EWCC-FWP01-2750 |  | Undertake Remaining Ecology & Environmental Surveys |  | 139d | 2017-12-15 | 2018-06-28 | P1EWCC-PWP01-5610 |  |  |  | 249d |  |  | y | AWS |
|  | 1 | **Ecological & Environmental Surveys** |  |  | 2017-03-20 | 2017-06-30 |  |  |  |  |  |  |  |  |  |
| P1EWCC-PWP01-3780 |  | Survey for Badgers, Bats, GCN & Reptiles |  | 25d | 2017-03-20 A | 2017-06-30 A | P1EWCC-AWP01-6160, P1EWCC-AWP01-6150 | 100% | 2017-04-03 | 2017-05-05 |  |  |  |  | UW1 |
|  | 2 | **Engineering Surveys** |  |  |  |  |  |  |  |  |  |  |  |  |  |
|  | 3 | **Historic Environment** |  |  | 2018-02-09 | 2018-11-21 |  |  |  |  |  |  |  |  |  |
| P1EWCC-PWP06-5160 |  | Non-Intrusive Surveys (geophysics) |  | 20d | 2018-02-09 | 2018-03-09 | P1EWCC-AWP01-6160, P1EWCC-PWP06-5140, P1EWCC-PWP05-240 |  |  |  | 178d | 0d |  |  | AWH |
| P1EWCC-PWP06-9710 |  | Non-Intrusive Surveys (trial trenching) |  | 30d | 2018-05-04 | 2018-06-15 | P1EWCC-PWP06-5150, P1EWCC-PWP05-240 |  |  |  | 178d | 0d |  |  | AWH |
| P1EWCC-PWP06-5180 |  | Intrusive Surveys |  | 40d | 2018-09-26 | 2018-11-21 | P1EWCC-PWP06-5150, P1EWCC-PWP02-7740, P1EWCC-PWP06-9720, P1EWCC-AWP01-6170 |  |  |  | 145d | 0d |  |  | AWH |
|  | 7 | **Historic Environment** |  |  | 2017-12-15 | 2019-01-09 |  |  |  |  |  |  |  |  |  |
| P1EWCC-PWP06-5140 |  | Production and Approval of Project Plans & LS-WSI (non-intrusive surveys) |  | 40d | 2017-12-15 | 2018-02-09 | P1EWCC-PWP05-240 |  |  |  | 178d | 0d |  |  | AWH |
| P1EWCC-PWP06-5150 |  | Update of Project Plans and LS-WSI and Approval (intrusive surveys) |  | 40d | 2018-03-09 | 2018-05-04 | P1EWCC-PWP06-5160 |  |  |  | 178d | 0d |  |  | AWH |
| P1EWCC-PWP06-9720 |  | Update of Project Plans and LS-WSI and Approval (intrusive surveys) |  | 40d | 2018-06-15 | 2018-08-10 | P1EWCC-PWP06-9710 |  |  |  | 178d | 33d |  |  | AWH |
| P1EWCC-PWP06-5170 |  | Report of Findings And Approval (Archaeological Investigation) |  | 35d | 2018-11-21 | 2019-01-09 | P1EWCC-PWP06-5180 |  |  |  | 1047.12d |  |  |  | AWH |

| ID | WBS | Activity | Type | Duration | Start | Finish | Predecessors | Total float | Free float | Constraint | Calendar | Fusion - WPS | HS2 Filter |
| --- | --- | --- | --- | --- | --- | --- | --- | --- | --- | --- | --- | --- | --- |
|  | 4 | **Ecological Mitigation Works** |  |  | 2018-03-01 | 2019-01-30 |  |  |  |  |  |  |  |
|  | 5 | **Translocation of Species** |  |  | 2018-07-29 | 2018-09-26 |  |  |  |  |  |  |  |
| P1EWCC-PWP02-7740 |  | Species Translocation to Habitat Creation (083-M1W) |  | 60d | 2018-07-29 | 2018-09-26 | P1EWCC-PWP02-4230 SS+150d, P1EWCC-PWP01-3780, P1EWCC-AWP01-6170, P1EWCC-PWP02-14610 | 123.88d | 0d |  | HS2 - 8h x 7d Workweek (No Holidays) | AWE1 |  |
|  | 1 | **Landscape Planting - GCML Disused Railway (081-M5W)** |  |  | 2018-03-01 | 2019-01-30 |  |  |  |  |  |  |  |
|  | 1 | **Design** |  |  | 2018-03-01 | 2018-07-05 |  |  |  |  |  |  |  |
| P1EWCC-PWP02-13660 |  | Review and Vaildate HS2 design for planning |  | 80d | 2018-03-01 | 2018-06-21 | P1EWCC-PWP02-11910 SS+5d | -99.75d | 0d |  |  | AWE2 | y |
| P1EWCC-PWP02-13650 |  | Schedule 17 Planning Consent Approval Period |  | 56d | 2018-04-27 | 2018-06-21 | P1EWCC-PWP02-13660 FF | 220.88d | 161d |  | HS2 - 8h x 7d Workweek (No Holidays) | AWE2 | y |
| P1EWCC-PWP02-13640 |  | HS2 approval period of vaildated design |  | 14d | 2018-06-22 | 2018-07-05 | P1EWCC-PWP02-13660 | 116d | 0d |  | HS2 - 8h x 7d Workweek (No Holidays) | AWE2 | y |
|  | 2 | **Installation** |  |  | 2018-07-05 | 2019-01-30 |  |  |  |  |  |  |  |
| P1EWCC-FWP04-5960 |  | Call off of Landscape Planting | milestone | 0d | 2018-07-05 | 2018-07-05 | P1EWCC-PWP02-11910, P1EWCC-PWP02-13640 | 82d | 0d |  |  | AWE2 | y |
| P1EWCC-FWP04-5970 |  | Call off period for Landscape Planting |  | 64.88d | 2018-07-05 | 2018-10-04 | P1EWCC-FWP04-5960 | 82d | 40.12d |  |  | AWE2 | y |
| P1EWCC-FWP04-5950 |  | Advance Planting at Great Central mainline (Approx chainage 081+000 to 086+500) (2018 - 2019 season) |  | 43.25d | 2018-11-29 | 2019-01-30 | P1EWCC-FWP04-5970, P1EWCC-AWP01-6170, P1EWCC-PWP02-7740, P1EWCC-PWP02-13650, P1EWCC-PWP02-15070 | 41.88d |  | start on or after 2018-11-01 |  | AWE2 | y |
|  | 4 | **Translocation of Hedgerow** |  |  | 2018-11-01 | 2018-12-14 |  |  |  |  |  |  |  |
| P1EWCC-PWP02-7780 |  | Translocation of hedgerows |  | 43d | 2018-11-01 | 2018-12-14 | P1EWCC-PWP02-11910, P1EWCC-PWP02-7740, P1EWCC-AWP01-6170 | 180.62d |  | start on or after 2018-11-01 | HS2 - 8h x 7d Workweek (No Holidays) | AWE2 |  |
|  | 5 | **Noise and Vibration Works** |  |  |  |  |  |  |  |  |  |  |  |
|  | 2 | **Water Resources** |  |  | 2017-12-29 | 2018-05-01 |  |  |  |  |  |  |  |
| P1EWCC-PWP04-1440 |  | Preliminary Floodplain compensation design - Padbury Brook |  | 87d | 2017-12-29 | 2018-05-01 | P1EWCC-UWP01-1000, P1EWCC-PWP04-1460 | 108.12d |  |  |  | AWE3 | y |
|  | 1 | **Hydrological Modelling** |  |  |  |  |  |  |  |  |  |  |  |
|  | 6 | **SOW Completion Dates** |  |  | 2018-09-28 | 2019-09-30 |  |  |  |  |  |  |  |
| P1EWCC-PWP04-1450 |  | Completion of Padbury Brook - site visit, survey brief, inception report, survey, modelling and modelling report | milestone | 0d | 2018-09-28 | 2018-09-28 | P1EWCC-PWP04-1440, P1EWCC-PWP01-5610 | 0d | 1120d | finish on 2018-09-28 |  | AWE3 |  |
| P1EWCC-FWP04-5980 |  | Completion of Advance Planting (2018 - 2019 season) | milestone | 0d | 2019-03-29 | 2019-03-29 | P1EWCC-FWP04-5950 | 0d | 991d | finish on 2019-03-29 |  | AWE2 | y |
| P1EWCC-PWP02-7750 |  | Completion of Species Translocation/ exclusion - Reptiles | milestone | 0d | 2019-09-30 | 2019-09-30 | P1EWCC-PWP02-7740 | 0d | 860d | finish on 2019-09-30 |  | AWE1 |  |
| P1EWCC-PWP02-7760 |  | Completion of Species Translocation/ exclusion - Bats | milestone | 0d | 2019-09-30 | 2019-09-30 | P1EWCC-PWP02-7740 | 0d | 860d | finish on 2019-09-30 |  | AWE1 |  |
| P1EWCC-PWP02-7770 |  | Completion of Species Translocation/ exclusion - GCN | milestone | 0d | 2019-09-30 | 2019-09-30 | P1EWCC-PWP02-7740 | 0d | 860d | finish on 2019-09-30 |  | AWE1 |  |
| P1EWCC-PWP02-7790 |  | Completion of Translocation of Hedgerows | milestone | 0d | 2019-09-30 | 2019-09-30 | P1EWCC-PWP02-7780 | 0d | 860d | finish on 2019-09-30 |  | AWE2 |  |
| P1EWCC-PWP02-7800 |  | Completion of Species Translocation/ exclusion - Otters | milestone | 0d | 2019-09-30 | 2019-09-30 | P1EWCC-PWP02-7740 | 0d | 860d | finish on 2019-09-30 |  | AWE1 |  |

| ID | WBS | Activity | Type | Duration | Start | Finish | Predecessors | Complete | Planned start | Planned finish | Total float | Free float | Constraint | Calendar | HS2 Filter | Fusion - WPS |
| --- | --- | --- | --- | --- | --- | --- | --- | --- | --- | --- | --- | --- | --- | --- | --- | --- |
|  | 3 | **082-L1 - Twyford Viaduct** |  |  | 2017-03-20 | 2019-09-30 |  |  |  |  |  |  |  |  |  |  |
|  | 8 | **Land Access** |  |  | 2017-03-20 | 2018-08-01 |  |  |  |  |  |  |  |  |  |  |
|  | 1 | **Survey Work** |  |  | 2017-03-20 | 2017-03-20 |  |  |  |  |  |  |  |  |  |  |
| P1EWCC-AWP01-6200 |  | Land Access Granted for Survey Work (Schedule 2) | milestone | 0d | 2017-03-20 A | 2017-03-20 A |  | 100% | 2017-04-03 | 2017-04-03 |  |  | as late as possible |  | y | AW1 |
|  | 2 | **Possession** |  |  | 2018-08-01 | 2018-08-01 |  |  |  |  |  |  |  |  |  |  |
| P1EWCC-AWP01-6210 |  | Land Access Possession Granted for Construction (Schedule 16) | milestone | 0d | 2018-08-01 | 2018-08-01 |  |  |  |  | 67.62d | 0d | as late as possible |  | y | AW1 |
|  | 3 | **Survey Works** |  |  | 2017-03-20 | 2018-11-23 |  |  |  |  |  |  |  |  |  |  |
| P1EWCC-AWP01-6190 |  | Planning Consent & Licensing for Survey Work |  | 10d | 2017-03-20 A | 2017-03-20 A | P1EWCC-AWP01-1230 | 100% | 2017-03-20 | 2017-03-31 |  |  |  |  |  | AW1 |
| P1EWCC-FWP01-2780 |  | Undertake Arboricultural Surveys |  | 125d | 2017-12-15 | 2018-06-08 | P1EWCC-PWP01-5610 |  |  |  | 190d |  |  |  | y | AWS |
| P1EWCC-AWP01-6220 |  | Planning Consent & Licensing for Demoliton Survey Work |  | 64.88d | 2018-01-29 | 2018-04-27 | P1EWCC-AWP01-1230 |  |  |  | -109.88d | 0d | as late as possible |  |  | AW1 |
|  | 1 | **Ecological & Environmental Surveys** |  |  |  |  |  |  |  |  |  |  |  |  |  |  |
|  | 2 | **Engineering Surveys** |  |  |  |  |  |  |  |  |  |  |  |  |  |  |
|  | 3 | **Historic Environment** |  |  | 2018-02-09 | 2018-11-23 |  |  |  |  |  |  |  |  |  |  |
| P1EWCC-PWP06-5220 |  | Non-Intrusive Surveys (geophysics) |  | 20d | 2018-02-09 | 2018-03-09 | P1EWCC-AWP01-6200, P1EWCC-PWP06-5200, P1EWCC-PWP05-240 |  |  |  | 105d | 0d |  |  |  | AWH |
| P1EWCC-PWP06-9730 |  | Non-Intrusive Surveys (trial trenching) |  | 30d | 2018-05-04 | 2018-06-15 | P1EWCC-PWP06-5210, P1EWCC-PWP05-240 |  |  |  | 105d | 0d |  |  |  | AWH |
| P1EWCC-PWP06-5240 |  | Intrusive Surveys |  | 40d | 2018-10-01 | 2018-11-23 | P1EWCC-PWP02-7810, P1EWCC-PWP06-5210, P1EWCC-PWP06-9740, P1EWCC-AWP01-6210 |  |  |  | 69.88d | 0d |  |  |  | AWH |
|  | 4 | **Demolition Surveys** |  |  | 2018-04-27 | 2018-05-11 |  |  |  |  |  |  |  |  |  |  |
| P1EWCC-FWP04-6030 |  | Demolition survey's for ????? |  | 10d | 2018-04-27 | 2018-05-11 | P1EWCC-PWP01-5610, P1EWCC-FWP04-6010, P1EWCC-AWP01-6220 |  |  |  | -109.88d | 0d |  |  |  | AWS |
|  | 7 | **Historic Environment** |  |  | 2017-12-15 | 2019-01-11 |  |  |  |  |  |  |  |  |  |  |
| P1EWCC-PWP06-5200 |  | Production and Approval of Project Plan & LS-WSI (non-intrusive surveys) |  | 40d | 2017-12-15 | 2018-02-09 | P1EWCC-PWP05-240 |  |  |  | 105d | 0d |  |  |  | AWH |
| P1EWCC-PWP06-5210 |  | Update of Project Plans and LS-WSI and Approval (intrusive surveys) |  | 40d | 2018-03-09 | 2018-05-04 | P1EWCC-PWP06-5220 |  |  |  | 105d | 0d |  |  |  | AWH |
| P1EWCC-PWP06-9740 |  | Update of Project Plans and LS-WSI and Approval (intrusive surveys) |  | 40d | 2018-06-15 | 2018-08-10 | P1EWCC-PWP06-9730 |  |  |  | 105d | 35.12d |  |  |  | AWH |
| P1EWCC-PWP06-5230 |  | Report of Findings And Approval (Archaeological Investigation) |  | 35d | 2018-11-26 | 2019-01-11 | P1EWCC-PWP06-5240 |  |  |  | 1045d |  |  |  |  | AWH |
|  | 4 | **Ecological Mitigation Works** |  |  | 2018-03-01 | 2019-01-30 |  |  |  |  |  |  |  |  |  |  |
|  | 5 | **Translocation of Species** |  |  | 2018-08-01 | 2018-09-29 |  |  |  |  |  |  |  |  |  |  |
| P1EWCC-PWP02-7810 |  | Species Translocation to Habitat Creation (083-M1W) |  | 60d | 2018-08-01 | 2018-09-29 | P1EWCC-AWP01-6210, P1EWCC-PWP02-4230 SS+150d, P1EWCC-PWP02-14610 |  |  |  | 93.75d | 1d | start on or after 2018-08-01 | HS2 - 8h x 7d Workweek (No Holidays) |  | AWE1 |

| ID | WBS | Activity | Type | Duration | Start | Finish | Predecessors | Complete | Remaining | Planned start | Planned finish | Total float | Free float | Constraint | Expected finish | Calendar | HS2 Filter | Fusion - WPS |
| --- | --- | --- | --- | --- | --- | --- | --- | --- | --- | --- | --- | --- | --- | --- | --- | --- | --- | --- |
|  | 2 | **Landscape Planting - GCML Disused Railway (081-M5W)** |  |  | 2018-03-01 | 2019-01-30 |  |  |  |  |  |  |  |  |  |  |  |  |
|  | 1 | **Design** |  |  | 2018-03-01 | 2018-07-05 |  |  |  |  |  |  |  |  |  |  |  |  |
| P1EWCC-PWP02-13690 |  | Review and Vaildate HS2 design for planning |  | 80d | 2018-03-01 | 2018-06-21 | P1EWCC-PWP02-11910 SS+5d |  |  |  |  | -99.75d | 0d |  |  |  | y | AWE2 |
| P1EWCC-PWP02-13680 |  | Schedule 17 Planning Consent Approval Period |  | 56d | 2018-04-27 | 2018-06-21 | P1EWCC-PWP02-13690 FF |  |  |  |  | 193.75d | 161d |  |  | HS2 - 8h x 7d Workweek (No Holidays) | y | AWE2 |
| P1EWCC-PWP02-13670 |  | HS2 approval period of vaildated design |  | 14d | 2018-06-22 | 2018-07-05 | P1EWCC-PWP02-13690 |  |  |  |  | 88.88d | 0d |  |  | HS2 - 8h x 7d Workweek (No Holidays) | y | AWE2 |
|  | 2 | **Installation** |  |  | 2018-07-05 | 2019-01-30 |  |  |  |  |  |  |  |  |  |  |  |  |
| P1EWCC-FWP04-6060 |  | Call off of Landscape Planting | milestone | 0d | 2018-07-05 | 2018-07-05 | P1EWCC-PWP02-11910, P1EWCC-PWP02-13670 |  |  |  |  | 62.88d | 0d |  |  |  | y | AWE2 |
| P1EWCC-FWP04-6070 |  | Call off period for Landscape Planting |  | 64.88d | 2018-07-05 | 2018-10-04 | P1EWCC-FWP04-6060 |  |  |  |  | 62.88d | 40.12d |  |  |  | y | AWE2 |
| P1EWCC-FWP04-6050 |  | Advance Planting at Great Central mainline (Approx chainage 081+000 to 086+500) (2018 - 2019 season) |  | 43.25d | 2018-11-29 | 2019-01-30 | P1EWCC-FWP04-6070, P1EWCC-AWP01-6210, P1EWCC-PWP02-7810, P1EWCC-PWP02-13680, P1EWCC-PWP02-15070 |  |  |  |  | 22.75d |  | start on or after 2018-11-01 |  |  | y | AWE2 |
|  | 5 | **Noise and Vibration Works** |  |  |  |  |  |  |  |  |  |  |  |  |  |  |  |  |
|  | 1 | **Demolition** |  |  | 2017-12-15 | 2018-06-01 |  |  |  |  |  |  |  |  |  |  |  |  |
| P1EWCC-FWP04-6010 |  | Prepare Investigation Plans for Scoping and Planning Demolitions inc Approval - ????? |  | 95d | 2017-12-15 | 2018-04-27 | P1EWCC-PWP01-5610 |  |  |  |  | -105d | 0d | as late as possible |  |  |  | AWS |
| P1EWCC-FWP04-6020 |  | Report on Demoliton Surveys and Approval - ????? |  | 15d | 2018-05-11 | 2018-06-01 | P1EWCC-PWP01-5610, P1EWCC-FWP04-6030 |  |  |  |  | -109.88d | 0d |  |  |  |  | AWS |
|  | 9 | **Water Resources** |  |  | 2017-06-19 | 2017-12-29 |  |  |  |  |  |  |  |  |  |  |  |  |
| P1EWCC-PWP04-1460 |  | Hydrological Modelling - Padbury Brook |  | 195d | 2017-06-19 A | 2017-12-29 | P1EWCC-UWP01-1000 | 62% | 74.88d | 2017-09-28 | 2018-06-27 | 108.12d | 0d |  | 2017-12-29 |  | y | UW1 |
|  | 1 | **Early flood compensation storage/area modelling/design** |  |  |  |  |  |  |  |  |  |  |  |  |  |  |  |  |
|  | 6 | **SOW Completion Dates** |  |  | 2018-06-01 | 2019-09-30 |  |  |  |  |  |  |  |  |  |  |  |  |
| P1EWCC-FWP04-6040 |  | Completion of Demolition survey's - ???? | milestone | 0d | 2018-06-01 | 2018-06-01 | P1EWCC-FWP04-6020 |  |  |  |  | -109.88d | 1205.12d | finish on 2017-12-29 |  |  |  | AWS |
| P1EWCC-PWP04-1470 |  | Completion of Preliminary Floodplain compensation design- Padbury Brook & Teyford West Viaduct - Compensation area | milestone | 0d | 2018-09-28 | 2018-09-28 | P1EWCC-PWP04-1460 |  |  |  |  | 0d | 1120d | finish on 2018-09-28 |  |  |  | AWE3 |
| P1EWCC-FWP04-6080 |  | Completion of Advance Planting (2018 - 2019 season) | milestone | 0d | 2019-03-29 | 2019-03-29 | P1EWCC-FWP04-6050 |  |  |  |  | 0d | 991d | finish on 2019-03-29 |  |  | y | AWE2 |
| P1EWCC-PWP02-7830 |  | Completion of Species Translocation/ exclusion - Bats | milestone | 0d | 2019-09-30 | 2019-09-30 | P1EWCC-PWP02-7810 |  |  |  |  | 0d | 860d | finish on 2019-09-30 |  |  |  | AWE1 |
| P1EWCC-PWP02-7840 |  | Completion of Species Translocation/ exclusion - Otters | milestone | 0d | 2019-09-30 | 2019-09-30 | P1EWCC-PWP02-7810 |  |  |  |  | 0d | 860d | finish on 2019-09-30 |  |  |  | AWE1 |
| P1EWCC-PWP02-7870 |  | Completion of Species Translocation/ exclusion - Badgers | milestone | 0d | 2019-09-30 | 2019-09-30 | P1EWCC-PWP02-7810 |  |  |  |  | 0d | 860d | finish on 2019-09-30 |  |  |  | AWE1 |
|  | 1 | **082-L2 - Cowley Embankment** |  |  | 2017-03-20 | 2019-09-30 |  |  |  |  |  |  |  |  |  |  |  |  |
|  | 8 | **Land Access** |  |  | 2017-04-17 | 2018-08-01 |  |  |  |  |  |  |  |  |  |  |  |  |
|  | 1 | **Survey Work** |  |  | 2017-04-17 | 2017-04-17 |  |  |  |  |  |  |  |  |  |  |  |  |
| P1EWCC-AWP01-6240 |  | Land Access Granted for Survey Work (Schedule 2) | milestone | 0d | 2017-04-17 A | 2017-04-17 A |  | 100% |  | 2017-04-03 | 2017-04-03 |  |  | as late as possible |  |  | y | AW1 |

| ID | WBS | Activity | Type | Duration | Start | Finish | Predecessors | Complete | Planned start | Planned finish | Total float | Free float | Constraint | Calendar | HS2 Filter | Fusion - WPS |
| --- | --- | --- | --- | --- | --- | --- | --- | --- | --- | --- | --- | --- | --- | --- | --- | --- |
|  | 2 | **Possession** |  |  | 2018-08-01 | 2018-08-01 |  |  |  |  |  |  |  |  |  |  |
| P1EWCC-AWP01-6250 |  | Land Access Possession Granted for Construction (Schedule 16) | milestone | 0d | 2018-08-01 | 2018-08-01 |  |  |  |  | 67.62d | 0d | as late as possible |  | y | AW1 |
|  | 3 | **Survey Works** |  |  | 2017-03-20 | 2018-11-23 |  |  |  |  |  |  |  |  |  |  |
| P1EWCC-AWP01-6230 |  | Planning Consent & Licensing for Survey Work |  | 10d | 2017-03-20 A | 2017-04-14 A | P1EWCC-AWP01-1230 | 100% | 2017-03-20 | 2017-03-31 |  |  |  |  |  | AW1 |
| P1EWCC-FWP01-2820 |  | Undertake Arboricultural Surveys |  | 125d | 2017-12-15 | 2018-06-08 | P1EWCC-PWP01-5610 |  |  |  | 190d |  |  |  | y | AWS |
| P1EWCC-FWP01-2830 |  | Undertake Remaining Ecology & Environmental Surveys |  | 137d | 2017-12-15 | 2018-06-26 | P1EWCC-PWP01-5610 |  |  |  | 178d |  |  |  | y | AWS |
|  | 1 | **Ecological & Environmental Surveys** |  |  | 2017-04-17 | 2017-08-18 |  |  |  |  |  |  |  |  |  |  |
| P1EWCC-PWP01-3800 |  | Survey for Badgers, Bats, GCN & Reptiles |  | 25d | 2017-04-17 A | 2017-08-18 A | P1EWCC-AWP01-6240, P1EWCC-AWP01-6230 | 100% | 2017-04-03 | 2017-05-05 |  |  |  |  |  | UW1 |
|  | 2 | **Engineering Surveys** |  |  |  |  |  |  |  |  |  |  |  |  |  |  |
|  | 3 | **Historic Environment** |  |  | 2018-02-09 | 2018-11-23 |  |  |  |  |  |  |  |  |  |  |
| P1EWCC-PWP06-5280 |  | Non-Intrusive Surveys (geophysics) |  | 20d | 2018-02-09 | 2018-03-09 | P1EWCC-PWP06-5260, P1EWCC-AWP01-6240, P1EWCC-PWP05-240 |  |  |  | 105d | 0d |  |  |  | AWH |
| P1EWCC-PWP06-9750 |  | Non-Intrusive Surveys (trial trenching) |  | 30d | 2018-05-04 | 2018-06-15 | P1EWCC-PWP06-5270, P1EWCC-PWP05-240 |  |  |  | 105d | 0d |  |  |  | AWH |
| P1EWCC-PWP06-5300 |  | Intrusive Surveys |  | 40d | 2018-10-01 | 2018-11-23 | P1EWCC-PWP02-7880, P1EWCC-PWP06-5270, P1EWCC-PWP06-9760, P1EWCC-AWP01-6250 |  |  |  | 69.88d | 0d |  |  |  | AWH |
|  | 7 | **Historic Environment** |  |  | 2017-12-15 | 2019-01-11 |  |  |  |  |  |  |  |  |  |  |
| P1EWCC-PWP06-5260 |  | Production and Approval of Project Plan & LS-WSI (non-intrusive surveys) |  | 40d | 2017-12-15 | 2018-02-09 | P1EWCC-PWP05-240 |  |  |  | 105d | 0d |  |  |  | AWH |
| P1EWCC-PWP06-5270 |  | Update of Project Plans and LS-WSI and Approval (intrusive surveys) |  | 40d | 2018-03-09 | 2018-05-04 | P1EWCC-PWP06-5280 |  |  |  | 105d | 0d |  |  |  | AWH |
| P1EWCC-PWP06-9760 |  | Update of Project Plans and LS-WSI and Approval (intrusive surveys) |  | 40d | 2018-06-15 | 2018-08-10 | P1EWCC-PWP06-9750 |  |  |  | 105d | 35.12d |  |  |  | AWH |
| P1EWCC-PWP06-5290 |  | Report of Findings And Approval (Archaeological Investigation) |  | 35d | 2018-11-26 | 2019-01-11 | P1EWCC-PWP06-5300 |  |  |  | 1045d |  |  |  |  | AWH |
|  | 4 | **Ecological Mitigation Works** |  |  | 2018-03-01 | 2019-01-30 |  |  |  |  |  |  |  |  |  |  |
|  | 5 | **Translocation of Species** |  |  | 2018-08-01 | 2018-09-29 |  |  |  |  |  |  |  |  |  |  |
| P1EWCC-PWP02-7880 |  | Species Translocation to Habitat Creation (083-M1W) |  | 60d | 2018-08-01 | 2018-09-29 | P1EWCC-PWP01-3800, P1EWCC-PWP02-4230 SS+150d, P1EWCC-AWP01-6250, P1EWCC-PWP02-14610 |  |  |  | 93.75d | 1d | start on or after 2018-08-01 | HS2 - 8h x 7d Workweek (No Holidays) |  | AWE1 |
|  | 2 | **Landscape Planting - GCML Disused Railway (081-M5W)** |  |  | 2018-03-01 | 2019-01-30 |  |  |  |  |  |  |  |  |  |  |
|  | 1 | **Design** |  |  | 2018-03-01 | 2018-07-05 |  |  |  |  |  |  |  |  |  |  |
| P1EWCC-PWP02-13720 |  | Review and Vaildate HS2 design for planning |  | 80d | 2018-03-01 | 2018-06-21 | P1EWCC-PWP02-11910 SS+5d |  |  |  | -99.75d | 0d |  |  | y | AWE2 |
| P1EWCC-PWP02-13710 |  | Schedule 17 Planning Consent Approval Period |  | 56d | 2018-04-27 | 2018-06-21 | P1EWCC-PWP02-13720 FF |  |  |  | 193.75d | 161d |  | HS2 - 8h x 7d Workweek (No Holidays) | y | AWE2 |
| P1EWCC-PWP02-13700 |  | HS2 approval period of vaildated design |  | 14d | 2018-06-22 | 2018-07-05 | P1EWCC-PWP02-13720 |  |  |  | 88.88d | 0d |  | HS2 - 8h x 7d Workweek (No Holidays) | y | AWE2 |

| ID | WBS | Activity | Type | Duration | Start | Finish | Predecessors | Complete | Planned start | Planned finish | Total float | Free float | Constraint | Calendar | HS2 Filter | Fusion - WPS |
| --- | --- | --- | --- | --- | --- | --- | --- | --- | --- | --- | --- | --- | --- | --- | --- | --- |
|  | 2 | **Installation** |  |  | 2018-07-05 | 2019-01-30 |  |  |  |  |  |  |  |  |  |  |
| P1EWCC-FWP04-6160 |  | Call off of Landscape Planting | milestone | 0d | 2018-07-05 | 2018-07-05 | P1EWCC-PWP02-11910, P1EWCC-PWP02-13700 |  |  |  | 62.88d | 0d |  |  | y | AWE2 |
| P1EWCC-FWP04-6170 |  | Call off period for Landscape Planting |  | 64.88d | 2018-07-05 | 2018-10-04 | P1EWCC-FWP04-6160 |  |  |  | 62.88d | 40.12d |  |  | y | AWE2 |
| P1EWCC-FWP04-6150 |  | Advance Planting at Great Central mainline (Approx chainage 081+000 to 086+500) (2018 - 2019 season) |  | 43.25d | 2018-11-29 | 2019-01-30 | P1EWCC-FWP04-6170, P1EWCC-AWP01-6250, P1EWCC-PWP02-7880, P1EWCC-PWP02-13710, P1EWCC-PWP02-15070 |  |  |  | 22.75d |  | start on or after 2018-11-01 |  | y | AWE2 |
|  | 4 | **Translocation of Hedgerow** |  |  | 2018-11-01 | 2018-12-14 |  |  |  |  |  |  |  |  |  |  |
| P1EWCC-PWP02-7920 |  | Translocation of hedgerows |  | 43d | 2018-11-01 | 2018-12-14 | P1EWCC-PWP02-7880, P1EWCC-PWP02-11910, P1EWCC-AWP01-6250 |  |  |  | 77.62d |  | start on or after 2018-11-01 | HS2 - 8h x 7d Workweek (No Holidays) |  | AWE2 |
|  | 5 | **Noise and Vibration Works** |  |  |  |  |  |  |  |  |  |  |  |  |  |  |
|  | 6 | **SOW Completion Dates** |  |  | 2019-03-29 | 2019-09-30 |  |  |  |  |  |  |  |  |  |  |
| P1EWCC-FWP04-6180 |  | Completion of Advance Planting (2018 - 2019 season) | milestone | 0d | 2019-03-29 | 2019-03-29 | P1EWCC-FWP04-6150 |  |  |  | 0d | 991d | finish on 2019-03-29 |  | y | AWE2 |
| P1EWCC-PWP02-7890 |  | Completion of Species Translocation/ exclusion - Bats | milestone | 0d | 2019-09-30 | 2019-09-30 | P1EWCC-PWP02-7880 |  |  |  | 0d | 860d | finish on 2019-09-30 |  |  | AWE1 |
| P1EWCC-PWP02-7900 |  | Completion of Species Translocation/ exclusion - Otters | milestone | 0d | 2019-09-30 | 2019-09-30 | P1EWCC-PWP02-7880 |  |  |  | 0d | 860d | finish on 2019-09-30 |  |  | AWE1 |
| P1EWCC-PWP02-7910 |  | Completion of Species Translocation/ exclusion - Badgers | milestone | 0d | 2019-09-30 | 2019-09-30 | P1EWCC-PWP02-7880 |  |  |  | 0d | 860d | finish on 2019-09-30 |  |  | AWE1 |
| P1EWCC-PWP02-7930 |  | Completion of Translocation of Hedgerows | milestone | 0d | 2019-09-30 | 2019-09-30 | P1EWCC-PWP02-7920 |  |  |  | 0d | 860d | finish on 2019-09-30 |  |  | AWE2 |
| P1EWCC-PWP02-7940 |  | Completion of Species Translocation/ exclusion - Reptiles | milestone | 0d | 2019-09-30 | 2019-09-30 | P1EWCC-PWP02-7880 |  |  |  | 0d | 860d | finish on 2019-09-30 |  |  | AWE1 |
|  | 4 | **082-L3 - Twyford Cutting** |  |  | 2017-02-24 | 2019-09-30 |  |  |  |  |  |  |  |  |  |  |
|  | 10 | **Land Access** |  |  | 2017-04-10 | 2018-07-30 |  |  |  |  |  |  |  |  |  |  |
|  | 1 | **Survey Work** |  |  | 2017-04-10 | 2017-04-10 |  |  |  |  |  |  |  |  |  |  |
| P1EWCC-AWP01-4140 |  | Land Access Granted for Survey Work (Schedule 2) | milestone | 0d | 2017-04-10 A | 2017-04-10 A | P1EWCC-AWP01-3950 | 100% | 2017-03-22 | 2017-03-22 |  |  |  |  | y | UW1 |
|  | 2 | **Possession** |  |  | 2017-11-30 | 2018-07-30 |  |  |  |  |  |  |  |  |  |  |
|  | 1 | **Ecological Mitigation Area** |  |  | 2017-11-30 | 2017-11-30 |  |  |  |  |  |  |  |  |  |  |
| P1EWCC-AWP01-4150 |  | Land Access Possession Granted for Ecolgical Mitigation Sites (Schedule 16) 083-M1W | milestone | 0d | 2017-11-30 | 2017-11-30 |  |  |  |  | 61d | 0d | start on or after 2017-11-30 |  | y | UW1 |
|  | 2 | **082-L3 - Twyford Cutting** |  |  | 2018-07-30 | 2018-07-30 |  |  |  |  |  |  |  |  |  |  |
| P1EWCC-AWP01-4160 |  | Land Access Possession Granted for Twyford Cutting (Schedule 16) | milestone | 0d | 2018-07-30 | 2018-07-30 |  |  |  |  | 69.62d | 0d | as late as possible |  | y | AW1 |
|  | 1 | **Survey Works** |  |  | 2017-03-20 | 2018-11-21 |  |  |  |  |  |  |  |  |  |  |
| P1EWCC-AWP01-3950 |  | Planning Consent & Licensing for Survey Work |  | 2d | 2017-03-20 A | 2017-04-07 A | P1EWCC-AWP01-1230 | 100% | 2017-03-20 | 2017-03-21 |  |  |  |  |  | UW1 |
| P1EWCC-PWP01-11530 |  | Survey for Badgers, Bats, GCN & Reptiles |  | 25d | 2017-04-10 A | 2017-08-04 A | P1EWCC-UWP01-1000 | 100% | 2017-04-03 | 2017-05-05 |  |  |  |  |  | UW1 |
| P1EWCC-FWP01-2850 |  | Undertake Remaining Soil Surveys |  | 120d | 2017-12-15 | 2018-06-01 | P1EWCC-PWP01-5610 |  |  |  | 195d |  |  |  | y | AWS |
| P1EWCC-FWP01-2860 |  | Undertake Arboricultural Surveys |  | 125d | 2017-12-15 | 2018-06-08 | P1EWCC-PWP01-5610 |  |  |  | 190d |  |  |  | y | AWS |
| P1EWCC-FWP01-2870 |  | Undertake Remaining Ecology & Environmental Surveys |  | 137d | 2017-12-15 | 2018-06-26 | P1EWCC-PWP01-5610 |  |  |  | 178d |  |  |  | y | AWS |

| ID | WBS | Activity | Duration | Start | Finish | Predecessors | Complete | Remaining | Planned start | Planned finish | Total float | Free float | Expected finish | Fusion - WPS |
| --- | --- | --- | --- | --- | --- | --- | --- | --- | --- | --- | --- | --- | --- | --- |
|  | 3 | **Historic Environment** |  | 2017-07-10 | 2018-11-21 |  |  |  |  |  |  |  |  |  |
|  | 1 | **Ecological Mitigation North of Twyford Mill 1440, 1440a (083-M1W)** |  | 2017-07-10 | 2017-12-06 |  |  |  |  |  |  |  |  |  |
| P1EWCC-PWP06-1560 |  | Geophysics (ecological mitigation site) | 5d | 2017-07-10 A | 2017-09-11 A | P1EWCC-AWP01-3950, P1EWCC-AWP01-4140, P1EWCC-PWP06-1590 | 100% |  | 2017-07-10 | 2017-07-14 |  |  |  | UW1 |
| P1EWCC-PWP06-1570 |  | Intrusive Surveys (ecological mitigation site) | 5d | 2017-11-30 | 2017-12-06 | P1EWCC-AWP01-4150, P1EWCC-PWP06-1600 |  |  |  |  | 61d | 0d |  | AWH |
|  | 2 | **082-L3 - Twyford Cutting** |  | 2018-02-09 | 2018-11-21 |  |  |  |  |  |  |  |  |  |
| P1EWCC-PWP06-9770 |  | Non-Intrusive Surveys (geophysics) | 20d | 2018-02-09 | 2018-03-09 | P1EWCC-PWP06-9790, P1EWCC-PWP05-240 |  |  |  |  | 105d | 0d |  | AWH |
| P1EWCC-PWP06-9780 |  | Non-Intrusive Surveys (trial trenching) | 30d | 2018-05-04 | 2018-06-15 | P1EWCC-PWP06-9800, P1EWCC-PWP05-240 |  |  |  |  | 105d | 0d |  | AWH |
| P1EWCC-PWP06-1890 |  | Intrusive Surveys (082-L3-Twyford Cutting) | 40d | 2018-09-26 | 2018-11-21 | P1EWCC-PWP02-4280, P1EWCC-PWP06-9810, P1EWCC-AWP01-4160 |  |  |  |  | 72d | 0d |  | AWH |
|  | 9 | **Historic Environment** |  | 2017-04-17 | 2019-01-09 |  |  |  |  |  |  |  |  |  |
|  | 1 | **Ecological Mitigation North of Twyford Mill 1440, 1440a (083-M1W)** |  | 2017-04-17 | 2018-01-24 |  |  |  |  |  |  |  |  |  |
| P1EWCC-PWP06-1590 |  | Production and Approval of LS-WSI Bucks, Herts, LGA (non-intrusive surveys) | 20d | 2017-04-17 A | 2017-06-27 A | P1EWCC-UWP01-1000 | 100% |  | 2017-02-27 | 2017-03-24 |  |  |  | UW1 |
| P1EWCC-PWP06-1600 |  | Update of Project Plans and LS-WSI and Approval (intrusive surveys) | 20d | 2017-09-12 A | 2017-10-23 | P1EWCC-PWP06-1560, P1EWCC-PWP06-1580 FF |  | 25.88d | 2017-07-17 | 2017-08-11 | 88.12d | 0d | 2017-10-23 | UW1 |
| P1EWCC-PWP06-1580 |  | HS2 issue Project Plan | 1d | 2017-09-18 | 2017-09-18 |  |  |  |  |  | 113d | 24.88d |  | UW1 |
| P1EWCC-PWP06-1610 |  | Report of Findings And Approval (ecological mitigation site) | 35d | 2017-12-07 | 2018-01-24 | P1EWCC-PWP06-1570 |  |  |  |  | 1297d |  |  | AWH |
|  | 2 | **082-L3 - Twyford Cutting** |  | 2017-12-15 | 2019-01-09 |  |  |  |  |  |  |  |  |  |
| P1EWCC-PWP06-9790 |  | Production and Approval of Project Plan & LS-WSI (non-intrusive surveys) | 40d | 2017-12-15 | 2018-02-09 | P1EWCC-PWP05-240 |  |  |  |  | 105d | 0d |  | AWH |
| P1EWCC-PWP06-9800 |  | Update of Project Plans and LS-WSI and Approval (intrusive surveys) | 40d | 2018-03-09 | 2018-05-04 | P1EWCC-PWP06-9770 |  |  |  |  | 105d | 0d |  | AWH |
| P1EWCC-PWP06-9810 |  | Update of Project Plans and LS-WSI and Approval (intrusive surveys) | 40d | 2018-06-15 | 2018-08-10 | P1EWCC-PWP06-9780 |  |  |  |  | 105d | 33d |  | AWH |
| P1EWCC-PWP06-1900 |  | Report of Findings And Approval (082-L3-Twyford Cutting) | 35d | 2018-11-21 | 2019-01-09 | P1EWCC-PWP06-1890 |  |  |  |  | 1047.12d |  |  | AWH |
|  | 2 | **Ecological Mitigation Works** |  | 2017-02-24 | 2019-01-30 |  |  |  |  |  |  |  |  |  |
|  | 1 | **Design** |  | 2017-02-24 | 2017-10-06 |  |  |  |  |  |  |  |  |  |
| P1EWCC-PWP02-4250 |  | HS2 issue Prelimanry Design of Habitat Creation (083-M1W) | 1d | 2017-02-24 A | 2017-02-24 A |  | 100% |  |  |  |  |  |  | UW1 |
| P1EWCC-PWP02-4240 |  | Design of Habitat Creation (083-M1W) | 25d | 2017-03-30 A | 2017-09-15 A | P1EWCC-PWP02-4250 | 100% |  | 2017-02-27 | 2017-03-31 |  |  |  | UW1 |
| P1EWCC-AWP01-3860 |  | Planning Consent & Licensing for Habitat Creation (083-M1W) | 40d | 2017-05-26 A | 2017-10-06 | P1EWCC-PWP02-4240 SS | 63% | 14.88d | 2017-07-05 | 2017-08-29 | 104.12d | 0d | 2017-10-06 | UW1 |

| ID | WBS | Activity | Type | Duration | Start | Finish | Predecessors | Total float | Free float | Constraint | Calendar | Fusion - WPS | HS2 Filter |
| --- | --- | --- | --- | --- | --- | --- | --- | --- | --- | --- | --- | --- | --- |
|  | 3 | **Habitat Creation** |  |  | 2018-01-05 | 2018-08-29 |  |  |  |  |  |  |  |
| P1EWCC-PWP02-4220 |  | Habitat Creation (083-M1W) |  | 60d | 2018-01-05 | 2018-03-30 | P1EWCC-AWP01-3860, P1EWCC-PWP06-1570, P1EWCC-AWP01-4150, P1EWCC-PWP02-9220, P1EWCC-PWP02-4240 | 39.12d | 38.12d |  |  | AWE1 |  |
| P1EWCC-PWP02-4230 |  | Habitat Creation Maturity Period (083-M1W) |  | 182d | 2018-03-01 | 2018-08-29 | P1EWCC-PWP02-4220 SS | 1d | 0d | start on or after 2018-03-01 | HS2 - 8h x 7d Workweek (No Holidays) | AWE1 |  |
|  | 5 | **Translocation of Species** |  |  | 2018-07-29 | 2018-09-26 |  |  |  |  |  |  |  |
| P1EWCC-PWP02-4280 |  | Species Translocation to Habitat Creation (083-M1W) |  | 60d | 2018-07-29 | 2018-09-26 | P1EWCC-PWP02-4230 SS+150d, P1EWCC-AWP01-4160, P1EWCC-PWP02-14610 | 96.75d | 0d |  | HS2 - 8h x 7d Workweek (No Holidays) | AWE1 |  |
|  | 7 | **Landscape Planting - GCML Disused Railway (081-M5W)** |  |  | 2018-03-01 | 2019-01-30 |  |  |  |  |  |  |  |
|  | 1 | **Design** |  |  | 2018-03-01 | 2018-07-05 |  |  |  |  |  |  |  |
| P1EWCC-PWP02-13750 |  | Review and Vaildate HS2 design for planning |  | 80d | 2018-03-01 | 2018-06-21 | P1EWCC-PWP02-11910 SS+5d | -99.75d | 0d |  |  | AWE2 | y |
| P1EWCC-PWP02-13740 |  | Schedule 17 Planning Consent Approval Period |  | 56d | 2018-04-27 | 2018-06-21 | P1EWCC-PWP02-13750 FF | 193.75d | 161d |  | HS2 - 8h x 7d Workweek (No Holidays) | AWE2 | y |
| P1EWCC-PWP02-13730 |  | HS2 approval period of vaildated design |  | 14d | 2018-06-22 | 2018-07-05 | P1EWCC-PWP02-13750 | 88.88d | 0d |  | HS2 - 8h x 7d Workweek (No Holidays) | AWE2 | y |
|  | 2 | **Installation** |  |  | 2018-07-05 | 2019-01-30 |  |  |  |  |  |  |  |
| P1EWCC-FWP03-1260 |  | Call off of Landscape Planting | milestone | 0d | 2018-07-05 | 2018-07-05 | P1EWCC-PWP02-13730 | 62.88d | 0d |  |  | AWE2 | y |
| P1EWCC-FWP03-1270 |  | Call off period for Landscape Planting |  | 64.88d | 2018-07-05 | 2018-10-04 | P1EWCC-FWP03-1260 | 62.88d | 40.12d |  |  | AWE2 | y |
| P1EWCC-FWP03-1230 |  | Advance Planting at Great Central mainline (Approx chainage 081+000 to 086+500) (2018 - 2019 season) |  | 43.25d | 2018-11-29 | 2019-01-30 | P1EWCC-FWP03-1270, P1EWCC-AWP01-4160, P1EWCC-PWP02-4280, P1EWCC-PWP02-13740, P1EWCC-PWP02-15070 | 22.75d |  | start on or after 2018-11-01 |  | AWE2 | y |
|  | 4 | **Translocation of Hedgerow** |  |  | 2018-11-01 | 2018-12-14 |  |  |  |  |  |  |  |
| P1EWCC-PWP02-7950 |  | Translocation of hedgerows |  | 43d | 2018-11-01 | 2018-12-14 | P1EWCC-PWP02-4280, P1EWCC-PWP02-11910, P1EWCC-AWP01-4160 | 77.62d |  | start on or after 2018-11-01 | HS2 - 8h x 7d Workweek (No Holidays) | AWE2 |  |
|  | 3 | **Noise and Vibration Works** |  |  |  |  |  |  |  |  |  |  |  |
|  | 4 | **SOW Completion Dates** |  |  | 2019-03-29 | 2019-09-30 |  |  |  |  |  |  |  |
| P1EWCC-FWP04-1250 |  | Completion of Landscape Planting | milestone | 0d | 2019-03-29 | 2019-03-29 | P1EWCC-FWP03-1230 | 0d | 990d | finish on 2019-03-29 |  | AWE2 | y |
| P1EWCC-PWP02-4290 |  | Completion of Habitat Creation (083-M1W) | milestone | 0d | 2019-09-30 | 2019-09-30 | P1EWCC-PWP02-4230 | 0d | 860d | finish on 2019-09-30 |  | AWE1 |  |
| P1EWCC-PWP02-4300 |  | Completion of Species Translocation/ exclusion - Badgers | milestone | 0d | 2019-09-30 | 2019-09-30 | P1EWCC-PWP02-4280 | 0d | 860d | finish on 2019-09-30 |  | AWE1 |  |
| P1EWCC-PWP02-4310 |  | Completion of Species Translocation/ exclusion - Bats | milestone | 0d | 2019-09-30 | 2019-09-30 | P1EWCC-PWP02-4280 | 0d | 860d | finish on 2019-09-30 |  | AWE1 |  |
| P1EWCC-PWP02-4320 |  | Completion of Species Translocation/ exclusion - Great Crested Newts | milestone | 0d | 2019-09-30 | 2019-09-30 | P1EWCC-PWP02-4280 | 0d | 860d | finish on 2019-09-30 |  | AWE1 |  |
| P1EWCC-PWP02-4330 |  | Completion of Species Translocation/ exclusion - Reptiles | milestone | 0d | 2019-09-30 | 2019-09-30 | P1EWCC-PWP02-4280 | 0d | 860d | finish on 2019-09-30 |  | AWE1 |  |
| P1EWCC-PWP02-4340 |  | Completion of Translocation of Hedgerows | milestone | 0d | 2019-09-30 | 2019-09-30 | P1EWCC-PWP02-7950 | 0d | 860d | finish on 2019-09-30 |  | AWE2 |  |
| P1EWCC-PWP02-4350 |  | Completion of Species Translocation/ exclusion - Otters | milestone | 0d | 2019-09-30 | 2019-09-30 | P1EWCC-PWP02-4280 | 0d | 860d | finish on 2019-09-30 |  | AWE1 |  |

| ID | WBS | Activity | Type | Duration | Start | Finish | Predecessors | Complete | Planned start | Planned finish | Total float | Free float | Constraint | Calendar | HS2 Filter | Fusion - WPS |
| --- | --- | --- | --- | --- | --- | --- | --- | --- | --- | --- | --- | --- | --- | --- | --- | --- |
|  | 6 | **083-L2 - Godington East Embankment** |  |  | 2017-03-20 | 2019-03-29 |  |  |  |  |  |  |  |  |  |  |
|  | 10 | **Land Access** |  |  | 2017-04-03 | 2018-08-01 |  |  |  |  |  |  |  |  |  |  |
|  | 1 | **Survey Work** |  |  | 2017-04-03 | 2017-04-03 |  |  |  |  |  |  |  |  |  |  |
| P1EWCC-AWP01-6310 |  | Land Access Granted for Survey Work (Schedule 2) | milestone | 0d | 2017-04-03 A | 2017-04-03 A | P1EWCC-AWP01-6300 | 100% | 2017-03-22 | 2017-03-22 |  |  |  |  | y | AW1 |
|  | 2 | **Possession** |  |  | 2018-08-01 | 2018-08-01 |  |  |  |  |  |  |  |  |  |  |
|  | 1 | **Ecological Mitigation Area** |  |  |  |  |  |  |  |  |  |  |  |  |  |  |
|  | 2 | **083-L2 - Godington East Embankment** |  |  | 2018-08-01 | 2018-08-01 |  |  |  |  |  |  |  |  |  |  |
| P1EWCC-AWP01-6330 |  | Land Access Possession Granted for 083-L2 - Godington East Embankment (Schedule 16) | milestone | 0d | 2018-08-01 | 2018-08-01 |  |  |  |  | -2d | 0d | as late as possible |  | y | AW1 |
|  | 1 | **Survey Works** |  |  | 2017-03-20 | 2018-11-23 |  |  |  |  |  |  |  |  |  |  |
| P1EWCC-AWP01-6300 |  | Planning Consent & Licensing for Survey Work |  | 2d | 2017-03-20 A | 2017-03-31 A | P1EWCC-AWP01-1230 | 100% | 2017-03-20 | 2017-03-21 |  |  |  |  |  | AW1 |
| P1EWCC-FWP01-2900 |  | Undertake Arboricultural Surveys |  | 125d | 2017-12-15 | 2018-06-08 | P1EWCC-PWP01-5610 |  |  |  | 190d |  |  |  | y | AWS |
|  | 3 | **Historic Environment** |  |  | 2018-02-09 | 2018-11-23 |  |  |  |  |  |  |  |  |  |  |
| P1EWCC-PWP06-5370 |  | Non-Intrusive Surveys (geophyscis) |  | 20d | 2018-02-09 | 2018-03-09 | P1EWCC-PWP06-5400, P1EWCC-AWP01-6310, P1EWCC-AWP01-6300, P1EWCC-PWP05-240 |  |  |  | 105d | 0d |  |  |  | AWH |
| P1EWCC-PWP06-5380 |  | Non-Intrusive Surveys (trial trenching) |  | 30d | 2018-05-04 | 2018-06-15 | P1EWCC-PWP06-5410, P1EWCC-PWP05-240 |  |  |  | 105d | 0d |  |  |  | AWH |
| P1EWCC-PWP06-5430 |  | Intrusive Surveys 083-L2 - Godington East Embankment |  | 40d | 2018-10-01 | 2018-11-23 | P1EWCC-PWP06-5420, P1EWCC-PWP02-8070, P1EWCC-AWP01-6330 |  |  |  | 69.88d | 0d |  |  |  | AWH |
|  | 9 | **Historic Environment** |  |  | 2017-12-15 | 2019-01-11 |  |  |  |  |  |  |  |  |  |  |
| P1EWCC-PWP06-5400 |  | Production and Approval of Project Plans & LS-WSI (non-intrusive surveys) |  | 40d | 2017-12-15 | 2018-02-09 | P1EWCC-PWP05-240 |  |  |  | 105d | 0d |  |  |  | AWH |
| P1EWCC-PWP06-5410 |  | Update of Project Plans and LS-WSI and Approval (intrusive surveys) |  | 40d | 2018-03-09 | 2018-05-04 | P1EWCC-PWP06-5370 |  |  |  | 105d | 0d |  |  |  | AWH |
| P1EWCC-PWP06-5420 |  | Update of Project Plans and LS-WSI and Approval (intrusive surveys) |  | 40d | 2018-06-15 | 2018-08-10 | P1EWCC-PWP06-5380 |  |  |  | 105d | 35.12d |  |  |  | AWH |
| P1EWCC-PWP06-5440 |  | Report of Findings And Approval 083-L2 - Godington East Embankment |  | 35d | 2018-11-26 | 2019-01-11 | P1EWCC-PWP06-5430 |  |  |  | 1045d |  |  |  |  | AWH |
|  | 5 | **Ecological Mitigation Works** |  |  | 2018-03-01 | 2019-01-30 |  |  |  |  |  |  |  |  |  |  |
|  | 5 | **Translocation of Species** |  |  | 2018-08-01 | 2018-09-29 |  |  |  |  |  |  |  |  |  |  |
| P1EWCC-PWP02-8070 |  | Species Translocation to Habitat Creation (083-M1W) |  | 60d | 2018-08-01 | 2018-09-29 | P1EWCC-AWP01-6330, P1EWCC-PWP02-4230 SS+150d, P1EWCC-PWP02-14610 |  |  |  | -2d | 1d | start on or after 2018-08-01 | HS2 - 8h x 7d Workweek (No Holidays) |  | AWE1 |
|  | 7 | **Landscape Planting - GCML Disused Railway (081-M5W)** |  |  | 2018-03-01 | 2019-01-30 |  |  |  |  |  |  |  |  |  |  |
|  | 1 | **Design** |  |  | 2018-03-01 | 2018-07-05 |  |  |  |  |  |  |  |  |  |  |
| P1EWCC-PWP02-13780 |  | Review and Vaildate HS2 design for planning |  | 80d | 2018-03-01 | 2018-06-21 | P1EWCC-PWP02-11910 SS+5d |  |  |  | -99.75d | 0d |  |  | y | AWE2 |
| P1EWCC-PWP02-13770 |  | Schedule 17 Planning Consent Approval Period |  | 56d | 2018-04-27 | 2018-06-21 | P1EWCC-PWP02-13780 FF |  |  |  | 193.75d | 161d |  | HS2 - 8h x 7d Workweek (No Holidays) | y | AWE2 |
| P1EWCC-PWP02-13760 |  | HS2 approval period of vaildated design |  | 14d | 2018-06-22 | 2018-07-05 | P1EWCC-PWP02-13780 |  |  |  | 88.88d | 0d |  | HS2 - 8h x 7d Workweek (No Holidays) | y | AWE2 |

| ID | WBS | Activity | Type | Duration | Start | Finish | Predecessors | Complete | Total float | Free float | Constraint | HS2 Filter | Fusion - WPS |
| --- | --- | --- | --- | --- | --- | --- | --- | --- | --- | --- | --- | --- | --- |
|  | 2 | **Installation** |  |  | 2018-07-05 | 2019-01-30 |  |  |  |  |  |  |  |
| P1EWCC-FWP03-5920 |  | Call off of Landscape Planting | milestone | 0d | 2018-07-05 | 2018-07-05 | P1EWCC-PWP02-13760 |  | 62.88d | 0d |  | y | AWE2 |
| P1EWCC-FWP03-5930 |  | Call off period for Landscape Planting |  | 64.88d | 2018-07-05 | 2018-10-04 | P1EWCC-FWP03-5920 |  | 62.88d | 40.12d |  | y | AWE2 |
| P1EWCC-FWP03-5910 |  | Advance Planting at Great Central mainline (Approx chainage 081+000 to 086+500) (2018 - 2019 season) |  | 43.25d | 2018-11-29 | 2019-01-30 | P1EWCC-FWP03-5930, P1EWCC-AWP01-6330, P1EWCC-PWP02-8070, P1EWCC-PWP02-13770, P1EWCC-PWP02-15070 |  | 22.75d |  | start on or after 2018-11-01 | y | AWE2 |
|  | 3 | **Noise and Vibration Works** |  |  |  |  |  |  |  |  |  |  |  |
|  | 4 | **SOW Completion Dates** |  |  | 2018-10-01 | 2019-03-29 |  |  |  |  |  |  |  |
| P1EWCC-PWP02-8090 |  | Completion of Species Translocation/ exclusion - Badgers | milestone | 0d | 2018-10-01 | 2018-10-01 | P1EWCC-PWP02-8070 |  | -1d | 1120d | finish on 2018-09-28 |  | AWE1 |
| P1EWCC-PWP02-8100 |  | Completion of Species Translocation/ exclusion - Bats | milestone | 0d | 2018-10-01 | 2018-10-01 | P1EWCC-PWP02-8070 |  | -1d | 1120d | finish on 2018-09-28 |  | AWE1 |
| P1EWCC-PWP02-8110 |  | Completion of Species Translocation/ exclusion - Great Crested Newts | milestone | 0d | 2018-10-01 | 2018-10-01 | P1EWCC-PWP02-8070 |  | -1d | 1120d | finish on 2018-09-28 |  | AWE1 |
| P1EWCC-PWP02-8120 |  | Completion of Species Translocation/ exclusion - Reptiles | milestone | 0d | 2018-10-01 | 2018-10-01 | P1EWCC-PWP02-8070 |  | -1d | 1120d | finish on 2018-09-28 |  | AWE1 |
| P1EWCC-PWP02-8140 |  | Completion of Species Translocation/ exclusion - Otters | milestone | 0d | 2018-10-01 | 2018-10-01 | P1EWCC-PWP02-8070 |  | -1d | 1120d | finish on 2018-09-28 |  | AWE1 |
| P1EWCC-FWP04-6210 |  | Completion of Landscape Planting | milestone | 0d | 2019-03-29 | 2019-03-29 | P1EWCC-FWP03-5910 |  | 0d | 990d | finish on 2019-03-29 | y | AWE2 |
|  | 5 | **083-L1 - Godington East Viaduct** |  |  | 2017-03-20 | 2019-01-11 |  |  |  |  |  |  |  |
|  | 8 | **Land Access** |  |  | 2017-04-03 | 2018-08-01 |  |  |  |  |  |  |  |
|  | 1 | **Survey Work** |  |  | 2017-04-03 | 2017-04-03 |  |  |  |  |  |  |  |
| P1EWCC-AWP01-6270 |  | Land Access Granted for Survey Work (Schedule 2) | milestone | 0d | 2017-04-03 A | 2017-04-03 A |  | 100% |  |  | as late as possible | y | AW1 |
|  | 2 | **Possession** |  |  | 2018-08-01 | 2018-08-01 |  |  |  |  |  |  |  |
| P1EWCC-AWP01-6280 |  | Land Access Possession Granted for Construction (Schedule 16) | milestone | 0d | 2018-08-01 | 2018-08-01 |  |  | -2d | 0d | as late as possible | y | AW1 |
|  | 3 | **Survey Works** |  |  | 2017-03-20 | 2018-11-23 |  |  |  |  |  |  |  |
| P1EWCC-AWP01-6260 |  | Planning Consent & Licensing for Survey Work |  | 10d | 2017-03-20 A | 2017-03-31 A | P1EWCC-AWP01-1230 | 100% |  |  |  |  | AW1 |
| P1EWCC-FWP01-2940 |  | Undertake Arboricultural Surveys |  | 125d | 2017-12-15 | 2018-06-08 | P1EWCC-PWP01-5610 |  | 190d |  |  | y | AWS |
| P1EWCC-FWP01-2950 |  | Undertake Remaining Ecology & Environmental Surveys |  | 240d | 2017-12-15 | 2018-11-16 | P1EWCC-PWP01-5610 |  | 75d |  |  | y | AWS |
|  | 1 | **Ecological & Environmental Surveys** |  |  |  |  |  |  |  |  |  |  |  |
|  | 2 | **Engineering Surveys** |  |  |  |  |  |  |  |  |  |  |  |
|  | 3 | **Historic Environment** |  |  | 2018-02-09 | 2018-11-23 |  |  |  |  |  |  |  |
| P1EWCC-PWP06-5340 |  | Non-Intrusive Surveys (geophysics) |  | 20d | 2018-02-09 | 2018-03-09 | P1EWCC-AWP01-6270, P1EWCC-PWP06-5320, P1EWCC-PWP05-240 |  | 105d | 0d |  |  | AWH |
| P1EWCC-PWP06-9820 |  | Non-Intrusive Surveys (trial trenching) |  | 30d | 2018-05-04 | 2018-06-15 | P1EWCC-PWP06-5330, P1EWCC-PWP05-240 |  | 105d | 0d |  |  | AWH |
| P1EWCC-PWP06-5360 |  | Intrusive Surveys |  | 40d | 2018-10-01 | 2018-11-23 | P1EWCC-PWP06-5330, P1EWCC-PWP02-7960, P1EWCC-PWP06-9830, P1EWCC-AWP01-6280 |  | 69.88d | 0d |  |  | AWH |

| ID | WBS | Activity | Type | Duration | Start | Finish | Predecessors | Complete | Remaining | Planned start | Planned finish | Total float | Free float | Constraint | Expected finish | Calendar | Fusion - WPS | HS2 Filter |
| --- | --- | --- | --- | --- | --- | --- | --- | --- | --- | --- | --- | --- | --- | --- | --- | --- | --- | --- |
|  | 7 | **Historic Environment** |  |  | 2017-12-15 | 2019-01-11 |  |  |  |  |  |  |  |  |  |  |  |  |
| P1EWCC-PWP06-5320 |  | Production and Approval of Project Plans & LS-WSI (non-intrusive surveys) |  | 40d | 2017-12-15 | 2018-02-09 | P1EWCC-PWP05-240 |  |  |  |  | 105d | 0d |  |  |  | AWH |  |
| P1EWCC-PWP06-5330 |  | Update of Project Plans and LS-WSI and Approval (intrusive surveys) |  | 40d | 2018-03-09 | 2018-05-04 | P1EWCC-PWP06-5340 |  |  |  |  | 105d | 0d |  |  |  | AWH |  |
| P1EWCC-PWP06-9830 |  | Update of Project Plans and LS-WSI and Approval (intrusive surveys) |  | 40d | 2018-06-15 | 2018-08-10 | P1EWCC-PWP06-9820 |  |  |  |  | 105d | 35.12d |  |  |  | AWH |  |
| P1EWCC-PWP06-5350 |  | Report of Findings And Approval (Archaeological Investigation) |  | 35d | 2018-11-26 | 2019-01-11 | P1EWCC-PWP06-5360 |  |  |  |  | 1045d |  |  |  |  | AWH |  |
|  | 4 | **Ecological Mitigation Works** |  |  | 2018-08-01 | 2018-09-29 |  |  |  |  |  |  |  |  |  |  |  |  |
|  | 5 | **Translocation of Species** |  |  | 2018-08-01 | 2018-09-29 |  |  |  |  |  |  |  |  |  |  |  |  |
| P1EWCC-PWP02-7960 |  | Species Translocation to Habitat Creation (083-M1W) |  | 60d | 2018-08-01 | 2018-09-29 | P1EWCC-PWP02-4230 SS+150d, P1EWCC-AWP01-6280, P1EWCC-PWP02-14610 |  |  |  |  | -2d | 1d | start on or after 2018-08-01 |  | HS2 - 8h x 7d Workweek (No Holidays) | AWE1 |  |
|  | 5 | **Noise and Vibration Works** |  |  |  |  |  |  |  |  |  |  |  |  |  |  |  |  |
|  | 9 | **Water Resources** |  |  | 2017-06-19 | 2017-11-10 |  |  |  |  |  |  |  |  |  |  |  |  |
| P1EWCC-PWP04-2190 |  | Hydrological Modelling - Tributary of Padbury Brook |  | 195d | 2017-06-19 A | 2017-11-10 |  | 80% | 39.88d | 2017-09-28 | 2018-06-27 | 1350.12d | 0d |  | 2017-11-10 |  | UW1 | y |
|  | 1 | **Early flood compensation storage/area modelling/design** |  |  |  |  |  |  |  |  |  |  |  |  |  |  |  |  |
|  | 6 | **SOW Completion Dates** |  |  | 2018-10-01 | 2018-10-01 |  |  |  |  |  |  |  |  |  |  |  |  |
| P1EWCC-PWP02-7970 |  | Completion of Species Translocation/ exclusion - Bats | milestone | 0d | 2018-10-01 | 2018-10-01 | P1EWCC-PWP02-7960 |  |  |  |  | -1d | 1120d | finish on 2018-09-28 |  |  | AWE1 |  |
| P1EWCC-PWP02-7980 |  | Completion of Species Translocation/ exclusion - Otters | milestone | 0d | 2018-10-01 | 2018-10-01 | P1EWCC-PWP02-7960 |  |  |  |  | -1d | 1120d | finish on 2018-09-28 |  |  | AWE1 |  |
| P1EWCC-PWP02-7990 |  | Completion of Species Translocation/ exclusion - Badgers | milestone | 0d | 2018-10-01 | 2018-10-01 | P1EWCC-PWP02-7960 |  |  |  |  | -1d | 1120d | finish on 2018-09-28 |  |  | AWE1 |  |
| P1EWCC-PWP02-8020 |  | Completion of Species Translocation/ exclusion - Reptiles | milestone | 0d | 2018-10-01 | 2018-10-01 | P1EWCC-PWP02-7960 |  |  |  |  | -1d | 1120d | finish on 2018-09-28 |  |  | AWE1 |  |
|  | 9 | **084-L3 - Godington West Embankment** |  |  | 2017-03-20 | 2019-03-29 |  |  |  |  |  |  |  |  |  |  |  |  |
|  | 8 | **Land Access** |  |  | 2017-04-03 | 2018-07-30 |  |  |  |  |  |  |  |  |  |  |  |  |
|  | 1 | **Survey Work** |  |  | 2017-04-03 | 2017-04-03 |  |  |  |  |  |  |  |  |  |  |  |  |
| P1EWCC-AWP01-6390 |  | Land Access Granted for Survey Work (Schedule 2) | milestone | 0d | 2017-04-03 A | 2017-04-03 A |  | 100% |  |  |  |  |  | as late as possible |  |  | AW1 | y |
|  | 2 | **Possession** |  |  | 2018-07-30 | 2018-07-30 |  |  |  |  |  |  |  |  |  |  |  |  |
| P1EWCC-AWP01-6400 |  | Land Access Possession Granted for Construction (Schedule 16) | milestone | 0d | 2018-07-30 | 2018-07-30 |  |  |  |  |  | 0d |  | as late as possible |  |  | AW1 | y |
|  | 3 | **Survey Works** |  |  | 2017-03-20 | 2018-11-21 |  |  |  |  |  |  |  |  |  |  |  |  |
| P1EWCC-AWP01-6380 |  | Planning Consent & Licensing for Survey Work |  | 10d | 2017-03-20 A | 2017-03-31 A | P1EWCC-AWP01-1230 | 100% |  |  |  |  |  |  |  |  | AW1 |  |
| P1EWCC-FWP01-2980 |  | Undertake Arboricultural Surveys |  | 125d | 2017-12-15 | 2018-06-08 | P1EWCC-PWP01-5610 |  |  |  |  | 242d |  |  |  |  | AWS | y |
| P1EWCC-FWP01-2990 |  | Undertake Remaining Ecology & Environmental Surveys |  | 137d | 2017-12-15 | 2018-06-26 | P1EWCC-PWP01-5610 |  |  |  |  | 230d |  |  |  |  | AWS | y |

| ID | WBS | Activity | Type | Duration | Start | Finish | Predecessors | Complete | Remaining | Planned start | Planned finish | Total float | Free float | Constraint | Expected finish | Calendar | Fusion - WPS | HS2 Filter |
| --- | --- | --- | --- | --- | --- | --- | --- | --- | --- | --- | --- | --- | --- | --- | --- | --- | --- | --- |
|  | 1 | **Ecological & Environmental Surveys** |  |  | 2017-04-03 | 2017-09-22 |  |  |  |  |  |  |  |  |  |  |  |  |
| P1EWCC-PWP01-3830 |  | Survey for Badgers, Bats, GCN & Reptiles |  | 25d | 2017-04-03 A | 2017-09-22 | P1EWCC-AWP01-6390, P1EWCC-AWP01-6380 | 80% | 4.88d | 2017-04-03 | 2017-05-05 | 220.12d | 0d |  | 2017-09-22 |  | UW1 |  |
|  | 2 | **Engineering Surveys** |  |  |  |  |  |  |  |  |  |  |  |  |  |  |  |  |
|  | 3 | **Historic Environment** |  |  | 2018-02-09 | 2018-11-21 |  |  |  |  |  |  |  |  |  |  |  |  |
| P1EWCC-PWP06-5540 |  | Non-Intrusive Surveys (geophysics) |  | 20d | 2018-02-09 | 2018-03-09 | P1EWCC-AWP01-6390, P1EWCC-PWP06-5520, P1EWCC-PWP05-240 |  |  |  |  | 157d | 0d |  |  |  | AWH |  |
| P1EWCC-PWP06-9910 |  | Non-Intrusive Surveys (trial trenching) |  | 30d | 2018-05-04 | 2018-06-15 | P1EWCC-PWP06-5530, P1EWCC-PWP05-240 |  |  |  |  | 157d | 0d |  |  |  | AWH |  |
| P1EWCC-PWP06-5560 |  | Intrusive Surveys |  | 40d | 2018-09-26 | 2018-11-21 | P1EWCC-PWP06-5530, P1EWCC-PWP02-8220, P1EWCC-PWP06-9920, P1EWCC-AWP01-6400 |  |  |  |  | 124d | 0d |  |  |  | AWH |  |
|  | 7 | **Historic Environment** |  |  | 2017-12-15 | 2019-01-09 |  |  |  |  |  |  |  |  |  |  |  |  |
| P1EWCC-PWP06-5520 |  | Production and Approval of LS-WSI (non-intrusive surveys) |  | 40d | 2017-12-15 | 2018-02-09 | P1EWCC-PWP05-240 |  |  |  |  | 157d | 0d |  |  |  | AWH |  |
| P1EWCC-PWP06-5530 |  | Update of Project Plans and LS-WSI and Approval (intrusive surveys) |  | 40d | 2018-03-09 | 2018-05-04 | P1EWCC-PWP06-5540 |  |  |  |  | 157d | 0d |  |  |  | AWH |  |
| P1EWCC-PWP06-9920 |  | Update of Project Plans and LS-WSI and Approval (intrusive surveys) |  | 40d | 2018-06-15 | 2018-08-10 | P1EWCC-PWP06-9910 |  |  |  |  | 157d | 33d |  |  |  | AWH |  |
| P1EWCC-PWP06-5550 |  | Report of Findings And Approval (Archaeological Investigation) |  | 35d | 2018-11-21 | 2019-01-09 | P1EWCC-PWP06-5560 |  |  |  |  | 1047.12d |  |  |  |  | AWH |  |
|  | 4 | **Ecological Mitigation Works** |  |  | 2018-03-01 | 2019-01-30 |  |  |  |  |  |  |  |  |  |  |  |  |
|  | 5 | **Translocation of Species** |  |  | 2018-07-29 | 2018-09-26 |  |  |  |  |  |  |  |  |  |  |  |  |
| P1EWCC-PWP02-8220 |  | Species Translocation to Habitat Creation (084-M10W) |  | 60d | 2018-07-29 | 2018-09-26 | P1EWCC-PWP02-4370 SS+150d, P1EWCC-PWP01-3830, P1EWCC-AWP01-6400, P1EWCC-PWP02-14610 |  |  |  |  | 1d | 0d |  |  | HS2 - 8h x 7d Workweek (No Holidays) | AWE1 |  |
|  | 10 | **Landscape Planting - GCML Disused Railway (081-M5W)** |  |  | 2018-03-01 | 2019-01-30 |  |  |  |  |  |  |  |  |  |  |  |  |
|  | 1 | **Design** |  |  | 2018-03-01 | 2018-07-05 |  |  |  |  |  |  |  |  |  |  |  |  |
| P1EWCC-PWP02-13810 |  | Review and Vaildate HS2 design for planning |  | 80d | 2018-03-01 | 2018-06-21 | P1EWCC-PWP02-11910 SS+5d |  |  |  |  | -99.75d | 0d |  |  |  | AWE2 | y |
| P1EWCC-PWP02-13800 |  | Schedule 17 Planning Consent Approval Period |  | 56d | 2018-04-27 | 2018-06-21 | P1EWCC-PWP02-13810 FF |  |  |  |  | 220.88d | 161d |  |  | HS2 - 8h x 7d Workweek (No Holidays) | AWE2 | y |
| P1EWCC-PWP02-13790 |  | HS2 approval period of vaildated design |  | 14d | 2018-06-22 | 2018-07-05 | P1EWCC-PWP02-13810 |  |  |  |  | 116d | 0d |  |  | HS2 - 8h x 7d Workweek (No Holidays) | AWE2 | y |
|  | 2 | **Installation** |  |  | 2018-07-05 | 2019-01-30 |  |  |  |  |  |  |  |  |  |  |  |  |
| P1EWCC-FWP05-6390 |  | Call off of Landscape Planting | milestone | 0d | 2018-07-05 | 2018-07-05 | P1EWCC-PWP02-13790 |  |  |  |  | 82d | 0d |  |  |  | AWE2 | y |
| P1EWCC-FWP05-6400 |  | Call off period for Landscape Planting |  | 64.88d | 2018-07-05 | 2018-10-04 | P1EWCC-FWP05-6390 |  |  |  |  | 82d | 40.12d |  |  |  | AWE2 | y |
| P1EWCC-FWP05-6380 |  | Woodland planting along the Former GCML to enhance it has a movement corridor for bats. (2018 - 2019 season) |  | 43.25d | 2018-11-29 | 2019-01-30 | P1EWCC-FWP05-6400, P1EWCC-AWP01-6400, P1EWCC-PWP02-8220, P1EWCC-PWP02-13800, P1EWCC-PWP02-15070 |  |  |  |  | 41.88d |  | start on or after 2018-11-01 |  |  | AWE2 | y |

| ID | WBS | Activity | Type | Duration | Start | Finish | Predecessors | Complete | Total float | Free float | Constraint | Fusion - WPS | HS2 Filter |
| --- | --- | --- | --- | --- | --- | --- | --- | --- | --- | --- | --- | --- | --- |
|  | 5 | **Noise and Vibration Works** |  |  |  |  |  |  |  |  |  |  |  |
|  | 6 | **SOW Completion Dates** |  |  | 2018-09-28 | 2019-03-29 |  |  |  |  |  |  |  |
| P1EWCC-PWP02-8230 |  | Completion of Species Translocation/ exclusion - GCN | milestone | 0d | 2018-09-28 | 2018-09-28 | P1EWCC-PWP02-8220 |  | 0d | 1121d | finish on 2018-09-28 | AWE1 |  |
| P1EWCC-PWP02-8240 |  | Completion of Species Translocation/ exclusion - Otters | milestone | 0d | 2018-09-28 | 2018-09-28 | P1EWCC-PWP02-8220 |  | 0d | 1121d | finish on 2018-09-28 | AWE1 |  |
| P1EWCC-PWP02-8250 |  | Completion of Species Translocation/ exclusion - Badgers | milestone | 0d | 2018-09-28 | 2018-09-28 | P1EWCC-PWP02-8220 |  | 0d | 1121d | finish on 2018-09-28 | AWE1 |  |
| P1EWCC-PWP02-8260 |  | Completion of Species Translocation/ exclusion - Reptiles | milestone | 0d | 2018-09-28 | 2018-09-28 | P1EWCC-PWP02-8220 |  | 0d | 1121d | finish on 2018-09-28 | AWE1 |  |
| P1EWCC-PWP02-8280 |  | Completion of Species Translocation/ exclusion - Water Vole | milestone | 0d | 2018-09-28 | 2018-09-28 | P1EWCC-PWP02-8220 |  | 0d | 1121d | finish on 2018-09-28 | AWE1 |  |
| P1EWCC-FWP05-6410 |  | Completion of Advance Planting (2018 - 2019 season) | milestone | 0d | 2019-03-29 | 2019-03-29 | P1EWCC-FWP05-6380 |  | 0d | 991d | finish on 2019-03-29 | AWE2 | y |
|  | 10 | **084-L4 - Godington West Viaduct** |  |  | 2017-03-20 | 2019-03-29 |  |  |  |  |  |  |  |
|  | 8 | **Land Access** |  |  | 2017-04-03 | 2018-07-30 |  |  |  |  |  |  |  |
|  | 1 | **Survey Work** |  |  | 2017-04-03 | 2017-04-03 |  |  |  |  |  |  |  |
| P1EWCC-AWP01-6420 |  | Land Access Granted for Survey Work (Schedule 2) | milestone | 0d | 2017-04-03 A | 2017-04-03 A |  | 100% |  |  | as late as possible | AW1 | y |
|  | 2 | **Possession** |  |  | 2018-07-30 | 2018-07-30 |  |  |  |  |  |  |  |
| P1EWCC-AWP01-6430 |  | Land Access Possession Granted for Construction (Schedule 16) | milestone | 0d | 2018-07-30 | 2018-07-30 |  |  | 0d |  | as late as possible | AW1 | y |
|  | 3 | **Survey Works** |  |  | 2017-03-20 | 2018-11-21 |  |  |  |  |  |  |  |
| P1EWCC-AWP01-6410 |  | Planning Consent & Licensing for Survey Work |  | 10d | 2017-03-20 A | 2017-03-31 A | P1EWCC-AWP01-1230 | 100% |  |  |  | AW1 |  |
| P1EWCC-FWP01-3010 |  | Undertake Remaining Soil Surveys |  | 120d | 2017-12-15 | 2018-06-01 | P1EWCC-PWP01-5610 |  | 247d |  |  | AWS | y |
| P1EWCC-FWP01-3020 |  | Undertake Arboricultural Surveys |  | 125d | 2017-12-15 | 2018-06-08 | P1EWCC-PWP01-5610 |  | 242d |  |  | AWS | y |
| P1EWCC-FWP01-3030 |  | Undertake Remaining Ecology & Environmental Surveys |  | 139d | 2017-12-15 | 2018-06-28 | P1EWCC-PWP01-5610 |  | 228d |  |  | AWS | y |
|  | 1 | **Ecological & Environmental Surveys** |  |  |  |  |  |  |  |  |  |  |  |
|  | 2 | **Engineering Surveys** |  |  |  |  |  |  |  |  |  |  |  |
|  | 3 | **Historic Environment** |  |  | 2018-02-09 | 2018-11-21 |  |  |  |  |  |  |  |
| P1EWCC-PWP06-5600 |  | Non-Intrusive Surveys (geophysics) |  | 20d | 2018-02-09 | 2018-03-09 | P1EWCC-PWP06-5580, P1EWCC-AWP01-6420, P1EWCC-PWP05-240 |  | 157d | 0d |  | AWH |  |
| P1EWCC-PWP06-9930 |  | Non-Intrusive Surveys (trial trenching) |  | 30d | 2018-05-04 | 2018-06-15 | P1EWCC-PWP06-5590, P1EWCC-PWP05-240 |  | 157d | 0d |  | AWH |  |
| P1EWCC-PWP06-5620 |  | Intrusive Surveys |  | 40d | 2018-09-26 | 2018-11-21 | P1EWCC-PWP06-5590, P1EWCC-PWP02-8290, P1EWCC-PWP06-9940, P1EWCC-AWP01-6430 |  | 124d | 0d |  | AWH |  |

| ID | WBS | Activity | Type | Duration | Start | Finish | Predecessors | Total float | Free float | Constraint | Calendar | Fusion - WPS | HS2 Filter |
| --- | --- | --- | --- | --- | --- | --- | --- | --- | --- | --- | --- | --- | --- |
|  | 7 | **Historic Environment** |  |  | 2017-12-15 | 2019-01-09 |  |  |  |  |  |  |  |
| P1EWCC-PWP06-5580 |  | Production and Approval of Project Plans & LS-WSI (non-intrusive surveys) |  | 40d | 2017-12-15 | 2018-02-09 | P1EWCC-PWP05-240 | 157d | 0d |  |  | AWH |  |
| P1EWCC-PWP06-5590 |  | Update of Project Plans and LS-WSI and Approval (intrusive surveys) |  | 40d | 2018-03-09 | 2018-05-04 | P1EWCC-PWP06-5600 | 157d | 0d |  |  | AWH |  |
| P1EWCC-PWP06-9940 |  | Update of Project Plans and LS-WSI and Approval (intrusive surveys) |  | 40d | 2018-06-15 | 2018-08-10 | P1EWCC-PWP06-9930 | 157d | 33d |  |  | AWH |  |
| P1EWCC-PWP06-5610 |  | Report of Findings And Approval (Archaeological Investigation) |  | 35d | 2018-11-21 | 2019-01-09 | P1EWCC-PWP06-5620 | 1047.12d |  |  |  | AWH |  |
|  | 4 | **Ecological Mitigation Works** |  |  | 2018-03-01 | 2019-01-30 |  |  |  |  |  |  |  |
|  | 5 | **Translocation of Species** |  |  | 2018-07-29 | 2018-09-26 |  |  |  |  |  |  |  |
| P1EWCC-PWP02-8290 |  | Species Translocation to Habitat Creation (084-M10W) |  | 60d | 2018-07-29 | 2018-09-26 | P1EWCC-PWP02-4370 SS+150d, P1EWCC-AWP01-6430, P1EWCC-PWP02-14610 | 1d | 0d |  | HS2 - 8h x 7d Workweek (No Holidays) | AWE1 |  |
|  | 10 | **Landscape Planting - GCML Disused Railway (081-M5W)** |  |  | 2018-03-01 | 2019-01-30 |  |  |  |  |  |  |  |
|  | 1 | **Design** |  |  | 2018-03-01 | 2018-07-05 |  |  |  |  |  |  |  |
| P1EWCC-PWP02-13840 |  | Review and Vaildate HS2 design for planning |  | 80d | 2018-03-01 | 2018-06-21 | P1EWCC-PWP02-11910 SS+5d | -99.75d | 0d |  |  | AWE2 | y |
| P1EWCC-PWP02-13830 |  | Schedule 17 Planning Consent Approval Period |  | 56d | 2018-04-27 | 2018-06-21 | P1EWCC-PWP02-13840 FF | 220.88d | 161d |  | HS2 - 8h x 7d Workweek (No Holidays) | AWE2 | y |
| P1EWCC-PWP02-13820 |  | HS2 approval period of vaildated design |  | 14d | 2018-06-22 | 2018-07-05 | P1EWCC-PWP02-13840 | 116d | 0d |  | HS2 - 8h x 7d Workweek (No Holidays) | AWE2 | y |
|  | 2 | **Installation** |  |  | 2018-07-05 | 2019-01-30 |  |  |  |  |  |  |  |
| P1EWCC-FWP05-6460 |  | Call off of Landscape Planting | milestone | 0d | 2018-07-05 | 2018-07-05 | P1EWCC-PWP02-11910, P1EWCC-PWP02-13820 | 82d | 0d |  |  | AWE2 | y |
| P1EWCC-FWP05-6470 |  | Call off period for Landscape Planting |  | 64.88d | 2018-07-05 | 2018-10-04 | P1EWCC-FWP05-6460 | 82d | 40.12d |  |  | AWE2 | y |
| P1EWCC-FWP05-6450 |  | Early planting - to screen the hermitage & Great Central mainline (2018 - 2019 season) |  | 43.25d | 2018-11-29 | 2019-01-30 | P1EWCC-FWP05-6470, P1EWCC-AWP01-6430, P1EWCC-PWP02-8290, P1EWCC-PWP02-13830, P1EWCC-PWP02-15070 | 41.88d |  | start on or after 2018-11-01 |  | AWE2 | y |
|  | 5 | **Noise and Vibration Works** |  |  |  |  |  |  |  |  |  |  |  |
|  | 2 | **Water Resources** |  |  | 2017-12-29 | 2018-05-01 |  |  |  |  |  |  |  |
| P1EWCC-FWP05-6490 |  | Preliminary Floodplain Compensation Design- Padbury Brook |  | 87d | 2017-12-29 | 2018-05-01 | P1EWCC-UWP01-1000, P1EWCC-PWP04-1460 | 108.12d |  |  |  | AWE3 | y |
|  | 6 | **SOW Completion Dates** |  |  | 2017-09-18 | 2019-03-29 |  |  |  |  |  |  |  |
| P1EWCC-PWP01-2510 |  | Completion of Survey for Kingfishers (85+000 & 86+500) | milestone | 0d | 2017-09-18 | 2017-09-18 |  | -56d | 1390d | finish on 2017-06-30 |  | UW1 |  |
| P1EWCC-PWP01-2530 |  | Completion of Survey for GCN (84+350 & 86+000) | milestone | 0d | 2017-09-18 | 2017-09-18 |  | -56d | 1390d | finish on 2017-06-30 |  | UW1 |  |
| P1EWCC-PWP01-2780 |  | Completion of Survey for Bats (85+000, 85+500 & 86+000) | milestone | 0d | 2017-09-18 | 2017-09-18 |  | -56d | 1390d | finish on 2017-06-30 |  | UW1 |  |
| P1EWCC-PWP01-2840 |  | Completion of Survey for Reptiles (86+000) | milestone | 0d | 2017-09-18 | 2017-09-18 |  | -56d | 1390d | finish on 2017-06-30 |  | UW1 |  |
| P1EWCC-PWP01-2860 |  | Completion of Survey for Barn Owls (85+000) | milestone | 0d | 2017-09-18 | 2017-09-18 |  | -56d | 1390d | finish on 2017-06-30 |  | UW1 |  |
| P1EWCC-PWP01-2870 |  | Completion of Survey for Water Vole (85+000) | milestone | 0d | 2017-09-18 | 2017-09-18 |  | -56d | 1390d | finish on 2017-06-30 |  | UW1 |  |
| P1EWCC-PWP01-2880 |  | Completion of Survey for Badgers (84+350, 86+000 & 86+700) | milestone | 0d | 2017-09-18 | 2017-09-18 |  | -56d | 1390d | finish on 2017-06-30 |  | UW1 |  |
| P1EWCC-PWP02-8300 |  | Completion of Species Translocation/ exclusion - GCN | milestone | 0d | 2018-09-28 | 2018-09-28 | P1EWCC-PWP02-8290 | 0d | 1121d | finish on 2018-09-28 |  | AWE1 |  |
| P1EWCC-PWP02-8310 |  | Completion of Species Translocation/ exclusion - Otters | milestone | 0d | 2018-09-28 | 2018-09-28 | P1EWCC-PWP02-8290 | 0d | 1121d | finish on 2018-09-28 |  | AWE1 |  |
| P1EWCC-PWP02-8320 |  | Completion of Species Translocation/ exclusion - Badgers | milestone | 0d | 2018-09-28 | 2018-09-28 | P1EWCC-PWP02-8290 | 0d | 1121d | finish on 2018-09-28 |  | AWE1 |  |
| P1EWCC-PWP02-8330 |  | Completion of Species Translocation/ exclusion - Reptiles | milestone | 0d | 2018-09-28 | 2018-09-28 | P1EWCC-PWP02-8290 | 0d | 1121d | finish on 2018-09-28 |  | AWE1 |  |
| P1EWCC-PWP02-8340 |  | Completion of Species Translocation/ exclusion - Water Vole | milestone | 0d | 2018-09-28 | 2018-09-28 | P1EWCC-PWP02-8290 | 0d | 1121d | finish on 2018-09-28 |  | AWE1 |  |
| P1EWCC-PWP02-8350 |  | Completion of Species Translocation/ exclusion - Bats | milestone | 0d | 2018-09-28 | 2018-09-28 | P1EWCC-PWP02-8290 | 0d | 1121d | finish on 2018-09-28 |  | AWE1 |  |
| P1EWCC-FWP05-6500 |  | Completion of Preliminary Floodplain compensation design- Padbury Brook | milestone | 0d | 2018-09-28 | 2018-09-28 | P1EWCC-FWP05-6490 | 0d | 1120d | finish on 2018-09-28 |  | AWE3 | y |
| P1EWCC-FWP05-6480 |  | Completion of Advance Planting (2018 - 2019 season) | milestone | 0d | 2019-03-29 | 2019-03-29 | P1EWCC-FWP05-6450 | 0d | 991d | finish on 2019-03-29 |  | AWE2 | y |

| ID | WBS | Activity | Type | Duration | Start | Finish | Predecessors | Complete | Total float | Free float | Constraint | HS2 Filter | Fusion - WPS |
| --- | --- | --- | --- | --- | --- | --- | --- | --- | --- | --- | --- | --- | --- |
|  | 7 | **084-L1 - Chetwode Embankment** |  |  | 2017-02-24 | 2019-03-29 |  |  |  |  |  |  |  |
|  | 10 | **Land Access** |  |  | 2017-03-27 | 2018-07-30 |  |  |  |  |  |  |  |
|  | 1 | **Survey Work** |  |  | 2017-03-27 | 2017-03-27 |  |  |  |  |  |  |  |
| P1EWCC-AWP01-4180 |  | Land Access Granted for Survey Work (Schedule 2) | milestone | 0d | 2017-03-27 A | 2017-03-27 A |  | 100% |  |  | as late as possible | y | UW1 |
|  | 2 | **Possession** |  |  | 2017-05-12 | 2018-07-30 |  |  |  |  |  |  |  |
|  | 1 | **Ecological Mitigation Area** |  |  | 2017-05-12 | 2017-05-12 |  |  |  |  |  |  |  |
| P1EWCC-AWP01-4190 |  | Land Access Possession Granted for Ecolgical Mitigation Sites (Schedule 16) 084-M10W | milestone | 0d | 2017-05-12 A | 2017-05-12 A |  | 100% |  |  | start on or after 2017-05-12 | y | UW1 |
|  | 2 | **084-L1 - Chetwode Embankment** |  |  | 2018-07-30 | 2018-07-30 |  |  |  |  |  |  |  |
| P1EWCC-AWP01-4200 |  | Land Access Possession Granted for Chetwode Embankment (Schedule 16) | milestone | 0d | 2018-07-30 | 2018-07-30 |  |  | 0d |  | as late as possible | y | AW1 |
|  | 1 | **Survey Works** |  |  | 2017-03-20 | 2018-11-21 |  |  |  |  |  |  |  |
| P1EWCC-AWP01-3880 |  | Planning Consent & Licensing for Survey Work |  | 5d | 2017-03-20 A | 2017-03-24 A | P1EWCC-AWP01-1230 | 100% |  |  |  |  | UW1 |
| P1EWCC-FWP01-3060 |  | Undertake Arboricultural Surveys |  | 125d | 2017-12-15 | 2018-06-08 | P1EWCC-PWP01-5610 |  | 242d |  |  | y | AWS |
| P1EWCC-FWP01-3070 |  | Undertake Remaining Ecology & Environmental Surveys |  | 137d | 2017-12-15 | 2018-06-26 | P1EWCC-PWP01-5610 |  | 230d |  |  | y | AWS |
|  | 1 | **Ecological & Environmental Surveys** |  |  |  |  |  |  |  |  |  |  |  |
|  | 2 | **Engineering Surveys** |  |  | 2017-03-27 | 2017-04-21 |  |  |  |  |  |  |  |
| P1EWCC-PWP03-3150 |  | Survey for Engineering (Topo, GPR, Utility, Soil) |  | 20d | 2017-03-27 A | 2017-04-21 A | P1EWCC-AWP01-3880, P1EWCC-AWP01-4180 | 100% |  |  |  |  | UW1 |
|  | 6 | **Historic Environment** |  |  | 2017-09-18 | 2018-11-21 |  |  |  |  |  |  |  |
|  | 1 | **Ecological Mitigation Site North of Moat Farm 1444 (084-M10W)** |  |  | 2017-09-18 | 2017-12-22 |  |  |  |  |  |  |  |
| P1EWCC-PWP06-1640 |  | Geophysics (ecological mitigation site) |  | 1d | 2017-09-18 | 2017-09-18 | P1EWCC-AWP01-4180, P1EWCC-PWP06-1670, P1EWCC-AWP01-3880 |  | 83d | 0d | start on or after 2017-08-21 |  | UW1 |
| P1EWCC-PWP06-1650 |  | Intrusive Surveys (ecological mitigation site) |  | 5d | 2017-12-15 | 2017-12-22 | P1EWCC-PWP06-1680, P1EWCC-PWP05-240 |  | 49.12d | 0d |  |  | AWH |
|  | 2 | **084-L1 - Chetwode Embankment** |  |  | 2018-02-09 | 2018-11-21 |  |  |  |  |  |  |  |
| P1EWCC-PWP06-9870 |  | Non-Intrusive Surveys (geophysics) |  | 20d | 2018-02-09 | 2018-03-09 | P1EWCC-PWP06-9840, P1EWCC-PWP05-240 |  | 157d | 0d |  |  | AWH |
| P1EWCC-PWP06-9880 |  | Non-Intrusive Surveys (trial trenching) |  | 30d | 2018-05-04 | 2018-06-15 | P1EWCC-PWP06-9850, P1EWCC-PWP05-240 |  | 157d | 0d |  |  | AWH |
| P1EWCC-PWP06-1910 |  | Intrusive Surveys (084-L1 Chetwode Embankment) |  | 40d | 2018-09-26 | 2018-11-21 | P1EWCC-PWP02-4420, P1EWCC-PWP06-9860, P1EWCC-AWP01-4200 |  | 124d | 0d |  |  | AWH |

| ID | WBS | Activity | Duration | Start | Finish | Predecessors | Complete | Remaining | Planned start | Planned finish | Total float | Free float | Constraint | Expected finish | Calendar | Fusion - WPS | HS2 Filter |
| --- | --- | --- | --- | --- | --- | --- | --- | --- | --- | --- | --- | --- | --- | --- | --- | --- | --- |
|  | 9 | **Historic Environment** |  | 2017-04-17 | 2019-01-09 |  |  |  |  |  |  |  |  |  |  |  |  |
|  | 1 | **Ecological Mitigation Site North of Moat Farm 1444 (084-M10W)** |  | 2017-04-17 | 2018-02-09 |  |  |  |  |  |  |  |  |  |  |  |  |
| P1EWCC-PWP06-1670 |  | Production and Approval of LS-WSI Bucks, Herts, LGA (non-intrusive surveys) | 20d | 2017-04-17 A | 2017-06-27 A | P1EWCC-UWP01-1000 | 100% |  | 2017-02-27 | 2017-03-24 |  |  |  |  |  | UW1 |  |
| P1EWCC-PWP06-1660 |  | HS2 issue Project Plan | 1d | 2017-09-18 | 2017-09-18 |  |  |  |  |  | 113d | 30d |  |  |  | UW1 |  |
| P1EWCC-PWP06-1680 |  | Update of Project Plans and LS-WSI and Approval (intrusive surveys) | 30d | 2017-09-19 | 2017-10-30 | P1EWCC-PWP06-1640, P1EWCC-PWP06-1660 FF |  |  |  |  | 83d | 33.88d |  |  |  | UW1 |  |
| P1EWCC-PWP06-1690 |  | Report of Findings And Approval (ecological mitigation site) | 35d | 2017-12-22 | 2018-02-09 | P1EWCC-PWP06-1650 |  |  |  |  | 1285.12d |  |  |  |  | AWH |  |
|  | 2 | **084-L1 - Chetwode Embankment** |  | 2017-12-15 | 2019-01-09 |  |  |  |  |  |  |  |  |  |  |  |  |
| P1EWCC-PWP06-9840 |  | Production and Approval of Project Plans & LS-WSI (non-intrusive surveys) | 40d | 2017-12-15 | 2018-02-09 | P1EWCC-PWP05-240 |  |  |  |  | 157d | 0d |  |  |  | AWH |  |
| P1EWCC-PWP06-9850 |  | Update of Project Plans and LS-WSI and Approval (intrusive surveys) | 40d | 2018-03-09 | 2018-05-04 | P1EWCC-PWP06-9870 |  |  |  |  | 157d | 0d |  |  |  | AWH |  |
| P1EWCC-PWP06-9860 |  | Update of Project Plans and LS-WSI and Approval (intrusive surveys) | 40d | 2018-06-15 | 2018-08-10 | P1EWCC-PWP06-9880 |  |  |  |  | 157d | 33d |  |  |  | AWH |  |
| P1EWCC-PWP06-1920 |  | Report of Findings And Approval (084-L1 Chetwode Embankment) | 35d | 2018-11-21 | 2019-01-09 | P1EWCC-PWP06-1910 |  |  |  |  | 1047.12d |  |  |  |  | AWH |  |
|  | 2 | **Ecological Mitigation Works** |  | 2017-02-24 | 2019-01-30 |  |  |  |  |  |  |  |  |  |  |  |  |
|  | 1 | **Design** |  | 2017-02-24 | 2017-10-06 |  |  |  |  |  |  |  |  |  |  |  |  |
| P1EWCC-PWP02-4390 |  | HS2 issue Prelimanry Design of Habitat Creation (084-M10W) | 1d | 2017-02-24 A | 2017-02-24 A |  | 100% |  |  |  |  |  |  |  |  | UW1 |  |
| P1EWCC-PWP02-4380 |  | Design of Habitat Creation (084-M10W) | 25d | 2017-03-30 A | 2017-09-15 A | P1EWCC-PWP02-4390, P1EWCC-PWP03-3150 FF | 100% |  | 2017-02-27 | 2017-03-31 |  |  |  |  |  | UW1 |  |
| P1EWCC-AWP01-3870 |  | Planning Consent & Licensing for Habitat Creation (084-M10W) | 40d | 2017-05-26 A | 2017-10-06 | P1EWCC-PWP02-4380 SS | 63% | 14.88d | 2017-07-05 | 2017-08-29 | 104.12d | 0d |  | 2017-10-06 |  | UW1 |  |
|  | 3 | **Habitat Creation** |  | 2018-01-05 | 2018-08-29 |  |  |  |  |  |  |  |  |  |  |  |  |
| P1EWCC-PWP02-4360 |  | Habitat Creation (084-M10W) | 60d | 2018-01-05 | 2018-03-30 | P1EWCC-AWP01-3870, P1EWCC-PWP06-1650, P1EWCC-PWP02-9220, P1EWCC-AWP01-4190, P1EWCC-PWP02-4380 |  |  |  |  | 39.12d | 38.12d |  |  |  | AWE1 |  |
| P1EWCC-PWP02-4370 |  | Habitat Creation Maturity Period (084-M10W) | 182d | 2018-03-01 | 2018-08-29 | P1EWCC-PWP02-4360 SS |  |  |  |  | 1d | 0d | start on or after 2018-03-01 |  | HS2 - 8h x 7d Workweek (No Holidays) | AWE1 |  |
|  | 5 | **Translocation of Species** |  | 2018-07-29 | 2018-09-26 |  |  |  |  |  |  |  |  |  |  |  |  |
| P1EWCC-PWP02-4420 |  | Species Translocation to Habitat Creation (084-M10W) | 60d | 2018-07-29 | 2018-09-26 | P1EWCC-AWP01-4200, P1EWCC-PWP02-4370 SS+150d, P1EWCC-PWP02-14610 |  |  |  |  | 1d | 0d |  |  | HS2 - 8h x 7d Workweek (No Holidays) | AWE1 |  |
|  | 7 | **Landscape Planting - GCML Disused Railway (081-M5W)** |  | 2018-03-01 | 2019-01-30 |  |  |  |  |  |  |  |  |  |  |  |  |
|  | 1 | **Design** |  | 2018-03-01 | 2018-07-05 |  |  |  |  |  |  |  |  |  |  |  |  |
| P1EWCC-PWP02-13870 |  | Review and Vaildate HS2 design for planning | 80d | 2018-03-01 | 2018-06-21 | P1EWCC-PWP02-11910 SS+5d |  |  |  |  | -99.75d | 0d |  |  |  | AWE2 | y |
| P1EWCC-PWP02-13860 |  | Schedule 17 Planning Consent Approval Period | 56d | 2018-04-27 | 2018-06-21 | P1EWCC-PWP02-13870 FF |  |  |  |  | 221.88d | 161d |  |  | HS2 - 8h x 7d Workweek (No Holidays) | AWE2 | y |
| P1EWCC-PWP02-13850 |  | HS2 approval period of vaildated design | 14d | 2018-06-22 | 2018-07-05 | P1EWCC-PWP02-13870 |  |  |  |  | 117d | 0d |  |  | HS2 - 8h x 7d Workweek (No Holidays) | AWE2 | y |

| ID | WBS | Activity | Type | Duration | Start | Finish | Predecessors | Complete | Planned start | Planned finish | Total float | Free float | Constraint | HS2 Filter | Fusion - WPS |
| --- | --- | --- | --- | --- | --- | --- | --- | --- | --- | --- | --- | --- | --- | --- | --- |
|  | 2 | **Installation** |  |  | 2018-07-05 | 2019-01-30 |  |  |  |  |  |  |  |  |  |
| P1EWCC-FWP03-1280 |  | Call off of Landscape Planting | milestone | 0d | 2018-07-05 | 2018-07-05 | P1EWCC-PWP02-13850 |  |  |  | 83d | 0d |  | y | AWE2 |
| P1EWCC-FWP03-1290 |  | Call off period for Landscape Planting |  | 64.88d | 2018-07-05 | 2018-10-04 | P1EWCC-FWP03-1280 |  |  |  | 83d | 40.12d |  | y | AWE2 |
| P1EWCC-FWP03-1500 |  | Advance Planting at Great Central mainline (Approx chainage 081+000 to 086+500) (2018 - 2019 season) |  | 43.25d | 2018-11-29 | 2019-01-30 | P1EWCC-FWP03-1290, P1EWCC-AWP01-4200, P1EWCC-PWP02-4420, P1EWCC-PWP02-13860, P1EWCC-PWP02-15070 |  |  |  | 42.88d |  | start on or after 2018-11-01 | y | AWE2 |
|  | 8 | **Water Resources** |  |  | 2017-12-29 | 2018-05-01 |  |  |  |  |  |  |  |  |  |
| P1EWCC-FWP05-1260 |  | Preliminary Floodplain Compensation Design- Padbury Brook |  | 87d | 2017-12-29 | 2018-05-01 | P1EWCC-UWP01-1000, P1EWCC-PWP04-1460 |  |  |  | 108.12d |  |  | y | AWE3 |
|  | 3 | **Noise and Vibration Works** |  |  |  |  |  |  |  |  |  |  |  |  |  |
|  | 4 | **SOW Completion Dates** |  |  | 2018-09-28 | 2019-03-29 |  |  |  |  |  |  |  |  |  |
| P1EWCC-PWP02-4430 |  | Completion of Habitat Creation (084-M10W) | milestone | 0d | 2018-09-28 | 2018-09-28 | P1EWCC-PWP02-4370 |  |  |  | 0d | 1121d | finish on 2018-09-28 |  | AWE1 |
| P1EWCC-PWP02-4440 |  | Completion of Species Translocation/ exclusion - Badgers | milestone | 0d | 2018-09-28 | 2018-09-28 | P1EWCC-PWP02-4420 |  |  |  | 0d | 1121d | finish on 2018-09-28 |  | AWE1 |
| P1EWCC-PWP02-4450 |  | Completion of Species Translocation/ exclusion - Bats | milestone | 0d | 2018-09-28 | 2018-09-28 | P1EWCC-PWP02-4420 |  |  |  | 0d | 1121d | finish on 2018-09-28 |  | AWE1 |
| P1EWCC-PWP02-4460 |  | Completion of Species Translocation/ exclusion - Great Crested Newts | milestone | 0d | 2018-09-28 | 2018-09-28 | P1EWCC-PWP02-4420 |  |  |  | 0d | 1121d | finish on 2018-09-28 |  | AWE1 |
| P1EWCC-PWP02-4470 |  | Completion of Species Translocation/ exclusion - Reptiles | milestone | 0d | 2018-09-28 | 2018-09-28 | P1EWCC-PWP02-4420 |  |  |  | 0d | 1121d | finish on 2018-09-28 |  | AWE1 |
| P1EWCC-PWP02-4490 |  | Completion of Species Translocation/ exclusion - Otters | milestone | 0d | 2018-09-28 | 2018-09-28 | P1EWCC-PWP02-4420 |  |  |  | 0d | 1121d | finish on 2018-09-28 |  | AWE1 |
| P1EWCC-PWP02-4500 |  | Completion of Species Translocation/ exclusion - Water Vole | milestone | 0d | 2018-09-28 | 2018-09-28 | P1EWCC-PWP02-4420 |  |  |  | 0d | 1121d | finish on 2018-09-28 |  | AWE1 |
| P1EWCC-FWP05-1270 |  | Completion of Preliminary Floodplain compensation design- Padbury Brook | milestone | 0d | 2018-09-28 | 2018-09-28 | P1EWCC-FWP05-1260 |  |  |  | 0d | 1120d | finish on 2018-09-28 | y | AWE3 |
| P1EWCC-FWP03-1510 |  | Completion of Landscape Planting | milestone | 0d | 2019-03-29 | 2019-03-29 | P1EWCC-FWP03-1500 |  |  |  | 0d | 990d | finish on 2019-03-29 | y | AWE2 |
|  | 8 | **084-L2 - Chetwode Cutting** |  |  | 2017-03-20 | 2019-03-29 |  |  |  |  |  |  |  |  |  |
|  | 8 | **Land Access** |  |  | 2017-03-20 | 2018-07-30 |  |  |  |  |  |  |  |  |  |
|  | 1 | **Survey Work** |  |  | 2017-03-20 | 2017-03-20 |  |  |  |  |  |  |  |  |  |
| P1EWCC-AWP01-6350 |  | Land Access Granted for Survey Work (Schedule 2) | milestone | 0d | 2017-03-20 A | 2017-03-20 A |  | 100% | 2017-04-03 | 2017-04-03 |  |  | as late as possible | y | AW1 |
|  | 2 | **Possession** |  |  | 2018-07-30 | 2018-07-30 |  |  |  |  |  |  |  |  |  |
| P1EWCC-AWP01-6360 |  | Land Access Possession Granted for Construction (Schedule 16) | milestone | 0d | 2018-07-30 | 2018-07-30 |  |  |  |  | 0d |  | as late as possible | y | AW1 |
|  | 3 | **Survey Works** |  |  | 2017-03-20 | 2018-11-21 |  |  |  |  |  |  |  |  |  |
| P1EWCC-AWP01-6340 |  | Planning Consent & Licensing for Survey Work |  | 10d | 2017-03-20 A | 2017-03-20 A | P1EWCC-AWP01-1230 | 100% | 2017-03-20 | 2017-03-31 |  |  |  |  | AW1 |
| P1EWCC-FWP01-3090 |  | Undertake Remaining Soil Surveys |  | 120d | 2017-12-15 | 2018-06-01 | P1EWCC-PWP01-5610 |  |  |  | 247d |  |  | y | AWS |
| P1EWCC-FWP01-3100 |  | Undertake Arboricultural Surveys |  | 125d | 2017-12-15 | 2018-06-08 | P1EWCC-PWP01-5610 |  |  |  | 242d |  |  | y | AWS |
| P1EWCC-FWP01-3110 |  | Undertake Remaining Ecology & Environmental Surveys |  | 139d | 2017-12-15 | 2018-06-28 | P1EWCC-PWP01-5610 |  |  |  | 228d |  |  | y | AWS |
| P1EWCC-AWP01-6370 |  | Planning Consent & Licensing for Demoliton Survey Work |  | 64.88d | 2018-01-29 | 2018-04-27 | P1EWCC-AWP01-1230 |  |  |  | -174.88d | 0d | as late as possible |  | AW1 |

| ID | WBS | Activity | Type | Duration | Start | Finish | Predecessors | Complete | Remaining | Planned start | Planned finish | Total float | Free float | Constraint | Expected finish | Calendar | Fusion - WPS | HS2 Filter |
| --- | --- | --- | --- | --- | --- | --- | --- | --- | --- | --- | --- | --- | --- | --- | --- | --- | --- | --- |
|  | 1 | **Ecological & Environmental Surveys** |  |  | 2017-03-20 | 2017-10-06 |  |  |  |  |  |  |  |  |  |  |  |  |
| P1EWCC-PWP01-3820 |  | Survey for Badgers, Bats, GCN & Reptiles |  | 25d | 2017-03-20 A | 2017-10-06 | P1EWCC-AWP01-6340, P1EWCC-AWP01-6350 | 40% | 14.88d | 2017-04-03 | 2017-05-05 | 210.12d | 0d |  | 2017-10-06 |  | UW1 |  |
|  | 2 | **Engineering Surveys** |  |  |  |  |  |  |  |  |  |  |  |  |  |  |  |  |
|  | 3 | **Historic Environment** |  |  | 2018-02-09 | 2018-11-21 |  |  |  |  |  |  |  |  |  |  |  |  |
| P1EWCC-PWP06-5480 |  | Non-Intrusive Surveys (geophysics) |  | 20d | 2018-02-09 | 2018-03-09 | P1EWCC-PWP06-5460, P1EWCC-AWP01-6350, P1EWCC-PWP05-240 |  |  |  |  | 157d | 0d |  |  |  | AWH |  |
| P1EWCC-PWP06-9890 |  | Non-Intrusive Surveys (trial trenching) |  | 30d | 2018-05-04 | 2018-06-15 | P1EWCC-PWP06-5470, P1EWCC-PWP05-240 |  |  |  |  | 157d | 0d |  |  |  | AWH |  |
| P1EWCC-PWP06-5500 |  | Intrusive Surveys |  | 40d | 2018-09-26 | 2018-11-21 | P1EWCC-PWP06-5470, P1EWCC-PWP02-8150, P1EWCC-PWP06-9900, P1EWCC-AWP01-6360 |  |  |  |  | 124d | 0d |  |  |  | AWH |  |
|  | 4 | **Demolition Surveys** |  |  | 2018-04-27 | 2018-05-11 |  |  |  |  |  |  |  |  |  |  |  |  |
| P1EWCC-FWP05-6260 |  | Demolition survey's for ????? |  | 10d | 2018-04-27 | 2018-05-11 | P1EWCC-PWP01-5610, P1EWCC-AWP01-6370, P1EWCC-FWP05-6240 |  |  |  |  | -174.88d | 0d |  |  |  | AWS |  |
|  | 7 | **Historic Environment** |  |  | 2017-12-15 | 2019-01-09 |  |  |  |  |  |  |  |  |  |  |  |  |
| P1EWCC-PWP06-5460 |  | Production and Approval of Project Plans & LS-WSI (non-intrusive surveys) |  | 40d | 2017-12-15 | 2018-02-09 | P1EWCC-PWP05-240 |  |  |  |  | 157d | 0d |  |  |  | AWH |  |
| P1EWCC-PWP06-5470 |  | Update of Project Plans and LS-WSI and Approval (intrusive surveys) |  | 40d | 2018-03-09 | 2018-05-04 | P1EWCC-PWP06-5480 |  |  |  |  | 157d | 0d |  |  |  | AWH |  |
| P1EWCC-PWP06-9900 |  | Update of Project Plans and LS-WSI and Approval (intrusive surveys) |  | 40d | 2018-06-15 | 2018-08-10 | P1EWCC-PWP06-9890 |  |  |  |  | 157d | 33d |  |  |  | AWH |  |
| P1EWCC-PWP06-5490 |  | Report of Findings And Approval (Archaeological Investigation) |  | 35d | 2018-11-21 | 2019-01-09 | P1EWCC-PWP06-5500 |  |  |  |  | 1047.12d |  |  |  |  | AWH |  |
|  | 4 | **Ecological Mitigation Works** |  |  | 2018-03-01 | 2019-01-30 |  |  |  |  |  |  |  |  |  |  |  |  |
|  | 5 | **Translocation of Species** |  |  | 2018-07-29 | 2018-09-26 |  |  |  |  |  |  |  |  |  |  |  |  |
| P1EWCC-PWP02-8150 |  | Species Translocation to Habitat Creation (084-M10W) |  | 60d | 2018-07-29 | 2018-09-26 | P1EWCC-AWP01-6360, P1EWCC-PWP02-4370 SS+150d, P1EWCC-PWP01-3820, P1EWCC-PWP02-14610 |  |  |  |  | 1d | 0d |  |  | HS2 - 8h x 7d Workweek (No Holidays) | AWE1 |  |
|  | 10 | **Landscape Planting - GCML Disused Railway (081-M5W)** |  |  | 2018-03-01 | 2019-01-30 |  |  |  |  |  |  |  |  |  |  |  |  |
|  | 1 | **Design** |  |  | 2018-03-01 | 2018-07-05 |  |  |  |  |  |  |  |  |  |  |  |  |
| P1EWCC-PWP02-13900 |  | Review and Vaildate HS2 design for planning |  | 80d | 2018-03-01 | 2018-06-21 | P1EWCC-PWP02-11910 SS+5d |  |  |  |  | -99.75d | 0d |  |  |  | AWE2 | y |
| P1EWCC-PWP02-13890 |  | Schedule 17 Planning Consent Approval Period |  | 56d | 2018-04-27 | 2018-06-21 | P1EWCC-PWP02-13900 FF |  |  |  |  | 220.88d | 161d |  |  | HS2 - 8h x 7d Workweek (No Holidays) | AWE2 | y |
| P1EWCC-PWP02-13880 |  | HS2 approval period of vaildated design |  | 14d | 2018-06-22 | 2018-07-05 | P1EWCC-PWP02-13900 |  |  |  |  | 116d | 0d |  |  | HS2 - 8h x 7d Workweek (No Holidays) | AWE2 | y |
|  | 2 | **Installation** |  |  | 2018-07-05 | 2019-01-30 |  |  |  |  |  |  |  |  |  |  |  |  |
| P1EWCC-FWP05-6290 |  | Call off of Landscape Planting | milestone | 0d | 2018-07-05 | 2018-07-05 | P1EWCC-PWP02-11910, P1EWCC-PWP02-13880 |  |  |  |  | 82d | 0d |  |  |  | AWE2 | y |
| P1EWCC-FWP05-6300 |  | Call off period for Landscape Planting |  | 64.88d | 2018-07-05 | 2018-10-04 | P1EWCC-FWP05-6290 |  |  |  |  | 82d | 40.12d |  |  |  | AWE2 | y |
| P1EWCC-FWP05-6280 |  | Advance Planting at Great Central mainline (Approx chainage 081+000 to 086+500) (2018 - 2019 season) |  | 43.25d | 2018-11-29 | 2019-01-30 | P1EWCC-FWP05-6300, P1EWCC-PWP02-8150, P1EWCC-PWP02-13890, P1EWCC-PWP02-15070 |  |  |  |  | 41.88d |  | start on or after 2018-11-01 |  |  | AWE2 | y |

| ID | WBS | Activity | Type | Duration | Start | Finish | Predecessors | Complete | Planned start | Planned finish | Total float | Free float | Constraint | Calendar | Fusion - WPS | HS2 Filter |
| --- | --- | --- | --- | --- | --- | --- | --- | --- | --- | --- | --- | --- | --- | --- | --- | --- |
|  | 4 | **Translocation of Hedgerow** |  |  | 2018-11-01 | 2018-12-14 |  |  |  |  |  |  |  |  |  |  |
| P1EWCC-PWP02-8200 |  | Translocation of hedgerows (2017-208 season) |  | 43d | 2018-11-01 | 2018-12-14 | P1EWCC-PWP02-11910, P1EWCC-AWP01-6360 |  |  |  | -77.38d | 0d | start on or after 2018-11-01 | HS2 - 8h x 7d Workweek (No Holidays) | AWE2 |  |
|  | 5 | **Noise and Vibration Works** |  |  |  |  |  |  |  |  |  |  |  |  |  |  |
|  | 9 | **Demolition** |  |  | 2017-12-15 | 2018-06-01 |  |  |  |  |  |  |  |  |  |  |
| P1EWCC-FWP05-6240 |  | Prepare Investigation Plans for Scoping and Planning Demolitions inc Approval - ????? |  | 95d | 2017-12-15 | 2018-04-27 | P1EWCC-PWP01-5610 |  |  |  | -170d | 0d | as late as possible |  | AWS |  |
| P1EWCC-FWP05-6250 |  | Report on Demoliton Surveys and Approval - ????? |  | 15d | 2018-05-11 | 2018-06-01 | P1EWCC-PWP01-5610, P1EWCC-FWP05-6260 |  |  |  | -174.88d | 0d |  |  | AWS |  |
|  | 6 | **SOW Completion Dates** |  |  | 2018-06-01 | 2019-03-29 |  |  |  |  |  |  |  |  |  |  |
| P1EWCC-FWP05-6270 |  | Completion of Demolition survey's - ???? | milestone | 0d | 2018-06-01 | 2018-06-01 | P1EWCC-FWP05-6250 |  |  |  | -174.88d | 1205.12d | finish on 2017-09-29 |  | AWS |  |
| P1EWCC-PWP02-8160 |  | Completion of Species Translocation/ exclusion - Bats | milestone | 0d | 2018-09-28 | 2018-09-28 | P1EWCC-PWP02-8150 |  |  |  | 0d | 1121d | finish on 2018-09-28 |  | AWE1 |  |
| P1EWCC-PWP02-8170 |  | Completion of Species Translocation/ exclusion - Otters | milestone | 0d | 2018-09-28 | 2018-09-28 | P1EWCC-PWP02-8150 |  |  |  | 0d | 1121d | finish on 2018-09-28 |  | AWE1 |  |
| P1EWCC-PWP02-8180 |  | Completion of Species Translocation/ exclusion - Badgers | milestone | 0d | 2018-09-28 | 2018-09-28 | P1EWCC-PWP02-8150 |  |  |  | 0d | 1121d | finish on 2018-09-28 |  | AWE1 |  |
| P1EWCC-PWP02-8190 |  | Completion of Species Translocation/ exclusion - Reptiles | milestone | 0d | 2018-09-28 | 2018-09-28 | P1EWCC-PWP02-8150 |  |  |  | 0d | 1121d | finish on 2018-09-28 |  | AWE1 |  |
| P1EWCC-PWP02-8210 |  | Completion of Translocation of hedgerows | milestone | 0d | 2018-12-14 | 2018-12-14 | P1EWCC-PWP02-8200 |  |  |  | -55.38d | 1065.62d | finish on 2018-09-28 |  | AWE2 |  |
| P1EWCC-FWP05-6310 |  | Completion of Advance Planting (2018 - 2019 season) | milestone | 0d | 2019-03-29 | 2019-03-29 | P1EWCC-FWP05-6280 |  |  |  | 0d | 991d | finish on 2019-03-29 |  | AWE2 | y |
|  | C243 | **Barton To Mixbury (Ch. 86850 To Ch. 91300)** |  |  | 2017-03-20 | 2019-09-30 |  |  |  |  |  |  |  |  |  |  |
|  | 2 | **086-L1 - Barton Hartshorn Embankment** |  |  | 2017-03-20 | 2019-09-30 |  |  |  |  |  |  |  |  |  |  |
|  | 8 | **Land Access** |  |  | 2017-03-20 | 2018-07-26 |  |  |  |  |  |  |  |  |  |  |
|  | 1 | **Survey Work** |  |  | 2017-03-20 | 2017-03-20 |  |  |  |  |  |  |  |  |  |  |
| P1EWCC-AWP01-6450 |  | Land Access Granted for Survey Work (Schedule 2) | milestone | 0d | 2017-03-20 A | 2017-03-20 A |  | 100% | 2017-04-03 | 2017-04-03 |  |  | as late as possible |  | AW1 | y |
|  | 2 | **Possession** |  |  | 2018-07-26 | 2018-07-26 |  |  |  |  |  |  |  |  |  |  |
| P1EWCC-AWP01-6460 |  | Land Access Possession Granted for Construction (Schedule 16) | milestone | 0d | 2018-07-26 | 2018-07-26 |  |  |  |  | 90.75d | 0d | as late as possible |  | AW1 | y |
|  | 3 | **Survey Works** |  |  | 2017-03-20 | 2018-11-16 |  |  |  |  |  |  |  |  |  |  |
| P1EWCC-AWP01-6440 |  | Planning Consent & Licensing for Survey Work |  | 10d | 2017-03-20 A | 2017-03-20 A | P1EWCC-AWP01-1230 | 100% | 2017-03-20 | 2017-03-31 |  |  |  |  | AW1 |  |
| P1EWCC-FWP01-3130 |  | Undertake Remaining Soil Surveys |  | 120d | 2017-12-15 | 2018-06-01 | P1EWCC-PWP01-5610 |  |  |  | 247d |  |  |  | AWS | y |
| P1EWCC-FWP01-3140 |  | Undertake Arboricultural Surveys |  | 125d | 2017-12-15 | 2018-06-08 | P1EWCC-PWP01-5610 |  |  |  | 242d |  |  |  | AWS | y |
| P1EWCC-FWP01-3150 |  | Undertake Remaining Ecology & Environmental Surveys |  | 139d | 2017-12-15 | 2018-06-28 | P1EWCC-PWP01-5610 |  |  |  | 228d |  |  |  | AWS | y |

| ID | WBS | Activity | Type | Duration | Start | Finish | Predecessors | Complete | Planned start | Planned finish | Total float | Free float | Constraint | Calendar | Fusion - WPS | HS2 Filter |
| --- | --- | --- | --- | --- | --- | --- | --- | --- | --- | --- | --- | --- | --- | --- | --- | --- |
|  | 1 | **Ecological & Environmental Surveys** |  |  | 2017-03-20 | 2017-07-14 |  |  |  |  |  |  |  |  |  |  |
| P1EWCC-PWP01-3920 |  | Survey for Badgers, Bats, GCN & Reptiles |  | 25d | 2017-03-20 A | 2017-07-14 A | P1EWCC-AWP01-6440, P1EWCC-AWP01-6450 | 100% | 2017-04-03 | 2017-05-05 |  |  |  |  | UW1 |  |
|  | 2 | **Engineering Surveys** |  |  |  |  |  |  |  |  |  |  |  |  |  |  |
|  | 3 | **Historic Environment** |  |  | 2018-02-09 | 2018-11-16 |  |  |  |  |  |  |  |  |  |  |
| P1EWCC-PWP06-5660 |  | Non-Intrusive Surveys (geophysics) |  | 20d | 2018-02-09 | 2018-03-09 | P1EWCC-AWP01-6450, P1EWCC-PWP06-5640, P1EWCC-PWP05-240 |  |  |  | 157d | 0d |  |  | AWH |  |
| P1EWCC-PWP06-9950 |  | Non-Intrusive Surveys (trial trenching) |  | 30d | 2018-05-04 | 2018-06-15 | P1EWCC-PWP06-5650, P1EWCC-PWP05-240 |  |  |  | 157d | 0d |  |  | AWH |  |
| P1EWCC-PWP06-5680 |  | Intrusive Surveys |  | 40d | 2018-09-24 | 2018-11-16 | P1EWCC-PWP02-8360, P1EWCC-PWP06-5650, P1EWCC-PWP06-9960, P1EWCC-AWP01-6460 |  |  |  | 126.88d | 0d |  |  | AWH |  |
|  | 7 | **Historic Environment** |  |  | 2017-12-15 | 2019-01-04 |  |  |  |  |  |  |  |  |  |  |
| P1EWCC-PWP06-5640 |  | Production and Approval of Project Plans & LS-WSI (non-intrusive surveys) |  | 40d | 2017-12-15 | 2018-02-09 | P1EWCC-PWP05-240 |  |  |  | 157d | 0d |  |  | AWH |  |
| P1EWCC-PWP06-5650 |  | Update of Project Plans and LS-WSI and Approval (intrusive surveys) |  | 40d | 2018-03-09 | 2018-05-04 | P1EWCC-PWP06-5660 |  |  |  | 157d | 0d |  |  | AWH |  |
| P1EWCC-PWP06-9960 |  | Update of Project Plans and LS-WSI and Approval (intrusive surveys) |  | 40d | 2018-06-15 | 2018-08-10 | P1EWCC-PWP06-9950 |  |  |  | 157d | 30.12d |  |  | AWH |  |
| P1EWCC-PWP06-5670 |  | Report of Findings And Approval (Archaeological Investigation) |  | 35d | 2018-11-19 | 2019-01-04 | P1EWCC-PWP06-5680 |  |  |  | 1050d |  |  |  | AWH |  |
|  | 4 | **Ecological Mitigation Works** |  |  | 2018-03-01 | 2019-01-30 |  |  |  |  |  |  |  |  |  |  |
|  | 5 | **Translocation of Species** |  |  | 2018-07-26 | 2018-09-23 |  |  |  |  |  |  |  |  |  |  |
| P1EWCC-PWP02-8360 |  | Species Translocation to Habitat Creation (Oaks Farm) |  | 60d | 2018-07-26 | 2018-09-23 | P1EWCC-PWP01-3920, P1EWCC-AWP01-6460, P1EWCC-PWP02-12520 SS+60d, P1EWCC-PWP02-14610 |  |  |  | 126.88d | 0d |  | HS2 - 8h x 7d Workweek (No Holidays) | AWE1 |  |
|  | 15 | **Woodland Habitat Creation Site - Barton Hartshorn Railway (087-M5E)** |  |  | 2018-03-01 | 2019-01-30 |  |  |  |  |  |  |  |  |  |  |
|  | 1 | **Design** |  |  | 2018-03-01 | 2018-07-05 |  |  |  |  |  |  |  |  |  |  |
| P1EWCC-PWP02-13930 |  | Review and Vaildate HS2 design for planning |  | 80d | 2018-03-01 | 2018-06-21 | P1EWCC-PWP02-11910 SS+5d |  |  |  | -99.75d | 0d |  |  | AWE2 | y |
| P1EWCC-PWP02-13920 |  | Schedule 17 Planning Consent Approval Period |  | 56d | 2018-04-27 | 2018-06-21 | P1EWCC-PWP02-13930 FF |  |  |  | 265.75d | 161d |  | HS2 - 8h x 7d Workweek (No Holidays) | AWE2 | y |
| P1EWCC-PWP02-13910 |  | HS2 approval period of vaildated design |  | 14d | 2018-06-22 | 2018-07-05 | P1EWCC-PWP02-13930 |  |  |  | 160.88d | 0d |  | HS2 - 8h x 7d Workweek (No Holidays) | AWE2 | y |
|  | 2 | **Installation** |  |  | 2018-07-05 | 2019-01-30 |  |  |  |  |  |  |  |  |  |  |
| P1EWCC-PWP02-6520 |  | Call off of Create Habitat - Woodland Habitat Creation | milestone | 0d | 2018-07-05 | 2018-07-05 | P1EWCC-PWP02-13910 |  |  |  | 114.88d | 0d |  |  | AWE2 | y |
| P1EWCC-PWP02-9000 |  | Call off period for Create Habitat - Woodland Habitat Creation |  | 64.88d | 2018-07-05 | 2018-10-04 | P1EWCC-PWP02-6520 |  |  |  | 114.88d | 40.12d |  |  | AWE2 | y |
| P1EWCC-PWP02-9010 |  | Woodland Habitat Creation. Woodland Habitat Creation: Barton Hartshorn Railway Wood LWS (087-M5E) |  | 43.25d | 2018-11-29 | 2019-01-30 | P1EWCC-PWP02-9000, P1EWCC-AWP01-6460, P1EWCC-PWP02-8360, P1EWCC-PWP02-13920, P1EWCC-PWP02-15070 |  |  |  | 74.75d |  | start on or after 2018-11-01 |  | AWE2 | y |

| ID | WBS | Activity | Type | Duration | Start | Finish | Predecessors | Complete | Planned start | Planned finish | Total float | Free float | Constraint | Calendar | HS2 Filter | Fusion - WPS |
| --- | --- | --- | --- | --- | --- | --- | --- | --- | --- | --- | --- | --- | --- | --- | --- | --- |
|  | 5 | **Noise and Vibration Works** |  |  |  |  |  |  |  |  |  |  |  |  |  |  |
|  | 10 | **Landscape Planting** |  |  | 2018-03-01 | 2019-01-30 |  |  |  |  |  |  |  |  |  |  |
|  | 1 | **Design** |  |  | 2018-03-01 | 2018-07-19 |  |  |  |  |  |  |  |  |  |  |
| P1EWCC-PWP02-14830 |  | Develop Scheme Design |  | 40d | 2018-03-01 | 2018-04-26 | P1EWCC-PWP02-11910 SS+5d |  |  |  | -109.75d | 0d |  |  | y | AWE2 |
| P1EWCC-PWP02-14860 |  | Develop Detailed Design |  | 50d | 2018-04-26 | 2018-07-05 | P1EWCC-PWP02-14830 |  |  |  | -109.75d | 0d |  |  | y | AWE2 |
| P1EWCC-PWP02-14850 |  | Schedule 17 Planning Consent Approval Period |  | 56d | 2018-04-27 | 2018-06-21 | P1EWCC-PWP02-14830 |  |  |  | 220.88d | 161d |  | HS2 - 8h x 7d Workweek (No Holidays) | y | AWE2 |
| P1EWCC-PWP02-14840 |  | HS2 approval period of vaildated design |  | 14d | 2018-07-06 | 2018-07-19 | P1EWCC-PWP02-14860 |  |  |  | 102d | 42d |  | HS2 - 8h x 7d Workweek (No Holidays) | y | AWE2 |
|  | 2 | **Installation** |  |  | 2018-08-31 | 2019-01-30 |  |  |  |  |  |  |  |  |  |  |
| P1EWCC-FWP05-6540 |  | Call off of Landscape Planting | milestone | 0d | 2018-08-31 | 2018-08-31 | P1EWCC-PWP02-11910, P1EWCC-PWP02-14840 |  |  |  | 41.88d | 0d | as late as possible |  | y | AWE2 |
| P1EWCC-FWP05-6550 |  | Call off period for Landscape Planting |  | 64.88d | 2018-08-31 | 2018-11-29 | P1EWCC-FWP05-6540 |  |  |  | 41.88d | 0d | as late as possible |  | y | AWE2 |
| P1EWCC-FWP05-6530 |  | Advance Planting (2018 - 2019 season) (not in AWE2) |  | 43.25d | 2018-11-29 | 2019-01-30 | P1EWCC-FWP05-6550, P1EWCC-AWP01-6460, P1EWCC-PWP02-8360, P1EWCC-PWP02-14850, P1EWCC-PWP02-15070 |  |  |  | 41.88d |  | start on or after 2018-11-01 |  | y | AWE2 |
|  | 2 | **Water Resources** |  |  | 2017-12-29 | 2018-05-01 |  |  |  |  |  |  |  |  |  |  |
| P1EWCC-FWP05-6780 |  | Preliminary Floodplain Compensation Design- Padbury Brook |  | 87d | 2017-12-29 | 2018-05-01 | P1EWCC-PWP04-1460 |  |  |  | 270d |  |  |  | y | AWE3 |
|  | 6 | **SOW Completion Dates** |  |  | 2017-09-18 | 2019-09-30 |  |  |  |  |  |  |  |  |  |  |
| P1EWCC-PWP01-2490 |  | Completion of Survey for GCN (87+000) | milestone | 0d | 2017-09-18 | 2017-09-18 | P1EWCC-PWP01-3920 |  |  |  | -56d | 1390d | finish on 2017-06-30 |  |  | UW1 |
| P1EWCC-PWP01-2770 |  | Completion of Survey for Bats (87+000) | milestone | 0d | 2017-09-18 | 2017-09-18 | P1EWCC-PWP01-3920 |  |  |  | -56d | 1390d | finish on 2017-06-30 |  |  | UW1 |
| P1EWCC-PWP01-2830 |  | Completion of Survey for Reptiles (87+000) | milestone | 0d | 2017-09-18 | 2017-09-18 | P1EWCC-PWP01-3920 |  |  |  | -56d | 1390d | finish on 2017-06-30 |  |  | UW1 |
| P1EWCC-FWP05-6560 |  | Completion of Advance Planting (2018 - 2019 season) | milestone | 0d | 2019-03-29 | 2019-03-29 | P1EWCC-FWP05-6530 |  |  |  | 0d | 991d | finish on 2019-03-29 |  | y | AWE2 |
| P1EWCC-PWP02-8390 |  | Completion of Species Translocation/ exclusion - Badgers | milestone | 0d | 2019-09-30 | 2019-09-30 | P1EWCC-PWP02-8360 |  |  |  | 0d | 860d | finish on 2019-09-30 |  |  | AWE1 |
| P1EWCC-PWP02-8400 |  | Completion of Species Translocation/ exclusion - Reptiles | milestone | 0d | 2019-09-30 | 2019-09-30 | P1EWCC-PWP02-8360 |  |  |  | 0d | 860d | finish on 2019-09-30 |  |  | AWE1 |
| P1EWCC-PWP02-8420 |  | Completion of Species Translocation/ exclusion - Bats | milestone | 0d | 2019-09-30 | 2019-09-30 | P1EWCC-PWP02-8360 |  |  |  | 0d | 860d | finish on 2019-09-30 |  |  | AWE1 |
| P1EWCC-PWP02-9020 |  | Woodland Habitat Creation. Woodland Habitat Creation: Barton Hartshorn Railway Wood LWS | milestone | 0d | 2019-09-30 | 2019-09-30 | P1EWCC-PWP02-9010 |  |  |  | 0d | 860d | finish on 2019-09-30 |  | y | AWE2 |
|  | 3 | **087-L2 - Barton Mixbury Cutting** |  |  | 2017-03-20 | 2019-09-30 |  |  |  |  |  |  |  |  |  |  |
|  | 7 | **Land Access** |  |  | 2017-03-27 | 2018-07-26 |  |  |  |  |  |  |  |  |  |  |
|  | 1 | **Survey Work** |  |  | 2017-03-27 | 2017-03-27 |  |  |  |  |  |  |  |  |  |  |
| P1EWCC-AWP01-4710 |  | Land Access Granted for Survey Work (Schedule 2) | milestone | 0d | 2017-03-27 A | 2017-03-27 A |  | 100% | 2017-03-20 | 2017-03-20 |  |  | as late as possible |  | y | UW1 |

| ID | WBS | Activity | Type | Duration | Start | Finish | Predecessors | Complete | Remaining | Planned start | Planned finish | Total float | Free float | Constraint | Expected finish | HS2 Filter | Fusion - WPS |
| --- | --- | --- | --- | --- | --- | --- | --- | --- | --- | --- | --- | --- | --- | --- | --- | --- | --- |
|  | 2 | **Possession** |  |  | 2017-11-29 | 2018-07-26 |  |  |  |  |  |  |  |  |  |  |  |
|  | 1 | **Ecological Mitigation Area** |  |  | 2017-11-29 | 2017-11-29 |  |  |  |  |  |  |  |  |  |  |  |
| P1EWCC-AWP01-8340 |  | Land Access Possession Granted for Ecolgical Mitigation Site (Schedule 16) Oaks Farm | milestone | 0d | 2017-11-29 | 2017-11-29 |  |  |  |  |  | 218d | 27.88d | start on or after 2017-11-29 |  | y | UW1 |
|  | 2 | **087-L2 - Barton Mixbury Cutting** |  |  | 2018-07-26 | 2018-07-26 |  |  |  |  |  |  |  |  |  |  |  |
| P1EWCC-AWP01-4730 |  | Land Access Possession Granted for Construction of 087-L2 - Barton Mixbury Cutting(Schedule 16) | milestone | 0d | 2018-07-26 | 2018-07-26 |  |  |  |  |  | 127d | 0d | as late as possible |  | y | AW1 |
|  | 10 | **Survey Works** |  |  | 2017-03-20 | 2018-11-16 |  |  |  |  |  |  |  |  |  |  |  |
| P1EWCC-AWP01-4700 |  | Planning Consent & Licensing for Survey Work |  | 0d | 2017-03-20 A | 2017-03-24 A | P1EWCC-AWP01-1230 | 100% |  | 2017-03-20 | 2017-03-20 |  |  |  |  |  | AW1 |
| P1EWCC-FWP01-3170 |  | Undertake Remaining Soil Surveys |  | 120d | 2017-12-15 | 2018-06-01 | P1EWCC-PWP01-5610 |  |  |  |  | 247d |  |  |  | y | AWS |
| P1EWCC-FWP01-3180 |  | Undertake Arboricultural Surveys |  | 125d | 2017-12-15 | 2018-06-08 | P1EWCC-PWP01-5610 |  |  |  |  | 242d |  |  |  | y | AWS |
| P1EWCC-FWP01-3190 |  | Undertake Remaining Ecology & Environmental Surveys |  | 139d | 2017-12-15 | 2018-06-28 | P1EWCC-PWP01-5610 |  |  |  |  | 228d |  |  |  | y | AWS |
| P1EWCC-AWP01-6850 |  | Planning Consent & Licensing for Demoliton Survey Work |  | 64.88d | 2018-01-15 | 2018-04-13 | P1EWCC-AWP01-1230 |  |  |  |  | -99.94d | 0d | as late as possible |  |  | AW1 |
|  | 1 | **Ecological & Environmental Surveys** |  |  | 2017-03-27 | 2017-11-03 |  |  |  |  |  |  |  |  |  |  |  |
| P1EWCC-PWP01-3210 |  | Survey for Badgers, Bats, GCN & Reptiles |  | 25d | 2017-03-27 A | 2017-11-03 | P1EWCC-AWP01-4710, P1EWCC-AWP01-4700 |  | 34.88d | 2017-03-20 | 2017-04-21 | -90.88d | 0d |  | 2017-11-03 |  | UW1 |
|  | 2 | **Engineering Surveys** |  |  | 2017-04-06 | 2017-05-09 |  |  |  |  |  |  |  |  |  |  |  |
| P1EWCC-PWP03-3280 |  | Survey for Engineering (Topo, GPR, Utility, Soil) |  | 15d | 2017-04-06 A | 2017-05-09 A | P1EWCC-AWP01-4700, P1EWCC-AWP01-4710 | 100% |  | 2017-03-20 | 2017-04-07 |  |  |  |  |  | UW1 |
|  | 3 | **Historic Environment Surveys** |  |  | 2017-09-04 | 2018-11-16 |  |  |  |  |  |  |  |  |  |  |  |
|  | 1 | **Ecological Mitigation Oaks Farm CR01744** |  |  | 2017-09-04 | 2017-12-22 |  |  |  |  |  |  |  |  |  |  |  |
| P1EWCC-PWP06-2500 |  | Geophysics (ecological mitigation site) |  | 5d | 2017-09-04 A | 2017-09-08 A | P1EWCC-AWP01-4710, P1EWCC-AWP01-4700, P1EWCC-PWP06-2490 | 100% |  | 2017-08-09 | 2017-08-15 |  |  |  |  |  | UW1 |
| P1EWCC-PWP06-2520 |  | Intrusive Surveys (ecological mitigation site) |  | 5d | 2017-12-15 | 2017-12-22 | P1EWCC-PWP06-2510, P1EWCC-PWP05-240 |  |  |  |  | 200.12d | 0d |  |  |  | AWH |
|  | 2 | **087-L2 - Barton Mixbury Cutting** |  |  | 2018-02-09 | 2018-11-16 |  |  |  |  |  |  |  |  |  |  |  |
| P1EWCC-PWP06-10000 |  | Non-Intrusive Surveys (geophysics) |  | 20d | 2018-02-09 | 2018-03-09 | P1EWCC-PWP06-9970, P1EWCC-PWP05-240 |  |  |  |  | 157d | 0d |  |  |  | AWH |
| P1EWCC-PWP06-10010 |  | Non-Intrusive Surveys (trial trenching) |  | 30d | 2018-05-04 | 2018-06-15 | P1EWCC-PWP06-9980, P1EWCC-PWP05-240 |  |  |  |  | 157d | 0d |  |  |  | AWH |
| P1EWCC-PWP06-2540 |  | Intrusive Surveys (087-L2 - Barton Mixbury Cutting) |  | 40d | 2018-09-24 | 2018-11-16 | P1EWCC-PWP02-5690, P1EWCC-PWP06-9990, P1EWCC-AWP01-4730 |  |  |  |  | 126.88d | 0d |  |  |  | AWH |
|  | 4 | **Demolition Surveys** |  |  | 2018-04-13 | 2018-05-11 |  |  |  |  |  |  |  |  |  |  |  |
| P1EWCC-PWP17-6780 |  | Demolition survey's for ????? |  | 10d | 2018-04-27 | 2018-05-11 | P1EWCC-PWP01-5610, P1EWCC-AWP01-6850, P1EWCC-PWP17-6760 |  |  |  |  | -109.94d | 0d |  |  |  | AWS |

| ID | WBS | Activity | Duration | Start | Finish | Predecessors | Complete | Remaining | Planned start | Planned finish | Total float | Free float | Constraint | Expected finish | Calendar | Fusion - WPS |
| --- | --- | --- | --- | --- | --- | --- | --- | --- | --- | --- | --- | --- | --- | --- | --- | --- |
|  | 5 | **Structural Surveys** |  | 2018-04-13 | 2018-05-04 |  |  |  |  |  |  |  |  |  |  |  |
| P1EWCC-FWP04-6490 |  | Structural Survey for Dismantled railway U/B at Mixbury, Fatherbed Lane & O/B assessment at Newton Purcell, A4421 | 15d | 2018-04-13 | 2018-05-04 | P1EWCC-AWP01-6850, P1EWCC-PWP01-5610, P1EWCC-FWP04-6470 |  |  |  |  | 146d | 0d |  |  |  | AWS |
|  | 6 | **Historic Environment** |  | 2017-04-17 | 2019-01-04 |  |  |  |  |  |  |  |  |  |  |  |
|  | 1 | **Ecological Mitigation Oaks Farm CR01744** |  | 2017-04-17 | 2018-02-09 |  |  |  |  |  |  |  |  |  |  |  |
| P1EWCC-PWP06-2490 |  | Production and Approval of LS-WSI Northants & Oxon (non-intrusive surveys) Code 2 | 20d | 2017-04-17 A | 2017-06-27 A | P1EWCC-UWP01-1000 | 100% |  | 2017-03-20 | 2017-04-14 |  |  |  |  |  | UW1 |
| P1EWCC-PWP06-2510 |  | Update of Project Plans and LS-WSI and Approval (intrusive surveys) | 20d | 2017-09-11 A | 2017-10-20 | P1EWCC-PWP06-2500, P1EWCC-PWP06-3480 FF |  | 24.88d | 2017-09-18 | 2017-10-13 | 240.12d | 0d |  | 2017-10-20 |  | UW1 |
| P1EWCC-PWP06-3480 |  | HS2 issue Project Plan | 1d | 2017-09-18 | 2017-09-18 |  |  |  |  |  | 264d | 23.88d |  |  |  | UW1 |
| P1EWCC-PWP06-2530 |  | Report of Findings And Approval (ecological mitigation site) | 35d | 2017-12-22 | 2018-02-09 | P1EWCC-PWP06-2520 |  |  |  |  | 1285.12d |  |  |  |  | AWH |
|  | 2 | **087-L2 - Barton Mixbury Cutting** |  | 2017-12-15 | 2019-01-04 |  |  |  |  |  |  |  |  |  |  |  |
| P1EWCC-PWP06-9970 |  | Production and Approval of Project Plans & LS-WSI (non-intrusive surveys) | 40d | 2017-12-15 | 2018-02-09 | P1EWCC-PWP05-240 |  |  |  |  | 157d | 0d |  |  |  | AWH |
| P1EWCC-PWP06-9980 |  | Update of Project Plans and LS-WSI and Approval (intrusive surveys) | 40d | 2018-03-09 | 2018-05-04 | P1EWCC-PWP06-10000 |  |  |  |  | 157d | 0d |  |  |  | AWH |
| P1EWCC-PWP06-9990 |  | Update of Project Plans and LS-WSI and Approval (intrusive surveys) | 40d | 2018-06-15 | 2018-08-10 | P1EWCC-PWP06-10010 |  |  |  |  | 157d | 30.12d |  |  |  | AWH |
| P1EWCC-PWP06-2550 |  | Report of Findings And Approval (087-L2 - Barton Mixbury Cutting) | 35d | 2018-11-19 | 2019-01-04 | P1EWCC-PWP06-2540 |  |  |  |  | 1050d |  |  |  |  | AWH |
|  | 11 | **Ecological Mitigation Works** |  | 2017-04-19 | 2018-09-23 |  |  |  |  |  |  |  |  |  |  |  |
|  | 1 | **Design** |  | 2017-04-19 | 2017-11-28 |  |  |  |  |  |  |  |  |  |  |  |
|  | 1 | **088-M2W** |  | 2017-04-19 | 2017-10-25 |  |  |  |  |  |  |  |  |  |  |  |
| P1EWCC-PWP02-5660 |  | Design of Habitat Creation (088-M2W) (deleted PMI9) | 25d | 2017-04-19 A | 2017-10-25 | P1EWCC-PWP03-3280 FF |  | 27.88d | 2017-04-10 | 2017-05-12 | 1362.12d | 0d |  | 2017-10-25 |  | UW1 |
|  | 2 | **089-M1W** |  | 2017-04-19 | 2017-10-25 |  |  |  |  |  |  |  |  |  |  |  |
| P1EWCC-PWP02-12530 |  | Design of Habitat Creation (089-M1W) (deleted PMI9) | 25d | 2017-04-19 A | 2017-10-25 | P1EWCC-PWP03-3280 FF |  | 27.88d | 2017-04-10 | 2017-05-12 | 1362.12d | 0d |  | 2017-10-25 |  | UW1 |
|  | 3 | **Oaks Farm** |  | 2017-04-19 | 2017-11-28 |  |  |  |  |  |  |  |  |  |  |  |
| P1EWCC-PWP02-12540 |  | Design of Habitat Creation (Oaks Farm) | 25d | 2017-04-19 A | 2017-10-06 | P1EWCC-PWP03-3280 FF | 40% | 14.88d | 2017-04-10 | 2017-05-12 | 218.12d | 0d |  | 2017-10-06 |  | UW1 |
| P1EWCC-AWP01-8360 |  | Full TCPA Planning Consent & Licensing for Habitat Creation (Oaks Farm) | 89d | 2017-07-05 A | 2017-11-28 | P1EWCC-PWP02-12540 SS | 42% | 51.88d | 2017-07-05 | 2017-11-06 | 218.12d | 0d |  | 2017-11-28 |  | UW1 |
|  | 2 | **Species Removal from Habitat Area** |  |  |  |  |  |  |  |  |  |  |  |  |  |  |
|  | 1 | **088-M2W** |  |  |  |  |  |  |  |  |  |  |  |  |  |  |
|  | 2 | **089-M1W** |  |  |  |  |  |  |  |  |  |  |  |  |  |  |
|  | 3 | **Habitat Creation** |  | 2018-01-05 | 2018-08-29 |  |  |  |  |  |  |  |  |  |  |  |
|  | 1 | **088-M2W** |  |  |  |  |  |  |  |  |  |  |  |  |  |  |
|  | 2 | **089-M1W** |  |  |  |  |  |  |  |  |  |  |  |  |  |  |
|  | 3 | **Oaks Farm** |  | 2018-01-05 | 2018-08-29 |  |  |  |  |  |  |  |  |  |  |  |
| P1EWCC-PWP02-12510 |  | Habitat Creation (Oaks Farm) | 20d | 2018-01-05 | 2018-02-02 | P1EWCC-AWP01-8340, P1EWCC-AWP01-8360, P1EWCC-PWP02-9220, P1EWCC-PWP06-2520, P1EWCC-PWP02-12540 |  |  |  |  | 190.12d | 38.12d |  |  |  | AWE1 |
| P1EWCC-PWP02-12520 |  | Habitat Creation Maturity Period (Oaks Farm) | 182d | 2018-03-01 | 2018-08-29 | P1EWCC-PWP02-12510 SS |  |  |  |  | 213.88d | 87d | start on or after 2018-03-01 |  | HS2 - 8h x 7d Workweek (No Holidays) | AWE1 |

| ID | WBS | Activity | Type | Duration | Start | Finish | Predecessors | Complete | Planned start | Planned finish | Total float | Free float | Constraint | Calendar | Fusion - WPS | HS2 Filter |
| --- | --- | --- | --- | --- | --- | --- | --- | --- | --- | --- | --- | --- | --- | --- | --- | --- |
|  | 5 | **Translocation of Species** |  |  | 2018-07-26 | 2018-09-23 |  |  |  |  |  |  |  |  |  |  |
| P1EWCC-PWP02-5690 |  | Species Translocation to Habitat Creation (Oaks Farm) |  | 60d | 2018-07-26 | 2018-09-23 | P1EWCC-AWP01-4730, P1EWCC-PWP02-12520 SS+60d, P1EWCC-PWP02-14610 |  |  |  | 177d | 0d |  | HS2 - 8h x 7d Workweek (No Holidays) | AWE1 |  |
|  | 5 | **Demolition** |  |  | 2017-12-15 | 2018-06-01 |  |  |  |  |  |  |  |  |  |  |
| P1EWCC-PWP17-6760 |  | Prepare Investigation Plans for Scoping and Planning Demolitions inc Approval for ???? |  | 95d | 2017-12-15 | 2018-04-27 | P1EWCC-PWP01-5610 |  |  |  | -105d | 0d | as late as possible |  | AWS |  |
| P1EWCC-PWP17-6770 |  | Report on Demoliton Surveys and Approval for ???? |  | 15d | 2018-05-11 | 2018-06-01 | P1EWCC-PWP01-5610, P1EWCC-PWP17-6780 |  |  |  | -109.94d | 0d |  |  | AWS |  |
|  | 8 | **Structural Work** |  |  | 2017-12-15 | 2018-06-08 |  |  |  |  |  |  |  |  |  |  |
| P1EWCC-FWP04-6470 |  | Prepare Investigation Plans Dismantled railway U/B at Mixbury, Fatherbed Lane & O/B assessment at Newton Purcell, A4421 |  | 85d | 2017-12-15 | 2018-04-13 | P1EWCC-PWP01-5610 |  |  |  | 151d | 0d | as late as possible |  | AWS |  |
| P1EWCC-FWP04-6480 |  | Report on Dismantled railway U/B at Mixbury, Fatherbed Lane & O/B assessment at Newton Purcell, A4421 |  | 25d | 2018-05-04 | 2018-06-08 | P1EWCC-FWP04-6490, P1EWCC-PWP01-5610 |  |  |  | 146d |  |  |  | AWS |  |
|  | 12 | **Water Resources** |  |  |  |  |  |  |  |  |  |  |  |  |  |  |
|  | 4 | **Noise and Vibration Works** |  |  |  |  |  |  |  |  |  |  |  |  |  |  |
|  | 1 | **SOW Completion Dates** |  |  | 2017-11-03 | 2019-09-30 |  |  |  |  |  |  |  |  |  |  |
| P1EWCC-PWP01-2950 |  | Completion of Survey for GCN (88+500) | milestone | 0d | 2017-11-03 | 2017-11-03 | P1EWCC-PWP01-3210 |  |  |  | -90.88d | 1355.12d | finish on 2017-06-30 |  | UW1 |  |
| P1EWCC-PWP01-2960 |  | Completion of Survey for Badgers (90+500 & 91+000) | milestone | 0d | 2017-11-03 | 2017-11-03 | P1EWCC-PWP01-3210 |  |  |  | -90.88d | 1355.12d | finish on 2017-06-30 |  | UW1 |  |
| P1EWCC-PWP17-6790 |  | Report on Demoliton Surveys and Approval | milestone | 0d | 2018-06-01 | 2018-06-01 | P1EWCC-PWP17-6770 |  |  |  | -109.94d | 1205.12d | finish on 2017-12-29 |  | UW1 |  |
| P1EWCC-FWP04-6500 |  | Completion of Report on Dismantled railway U/B at Mixbury, Fatherbed Lane & O/B assessment at Newton Purcell, A4421 | milestone | 0d | 2018-12-31 | 2018-12-31 | P1EWCC-FWP04-6480 |  |  |  | 0d | 1054.12d | finish on 2018-12-31 |  | AWS |  |
| P1EWCC-PWP02-5700 |  | Completion of Species Translocation/ exclusion - Great Crested Newts | milestone | 0d | 2019-09-30 | 2019-09-30 | P1EWCC-PWP02-5690 |  |  |  | 0d | 860d | finish on 2019-09-30 |  | AWE1 |  |
| P1EWCC-PWP02-5710 |  | Completion of Species Translocation/ exclusion - Reptiles | milestone | 0d | 2019-09-30 | 2019-09-30 | P1EWCC-PWP02-5690 |  |  |  | 0d | 860d | finish on 2019-09-30 |  | AWE1 |  |
| P1EWCC-PWP02-5720 |  | Completion of Species Translocation/ exclusion - Bats | milestone | 0d | 2019-09-30 | 2019-09-30 | P1EWCC-PWP02-5690 |  |  |  | 0d | 860d | finish on 2019-09-30 |  | AWE1 |  |
| P1EWCC-PWP02-5730 |  | Completion of Species Translocation/ exclusion - Badgers | milestone | 0d | 2019-09-30 | 2019-09-30 | P1EWCC-PWP02-5690 |  |  |  | 0d | 860d | finish on 2019-09-30 |  | AWE1 |  |
| P1EWCC-PWP02-5740 |  | Completion of Species Translocation/ exclusion - Otters | milestone | 0d | 2019-09-30 | 2019-09-30 | P1EWCC-PWP02-5690 |  |  |  | 0d | 860d | finish on 2019-09-30 |  | AWE1 |  |
|  | C244 | **Westbury to Turweston (Ch. 91300 To Ch. 95340)** |  |  | 2017-03-20 | 2019-09-30 |  |  |  |  |  |  |  |  |  |  |
|  | 2 | **091-L1 - Mixbury Embankment** |  |  | 2017-03-20 | 2019-09-30 |  |  |  |  |  |  |  |  |  |  |
|  | 8 | **Land Access** |  |  | 2017-04-17 | 2018-07-26 |  |  |  |  |  |  |  |  |  |  |
|  | 1 | **Survey Work** |  |  | 2017-04-17 | 2017-04-17 |  |  |  |  |  |  |  |  |  |  |
| P1EWCC-AWP01-6480 |  | Land Access Granted for Survey Work (Schedule 2) | milestone | 0d | 2017-04-17 A | 2017-04-17 A |  | 100% | 2017-04-03 | 2017-04-03 |  |  | as late as possible |  | AW1 | y |

| ID | WBS | Activity | Type | Duration | Start | Finish | Predecessors | Complete | Planned start | Planned finish | Total float | Free float | Constraint | Calendar | HS2 Filter | Fusion - WPS |
| --- | --- | --- | --- | --- | --- | --- | --- | --- | --- | --- | --- | --- | --- | --- | --- | --- |
|  | 2 | **Possession** |  |  | 2018-07-26 | 2018-07-26 |  |  |  |  |  |  |  |  |  |  |
| P1EWCC-AWP01-6490 |  | Land Access Possession Granted for Construction (Schedule 16) | milestone | 0d | 2018-07-26 | 2018-07-26 |  |  |  |  | 221.75d | 0d | as late as possible |  | y | AW1 |
|  | 3 | **Survey Works** |  |  | 2017-03-20 | 2019-06-28 |  |  |  |  |  |  |  |  |  |  |
| P1EWCC-AWP01-6470 |  | Planning Consent & Licensing for Survey Work |  | 10d | 2017-03-20 A | 2017-04-14 A | P1EWCC-AWP01-1230 | 100% | 2017-03-20 | 2017-03-31 |  |  |  |  |  | AW1 |
| P1EWCC-AWP01-6500 |  | Planning Consent & Licensing for Demoliton Survey Work at Mulberry Park Hill and multiple associated outbuildings |  | 64.88d | 2017-09-18 | 2017-12-15 | P1EWCC-AWP01-1230 |  |  |  | 180.12d | 95d |  |  |  | AW1 |
| P1EWCC-FWP01-3220 |  | Undertake Arboricultural Surveys |  | 125d | 2017-12-15 | 2018-06-08 | P1EWCC-PWP01-5610 |  |  |  | 370d |  |  |  | y | AWS |
| P1EWCC-FWP01-3230 |  | Undertake Remaining Ecology & Environmental Surveys |  | 400d | 2017-12-15 | 2019-06-28 | P1EWCC-PWP01-5610 |  |  |  | 95d |  |  |  | y | AWS |
|  | 1 | **Ecological & Environmental Surveys** |  |  |  |  |  |  |  |  |  |  |  |  |  |  |
|  | 2 | **Engineering Surveys** |  |  |  |  |  |  |  |  |  |  |  |  |  |  |
|  | 3 | **Historic Environment** |  |  | 2018-02-09 | 2018-11-16 |  |  |  |  |  |  |  |  |  |  |
| P1EWCC-PWP06-5720 |  | Non-Intrusive Surveys (geophysics) |  | 20d | 2018-02-09 | 2018-03-09 | P1EWCC-PWP06-5700, P1EWCC-AWP01-6480, P1EWCC-PWP05-240 |  |  |  | 285d | 0d |  |  |  | AWH |
| P1EWCC-PWP06-10030 |  | Non-Intrusive Surveys (trial trenching) |  | 30d | 2018-05-04 | 2018-06-15 | P1EWCC-PWP06-5710, P1EWCC-PWP05-240 |  |  |  | 285d | 0d |  |  |  | AWH |
| P1EWCC-PWP06-5740 |  | Intrusive Surveys |  | 40d | 2018-09-24 | 2018-11-16 | P1EWCC-PWP02-8430, P1EWCC-PWP06-5710, P1EWCC-PWP06-10020, P1EWCC-AWP01-6490 |  |  |  | 254.88d | 0d |  |  |  | AWH |
|  | 4 | **Demolition Surveys** |  |  | 2018-04-27 | 2018-05-11 |  |  |  |  |  |  |  |  |  |  |
| P1EWCC-FWP05-6610 |  | Demolition survey's for Mulberry Park Hill and multiple associated outbuildings |  | 10d | 2018-04-27 | 2018-05-11 | P1EWCC-AWP01-6500, P1EWCC-FWP05-6590, P1EWCC-PWP01-5610 |  |  |  | 85.12d | 0d |  |  |  | AWS |
|  | 7 | **Historic Environment** |  |  | 2017-12-15 | 2019-01-04 |  |  |  |  |  |  |  |  |  |  |
| P1EWCC-PWP06-5700 |  | Production and Approval of Project Plans & LS-WSI (non-intrusive surveys) |  | 40d | 2017-12-15 | 2018-02-09 | P1EWCC-PWP05-240 |  |  |  | 285d | 0d |  |  |  | AWH |
| P1EWCC-PWP06-5710 |  | Update of Project Plans and LS-WSI and Approval (intrusive surveys) |  | 40d | 2018-03-09 | 2018-05-04 | P1EWCC-PWP06-5720 |  |  |  | 285d | 0d |  |  |  | AWH |
| P1EWCC-PWP06-10020 |  | Update of Project Plans and LS-WSI and Approval (intrusive surveys) |  | 40d | 2018-06-15 | 2018-08-10 | P1EWCC-PWP06-10030 |  |  |  | 285d | 30.12d |  |  |  | AWH |
| P1EWCC-PWP06-5730 |  | Report of Findings And Approval (Archaeological Investigation) |  | 35d | 2018-11-19 | 2019-01-04 | P1EWCC-PWP06-5740 |  |  |  | 1050d |  |  |  |  | AWH |
|  | 4 | **Ecological Mitigation Works** |  |  | 2018-03-01 | 2019-01-30 |  |  |  |  |  |  |  |  |  |  |
|  | 5 | **Translocation of Species** |  |  | 2018-07-26 | 2018-09-23 |  |  |  |  |  |  |  |  |  |  |
| P1EWCC-PWP02-8430 |  | Species Translocation to Habitat Creation (092-M1E) |  | 60d | 2018-07-26 | 2018-09-23 | P1EWCC-AWP01-6490, P1EWCC-PWP02-5760 SS+60d, P1EWCC-PWP02-14610 |  |  |  | 309.88d | 0d |  | HS2 - 8h x 7d Workweek (No Holidays) |  | AWE1 |
|  | 4 | **Translocation of Hedgerow** |  |  | 2018-11-01 | 2018-12-14 |  |  |  |  |  |  |  |  |  |  |
| P1EWCC-PWP02-8480 |  | Translocation of hedgerows (2017-208 season) |  | 43d | 2018-11-01 | 2018-12-14 | P1EWCC-PWP02-11910, P1EWCC-AWP01-6490, P1EWCC-PWP02-8430 |  |  |  | 287.62d | 289.62d | start on or after 2018-11-01 | HS2 - 8h x 7d Workweek (No Holidays) |  | AWE2 |

| ID | WBS | Activity | Type | Duration | Start | Finish | Predecessors | Complete | Planned start | Planned finish | Total float | Free float | Constraint | Calendar | HS2 Filter | Fusion - WPS |
| --- | --- | --- | --- | --- | --- | --- | --- | --- | --- | --- | --- | --- | --- | --- | --- | --- |
|  | 15 | **Woodland Habitat Creation Site (not in AWE2)** |  |  | 2018-03-01 | 2019-01-30 |  |  |  |  |  |  |  |  |  |  |
|  | 1 | **Design** |  |  | 2018-03-01 | 2018-07-19 |  |  |  |  |  |  |  |  |  |  |
| P1EWCC-PWP02-14870 |  | Develop Scheme Design |  | 40d | 2018-03-01 | 2018-04-26 | P1EWCC-PWP02-11910 SS+5d |  |  |  | -109.75d | 0d |  |  | y | AWE2 |
| P1EWCC-PWP02-14900 |  | Develop Detailed Design |  | 50d | 2018-04-26 | 2018-07-05 | P1EWCC-PWP02-14870 |  |  |  | -109.75d | 0d |  |  | y | AWE2 |
| P1EWCC-PWP02-14890 |  | Schedule 17 Planning Consent Approval Period |  | 56d | 2018-04-27 | 2018-06-21 | P1EWCC-PWP02-14870 |  |  |  | 403.88d | 161d |  | HS2 - 8h x 7d Workweek (No Holidays) | y | AWE2 |
| P1EWCC-PWP02-14880 |  | HS2 approval period of vaildated design |  | 14d | 2018-07-06 | 2018-07-19 | P1EWCC-PWP02-14900 |  |  |  | 285d | 42d |  | HS2 - 8h x 7d Workweek (No Holidays) | y | AWE2 |
|  | 2 | **Installation** |  |  | 2018-08-31 | 2019-01-30 |  |  |  |  |  |  |  |  |  |  |
| P1EWCC-PWP02-9140 |  | Call off of Create Habitat - Woodland Habitat Creation | milestone | 0d | 2018-08-31 | 2018-08-31 | P1EWCC-PWP02-11910, P1EWCC-PWP02-14880 |  |  |  | 172.88d | 0d | as late as possible |  | y | AWE2 |
| P1EWCC-PWP02-9150 |  | Call off period for Create Habitat - Woodland Habitat Creation |  | 64.88d | 2018-08-31 | 2018-11-29 | P1EWCC-PWP02-9140 |  |  |  | 172.88d | 0d | as late as possible |  | y | AWE2 |
| P1EWCC-PWP02-9130 |  | Woodland Habitat Creation. Habitat Creation to compensate for ancient woodland loss at Mossycorner Spinney (not in AWE2) |  | 43.25d | 2018-11-29 | 2019-01-30 | P1EWCC-PWP02-9150, P1EWCC-AWP01-6490, P1EWCC-PWP02-8430, P1EWCC-PWP02-14890, P1EWCC-PWP02-15070 |  |  |  | 172.88d |  | start on or after 2018-11-01 |  | y | AWE2 |
|  | 5 | **Noise and Vibration Works** |  |  |  |  |  |  |  |  |  |  |  |  |  |  |
|  | 9 | **Demolition** |  |  | 2017-12-15 | 2018-06-01 |  |  |  |  |  |  |  |  |  |  |
| P1EWCC-FWP05-6590 |  | Prepare Investigation Plans for Scoping and Planning Demolitions inc Approval - Mulberry Park Hill |  | 95d | 2017-12-15 | 2018-04-27 | P1EWCC-PWP01-5610 |  |  |  | 90d | 0d | as late as possible |  |  | AWS |
| P1EWCC-FWP05-6600 |  | Report on Demoliton Surveys and Approval - Mulberry Park Hill |  | 15d | 2018-05-11 | 2018-06-01 | P1EWCC-FWP05-6610, P1EWCC-PWP01-5610 |  |  |  | 85.12d |  |  |  |  | AWS |
|  | 6 | **SOW Completion Dates** |  |  | 2018-09-28 | 2019-09-30 |  |  |  |  |  |  |  |  |  |  |
| P1EWCC-FWP05-6620 |  | Completion of Demolition survey's - (Mulberry Park Hill) | milestone | 0d | 2018-09-28 | 2018-09-28 | P1EWCC-FWP05-6600 |  |  |  | 0d | 1120d | finish on 2018-09-28 |  |  | AWS |
| P1EWCC-PWP02-8440 |  | Completion of Species Translocation/ exclusion - Bats | milestone | 0d | 2019-09-30 | 2019-09-30 | P1EWCC-PWP02-8430 |  |  |  | 0d | 860d | finish on 2019-09-30 |  |  | AWE1 |
| P1EWCC-PWP02-8450 |  | Completion of Species Translocation/ exclusion - Otters | milestone | 0d | 2019-09-30 | 2019-09-30 | P1EWCC-PWP02-8430 |  |  |  | 0d | 860d | finish on 2019-09-30 |  |  | AWE1 |
| P1EWCC-PWP02-8460 |  | Completion of Species Translocation/ exclusion - Badgers | milestone | 0d | 2019-09-30 | 2019-09-30 | P1EWCC-PWP02-8430 |  |  |  | 0d | 860d | finish on 2019-09-30 |  |  | AWE1 |
| P1EWCC-PWP02-8470 |  | Completion of Species Translocation/ exclusion - Reptiles | milestone | 0d | 2019-09-30 | 2019-09-30 | P1EWCC-PWP02-8430 |  |  |  | 0d | 860d | finish on 2019-09-30 |  |  | AWE1 |
| P1EWCC-PWP02-8490 |  | Completion of Translocation of hedgerows | milestone | 0d | 2019-09-30 | 2019-09-30 | P1EWCC-PWP02-8480 |  |  |  | 0d | 860d | finish on 2019-09-30 |  |  | AWE2 |
| P1EWCC-PWP02-9160 |  | Woodland Habitat Creation. Habitat Creation to compensate for ancient woodland loss at Mossycorner Spinney | milestone | 0d | 2019-09-30 | 2019-09-30 | P1EWCC-PWP02-9130 |  |  |  | 0d | 860d | finish on 2019-09-30 |  | y | AWE2 |
|  | 3 | **091-L2 - Mixbury Cutting** |  |  | 2017-03-20 | 2019-06-26 |  |  |  |  |  |  |  |  |  |  |
|  | 8 | **Land Access** |  |  | 2017-04-17 | 2019-03-01 |  |  |  |  |  |  |  |  |  |  |
|  | 1 | **Survey Work** |  |  | 2017-04-17 | 2017-04-17 |  |  |  |  |  |  |  |  |  |  |
| P1EWCC-AWP01-6520 |  | Land Access Granted for Survey Work (Schedule 2) | milestone | 0d | 2017-04-17 A | 2017-04-17 A |  | 100% | 2017-04-03 | 2017-04-03 |  |  | as late as possible |  | y | AW1 |

| ID | WBS | Activity | Type | Duration | Start | Finish | Predecessors | Complete | Planned start | Planned finish | Total float | Free float | Constraint | HS2 Filter | Fusion - WPS |
| --- | --- | --- | --- | --- | --- | --- | --- | --- | --- | --- | --- | --- | --- | --- | --- |
|  | 2 | **Possession** |  |  | 2019-03-01 | 2019-03-01 |  |  |  |  |  |  |  |  |  |
| P1EWCC-AWP01-8560 |  | Land Access Possession Granted for Construction (Schedule 16) | milestone | 0d | 2019-03-01 | 2019-03-01 |  |  |  |  | 140.88d | 0d | as late as possible | y | AW1 |
|  | 3 | **Survey Works** |  |  | 2017-03-20 | 2019-06-26 |  |  |  |  |  |  |  |  |  |
| P1EWCC-AWP01-6510 |  | Planning Consent & Licensing for Survey Work |  | 10d | 2017-03-20 A | 2017-04-14 A | P1EWCC-AWP01-1230 | 100% | 2017-03-20 | 2017-03-31 |  |  |  |  | AW1 |
| P1EWCC-FWP01-3250 |  | Undertake Remaining Soil Surveys |  | 120d | 2017-12-15 | 2018-06-01 | P1EWCC-PWP01-5610 |  |  |  | 375d |  |  | y | AWS |
| P1EWCC-FWP01-3260 |  | Undertake Arboricultural Surveys |  | 125d | 2017-12-15 | 2018-06-08 | P1EWCC-PWP01-5610 |  |  |  | 370d |  |  | y | AWS |
| P1EWCC-FWP01-3270 |  | Undertake Remaining Ecology & Environmental Surveys |  | 398d | 2017-12-15 | 2019-06-26 | P1EWCC-PWP01-5610 |  |  |  | 97d |  |  | y | AWS |
|  | 1 | **Ecological & Environmental Surveys** |  |  | 2017-04-17 | 2017-09-15 |  |  |  |  |  |  |  |  |  |
| P1EWCC-PWP01-3940 |  | Survey for Badgers, Bats, GCN & Reptiles |  | 25d | 2017-04-17 A | 2017-09-15 A | P1EWCC-AWP01-6510, P1EWCC-AWP01-6520 | 100% | 2017-04-03 | 2017-05-05 |  |  |  |  | UW1 |
|  | 2 | **Engineering Surveys** |  |  |  |  |  |  |  |  |  |  |  |  |  |
|  | 3 | **Historic Environment** |  |  | 2018-02-09 | 2019-04-25 |  |  |  |  |  |  |  |  |  |
| P1EWCC-PWP06-5780 |  | Non-Intrusive Surveys (geophysics) |  | 20d | 2018-02-09 | 2018-03-09 | P1EWCC-AWP01-6520, P1EWCC-PWP06-5760, P1EWCC-PWP05-240 |  |  |  | 285d | 0d |  |  | AWH |
| P1EWCC-PWP06-10050 |  | Non-Intrusive Surveys (trial trenching) |  | 30d | 2018-05-04 | 2018-06-15 | P1EWCC-PWP06-5770, P1EWCC-PWP05-240 |  |  |  | 285d | 0d |  |  | AWH |
| P1EWCC-PWP06-5800 |  | Intrusive Surveys |  | 40d | 2019-03-01 | 2019-04-25 | P1EWCC-PWP06-5770, P1EWCC-PWP06-10040, P1EWCC-AWP01-8560 |  |  |  | 140.88d | 0d | start on or after 2019-03-01 |  | AWH |
|  | 7 | **Historic Environment** |  |  | 2017-12-15 | 2019-06-13 |  |  |  |  |  |  |  |  |  |
| P1EWCC-PWP06-5760 |  | Production and Approval of Project Plans and LS-WSI (non-intrusive surveys) |  | 40d | 2017-12-15 | 2018-02-09 | P1EWCC-PWP05-240 |  |  |  | 285d | 0d |  |  | AWH |
| P1EWCC-PWP06-5770 |  | Update of Project Plans and LS-WSI and Approval (intrusive surveys) |  | 40d | 2018-03-09 | 2018-05-04 | P1EWCC-PWP06-5780 |  |  |  | 285d | 0d |  |  | AWH |
| P1EWCC-PWP06-10040 |  | Update of Project Plans and LS-WSI and Approval (intrusive surveys) |  | 40d | 2018-06-15 | 2018-08-10 | P1EWCC-PWP06-10050 |  |  |  | 285d | 144.12d |  |  | AWH |
| P1EWCC-PWP06-5790 |  | Report of Findings And Approval (Archaeological Investigation) |  | 35d | 2019-04-26 | 2019-06-13 | P1EWCC-PWP06-5800 |  |  |  | 936d |  |  |  | AWH |
|  | 5 | **Noise and Vibration Works** |  |  |  |  |  |  |  |  |  |  |  |  |  |
|  | 6 | **SOW Completion Dates** |  |  |  |  |  |  |  |  |  |  |  |  |  |
|  | 1 | **092-L1 - Westbury Embankment** |  |  | 2017-03-20 | 2019-09-30 |  |  |  |  |  |  |  |  |  |
|  | 8 | **Land Access** |  |  | 2017-05-29 | 2018-07-26 |  |  |  |  |  |  |  |  |  |
|  | 1 | **Survey Work** |  |  | 2017-05-29 | 2017-05-29 |  |  |  |  |  |  |  |  |  |
| P1EWCC-AWP01-6550 |  | Land Access Granted for Survey Work (Schedule 2) | milestone | 0d | 2017-05-29 A | 2017-05-29 A |  | 100% | 2017-04-03 | 2017-04-03 |  |  | as late as possible | y | AW1 |

| ID | WBS | Activity | Type | Duration | Start | Finish | Predecessors | Complete | Planned start | Planned finish | Total float | Free float | Constraint | Calendar | HS2 Filter | Fusion - WPS |
| --- | --- | --- | --- | --- | --- | --- | --- | --- | --- | --- | --- | --- | --- | --- | --- | --- |
|  | 2 | **Possession** |  |  | 2018-07-26 | 2018-07-26 |  |  |  |  |  |  |  |  |  |  |
| P1EWCC-AWP01-6560 |  | Land Access Possession Granted for Construction (Schedule 16) | milestone | 0d | 2018-07-26 | 2018-07-26 |  |  |  |  | 90.75d | 0d | as late as possible |  | y | AW1 |
|  | 3 | **Survey Works** |  |  | 2017-03-20 | 2019-02-01 |  |  |  |  |  |  |  |  |  |  |
| P1EWCC-AWP01-6540 |  | Planning Consent & Licensing for Survey Work |  | 10d | 2017-03-20 A | 2017-05-26 A | P1EWCC-AWP01-1230 | 100% | 2017-03-20 | 2017-03-31 |  |  |  |  |  | AW1 |
| P1EWCC-FWP01-3300 |  | Undertake Arboricultural Surveys |  | 125d | 2017-12-15 | 2018-06-08 | P1EWCC-PWP01-5610 |  |  |  | 370d |  |  |  | y | AWS |
| P1EWCC-FWP01-3310 |  | Undertake Remaining Ecology & Environmental Surveys |  | 295d | 2017-12-15 | 2019-02-01 | P1EWCC-PWP01-5610 |  |  |  | 200d |  |  |  | y | AWS |
|  | 1 | **Ecological & Environmental Surveys** |  |  | 2017-05-29 | 2017-06-30 |  |  |  |  |  |  |  |  |  |  |
| P1EWCC-PWP01-3980 |  | Survey for Badgers, Bats, GCN & Reptiles |  | 25d | 2017-05-29 A | 2017-06-30 A | P1EWCC-AWP01-6540, P1EWCC-AWP01-6550 | 100% | 2017-04-03 | 2017-05-05 |  |  |  |  |  | UW1 |
|  | 2 | **Engineering Surveys** |  |  |  |  |  |  |  |  |  |  |  |  |  |  |
|  | 3 | **Historic Environment** |  |  | 2018-02-09 | 2018-11-16 |  |  |  |  |  |  |  |  |  |  |
| P1EWCC-PWP06-5840 |  | Non-Intrusive Surveys (geophysics) |  | 20d | 2018-02-09 | 2018-03-09 | P1EWCC-PWP06-5820, P1EWCC-AWP01-6550, P1EWCC-PWP05-240 |  |  |  | 285d | 0d |  |  |  | AWH |
| P1EWCC-PWP06-10060 |  | Non-Intrusive Surveys (trial trenching) |  | 30d | 2018-05-04 | 2018-06-15 | P1EWCC-PWP06-5830, P1EWCC-PWP05-240 |  |  |  | 285d | 0d |  |  |  | AWH |
| P1EWCC-PWP06-5860 |  | Intrusive Surveys |  | 40d | 2018-09-24 | 2018-11-16 | P1EWCC-PWP06-5830, P1EWCC-PWP02-8500, P1EWCC-PWP06-10070, P1EWCC-AWP01-6560 |  |  |  | 254.88d | 0d |  |  |  | AWH |
|  | 7 | **Historic Environment** |  |  | 2017-12-15 | 2019-01-04 |  |  |  |  |  |  |  |  |  |  |
| P1EWCC-PWP06-5820 |  | Production and Approval of Project Plans & LS-WSI (non-intrusive surveys) |  | 40d | 2017-12-15 | 2018-02-09 | P1EWCC-PWP05-240 |  |  |  | 285d | 0d |  |  |  | AWH |
| P1EWCC-PWP06-5830 |  | Update of Project Plans and LS-WSI and Approval (intrusive surveys) |  | 40d | 2018-03-09 | 2018-05-04 | P1EWCC-PWP06-5840 |  |  |  | 285d | 0d |  |  |  | AWH |
| P1EWCC-PWP06-10070 |  | Update of Project Plans and LS-WSI and Approval (intrusive surveys) |  | 40d | 2018-06-15 | 2018-08-10 | P1EWCC-PWP06-10060 |  |  |  | 285d | 30.12d |  |  |  | AWH |
| P1EWCC-PWP06-5850 |  | Report of Findings And Approval (Archaeological Investigation) |  | 35d | 2018-11-19 | 2019-01-04 | P1EWCC-PWP06-5860 |  |  |  | 1050d |  |  |  |  | AWH |
|  | 4 | **Ecological Mitigation Works** |  |  | 2018-03-01 | 2019-01-30 |  |  |  |  |  |  |  |  |  |  |
|  | 5 | **Translocation of Species** |  |  | 2018-07-26 | 2018-09-23 |  |  |  |  |  |  |  |  |  |  |
| P1EWCC-PWP02-8500 |  | Species Translocation to Habitat Creation (092-M1E) |  | 60d | 2018-07-26 | 2018-09-23 | P1EWCC-PWP01-3980, P1EWCC-PWP02-5760 SS+60d, P1EWCC-AWP01-6560, P1EWCC-PWP02-14610 |  |  |  | 126.88d | 0d |  | HS2 - 8h x 7d Workweek (No Holidays) |  | AWE1 |
|  | 10 | **Landscape Planting - A422 Westbury Mitigation 090-M1W** |  |  | 2018-03-01 | 2019-01-30 |  |  |  |  |  |  |  |  |  |  |
|  | 1 | **Design** |  |  | 2018-03-01 | 2018-07-19 |  |  |  |  |  |  |  |  |  |  |
| P1EWCC-PWP02-14910 |  | Develop Scheme Design |  | 40d | 2018-03-01 | 2018-04-26 | P1EWCC-PWP02-11910 SS+5d |  |  |  | -109.75d | 0d |  |  | y | AWE2 |
| P1EWCC-PWP02-14940 |  | Develop Detailed Design |  | 50d | 2018-04-26 | 2018-07-05 | P1EWCC-PWP02-14910 |  |  |  | -109.75d | 0d |  |  | y | AWE2 |
| P1EWCC-PWP02-14930 |  | Schedule 17 Planning Consent Approval Period |  | 56d | 2018-04-27 | 2018-06-21 | P1EWCC-PWP02-14910 |  |  |  | 220.88d | 161d |  | HS2 - 8h x 7d Workweek (No Holidays) | y | AWE2 |
| P1EWCC-PWP02-14920 |  | HS2 approval period of vaildated design |  | 14d | 2018-07-06 | 2018-07-19 | P1EWCC-PWP02-14940 |  |  |  | 102d | 42d |  | HS2 - 8h x 7d Workweek (No Holidays) | y | AWE2 |

| ID | WBS | Activity | Type | Duration | Start | Finish | Predecessors | Complete | Remaining | Planned start | Planned finish | Total float | Free float | Constraint | Expected finish | HS2 Filter | Fusion - WPS |
| --- | --- | --- | --- | --- | --- | --- | --- | --- | --- | --- | --- | --- | --- | --- | --- | --- | --- |
|  | 2 | **Installation** |  |  | 2018-08-31 | 2019-01-30 |  |  |  |  |  |  |  |  |  |  |  |
| P1EWCC-FWP05-6680 |  | Call off of Landscape Planting | milestone | 0d | 2018-08-31 | 2018-08-31 | P1EWCC-PWP02-11910, P1EWCC-PWP02-14920 |  |  |  |  | 41.88d | 0d | as late as possible |  | y | AWE2 |
| P1EWCC-FWP05-6690 |  | Call off period for Landscape Planting |  | 64.88d | 2018-08-31 | 2018-11-29 | P1EWCC-FWP05-6680 |  |  |  |  | 41.88d | 0d | as late as possible |  | y | AWE2 |
| P1EWCC-FWP05-6670 |  | Advance Planting (2018 - 2019 season) |  | 43.25d | 2018-11-29 | 2019-01-30 | P1EWCC-FWP05-6690, P1EWCC-AWP01-6560, P1EWCC-PWP02-8500, P1EWCC-PWP02-14930, P1EWCC-PWP02-15070 |  |  |  |  | 41.88d |  | start on or after 2018-11-01 |  | y | AWE2 |
|  | 5 | **Noise and Vibration Works** |  |  |  |  |  |  |  |  |  |  |  |  |  |  |  |
|  | 6 | **SOW Completion Dates** |  |  | 2019-03-29 | 2019-09-30 |  |  |  |  |  |  |  |  |  |  |  |
| P1EWCC-FWP05-6700 |  | Completion of Advance Planting (2018 - 2019 season) | milestone | 0d | 2019-03-29 | 2019-03-29 | P1EWCC-FWP05-6670 |  |  |  |  | 0d | 991d | finish on 2019-03-29 |  | y | AWE2 |
| P1EWCC-PWP02-8520 |  | Completion of Species Translocation/ exclusion - Reptiles | milestone | 0d | 2019-09-30 | 2019-09-30 | P1EWCC-PWP02-8500 |  |  |  |  | 0d | 860d | finish on 2019-09-30 |  |  | AWE1 |
| P1EWCC-PWP02-8530 |  | Completion of Species Translocation/ exclusion - Otters | milestone | 0d | 2019-09-30 | 2019-09-30 | P1EWCC-PWP02-8500 |  |  |  |  | 0d | 860d | finish on 2019-09-30 |  |  | AWE1 |
|  | 4 | **092-L2 - Westbury Viaduct** |  |  | 2017-03-20 | 2019-09-30 |  |  |  |  |  |  |  |  |  |  |  |
|  | 7 | **Land Access** |  |  | 2017-03-20 | 2018-07-26 |  |  |  |  |  |  |  |  |  |  |  |
|  | 1 | **Survey Work** |  |  | 2017-03-20 | 2017-03-20 |  |  |  |  |  |  |  |  |  |  |  |
| P1EWCC-AWP01-4760 |  | Land Access Granted for Survey Work (Schedule 2) | milestone | 0d | 2017-03-20 A | 2017-03-20 A |  | 100% |  | 2017-03-27 | 2017-03-27 |  |  | as late as possible |  | y | UW1 |
|  | 2 | **Possession** |  |  | 2017-11-29 | 2018-07-26 |  |  |  |  |  |  |  |  |  |  |  |
|  | 1 | **Ecological Mitigation Area** |  |  | 2017-11-29 | 2017-11-29 |  |  |  |  |  |  |  |  |  |  |  |
| P1EWCC-AWP01-4770 |  | Land Access Possession Granted for Ecolgical Mitigation Site (Schedule 16) 092-M1E | milestone | 0d | 2017-11-29 | 2017-11-29 |  |  |  |  |  | 202d | 27.88d | start on or after 2017-11-29 |  | y | UW1 |
|  | 2 | **092-L2 - Westbury Viaduct** |  |  | 2018-07-26 | 2018-07-26 |  |  |  |  |  |  |  |  |  |  |  |
| P1EWCC-AWP01-4780 |  | Land Access Possession Granted for Construction of 092-L2 - Westbury Viaduct (Schedule 16) | milestone | 0d | 2018-07-26 | 2018-07-26 |  |  |  |  |  | 73d | 0d | as late as possible |  | y | AW1 |
|  | 10 | **Survey Works** |  |  | 2017-03-20 | 2018-11-16 |  |  |  |  |  |  |  |  |  |  |  |
| P1EWCC-AWP01-4750 |  | Planning Consent & Licensing for Survey Work |  | 5d | 2017-03-20 A | 2017-03-20 A | P1EWCC-AWP01-1230 | 100% |  | 2017-03-20 | 2017-03-24 |  |  |  |  |  | UW1 |
| P1EWCC-FWP01-3340 |  | Undertake Arboricultural Surveys |  | 125d | 2017-12-15 | 2018-06-08 | P1EWCC-PWP01-5610 |  |  |  |  | 190d |  |  |  | y | AWS |
| P1EWCC-FWP01-3350 |  | Undertake Remaining Ecology & Environmental Surveys |  | 175d | 2017-12-15 | 2018-08-17 | P1EWCC-PWP01-5610 |  |  |  |  | 140d |  |  |  | y | AWS |
|  | 1 | **Ecological & Environmental Surveys** |  |  | 2017-03-20 | 2017-09-22 |  |  |  |  |  |  |  |  |  |  |  |
| P1EWCC-PWP01-3220 |  | Survey for Badgers, Bats, GCN & Reptiles |  | 25d | 2017-03-20 A | 2017-09-22 | P1EWCC-AWP01-4750, P1EWCC-AWP01-4760 | 80% | 4.88d | 2017-03-27 | 2017-04-28 | 1385.12d | 0d |  | 2017-09-22 |  | UW1 |

| ID | WBS | Activity | Duration | Start | Finish | Predecessors | Complete | Remaining | Planned start | Planned finish | Total float | Free float | Constraint | Expected finish | Calendar | Fusion - WPS |
| --- | --- | --- | --- | --- | --- | --- | --- | --- | --- | --- | --- | --- | --- | --- | --- | --- |
|  | 2 | **Engineering Surveys** |  | 2017-04-11 | 2017-05-09 |  |  |  |  |  |  |  |  |  |  |  |
| P1EWCC-PWP03-3290 |  | Survey for Engineering (Topo, GPR, Utility, Soil) | 15d | 2017-04-11 A | 2017-05-09 A | P1EWCC-AWP01-4760, P1EWCC-AWP01-4750 | 100% |  | 2017-03-27 | 2017-04-14 |  |  |  |  |  | UW1 |
|  | 3 | **Historic Environment Surveys** |  | 2017-10-02 | 2018-11-16 |  |  |  |  |  |  |  |  |  |  |  |
|  | 1 | **Ecological Mitigation Sites North of Great Ouse 1639 (092-M1E)** |  | 2017-10-02 | 2017-10-03 |  |  |  |  |  |  |  |  |  |  |  |
| P1EWCC-PWP06-2590 |  | Boreholes (ecological mitigation site) | 2d | 2017-10-02 | 2017-10-03 | P1EWCC-PWP06-2580 |  |  |  |  | 242d | 0d | start on or after 2017-10-02 |  |  | UW1 |
|  | 2 | **092-L2 - Westbury Viaduct** |  | 2018-02-09 | 2018-11-16 |  |  |  |  |  |  |  |  |  |  |  |
| P1EWCC-PWP06-10110 |  | Non-Intrusive Surveys (geophysics) | 20d | 2018-02-09 | 2018-03-09 | P1EWCC-PWP06-10080, P1EWCC-PWP05-240 |  |  |  |  | 105d | 0d |  |  |  | AWH |
| P1EWCC-PWP06-10120 |  | Non-Intrusive Surveys (trial trenching) | 30d | 2018-05-04 | 2018-06-15 | P1EWCC-PWP06-10090, P1EWCC-PWP05-240 |  |  |  |  | 105d | 0d |  |  |  | AWH |
| P1EWCC-PWP06-2610 |  | Intrusive Surveys (092-L2 - Westbury Viaduct) | 40d | 2018-09-24 | 2018-11-16 | P1EWCC-PWP02-5800, P1EWCC-PWP06-10100, P1EWCC-AWP01-4780 |  |  |  |  | 74.88d | 0d |  |  |  | AWH |
|  | 6 | **Historic Environment** |  | 2017-05-23 | 2019-01-04 |  |  |  |  |  |  |  |  |  |  |  |
|  | 1 | **Ecological Mitigation Sites North of Great Ouse 1639 (092-M1E)** |  | 2017-05-23 | 2017-11-14 |  |  |  |  |  |  |  |  |  |  |  |
| P1EWCC-PWP06-2580 |  | Update of Project Plans and LS-WSI North of Great Ouse and Approval (intrusive surveys) | 20d | 2017-05-23 A | 2017-08-18 A | P1EWCC-UWP01-1000 | 100% |  | 2017-05-23 | 2017-06-19 |  |  |  |  |  | UW1 |
| P1EWCC-PWP06-3490 |  | HS2 issue Project Plan | 1d | 2017-09-18 | 2017-09-18 |  |  |  |  |  | 1389d | 41d |  |  |  | UW1 |
| P1EWCC-PWP06-2600 |  | Report of Findings And Approval (ecological mitigation site) | 30d | 2017-10-04 | 2017-11-14 | P1EWCC-PWP06-2590, P1EWCC-PWP06-3490 FF |  |  |  |  | 1348d |  |  |  |  | UW1 |
|  | 2 | **092-L2 - Westbury Viaduct** |  | 2017-12-15 | 2019-01-04 |  |  |  |  |  |  |  |  |  |  |  |
| P1EWCC-PWP06-10080 |  | Production and Approval of Project Plans & LS-WSI (non-intrusive surveys) | 40d | 2017-12-15 | 2018-02-09 | P1EWCC-PWP05-240 |  |  |  |  | 105d | 0d |  |  |  | AWH |
| P1EWCC-PWP06-10090 |  | Update of Project Plans and LS-WSI and Approval (intrusive surveys) | 40d | 2018-03-09 | 2018-05-04 | P1EWCC-PWP06-10110 |  |  |  |  | 105d | 0d |  |  |  | AWH |
| P1EWCC-PWP06-10100 |  | Update of Project Plans and LS-WSI and Approval (intrusive surveys) | 40d | 2018-06-15 | 2018-08-10 | P1EWCC-PWP06-10120 |  |  |  |  | 105d | 30.12d |  |  |  | AWH |
| P1EWCC-PWP06-2620 |  | Report of Findings And Approval (092-L2 - Westbury Viaduct) | 35d | 2018-11-19 | 2019-01-04 | P1EWCC-PWP06-2610 |  |  |  |  | 1050d |  |  |  |  | AWH |
|  | 11 | **Ecological Mitigation Works** |  | 2017-04-20 | 2018-09-23 |  |  |  |  |  |  |  |  |  |  |  |
|  | 1 | **Design** |  | 2017-04-20 | 2017-11-03 |  |  |  |  |  |  |  |  |  |  |  |
| P1EWCC-PWP02-5770 |  | Design of Habitat Creation (092-M1E) | 25d | 2017-04-20 A | 2017-10-06 | P1EWCC-PWP03-3290 FF | 40% | 14.88d | 2017-04-17 | 2017-05-19 | 219.12d | 0d |  | 2017-10-06 |  | UW1 |
| P1EWCC-AWP01-4740 |  | Planning Consent & Licensing for Habitat Creation (092-M1E) | 40d | 2017-06-19 A | 2017-11-03 | P1EWCC-PWP02-5770 SS | 13% | 34.88d | 2017-07-19 | 2017-09-12 | 219.12d | 0d |  | 2017-11-03 |  | UW1 |
|  | 3 | **Habitat Creation** |  | 2018-01-05 | 2018-08-29 |  |  |  |  |  |  |  |  |  |  |  |
| P1EWCC-PWP02-5750 |  | Habitat Creation (092-M1E) | 50d | 2018-01-05 | 2018-03-16 | P1EWCC-PWP06-2590, P1EWCC-AWP01-4740, P1EWCC-PWP02-9220, P1EWCC-AWP01-4770, P1EWCC-PWP02-5770 |  |  |  |  | 174.12d | 38.12d |  |  |  | AWE1 |
| P1EWCC-PWP02-5760 |  | Habitat Creation Maturity Period (092-M1E) | 182d | 2018-03-01 | 2018-08-29 | P1EWCC-PWP02-5750 SS |  |  |  |  | 190d | 87d | start on or after 2018-03-01 |  | HS2 - 8h x 7d Workweek (No Holidays) | AWE1 |

| ID | WBS | Activity | Type | Duration | Start | Finish | Predecessors | Complete | Remaining | Planned start | Planned finish | Total float | Free float | Constraint | Expected finish | Calendar | Fusion - WPS | HS2 Filter |
| --- | --- | --- | --- | --- | --- | --- | --- | --- | --- | --- | --- | --- | --- | --- | --- | --- | --- | --- |
|  | 5 | **Translocation of Species** |  |  | 2018-07-26 | 2018-09-23 |  |  |  |  |  |  |  |  |  |  |  |  |
| P1EWCC-PWP02-5800 |  | Species Translocation to Habitat Creation (092-M1E) |  | 60d | 2018-07-26 | 2018-09-23 | P1EWCC-PWP02-5760 SS+60d, P1EWCC-AWP01-4780, P1EWCC-PWP02-14610 |  |  |  |  | 103d | 0d |  |  | HS2 - 8h x 7d Workweek (No Holidays) | AWE1 |  |
|  | 8 | **Water Resources** |  |  |  |  |  |  |  |  |  |  |  |  |  |  |  |  |
|  | 4 | **Noise and Vibration Works** |  |  |  |  |  |  |  |  |  |  |  |  |  |  |  |  |
|  | 1 | **SOW Completion Dates** |  |  | 2019-09-30 | 2019-09-30 |  |  |  |  |  |  |  |  |  |  |  |  |
| P1EWCC-PWP02-5810 |  | Completion of Species Translocation/ exclusion - Reptiles | milestone | 0d | 2019-09-30 | 2019-09-30 | P1EWCC-PWP02-5800 |  |  |  |  | 0d | 860d | finish on 2019-09-30 |  |  | AWE1 |  |
| P1EWCC-PWP02-5820 |  | Completion of Species Translocation/ exclusion - Bats | milestone | 0d | 2019-09-30 | 2019-09-30 | P1EWCC-PWP02-5800 |  |  |  |  | 0d | 860d | finish on 2019-09-30 |  |  | AWE1 |  |
| P1EWCC-PWP02-5830 |  | Completion of Species Translocation/ exclusion - Badgers | milestone | 0d | 2019-09-30 | 2019-09-30 | P1EWCC-PWP02-5800 |  |  |  |  | 0d | 860d | finish on 2019-09-30 |  |  | AWE1 |  |
| P1EWCC-PWP02-5840 |  | Completion of Species Translocation/ exclusion - Otters | milestone | 0d | 2019-09-30 | 2019-09-30 | P1EWCC-PWP02-5800 |  |  |  |  | 0d | 860d | finish on 2019-09-30 |  |  | AWE1 |  |
|  | 5 | **092-L3 - Grovehill Embankment** |  |  | 2017-03-20 | 2019-09-30 |  |  |  |  |  |  |  |  |  |  |  |  |
|  | 8 | **Land Access** |  |  | 2017-03-27 | 2018-07-26 |  |  |  |  |  |  |  |  |  |  |  |  |
|  | 1 | **Survey Work** |  |  | 2017-03-27 | 2017-03-27 |  |  |  |  |  |  |  |  |  |  |  |  |
| P1EWCC-AWP01-6580 |  | Land Access Granted for Survey Work (Schedule 2) | milestone | 0d | 2017-03-27 A | 2017-03-27 A |  | 100% |  | 2017-04-03 | 2017-04-03 |  |  | as late as possible |  |  | AW1 | y |
|  | 2 | **Possession** |  |  | 2018-07-26 | 2018-07-26 |  |  |  |  |  |  |  |  |  |  |  |  |
| P1EWCC-AWP01-6590 |  | Land Access Possession Granted for Construction (Schedule 16) | milestone | 0d | 2018-07-26 | 2018-07-26 |  |  |  |  |  | 73d | 0d | as late as possible |  |  | AW1 | y |
|  | 3 | **Survey Works** |  |  | 2017-03-20 | 2018-11-16 |  |  |  |  |  |  |  |  |  |  |  |  |
| P1EWCC-AWP01-6570 |  | Planning Consent & Licensing for Survey Work |  | 10d | 2017-03-20 A | 2017-03-24 A | P1EWCC-AWP01-1230 | 100% |  | 2017-03-20 | 2017-03-31 |  |  |  |  |  | AW1 |  |
| P1EWCC-FWP01-3380 |  | Undertake Arboricultural Surveys |  | 125d | 2017-12-15 | 2018-06-08 | P1EWCC-PWP01-5610 |  |  |  |  | 190d |  |  |  |  | AWS | y |
|  | 1 | **Ecological & Environmental Surveys** |  |  | 2017-03-27 | 2017-09-22 |  |  |  |  |  |  |  |  |  |  |  |  |
| P1EWCC-PWP01-3990 |  | Survey for Badgers, Bats, GCN & Reptiles |  | 25d | 2017-03-27 A | 2017-09-22 | P1EWCC-AWP01-6580, P1EWCC-AWP01-6570 | 80% | 4.88d | 2017-04-03 | 2017-05-05 | 291.12d | 0d |  | 2017-09-22 |  | UW1 |  |
|  | 2 | **Engineering Surveys** |  |  |  |  |  |  |  |  |  |  |  |  |  |  |  |  |
|  | 3 | **Historic Environment** |  |  | 2018-02-09 | 2018-11-16 |  |  |  |  |  |  |  |  |  |  |  |  |
| P1EWCC-PWP06-5900 |  | Non-Intrusive Surveys (geophysics) |  | 20d | 2018-02-09 | 2018-03-09 | P1EWCC-PWP06-5880, P1EWCC-AWP01-6580, P1EWCC-PWP05-240 |  |  |  |  | 105d | 0d |  |  |  | AWH |  |
| P1EWCC-PWP06-10130 |  | Non-Intrusive Surveys (trial trenching) |  | 30d | 2018-05-04 | 2018-06-15 | P1EWCC-PWP06-5890, P1EWCC-PWP05-240 |  |  |  |  | 105d | 0d |  |  |  | AWH |  |
| P1EWCC-PWP06-5920 |  | Intrusive Surveys |  | 40d | 2018-09-24 | 2018-11-16 | P1EWCC-PWP02-8540, P1EWCC-PWP06-5890, P1EWCC-PWP06-10140, P1EWCC-AWP01-6590 |  |  |  |  | 74.88d | 0d |  |  |  | AWH |  |

| ID | WBS | Activity | Type | Duration | Start | Finish | Predecessors | Complete | Planned start | Planned finish | Total float | Free float | Constraint | Calendar | Fusion - WPS | HS2 Filter |
| --- | --- | --- | --- | --- | --- | --- | --- | --- | --- | --- | --- | --- | --- | --- | --- | --- |
|  | 7 | **Historic Environment** |  |  | 2017-12-15 | 2019-01-04 |  |  |  |  |  |  |  |  |  |  |
| P1EWCC-PWP06-5880 |  | Production and Approval of LS-WSI (non-intrusive surveys) |  | 40d | 2017-12-15 | 2018-02-09 | P1EWCC-PWP05-240 |  |  |  | 105d | 0d |  |  | AWH |  |
| P1EWCC-PWP06-5890 |  | Update of Project Plans and LS-WSI and Approval (intrusive surveys) |  | 40d | 2018-03-09 | 2018-05-04 | P1EWCC-PWP06-5900 |  |  |  | 105d | 0d |  |  | AWH |  |
| P1EWCC-PWP06-10140 |  | Update of Project Plans and LS-WSI and Approval (intrusive surveys) |  | 40d | 2018-06-15 | 2018-08-10 | P1EWCC-PWP06-10130 |  |  |  | 105d | 30.12d |  |  | AWH |  |
| P1EWCC-PWP06-5910 |  | Report of Findings And Approval (Archaeological Investigation) |  | 35d | 2018-11-19 | 2019-01-04 | P1EWCC-PWP06-5920 |  |  |  | 1050d |  |  |  | AWH |  |
|  | 4 | **Ecological Mitigation Works** |  |  | 2018-07-26 | 2018-09-23 |  |  |  |  |  |  |  |  |  |  |
|  | 5 | **Translocation of Species** |  |  | 2018-07-26 | 2018-09-23 |  |  |  |  |  |  |  |  |  |  |
| P1EWCC-PWP02-8540 |  | Species Translocation to Habitat Creation (092-M1E) |  | 60d | 2018-07-26 | 2018-09-23 | P1EWCC-PWP02-5760 SS+60d, P1EWCC-PWP01-3990, P1EWCC-AWP01-6590, P1EWCC-PWP02-14610 |  |  |  | 103d | 0d |  | HS2 - 8h x 7d Workweek (No Holidays) | AWE1 |  |
|  | 5 | **Noise and Vibration Works** |  |  |  |  |  |  |  |  |  |  |  |  |  |  |
|  | 6 | **SOW Completion Dates** |  |  | 2019-09-30 | 2019-09-30 |  |  |  |  |  |  |  |  |  |  |
| P1EWCC-PWP02-8550 |  | Completion of Species Translocation/ exclusion - Reptiles | milestone | 0d | 2019-09-30 | 2019-09-30 | P1EWCC-PWP02-8540 |  |  |  | 0d | 860d | finish on 2019-09-30 |  | AWE1 |  |
| P1EWCC-PWP02-8560 |  | Completion of Species Translocation/ exclusion - Otters | milestone | 0d | 2019-09-30 | 2019-09-30 | P1EWCC-PWP02-8540 |  |  |  | 0d | 860d | finish on 2019-09-30 |  | AWE1 |  |
| P1EWCC-PWP02-8570 |  | Completion of Species Translocation/ exclusion - Bats | milestone | 0d | 2019-09-30 | 2019-09-30 | P1EWCC-PWP02-8540 |  |  |  | 0d | 860d | finish on 2019-09-30 |  | AWE1 |  |
|  | 6 | **093-L1 - Turweston Cutting** |  |  | 2017-03-20 | 2019-09-30 |  |  |  |  |  |  |  |  |  |  |
|  | 8 | **Land Access** |  |  | 2017-03-27 | 2018-07-26 |  |  |  |  |  |  |  |  |  |  |
|  | 1 | **Survey Work** |  |  | 2017-03-27 | 2017-03-27 |  |  |  |  |  |  |  |  |  |  |
| P1EWCC-AWP01-6610 |  | Land Access Granted for Survey Work (Schedule 2) | milestone | 0d | 2017-03-27 A | 2017-03-27 A |  | 100% | 2017-04-03 | 2017-04-03 |  |  | as late as possible |  | AW1 | y |
|  | 2 | **Possession** |  |  | 2018-07-26 | 2018-07-26 |  |  |  |  |  |  |  |  |  |  |
| P1EWCC-AWP01-6620 |  | Land Access Possession Granted for Construction (Schedule 16) | milestone | 0d | 2018-07-26 | 2018-07-26 |  |  |  |  | 73d | 0d | as late as possible |  | AW1 | y |
|  | 3 | **Survey Works** |  |  | 2017-03-20 | 2018-11-16 |  |  |  |  |  |  |  |  |  |  |
| P1EWCC-AWP01-6600 |  | Planning Consent & Licensing for Survey Work |  | 10d | 2017-03-20 A | 2017-03-24 A | P1EWCC-AWP01-1230 | 100% | 2017-03-20 | 2017-03-31 |  |  |  |  | AW1 |  |
| P1EWCC-FWP01-3410 |  | Undertake Remaining Soil Surveys |  | 120d | 2017-12-15 | 2018-06-01 | P1EWCC-PWP01-5610 |  |  |  | 195d |  |  |  | AWS | y |
| P1EWCC-FWP01-3420 |  | Undertake Arboricultural Surveys |  | 125d | 2017-12-15 | 2018-06-08 | P1EWCC-PWP01-5610 |  |  |  | 190d |  |  |  | AWS | y |
| P1EWCC-FWP01-3430 |  | Undertake Remaining Ecology & Environmental Surveys |  | 139d | 2017-12-15 | 2018-06-28 | P1EWCC-PWP01-5610 |  |  |  | 176d |  |  |  | AWS | y |

| ID | WBS | Activity | Type | Duration | Start | Finish | Predecessors | Complete | Planned start | Planned finish | Total float | Free float | Constraint | Calendar | Fusion - WPS |
| --- | --- | --- | --- | --- | --- | --- | --- | --- | --- | --- | --- | --- | --- | --- | --- |
|  | 1 | **Ecological & Environmental Surveys** |  |  | 2017-03-27 | 2017-09-15 |  |  |  |  |  |  |  |  |  |
| P1EWCC-PWP01-4000 |  | Survey for Badgers, Bats, GCN & Reptiles |  | 25d | 2017-03-27 A | 2017-09-15 A | P1EWCC-AWP01-6600, P1EWCC-AWP01-6610 | 100% | 2017-04-03 | 2017-05-05 |  |  |  |  | UW1 |
|  | 2 | **Engineering Surveys** |  |  |  |  |  |  |  |  |  |  |  |  |  |
|  | 3 | **Historic Environment** |  |  | 2018-02-09 | 2018-11-16 |  |  |  |  |  |  |  |  |  |
| P1EWCC-PWP06-5960 |  | Non-Intrusive Surveys (geophysics) |  | 20d | 2018-02-09 | 2018-03-09 | P1EWCC-AWP01-6610, P1EWCC-PWP06-5940, P1EWCC-PWP05-240 |  |  |  | 105d | 0d |  |  | AWH |
| P1EWCC-PWP06-10150 |  | Non-Intrusive Surveys (trial trenching) |  | 30d | 2018-05-04 | 2018-06-15 | P1EWCC-PWP06-5950, P1EWCC-PWP05-240 |  |  |  | 105d | 0d |  |  | AWH |
| P1EWCC-PWP06-5980 |  | Intrusive Surveys |  | 40d | 2018-09-24 | 2018-11-16 | P1EWCC-PWP02-8580, P1EWCC-PWP06-5950, P1EWCC-PWP06-10160, P1EWCC-AWP01-6620 |  |  |  | 74.88d | 0d |  |  | AWH |
|  | 7 | **Historic Environment** |  |  | 2017-12-15 | 2019-01-04 |  |  |  |  |  |  |  |  |  |
| P1EWCC-PWP06-5940 |  | Production and Approval of LS-WSI (non-intrusive surveys) |  | 40d | 2017-12-15 | 2018-02-09 | P1EWCC-PWP05-240 |  |  |  | 105d | 0d |  |  | AWH |
| P1EWCC-PWP06-5950 |  | Update of Project Plans and LS-WSI and Approval (intrusive surveys) |  | 40d | 2018-03-09 | 2018-05-04 | P1EWCC-PWP06-5960 |  |  |  | 105d | 0d |  |  | AWH |
| P1EWCC-PWP06-10160 |  | Update of Project Plans and LS-WSI and Approval (intrusive surveys) |  | 40d | 2018-06-15 | 2018-08-10 | P1EWCC-PWP06-10150 |  |  |  | 105d | 30.12d |  |  | AWH |
| P1EWCC-PWP06-5970 |  | Report of Findings And Approval (Archaeological Investigation) |  | 35d | 2018-11-19 | 2019-01-04 | P1EWCC-PWP06-5980 |  |  |  | 1050d |  |  |  | AWH |
|  | 4 | **Ecological Mitigation Works** |  |  | 2018-07-26 | 2018-12-14 |  |  |  |  |  |  |  |  |  |
|  | 5 | **Translocation of Species** |  |  | 2018-07-26 | 2018-09-23 |  |  |  |  |  |  |  |  |  |
| P1EWCC-PWP02-8580 |  | Species Translocation to Habitat Creation (092-M1E) |  | 60d | 2018-07-26 | 2018-09-23 | P1EWCC-AWP01-6620, P1EWCC-PWP01-4000, P1EWCC-PWP02-5760 SS+60d, P1EWCC-PWP02-14610 |  |  |  | 103d | 0d |  | HS2 - 8h x 7d Workweek (No Holidays) | AWE1 |
|  | 4 | **Translocation of Hedgerow** |  |  | 2018-11-01 | 2018-12-14 |  |  |  |  |  |  |  |  |  |
| P1EWCC-PWP02-8640 |  | Translocation of hedgerows (2018-2019 season) |  | 43d | 2018-11-01 | 2018-12-14 | P1EWCC-PWP02-11910, P1EWCC-AWP01-6620, P1EWCC-PWP02-8580 |  |  |  | 77.62d |  | start on or after 2018-11-01 | HS2 - 8h x 7d Workweek (No Holidays) | AWE2 |
|  | 5 | **Noise and Vibration Works** |  |  |  |  |  |  |  |  |  |  |  |  |  |
|  | 6 | **SOW Completion Dates** |  |  | 2019-09-30 | 2019-09-30 |  |  |  |  |  |  |  |  |  |
| P1EWCC-PWP02-8590 |  | Completion of Species Translocation/ exclusion - Reptiles | milestone | 0d | 2019-09-30 | 2019-09-30 | P1EWCC-PWP02-8580 |  |  |  | 0d | 860d | finish on 2019-09-30 |  | AWE1 |
| P1EWCC-PWP02-8600 |  | Completion of Species Translocation/ exclusion - Otters | milestone | 0d | 2019-09-30 | 2019-09-30 | P1EWCC-PWP02-8580 |  |  |  | 0d | 860d | finish on 2019-09-30 |  | AWE1 |
| P1EWCC-PWP02-8610 |  | Completion of Species Translocation/ exclusion - Bats | milestone | 0d | 2019-09-30 | 2019-09-30 | P1EWCC-PWP02-8580 |  |  |  | 0d | 860d | finish on 2019-09-30 |  | AWE1 |
| P1EWCC-PWP02-8620 |  | Completion of Species Translocation/ exclusion - Badgers | milestone | 0d | 2019-09-30 | 2019-09-30 | P1EWCC-PWP02-8580 |  |  |  | 0d | 860d | finish on 2019-09-30 |  | AWE1 |
| P1EWCC-PWP02-8630 |  | Completion of Species Translocation/ exclusion - Water Voles | milestone | 0d | 2019-09-30 | 2019-09-30 | P1EWCC-PWP02-8580 |  |  |  | 0d | 860d | finish on 2019-09-30 |  | AWE1 |
| P1EWCC-PWP02-8650 |  | Translocation of hedgerows (2018-2019 season) | milestone | 0d | 2019-09-30 | 2019-09-30 | P1EWCC-PWP02-8640 |  |  |  | 0d | 1201.62d | finish on 2019-09-30 | HS2 - 8h x 7d Workweek (No Holidays) | AWE2 |

| ID | WBS | Activity | Type | Duration | Start | Finish | Predecessors | Complete | Planned start | Planned finish | Total float | Free float | Constraint | HS2 Filter | Fusion - WPS |
| --- | --- | --- | --- | --- | --- | --- | --- | --- | --- | --- | --- | --- | --- | --- | --- |
|  | C3 | **C3 - Brackley to Southam (Ch. 95340 to Ch. 126540)** |  |  | 2017-02-17 | 2020-03-31 |  |  |  |  |  |  |  |  |  |
|  | 4 | **Site Clearance Works** |  |  | 2018-02-02 | 2019-03-22 |  |  |  |  |  |  |  |  |  |
| P1EWCC-PWP10-1230 |  | Design and Approval of Site clearance C3 |  | 194.62d | 2018-02-02 | 2018-11-02 | P1EWCC-PWP02-12360 |  |  |  | -59.5d | 0d |  | y | AWE5 |
| P1EWCC-AWP01-8250 |  | Planning Consent & Licensing for Site clearance C3 |  | 50d | 2018-11-02 | 2019-01-11 | P1EWCC-PWP10-1230 |  |  |  | -59.5d | 0d |  |  | AWE5 |
| P1EWCC-EWP06-7190 |  | Site Clearance for C3 |  | 50d | 2019-01-11 | 2019-03-22 | P1EWCC-AWP01-8250 |  |  |  | -59.5d | 0d | start on or after 2018-09-03 | y | AWE5 |
|  | 1 | **SOW Completion** |  |  | 2019-03-22 | 2019-03-22 |  |  |  |  |  |  |  |  |  |
| P1EWCC-EWP06-7200 |  | Completion of Site clearance works for C3 | milestone | 0d | 2019-03-22 | 2019-03-22 | P1EWCC-EWP06-7190 |  |  |  | -59.5d | 995.5d | finish on 2018-12-31 | y | AWE5 |
|  | 1 | **Utilities** |  |  | 2018-02-02 | 2019-09-30 |  |  |  |  |  |  |  |  |  |
| P1EWCC-PWP10-1260 |  | Scheme Design and Approval of Utilities to Compounds C3 |  | 108.12d | 2018-02-02 | 2018-07-04 | P1EWCC-PWP01-9660 |  |  |  | -132d | 0d |  | y | DC3D |
| P1EWCC-PWP10-1270 |  | Detailed Design and Approval of Utilities to Compounds C3 |  | 108.12d | 2018-09-19 | 2019-02-18 | P1EWCC-PWP01-11370, P1EWCC-PWP10-1260 |  |  |  | -132d | 0d |  | y | DC3I |
| P1EWCC-AWP01-8260 |  | Procurement of Utilities to Compounds C3 |  | 60d | 2019-02-19 | 2019-05-13 | P1EWCC-PWP10-1260, P1EWCC-PWP10-1270 |  |  |  | -132d | 0d |  |  | DC3I |
| P1EWCC-EWP06-7230 |  | Installation of Utilities to Compounds C3 |  | 100d | 2019-05-14 | 2019-09-30 | P1EWCC-AWP01-8260 |  |  |  | -132d | 0d |  | y | DC3I |
|  | 1 | **SOW Completion** |  |  | 2019-09-30 | 2019-09-30 |  |  |  |  |  |  |  |  |  |
| P1EWCC-EWP06-7240 |  | Completion of Utilities to Compunds C3 | milestone | 0d | 2019-09-30 | 2019-09-30 | P1EWCC-EWP06-7230 |  |  |  | -132d | 859d | finish on 2019-03-29 | y | DC3I |
|  | C31 | **Brackley To Southam (CH 95340 to CH 126540)** |  |  | 2017-02-17 | 2020-03-31 |  |  |  |  |  |  |  |  |  |
|  | C311 | **Brackley To Greatworth (Ch. 95340 To Ch. 101950)** |  |  | 2017-03-20 | 2020-03-31 |  |  |  |  |  |  |  |  |  |
|  | 1 | **095-L1 - Turweston Embankment** |  |  | 2017-03-20 | 2019-06-28 |  |  |  |  |  |  |  |  |  |
|  | 8 | **Land Access** |  |  | 2017-05-31 | 2018-07-26 |  |  |  |  |  |  |  |  |  |
|  | 1 | **Survey Work** |  |  | 2017-05-31 | 2017-05-31 |  |  |  |  |  |  |  |  |  |
| P1EWCC-AWP01-6870 |  | Land Access Granted for Survey Work (Schedule 2) | milestone | 0d | 2017-05-31 A | 2017-05-31 A |  | 100% | 2017-04-03 | 2017-04-03 |  |  |  | y | AW1 |
|  | 2 | **Possession** |  |  | 2018-07-26 | 2018-07-26 |  |  |  |  |  |  |  |  |  |
| P1EWCC-AWP01-6880 |  | Land Access Possession Granted for Construction (Schedule 16) | milestone | 0d | 2018-07-26 | 2018-07-26 |  |  |  |  | 37d | 0d | as late as possible | y | AW1 |
|  | 3 | **Survey Works** |  |  | 2017-03-20 | 2018-11-16 |  |  |  |  |  |  |  |  |  |
| P1EWCC-AWP01-6860 |  | Planning Consent & Licensing for Survey Work |  | 10d | 2017-03-20 A | 2017-06-16 A | P1EWCC-AWP01-1230 | 100% | 2017-03-20 | 2017-03-31 |  |  |  |  | AW1 |
| P1EWCC-FWP01-3450 |  | Undertake Arboricultural Surveys |  | 125d | 2017-12-15 | 2018-06-08 | P1EWCC-PWP01-5610 |  |  |  | 275.12d |  |  | y | AWS |

| ID | WBS | Activity | Type | Duration | Start | Finish | Predecessors | Complete | Planned start | Planned finish | Total float | Free float | Constraint | Calendar | Fusion - WPS | HS2 Filter |
| --- | --- | --- | --- | --- | --- | --- | --- | --- | --- | --- | --- | --- | --- | --- | --- | --- |
|  | 1 | **Ecological & Environmental Surveys** |  |  | 2017-06-19 | 2017-06-23 |  |  |  |  |  |  |  |  |  |  |
| P1EWCC-PWP01-4170 |  | Survey for Badgers, Bats, GCN & Reptiles |  | 25d | 2017-06-19 A | 2017-06-23 A | P1EWCC-AWP01-6860, P1EWCC-AWP01-6870 | 100% | 2017-04-03 | 2017-05-05 |  |  |  |  | AW1 |  |
|  | 4 | **Arboricultural survey** |  |  |  |  |  |  |  |  |  |  |  |  |  |  |
|  | 2 | **Engineering Surveys** |  |  |  |  |  |  |  |  |  |  |  |  |  |  |
|  | 3 | **Historic Environment** |  |  | 2018-02-09 | 2018-11-16 |  |  |  |  |  |  |  |  |  |  |
| P1EWCC-PWP06-6110 |  | Non-Intrusive Surveys (geophysics) |  | 20d | 2018-02-09 | 2018-03-09 | P1EWCC-AWP01-6870, P1EWCC-PWP06-6090, P1EWCC-PWP05-240 |  |  |  | 67.88d | 0d |  |  | AWH |  |
| P1EWCC-PWP06-10170 |  | Non-Intrusive Surveys (trial trenching) |  | 30d | 2018-05-04 | 2018-06-15 | P1EWCC-PWP06-6100, P1EWCC-PWP05-240 |  |  |  | 67.88d | 0d |  |  | AWH |  |
| P1EWCC-PWP06-6130 |  | Intrusive Surveys |  | 40d | 2018-09-24 | 2018-11-16 | P1EWCC-PWP02-9200, P1EWCC-PWP06-6100, P1EWCC-PWP06-10180, P1EWCC-AWP01-6880 |  |  |  | 37.75d | 0d |  |  | AWH |  |
|  | 7 | **Historic Environment** |  |  | 2017-12-15 | 2019-01-04 |  |  |  |  |  |  |  |  |  |  |
| P1EWCC-PWP06-6090 |  | Production and Approval of Project Plans & LS-WSI (non-intrusive surveys) |  | 40d | 2017-12-15 | 2018-02-09 | P1EWCC-PWP05-240 |  |  |  | 67.88d | 0d |  |  | AWH |  |
| P1EWCC-PWP06-6100 |  | Update of Project Plans and LS-WSI and Approval (intrusive surveys) |  | 40d | 2018-03-09 | 2018-05-04 | P1EWCC-PWP06-6110 |  |  |  | 67.88d | 0d |  |  | AWH |  |
| P1EWCC-PWP06-10180 |  | Update of Project Plans and LS-WSI and Approval (intrusive surveys) |  | 40d | 2018-06-15 | 2018-08-10 | P1EWCC-PWP06-10170 |  |  |  | 67.88d | 30.12d |  |  | AWH |  |
| P1EWCC-PWP06-6120 |  | Report of Findings And Approval (Archaeological Investigation) |  | 35d | 2018-11-19 | 2019-01-04 | P1EWCC-PWP06-6130 |  |  |  | 1050d |  |  |  | AWH |  |
|  | 4 | **Ecological Mitigation Works** |  |  | 2018-07-26 | 2018-09-23 |  |  |  |  |  |  |  |  |  |  |
|  | 5 | **Translocation of Species** |  |  | 2018-07-26 | 2018-09-23 |  |  |  |  |  |  |  |  |  |  |
| P1EWCC-PWP02-9200 |  | Species Translocation to Habitat Creation (095-M4E & 095-M5W) |  | 60d | 2018-07-26 | 2018-09-23 | P1EWCC-PWP02-5860 SS+60d, P1EWCC-AWP01-6880, P1EWCC-PWP01-4170, P1EWCC-PWP02-14610 |  |  |  | 51.88d | 0d |  | HS2 - 8h x 7d Workweek (No Holidays) | AWE1 |  |
|  | 9 | **Highway Works** |  |  | 2018-02-02 | 2019-06-19 |  |  |  |  |  |  |  |  |  |  |
| P1EWCC-FWP06-6800 |  | Highways Scheme Design & Approval - Haul Road between Turweston Embankment and Chipping Warden Road Head |  | 108.12d | 2018-02-02 | 2018-07-04 | P1EWCC-PWP01-9960 |  |  |  | -58.38d | 0d |  |  | DC3E |  |
| P1EWCC-FWP06-7310 |  | Highways Detailed Design & Approval - Haul Road between Turweston Embankment and Chipping Warden Road Head |  | 108.12d | 2018-09-19 | 2019-02-18 | P1EWCC-FWP06-6800, P1EWCC-PWP01-11430 |  |  |  | -58.25d | 0d |  |  | DC3J |  |
| P1EWCC-AWP01-6890 |  | Planning Consent & Licensing -Haul Road between Turweston Embankment and Chipping Warden Road Head |  | 50d | 2018-12-11 | 2019-02-18 | P1EWCC-FWP06-6800, P1EWCC-FWP06-7310 FF |  |  |  | -58.25d | 0d |  |  | DC3J |  |
| P1EWCC-EWP06-5780 |  | Highways Construction - Haul Road between Turweston Embankment and Chipping Warden Road Head |  | 86.5d | 2019-02-19 | 2019-06-19 | P1EWCC-PWP06-6130 SS+10d, P1EWCC-PWP02-9200, P1EWCC-AWP01-6890, P1EWCC-AWP01-6880 |  |  |  | -58.25d | 0d |  |  | DC3J |  |
|  | 1 | **Water Resources** |  |  | 2018-02-28 | 2018-06-06 |  |  |  |  |  |  |  |  |  |  |
| P1EWCC-PWP04-2220 |  | Preliminary Flood Plain Storage Design for Great Ouse Turweston |  | 70d | 2018-02-28 | 2018-06-06 | P1EWCC-PWP04-2150 |  |  |  | 448.38d |  |  |  | AWE3 | y |
|  | 6 | **SOW Completion Dates** |  |  | 2018-09-28 | 2019-06-28 |  |  |  |  |  |  |  |  |  |  |
| P1EWCC-PWP04-1570 |  | Completion of Fluvial/hydrological modelling,initial site visits, inception report, topographical survey, and modelling. | milestone | 0d | 2018-09-28 | 2018-09-28 |  |  |  |  | 0d | 1120.38d | finish on 2018-09-28 |  | AWE3 | y |
| P1EWCC-PWP02-9230 |  | Completion of Species Translocation/ exclusion - Bats | milestone | 0d | 2018-12-31 | 2018-12-31 | P1EWCC-PWP02-9200 |  |  |  | 0d | 1055d | finish on 2018-12-31 |  | AWE1 |  |
| P1EWCC-EWP05-5790 |  | Completion of Highways Construction - Haul Road between Turweston Embankment and Chipping Warden Road Head | milestone | 0d | 2019-06-19 | 2019-06-19 | P1EWCC-EWP06-5780 |  |  |  | -58.25d | 932.5d | finish on 2019-03-29 |  | DC3J |  |
| P1EWCC-PWP02-9210 |  | Completion of Species Translocation/ exclusion - Reptiles | milestone | 0d | 2019-06-28 | 2019-06-28 | P1EWCC-PWP02-9200 |  |  |  | 0d | 926d | finish on 2019-06-28 |  | AWE1 |  |
| P1EWCC-PWP02-9240 |  | Completion of Species Translocation/ exclusion - Badgers | milestone | 0d | 2019-06-28 | 2019-06-28 | P1EWCC-PWP02-9200 |  |  |  | 0d | 926d | finish on 2019-06-28 |  | AWE1 |  |
| P1EWCC-PWP02-9250 |  | Completion of Species Translocation/ exclusion - Water Voles | milestone | 0d | 2019-06-28 | 2019-06-28 | P1EWCC-PWP02-9200 |  |  |  | 0d | 926d | finish on 2019-06-28 |  | AWE1 |  |
| P1EWCC-FWP06-7260 |  | Completion of Arboricultural survey | milestone | 0d | 2019-06-28 | 2019-06-28 | P1EWCC-FWP01-3450 |  |  |  | 0d | 925d | finish on 2019-06-28 |  | AWS |  |

| ID | WBS | Activity | Type | Duration | Start | Finish | Predecessors | Complete | Planned start | Planned finish | Total float | Free float | Constraint | Calendar | HS2 Filter | Fusion - WPS |
| --- | --- | --- | --- | --- | --- | --- | --- | --- | --- | --- | --- | --- | --- | --- | --- | --- |
|  | 10 | **095-L2 - Turweston Viaduct** |  |  | 2017-03-20 | 2020-01-10 |  |  |  |  |  |  |  |  |  |  |
|  | 8 | **Land Access** |  |  | 2017-05-31 | 2019-08-01 |  |  |  |  |  |  |  |  |  |  |
|  | 1 | **Survey Work** |  |  | 2017-05-31 | 2017-05-31 |  |  |  |  |  |  |  |  |  |  |
| P1EWCC-AWP01-8150 |  | Land Access Granted for Survey Work (Schedule 2) | milestone | 0d | 2017-05-31 A | 2017-05-31 A |  | 100% | 2017-04-03 | 2017-04-03 |  |  |  |  | y | AW1 |
|  | 2 | **Possession** |  |  | 2019-08-01 | 2019-08-01 |  |  |  |  |  |  |  |  |  |  |
| P1EWCC-AWP01-8160 |  | Land Access Possession Granted for Construction (Schedule 16) | milestone | 0d | 2019-08-01 | 2019-08-01 |  |  |  |  | -68d | 0d | as late as possible |  | y | AW1 |
|  | 3 | **Survey Works** |  |  | 2017-03-20 | 2019-11-22 |  |  |  |  |  |  |  |  |  |  |
| P1EWCC-AWP01-8140 |  | Planning Consent & Licensing for Survey Work |  | 10d | 2017-03-20 A | 2017-06-16 A | P1EWCC-AWP01-1230 | 100% | 2017-03-20 | 2017-03-31 |  |  |  |  |  | AW1 |
| P1EWCC-FWP01-3470 |  | Undertake Arboricultural Surveys |  | 125d | 2017-12-15 | 2018-06-08 | P1EWCC-PWP01-5610 |  |  |  | 275.12d |  |  |  | y | AWS |
|  | 1 | **Ecological & Environmental Surveys** |  |  |  |  |  |  |  |  |  |  |  |  |  |  |
|  | 4 | **Arboricultural survey** |  |  |  |  |  |  |  |  |  |  |  |  |  |  |
|  | 2 | **Engineering Surveys** |  |  |  |  |  |  |  |  |  |  |  |  |  |  |
|  | 3 | **Historic Environment** |  |  | 2018-02-09 | 2019-11-22 |  |  |  |  |  |  |  |  |  |  |
| P1EWCC-PWP06-8500 |  | Non-Intrusive Surveys (geophysics) |  | 20d | 2018-02-09 | 2018-03-09 | P1EWCC-PWP06-8480, P1EWCC-AWP01-8150, P1EWCC-PWP05-240 |  |  |  | 401d | 0d |  |  |  | AWH |
| P1EWCC-PWP06-10190 |  | Non-Intrusive Surveys (trial trenching) |  | 30d | 2018-05-04 | 2018-06-15 | P1EWCC-PWP06-8490, P1EWCC-PWP05-240 |  |  |  | 401d | 0d |  |  |  | AWH |
| P1EWCC-PWP06-8520 |  | Intrusive Surveys |  | 40d | 2019-09-30 | 2019-11-22 | P1EWCC-PWP02-11570, P1EWCC-PWP06-8490, P1EWCC-PWP06-10200 FF, P1EWCC-AWP01-8160 |  |  |  | 65.88d | 0d |  |  |  | AWH |
|  | 7 | **Historic Environment** |  |  | 2017-12-15 | 2020-01-10 |  |  |  |  |  |  |  |  |  |  |
| P1EWCC-PWP06-8480 |  | Production and Approval of Project Plans & LS-WSI (non-intrusive surveys) |  | 40d | 2017-12-15 | 2018-02-09 | P1EWCC-PWP05-240 |  |  |  | 401d | 0d |  |  |  | AWH |
| P1EWCC-PWP06-8490 |  | Update of Project Plans and LS-WSI and Approval (intrusive surveys) |  | 40d | 2018-03-09 | 2018-05-04 | P1EWCC-PWP06-8500 |  |  |  | 401d | 0d |  |  |  | AWH |
| P1EWCC-PWP06-10200 |  | Update of Project Plans and LS-WSI and Approval (intrusive surveys) |  | 40d | 2018-06-15 | 2018-08-10 | P1EWCC-PWP06-10190 |  |  |  | 401d | 335.12d |  |  |  | AWH |
| P1EWCC-PWP06-8510 |  | Report of Findings And Approval (Archaeological Investigation) |  | 35d | 2019-11-25 | 2020-01-10 | P1EWCC-PWP06-8520 |  |  |  | 785d |  |  |  |  | AWH |
|  | 4 | **Ecological Mitigation Works** |  |  | 2019-08-01 | 2019-09-29 |  |  |  |  |  |  |  |  |  |  |
|  | 5 | **Translocation of Species** |  |  | 2019-08-01 | 2019-09-29 |  |  |  |  |  |  |  |  |  |  |
| P1EWCC-PWP02-11570 |  | Species Translocation to Habitat Creation (095-M4E & 095-M5W) |  | 60d | 2019-08-01 | 2019-09-29 | P1EWCC-AWP01-8160, P1EWCC-PWP02-5860 SS+60d, P1EWCC-PWP02-14610 |  |  |  | -94d | 0d | start on or after 2019-08-01 | HS2 - 8h x 7d Workweek (No Holidays) |  | AWE1 |

| ID | WBS | Activity | Type | Duration | Start | Finish | Predecessors | Complete | Remaining | Planned start | Planned finish | Total float | Free float | Constraint | Expected finish | HS2 Filter | Fusion - WPS |
| --- | --- | --- | --- | --- | --- | --- | --- | --- | --- | --- | --- | --- | --- | --- | --- | --- | --- |
|  | 1 | **Water Resources** |  |  | 2017-05-31 | 2018-06-06 |  |  |  |  |  |  |  |  |  |  |  |
| P1EWCC-PWP04-2150 |  | Hydrological Modelling - Great Ouse Turweston |  | 194.62d | 2017-05-31 A | 2018-02-28 | P1EWCC-UWP01-1000 | 40% | 117.5d | 2017-09-28 | 2018-06-27 | 152.12d | 0d |  | 2018-02-28 | y | UW1 |
| P1EWCC-PWP04-2210 |  | Preliminary Flood Plain Storage Design for Great Ouse Turweston |  | 70d | 2018-02-28 | 2018-06-06 | P1EWCC-PWP04-2150 |  |  |  |  | 448.38d |  |  |  | y | AWE3 |
|  | 6 | **SOW Completion Dates** |  |  | 2018-09-28 | 2019-09-30 |  |  |  |  |  |  |  |  |  |  |  |
| P1EWCC-PWP04-2160 |  | Completion of Fluvial/hydrological modelling,initial site visits, inception report, topographical survey, and modelling. | milestone | 0d | 2018-09-28 | 2018-09-28 | P1EWCC-PWP04-2150 |  |  |  |  | 0d | 1120.38d | finish on 2018-09-28 |  | y | UW1 |
| P1EWCC-PWP04-2170 |  | Completion of Undertake preliminary floodplain storage design | milestone | 0d | 2018-09-28 | 2018-09-28 |  |  |  |  |  | 0d | 1120.38d | finish on 2018-09-28 |  | y | AWE3 |
| P1EWCC-FWP06-7240 |  | Completion of Arboricultural survey | milestone | 0d | 2019-06-28 | 2019-06-28 | P1EWCC-FWP01-3470 |  |  |  |  | 0d | 925d | finish on 2019-06-28 |  |  | AWS |
| P1EWCC-PWP02-11580 |  | Completion of Species Translocation/ exclusion - Reptiles | milestone | 0d | 2019-09-30 | 2019-09-30 | P1EWCC-PWP02-11570 |  |  |  |  | -66d | 860d | finish on 2019-06-28 |  |  | AWE1 |
| P1EWCC-PWP02-11590 |  | Completion of Species Translocation/ exclusion - Bats | milestone | 0d | 2019-09-30 | 2019-09-30 | P1EWCC-PWP02-11570 |  |  |  |  | -66d | 860d | finish on 2019-06-28 |  |  | AWE1 |
| P1EWCC-PWP02-11610 |  | Completion of Species Translocation/ exclusion - Otters | milestone | 0d | 2019-09-30 | 2019-09-30 | P1EWCC-PWP02-11570 |  |  |  |  | -66d | 860d | finish on 2019-06-28 |  |  | AWE1 |
|  | 8 | **095-L3 - Helmdon Embankment** |  |  | 2017-03-20 | 2019-11-22 |  |  |  |  |  |  |  |  |  |  |  |
|  | 7 | **Land Access** |  |  | 2017-04-11 | 2019-08-01 |  |  |  |  |  |  |  |  |  |  |  |
|  | 1 | **Survey Work** |  |  | 2017-04-11 | 2017-04-11 |  |  |  |  |  |  |  |  |  |  |  |
| P1EWCC-AWP01-4810 |  | Land Access Granted for Survey Work (Schedule 2) | milestone | 0d | 2017-04-11 A | 2017-04-11 A |  | 100% |  | 2017-03-20 | 2017-03-20 |  |  |  |  | y | UW1 |
|  | 2 | **Possession** |  |  | 2017-08-09 | 2019-08-01 |  |  |  |  |  |  |  |  |  |  |  |
|  | 1 | **Ecological Mitigation Area** |  |  | 2017-08-09 | 2017-08-09 |  |  |  |  |  |  |  |  |  |  |  |
| P1EWCC-AWP01-4820 |  | Land Access Possession Granted for Ecolgical Mitigation Site (Schedule 16) 095-M4E & 095-M5W | milestone | 0d | 2017-08-09 A | 2017-08-09 A |  | 100% |  | 2017-08-11 | 2017-08-11 |  |  |  |  | y | UW1 |
|  | 2 | **095-L3 - Helmdon Embankment** |  |  | 2019-08-01 | 2019-08-01 |  |  |  |  |  |  |  |  |  |  |  |
| P1EWCC-AWP01-4830 |  | Land Access Possession Granted for Construction of 095-L3 - Helmdon Embankment (Schedule 16) | milestone | 0d | 2019-08-01 | 2019-08-01 |  |  |  |  |  | -68d | 0d | as late as possible |  | y | AW1 |
|  | 10 | **Survey Works** |  |  | 2017-03-20 | 2019-10-04 |  |  |  |  |  |  |  |  |  |  |  |
| P1EWCC-AWP01-4800 |  | Planning Consent & Licensing for Survey Work |  | 0d | 2017-03-20 A | 2017-06-16 A | P1EWCC-AWP01-1230 | 100% |  | 2017-05-22 | 2017-05-22 |  |  |  |  |  | UW1 |
| P1EWCC-FWP01-3510 |  | Undertake Remaining Soil Surveys |  | 120d | 2017-09-18 | 2018-03-02 |  |  |  |  |  | 1270d |  |  |  | y | AWS |
| P1EWCC-FWP01-3520 |  | Undertake Arboricultural Surveys |  | 125d | 2017-09-18 | 2018-03-09 |  |  |  |  |  | 1265d |  |  |  | y | AWS |
| P1EWCC-FWP01-3530 |  | Undertake Remaining Ecology & Environmental Surveys |  | 398d | 2017-09-18 | 2019-03-27 |  |  |  |  |  | 992d |  |  |  | y | AWS |

| ID | WBS | Activity | Duration | Start | Finish | Predecessors | Complete | Remaining | Planned start | Planned finish | Total float | Free float | Expected finish | Fusion - WPS |
| --- | --- | --- | --- | --- | --- | --- | --- | --- | --- | --- | --- | --- | --- | --- |
|  | 1 | **Ecological & Environmental Surveys** |  | 2017-06-19 | 2017-09-29 |  |  |  |  |  |  |  |  |  |
| P1EWCC-PWP01-3230 |  | Survey for Badgers, Bats, GCN & Reptiles | 25d | 2017-06-19 A | 2017-09-29 | P1EWCC-AWP01-4800, P1EWCC-AWP01-4810 | 60% | 9.88d | 2017-05-22 | 2017-06-23 | -65.88d | 0d | 2017-09-29 | UW1 |
|  | 2 | **Engineering Surveys** |  | 2017-04-11 | 2017-05-09 |  |  |  |  |  |  |  |  |  |
| P1EWCC-PWP03-3300 |  | Survey for Engineering (Topo, GPR, Utility, Soil) | 15d | 2017-04-11 A | 2017-05-09 A | P1EWCC-AWP01-4800, P1EWCC-AWP01-4810 | 100% |  | 2017-03-20 | 2017-04-07 |  |  |  | UW1 |
|  | 3 | **Historic Environment Surveys** |  | 2017-07-14 | 2019-10-04 |  |  |  |  |  |  |  |  |  |
|  | 1 | **Ecological Mitigation South of Illets Farm 1059 (095-M4E)** |  | 2017-07-14 | 2017-12-22 |  |  |  |  |  |  |  |  |  |
| P1EWCC-PWP06-2640 |  | Geophysics (ecological mitigation site) | 5d | 2017-07-14 A | 2017-09-15 A | P1EWCC-AWP01-4800, P1EWCC-AWP01-4810, P1EWCC-PWP06-2630 | 100% |  | 2017-07-24 | 2017-07-28 |  |  |  | UW1 |
| P1EWCC-PWP06-2660 |  | Intrusive Surveys (ecological mitigation site) | 5d | 2017-12-15 | 2017-12-22 | P1EWCC-PWP06-2650, P1EWCC-PWP02-5880, P1EWCC-PWP05-240 |  |  |  |  | 70.12d | 0d |  | AWH |
|  | 2 | **095-L3 - Helmdon Embankment** |  | 2018-02-09 | 2019-10-04 |  |  |  |  |  |  |  |  |  |
| P1EWCC-PWP06-10210 |  | Non-Intrusive Surveys (geophysics) | 20d | 2018-02-09 | 2018-03-09 | P1EWCC-PWP06-10230, P1EWCC-PWP05-240 |  |  |  |  | 396d | 0d |  | AWH |
| P1EWCC-PWP06-10220 |  | Non-Intrusive Surveys (trial trenching) | 30d | 2018-05-04 | 2018-06-15 | P1EWCC-PWP06-10240, P1EWCC-PWP05-240 |  |  |  |  | 396d | 0d |  | AWH |
| P1EWCC-PWP06-2680 |  | Intrusive Surveys (095-L3 - Helmdon Embankment) | 5d | 2019-09-30 | 2019-10-04 | P1EWCC-PWP02-5900, P1EWCC-PWP06-10250, P1EWCC-AWP01-4830 |  |  |  |  | 100.88d | 0d |  | AWH |
|  | 6 | **Historic Environment** |  | 2017-04-17 | 2019-11-22 |  |  |  |  |  |  |  |  |  |
|  | 1 | **Ecological Mitigation South of Illets Farm 1059 (095-M4E)** |  | 2017-04-17 | 2018-02-09 |  |  |  |  |  |  |  |  |  |
| P1EWCC-PWP06-2630 |  | Production and Approval of LS-WSI Northants, Oxon (non-intrusive surveys) Code 2 | 20d | 2017-04-17 A | 2017-06-27 A | P1EWCC-PWP03-3300 | 100% |  | 2017-04-24 | 2017-05-19 |  |  |  | UW1 |
| P1EWCC-PWP06-2650 |  | Update of Project Plans and LS-WSI and Approval (intrusive surveys) | 30d | 2017-09-18 | 2017-10-27 | P1EWCC-PWP06-2640, P1EWCC-PWP06-3370 FF |  |  |  |  | 105d | 34.88d |  | UW1 |
| P1EWCC-PWP06-3370 |  | HS2 issue Project Plan | 1d | 2017-09-18 | 2017-09-18 |  |  |  |  |  | 134d | 29d |  | UW1 |
| P1EWCC-PWP06-2670 |  | Report of Findings And Approval (ecological mitigation site) | 35d | 2017-12-22 | 2018-02-09 | P1EWCC-PWP06-2660 |  |  |  |  | 1285.12d |  |  | AWH |
|  | 2 | **095-L3 - Helmdon Embankment** |  | 2017-12-15 | 2019-11-22 |  |  |  |  |  |  |  |  |  |
| P1EWCC-PWP06-10230 |  | Production and Approval of Project Plans & LS-WSI (non-intrusive surveys) | 40d | 2017-12-15 | 2018-02-09 | P1EWCC-PWP05-240 |  |  |  |  | 396d | 0d |  | AWH |
| P1EWCC-PWP06-10240 |  | Update of Project Plans and LS-WSI and Approval (intrusive surveys) | 40d | 2018-03-09 | 2018-05-04 | P1EWCC-PWP06-10210 |  |  |  |  | 396d | 0d |  | AWH |
| P1EWCC-PWP06-10250 |  | Update of Project Plans and LS-WSI and Approval (intrusive surveys) | 40d | 2018-06-15 | 2018-08-10 | P1EWCC-PWP06-10220 |  |  |  |  | 396d | 295.12d |  | AWH |
| P1EWCC-PWP06-2690 |  | Report of Findings And Approval (095-L3 - Helmdon Embankment) | 35d | 2019-10-07 | 2019-11-22 | P1EWCC-PWP06-2680 |  |  |  |  | 820d |  |  | AWH |
|  | 11 | **Ecological Mitigation Works** |  | 2017-04-21 | 2019-09-29 |  |  |  |  |  |  |  |  |  |
|  | 1 | **Design** |  | 2017-04-21 | 2017-10-31 |  |  |  |  |  |  |  |  |  |
| P1EWCC-PWP02-5870 |  | Design of Habitat Creation (095-M4E & 095-M5W) | 25d | 2017-04-21 A | 2017-10-06 | P1EWCC-PWP03-3300 FF | 40% | 14.88d | 2017-04-10 | 2017-05-12 | 108.12d | 0d | 2017-10-06 | UW1 |
| P1EWCC-AWP01-4790 |  | Planning Consent & Licensing for Habitat Creation (095-M4E & 095-M5W) | 65d | 2017-07-07 A | 2017-10-31 | P1EWCC-PWP02-5870 SS | 51% | 31.88d | 2017-07-07 | 2017-10-05 | 108.12d | 0d | 2017-10-31 | UW1 |

| ID | WBS | Activity | Type | Duration | Start | Finish | Predecessors | Complete | Planned start | Planned finish | Total float | Free float | Constraint | Calendar | Fusion - WPS | HS2 Filter |
| --- | --- | --- | --- | --- | --- | --- | --- | --- | --- | --- | --- | --- | --- | --- | --- | --- |
|  | 2 | **Species Removal from Habitat Area** |  |  | 2017-07-31 | 2017-12-03 |  |  |  |  |  |  |  |  |  |  |
| P1EWCC-PWP02-5890 |  | MS/RAMS for GCN/Reptile Clearance from Habitat Creation Site (095-M4E & 095-M5W) |  | 15d | 2017-07-31 A | 2017-09-15 A | P1EWCC-PWP01-3230 FF | 100% | 2017-07-24 | 2017-08-11 |  |  |  |  | UW1 |  |
| P1EWCC-PWP02-5880 |  | Exclude GCN/Reptile from Habitat Creation (095-M4E & 095-M5W) |  | 65d | 2017-09-30 | 2017-12-03 | P1EWCC-AWP01-4820, P1EWCC-PWP03-3300, P1EWCC-PWP02-5890 |  |  |  | 112d | 12d |  | HS2 - 8h x 7d Workweek (No Holidays) | UW1 |  |
|  | 3 | **Habitat Creation** |  |  | 2018-01-05 | 2018-08-29 |  |  |  |  |  |  |  |  |  |  |
| P1EWCC-PWP02-5850 |  | Habitat Creation (095-M4E & 095-M5W) |  | 30d | 2018-01-05 | 2018-02-16 | P1EWCC-AWP01-4790, P1EWCC-PWP02-5880, P1EWCC-PWP06-2660, P1EWCC-PWP02-9220, P1EWCC-PWP02-5870 |  |  |  | 60.12d | 38.12d |  |  | AWE1 |  |
| P1EWCC-PWP02-5860 |  | Habitat Creation Maturity Period (095-M4E & 095-M5W) |  | 182d | 2018-03-01 | 2018-08-29 | P1EWCC-PWP02-5850 SS |  |  |  | 31.88d | 87d | start on or after 2018-03-01 | HS2 - 8h x 7d Workweek (No Holidays) | AWE1 |  |
|  | 5 | **Translocation of Species** |  |  | 2019-08-01 | 2019-09-29 |  |  |  |  |  |  |  |  |  |  |
| P1EWCC-PWP02-5900 |  | Species Translocation to Habitat Creation (095-M4E & 095-M5W) |  | 60d | 2019-08-01 | 2019-09-29 | P1EWCC-AWP01-4830, P1EWCC-PWP02-5860 SS+60d, P1EWCC-PWP02-14610 |  |  |  | -94d | 0d | start on or after 2019-08-01 | HS2 - 8h x 7d Workweek (No Holidays) | AWE1 |  |
|  | 1 | **SOW Completion Dates** |  |  | 2017-09-29 | 2019-09-30 |  |  |  |  |  |  |  |  |  |  |
| P1EWCC-PWP01-2050 |  | Completion of Survey for Badgers (95+750) | milestone | 0d | 2017-09-29 | 2017-09-29 | P1EWCC-PWP01-3230 |  |  |  | -65.88d | 1380.12d | finish on 2017-06-30 |  | UW1 |  |
| P1EWCC-PWP01-2060 |  | Completion of Survey for Bats (96+000) | milestone | 0d | 2017-09-29 | 2017-09-29 | P1EWCC-PWP01-3230 |  |  |  | -65.88d | 1380.12d | finish on 2017-06-30 |  | UW1 |  |
| P1EWCC-PWP01-2070 |  | Completion of Survey for Otters (96+000) | milestone | 0d | 2017-09-29 | 2017-09-29 | P1EWCC-PWP01-3230 |  |  |  | -65.88d | 1380.12d | finish on 2017-06-30 |  | UW1 |  |
| P1EWCC-PWP01-2080 |  | Completion of Survey for Reptiles (96+000) | milestone | 0d | 2017-09-29 | 2017-09-29 | P1EWCC-PWP01-3230 |  |  |  | -65.88d | 1380.12d | finish on 2017-06-30 |  | UW1 |  |
| P1EWCC-PWP01-2090 |  | Completion of Survey for Kingfishers (96+000) | milestone | 0d | 2017-09-29 | 2017-09-29 | P1EWCC-PWP01-3230 |  |  |  | -65.88d | 1380.12d | finish on 2017-06-30 |  | UW1 |  |
| P1EWCC-PWP02-2110 |  | Completion of Species Translocation/ exclusion - GCN | milestone | 0d | 2019-09-30 | 2019-09-30 | P1EWCC-PWP02-5900 |  |  |  | -66d | 860d | finish on 2019-06-28 |  | AWE1 |  |
| P1EWCC-PWP02-2120 |  | Completion of Species Translocation/ exclusion - Reptiles | milestone | 0d | 2019-09-30 | 2019-09-30 | P1EWCC-PWP02-5900 |  |  |  | -66d | 860d | finish on 2019-06-28 |  | AWE1 |  |
| P1EWCC-PWP02-3030 |  | Completion of Species Translocation/ exclusion - Otters | milestone | 0d | 2019-09-30 | 2019-09-30 | P1EWCC-PWP02-5900 |  |  |  | -1d | 860d | finish on 2019-09-27 |  | AWE1 |  |
| P1EWCC-PWP02-3040 |  | Completion of Species Translocation/ exclusion - Bats | milestone | 0d | 2019-09-30 | 2019-09-30 | P1EWCC-PWP02-5900 |  |  |  | -66d | 860d | finish on 2019-06-28 |  | AWE1 |  |
|  | 2 | **096-L1 - Brackley South Cutting** |  |  | 2017-03-20 | 2020-01-10 |  |  |  |  |  |  |  |  |  |  |
|  | 8 | **Land Access** |  |  | 2017-03-20 | 2018-07-26 |  |  |  |  |  |  |  |  |  |  |
|  | 1 | **Survey Work** |  |  | 2017-03-20 | 2017-03-20 |  |  |  |  |  |  |  |  |  |  |
| P1EWCC-AWP01-6910 |  | Land Access Granted for Survey Work (Schedule 2) | milestone | 0d | 2017-03-20 A | 2017-03-20 A |  | 100% | 2017-04-03 | 2017-04-03 |  |  | as late as possible |  | AW1 | y |
|  | 2 | **Possession** |  |  | 2018-07-26 | 2018-07-26 |  |  |  |  |  |  |  |  |  |  |
| P1EWCC-AWP01-6920 |  | Land Access Possession Granted for Construction (Schedule 16) | milestone | 0d | 2018-07-26 | 2018-07-26 |  |  |  |  | -39.25d | 0d | as late as possible |  | AW1 | y |

| ID | WBS | Activity | Duration | Start | Finish | Predecessors | Complete | Remaining | Planned start | Planned finish | Total float | Free float | Constraint | Expected finish | Fusion - WPS | HS2 Filter |
| --- | --- | --- | --- | --- | --- | --- | --- | --- | --- | --- | --- | --- | --- | --- | --- | --- |
|  | 3 | **Survey Works** |  | 2017-03-20 | 2019-11-22 |  |  |  |  |  |  |  |  |  |  |  |
| P1EWCC-AWP01-6900 |  | Planning Consent & Licensing for Survey Work | 10d | 2017-03-20 A | 2017-03-20 A | P1EWCC-AWP01-1230 | 100% |  | 2017-03-20 | 2017-03-31 |  |  |  |  | AW1 |  |
| P1EWCC-FWP01-3480 |  | Undertake Remaining Soil Surveys | 120d | 2017-12-15 | 2018-06-01 | P1EWCC-PWP01-5610, P1EWCC-PWP01-5610 FF |  |  |  |  | 294d | 385d |  |  | AWS | y |
| P1EWCC-FWP01-3490 |  | Undertake Arboricultural Surveys | 125d | 2017-12-15 | 2018-06-08 | P1EWCC-PWP01-5610 |  |  |  |  | 289d | 380d |  |  | AWS | y |
| P1EWCC-FWP01-3500 |  | Undertake Remaining Ecology & Environmental Surveys | 398d | 2017-12-15 | 2019-06-26 | P1EWCC-PWP01-5610 |  |  |  |  | 16d | 107d |  |  | AWS | y |
| P1EWCC-AWP01-6930 |  | Planning Consent & Licensing for Demoliton Survey Work at Farmstead at Illets Farm incorporating lletts Courtyard | 64.88d | 2018-01-29 | 2018-04-27 | P1EWCC-AWP01-1230 |  |  |  |  | -28.62d | 0d | as late as possible |  | AW1 |  |
|  | 1 | **Ecological & Environmental Surveys** |  | 2017-03-20 | 2017-10-06 |  |  |  |  |  |  |  |  |  |  |  |
| P1EWCC-PWP01-4180 |  | Survey for Badgers, Bats, GCN & Reptiles | 25d | 2017-03-20 A | 2017-10-06 | P1EWCC-AWP01-6910, P1EWCC-AWP01-6900 | 40% | 14.88d | 2017-04-03 | 2017-05-05 | 168.88d | 0d |  | 2017-10-06 | UW1 |  |
|  | 5 | **Arboricultural survey** |  |  |  |  |  |  |  |  |  |  |  |  |  |  |
|  | 2 | **Engineering Surveys** |  |  |  |  |  |  |  |  |  |  |  |  |  |  |
|  | 3 | **Historic Environment** |  | 2017-09-18 | 2019-11-22 |  |  |  |  |  |  |  |  |  |  |  |
| P1EWCC-PWP06-6170 |  | Non-Intrusive Surveys (IIIets Farm Roman Temple) | 10d | 2018-04-27 | 2018-05-11 | P1EWCC-AWP01-6910, P1EWCC-PWP06-6150, P1EWCC-PWP05-240 |  |  |  |  | -91d | 0d |  |  | AWH |  |
| P1EWCC-PWP06-8360 |  | Trial Trenching (IIIets Farm Roman Temple) | 30d | 2018-08-10 | 2018-09-21 | P1EWCC-PWP06-6160 |  |  |  |  | -91d | 0d |  |  | AWH |  |
| P1EWCC-PWP06-6190 |  | Intrusive Surveys (IIIets Farm Roman Temple) | 240d | 2018-12-21 | 2019-11-22 | P1EWCC-PWP02-9260, P1EWCC-PWP06-8370, P1EWCC-AWP01-6920 |  |  |  |  | -91d | 0d |  |  | AWH |  |
|  | 6 | **Ecological Mitigation Site Fox Covert 1063** |  | 2017-09-18 | 2017-12-22 |  |  |  |  |  |  |  |  |  |  |  |
| P1EWCC-PWP06-11760 |  | Geophysics | 1d | 2017-09-18 | 2017-09-18 | P1EWCC-PWP06-11790 |  |  |  |  | 189.75d | 0d |  |  | UW1 |  |
| P1EWCC-PWP06-11770 |  | Trial Trenching | 5d | 2017-12-15 | 2017-12-22 | P1EWCC-PWP05-240, P1EWCC-PWP06-11800 |  |  |  |  | 155.88d | 0d |  |  | AWH |  |
|  | 4 | **Demolition Surveys** |  | 2018-04-27 | 2018-05-11 |  |  |  |  |  |  |  |  |  |  |  |
| P1EWCC-FWP06-6820 |  | Demolition survey's for Farmstead at Illets Farm incorporating lletts Courtyard holiday accommodation (Heritage) | 10d | 2018-04-27 | 2018-05-11 | P1EWCC-AWP01-6930, P1EWCC-FWP06-7000, P1EWCC-PWP01-5610 |  |  |  |  | -28.62d | 0d |  |  | AWS |  |
|  | 7 | **Historic Environment** |  | 2017-04-17 | 2020-01-10 |  |  |  |  |  |  |  |  |  |  |  |
| P1EWCC-PWP06-6140 |  | HS2 issue Project Plan | 1d | 2017-09-18 | 2017-09-18 |  |  |  |  |  | -27.12d | 63.88d | start on or after 2017-03-31 |  | AWH |  |
| P1EWCC-PWP06-6150 |  | Production and Approval of LS-WSI (non-intrusive surveys) | 95d | 2017-12-15 | 2018-04-27 | P1EWCC-PWP06-6140, P1EWCC-PWP05-240 |  |  |  |  | -91d | 0d |  |  | AWH |  |
| P1EWCC-PWP06-6160 |  | Update of Project Plans and LS-WSI and Approval (intrusive surveys - trial trenching) | 65d | 2018-05-11 | 2018-08-10 | P1EWCC-PWP06-6170 |  |  |  |  | -91d | 0d |  |  | AWH |  |
| P1EWCC-PWP06-8370 |  | Update of Project Plans and LS-WSI and Approval (intrusive surveys) | 65d | 2018-09-21 | 2018-12-21 | P1EWCC-PWP06-8360 |  |  |  |  | -91d | 0d |  |  | AWH |  |
| P1EWCC-PWP06-6180 |  | Report of Findings And Approval (Archaeological Investigation) | 35d | 2019-11-22 | 2020-01-10 | P1EWCC-PWP06-6190 |  |  |  |  | 785.12d |  |  |  | AWH |  |

| ID | WBS | Activity | Type | Duration | Start | Finish | Predecessors | Complete | Planned start | Planned finish | Total float | Free float | Constraint | Calendar | Fusion - WPS | HS2 Filter |
| --- | --- | --- | --- | --- | --- | --- | --- | --- | --- | --- | --- | --- | --- | --- | --- | --- |
|  | 1 | **Ecological Mitigation Site Fox Covert 1063** |  |  | 2017-04-17 | 2018-02-09 |  |  |  |  |  |  |  |  |  |  |
| P1EWCC-PWP06-11790 |  | Production and Approval of LS-WSI Northants and Oxon (non-intrusive surveys) |  | 20d | 2017-04-17 A | 2017-06-27 A | P1EWCC-UWP01-1000 | 100% | 2017-04-24 | 2017-05-19 |  |  |  |  | UW1 |  |
| P1EWCC-PWP06-11780 |  | HS2 issue Project Plan |  | 1d | 2017-09-18 | 2017-09-18 |  |  |  |  | 219.75d | 30d |  |  | UW1 |  |
| P1EWCC-PWP06-11800 |  | Update of Project Plans and LS-WSI and Approval (intrusive surveys) |  | 30d | 2017-09-19 | 2017-10-30 | P1EWCC-PWP06-11780 FF, P1EWCC-PWP06-11760 |  |  |  | 189.75d | 33.88d |  |  | UW1 |  |
| P1EWCC-PWP06-11810 |  | Report of Findings And Approval (ecological mitigation site) |  | 35d | 2017-12-22 | 2018-02-09 | P1EWCC-PWP06-11770 |  |  |  | 1285.12d |  |  |  | AWH |  |
|  | 4 | **Ecological Mitigation Works** |  |  | 2018-03-01 | 2019-01-30 |  |  |  |  |  |  |  |  |  |  |
|  | 5 | **Translocation of Species** |  |  | 2018-07-26 | 2018-09-23 |  |  |  |  |  |  |  |  |  |  |
| P1EWCC-PWP02-9260 |  | Species Translocation to Habitat Creation (095-M4E & 095-M5W) |  | 60d | 2018-07-26 | 2018-09-23 | P1EWCC-AWP01-6920, P1EWCC-PWP01-4180, P1EWCC-PWP02-5860 SS+60d, P1EWCC-PWP02-14610 |  |  |  | -55.12d | 67d |  | HS2 - 8h x 7d Workweek (No Holidays) | AWE1 |  |
|  | 15 | **Woodland Habitat Creation Site - Fox Covert** |  |  | 2018-03-01 | 2019-01-30 |  |  |  |  |  |  |  |  |  |  |
|  | 1 | **Design** |  |  | 2018-03-01 | 2018-07-19 |  |  |  |  |  |  |  |  |  |  |
| P1EWCC-PWP02-13940 |  | Develop Scheme Design |  | 40d | 2018-03-01 | 2018-04-26 | P1EWCC-PWP02-11910 SS+5d |  |  |  | -109.75d | 0d |  |  | AWE2 | y |
| P1EWCC-PWP02-13950 |  | Develop Detailed Design |  | 50d | 2018-04-26 | 2018-07-05 | P1EWCC-PWP02-13940 |  |  |  | -109.75d | 0d |  |  | AWE2 | y |
| P1EWCC-PWP02-13970 |  | Schedule 17 Planning Consent Approval Period |  | 56d | 2018-04-27 | 2018-06-21 | P1EWCC-PWP02-13940 |  |  |  | 38.88d | 161d |  | HS2 - 8h x 7d Workweek (No Holidays) | AWE2 | y |
| P1EWCC-PWP02-13960 |  | HS2 approval period of vaildated design |  | 14d | 2018-07-06 | 2018-07-19 | P1EWCC-PWP02-13950 |  |  |  | -80d | 0d |  | HS2 - 8h x 7d Workweek (No Holidays) | AWE2 | y |
|  | 3 | **Installation** |  |  | 2018-07-19 | 2019-01-30 |  |  |  |  |  |  |  |  |  |  |
| P1EWCC-PWP02-9340 |  | Call off of Woodland compensation planting ID: 4. Fox Covert | milestone | 0d | 2018-07-19 | 2018-07-19 | P1EWCC-PWP02-11910, P1EWCC-PWP02-13960 |  |  |  | -58d | 0d |  |  | AWE2 | y |
| P1EWCC-PWP02-9350 |  | Call off period for Woodland compensation planting ID: 4. Fox Covert |  | 64.88d | 2018-07-19 | 2018-10-18 | P1EWCC-PWP02-9340 |  |  |  | -58d | 30.12d |  |  | AWE2 | y |
| P1EWCC-PWP02-9330 |  | Woodland compensation planting ID: 4. Fox Covert |  | 43.25d | 2018-11-29 | 2019-01-30 | P1EWCC-PWP02-9350, P1EWCC-AWP01-6920, P1EWCC-PWP06-11770, P1EWCC-PWP02-9260, P1EWCC-PWP02-13970, P1EWCC-PWP02-15070 |  |  |  | -88.12d | 0d | start on or after 2017-11-01 |  | AWE2 | y |
|  | 2 | **Site Clearance Works** |  |  | 2018-02-02 | 2019-03-22 |  |  |  |  |  |  |  |  |  |  |
| P1EWCC-PWP10-1140 |  | Design and Approval of Site clearance works for Main site compound establishment - Brackley South Cutting |  | 194.62d | 2018-02-02 | 2018-11-02 | P1EWCC-PWP02-12360 |  |  |  | -59.5d | 0d |  |  | AWE5 | y |
| P1EWCC-AWP01-6940 |  | Planning Consent & Licensing for Site clearance works for Main site compound establishment - Brackley South Cutting |  | 50d | 2018-11-02 | 2019-01-11 | P1EWCC-PWP10-1140 |  |  |  | -59.5d | 0d |  |  | AWE5 |  |
| P1EWCC-EWP06-5800 |  | Site Clearance for Main site compound establishment - Brackley South Cutting |  | 50d | 2019-01-11 | 2019-03-22 | P1EWCC-AWP01-6940, P1EWCC-AWP01-6920 |  |  |  | -59.5d | 0d | start on or after 2018-09-03 |  | AWE5 | y |
|  | 9 | **Demolition** |  |  | 2017-12-15 | 2019-02-08 |  |  |  |  |  |  |  |  |  |  |
| P1EWCC-FWP06-7000 |  | Prepare Investigation Plans for Scoping and Planning Demolitions inc Approval - Farmstead at Illets Farm |  | 95d | 2017-12-15 | 2018-04-27 | P1EWCC-PWP01-5610 |  |  |  | -23.75d | 0d | as late as possible |  | AWS |  |
| P1EWCC-FWP06-7010 |  | Report on Demolition Surveys and Approval - Farmstead at Illets Farm & Holiday Accommodation |  | 15d | 2018-05-11 | 2018-06-01 | P1EWCC-FWP06-6820, P1EWCC-PWP01-5610 |  |  |  | -28.62d | 0d |  |  | AWS |  |
| P1EWCC-EWP07-7210 |  | Mobilisation and Procurement for Demolition Works |  | 50d | 2018-06-01 | 2018-08-10 | P1EWCC-FWP06-7010, P1EWCC-PWP01-9810 |  |  |  | -28.62d | 0d |  |  | DC3K |  |
| P1EWCC-EWP06-7020 |  | Demolition Works to Farmstead at Illets Farm & Holiday Accommodation (if bats found) |  | 129.75d | 2018-08-10 | 2019-02-08 | P1EWCC-AWP01-6920, P1EWCC-FWP06-7010, P1EWCC-EWP07-7210 |  |  |  | -28.62d | 0d |  |  | DC3K |  |

| ID | WBS | Activity | Type | Duration | Start | Finish | Predecessors | Complete | Planned start | Planned finish | Total float | Free float | Constraint | HS2 Filter | Fusion - WPS |
| --- | --- | --- | --- | --- | --- | --- | --- | --- | --- | --- | --- | --- | --- | --- | --- |
|  | 1 | **Water Resources** |  |  |  |  |  |  |  |  |  |  |  |  |  |
|  | 6 | **SOW Completion Dates** |  |  | 2019-01-30 | 2019-06-28 |  |  |  |  |  |  |  |  |  |
| P1EWCC-PWP02-9360 |  | Completion of Woodland compensation planting ID: 4. Fox Covert | milestone | 0d | 2019-01-30 | 2019-01-30 | P1EWCC-PWP02-9330 |  |  |  | -88.12d | 1032.88d | finish on 2018-09-28 | y | AWE2 |
| P1EWCC-EWP06-6830 |  | Completion of Demolition survey & works - Farmstead at Illets Farm & Holiday Accommodation | milestone | 0d | 2019-02-08 | 2019-02-08 | P1EWCC-EWP06-7020 |  |  |  | -28.62d | 1025.38d | finish on 2018-12-31 |  | DC3K |
| P1EWCC-EWP06-7030 |  | Completion of Site clearance works for Main site compound establishment - Brackley South Cutting | milestone | 0d | 2019-03-22 | 2019-03-22 | P1EWCC-EWP06-5800 |  |  |  | -59.5d | 995.5d | finish on 2018-12-31 | y | AWE5 |
| P1EWCC-PWP02-9270 |  | Completion of Species Translocation/ exclusion - Bats | milestone | 0d | 2019-06-28 | 2019-06-28 | P1EWCC-PWP02-9260 |  |  |  | 0d | 926d | finish on 2019-06-28 |  | AWE1 |
| P1EWCC-PWP02-9280 |  | Completion of Species Translocation/ exclusion - GCN | milestone | 0d | 2019-06-28 | 2019-06-28 | P1EWCC-PWP02-9260 |  |  |  | 0d | 926d | finish on 2019-06-28 |  | AWE1 |
| P1EWCC-PWP02-9290 |  | Completion of Species Translocation/ exclusion - Badgers | milestone | 0d | 2019-06-28 | 2019-06-28 | P1EWCC-PWP02-9260 |  |  |  | 0d | 926d | finish on 2019-06-28 |  | AWE1 |
| P1EWCC-PWP02-9300 |  | Completion of Species Translocation/ exclusion - Reptiles | milestone | 0d | 2019-06-28 | 2019-06-28 | P1EWCC-PWP02-9260 |  |  |  | 0d | 926d | finish on 2019-06-28 |  | AWE1 |
| P1EWCC-FWP06-7270 |  | Completion of Arboricultural survey | milestone | 0d | 2019-06-28 | 2019-06-28 |  |  |  |  | 0d | 925d | finish on 2019-06-28 |  | AWS |
|  | 3 | **097-L1 - Brackley Embankment** |  |  | 2017-03-20 | 2020-01-10 |  |  |  |  |  |  |  |  |  |
|  | 8 | **Land Access** |  |  | 2017-04-24 | 2019-08-01 |  |  |  |  |  |  |  |  |  |
|  | 1 | **Survey Work** |  |  | 2017-04-24 | 2017-04-24 |  |  |  |  |  |  |  |  |  |
| P1EWCC-AWP01-6960 |  | Land Access Granted for Survey Work (Schedule 2) | milestone | 0d | 2017-04-24 A | 2017-04-24 A |  | 100% | 2017-04-03 | 2017-04-03 |  |  | as late as possible | y | AW1 |
|  | 2 | **Possession** |  |  | 2019-08-01 | 2019-08-01 |  |  |  |  |  |  |  |  |  |
| P1EWCC-AWP01-6970 |  | Land Access Possession Granted for Construction (Schedule 16) | milestone | 0d | 2019-08-01 | 2019-08-01 |  |  |  |  | -68d | 0d | as late as possible | y | AW1 |
|  | 3 | **Survey Works** |  |  | 2017-03-20 | 2019-11-22 |  |  |  |  |  |  |  |  |  |
| P1EWCC-AWP01-6950 |  | Planning Consent & Licensing for Survey Work |  | 10d | 2017-03-20 A | 2017-04-21 A | P1EWCC-AWP01-1230 | 100% | 2017-03-20 | 2017-03-31 |  |  |  |  | AW1 |
| P1EWCC-FWP01-3540 |  | Undertake Remaining Soil Surveys |  | 120d | 2017-12-15 | 2018-06-01 | P1EWCC-PWP01-5610 |  |  |  | 489d |  |  | y | AWS |
|  | 1 | **Ecological & Environmental Surveys** |  |  |  |  |  |  |  |  |  |  |  |  |  |
|  | 2 | **Engineering Surveys** |  |  |  |  |  |  |  |  |  |  |  |  |  |
|  | 3 | **Historic Environment** |  |  | 2018-02-09 | 2019-11-22 |  |  |  |  |  |  |  |  |  |
| P1EWCC-PWP06-6230 |  | Non-Intrusive Surveys (geophysics) |  | 20d | 2018-02-09 | 2018-03-09 | P1EWCC-PWP06-6210, P1EWCC-AWP01-6960, P1EWCC-PWP05-240 |  |  |  | 399d | 0d |  |  | AWH |
| P1EWCC-PWP06-10260 |  | Non-Intrusive Surveys (trial trenching) |  | 30d | 2018-05-04 | 2018-06-15 | P1EWCC-PWP06-6220, P1EWCC-PWP05-240 |  |  |  | 399d | 0d |  |  | AWH |
| P1EWCC-PWP06-6250 |  | Intrusive Surveys |  | 40d | 2019-09-30 | 2019-11-22 | P1EWCC-PWP06-6220, P1EWCC-PWP02-9370, P1EWCC-PWP06-10270, P1EWCC-AWP01-6970 |  |  |  | 103.88d | 0d |  |  | AWH |

| ID | WBS | Activity | Type | Duration | Start | Finish | Predecessors | Complete | Planned start | Planned finish | Total float | Free float | Constraint | Calendar | Fusion - WPS | HS2 Filter |
| --- | --- | --- | --- | --- | --- | --- | --- | --- | --- | --- | --- | --- | --- | --- | --- | --- |
|  | 7 | **Historic Environment** |  |  | 2017-12-15 | 2020-01-10 |  |  |  |  |  |  |  |  |  |  |
| P1EWCC-PWP06-6210 |  | Production and Approval of Project Plans & LS-WSI (non-intrusive surveys) |  | 40d | 2017-12-15 | 2018-02-09 | P1EWCC-PWP05-240 |  |  |  | 399d | 0d |  |  | AWH |  |
| P1EWCC-PWP06-6220 |  | Update of Project Plans and LS-WSI and Approval (intrusive surveys) |  | 40d | 2018-03-09 | 2018-05-04 | P1EWCC-PWP06-6230 |  |  |  | 399d | 0d |  |  | AWH |  |
| P1EWCC-PWP06-10270 |  | Update of Project Plans and LS-WSI and Approval (intrusive surveys) |  | 40d | 2018-06-15 | 2018-08-10 | P1EWCC-PWP06-10260 |  |  |  | 399d | 295.12d |  |  | AWH |  |
| P1EWCC-PWP06-6240 |  | Report of Findings And Approval (Archaeological Investigation) |  | 35d | 2019-11-25 | 2020-01-10 | P1EWCC-PWP06-6250 |  |  |  | 785d |  |  |  | AWH |  |
|  | 4 | **Ecological Mitigation Works** |  |  | 2019-08-01 | 2019-09-29 |  |  |  |  |  |  |  |  |  |  |
|  | 5 | **Translocation of Species** |  |  | 2019-08-01 | 2019-09-29 |  |  |  |  |  |  |  |  |  |  |
| P1EWCC-PWP02-9370 |  | Species Translocation to Habitat Creation (095-M4E & 095-M5W) |  | 60d | 2019-08-01 | 2019-09-29 | P1EWCC-PWP02-5860 SS+60d, P1EWCC-AWP01-6970, P1EWCC-PWP02-14610 |  |  |  | -94d | 0d | start on or after 2019-08-01 | HS2 - 8h x 7d Workweek (No Holidays) | AWE1 |  |
|  | 2 | **Water Resources** |  |  |  |  |  |  |  |  |  |  |  |  |  |  |
|  | 6 | **SOW Completion Dates** |  |  | 2017-09-18 | 2019-09-30 |  |  |  |  |  |  |  |  |  |  |
| P1EWCC-PWP01-2350 |  | Completion of Survey for Badgers (98+000) | milestone | 0d | 2017-09-18 | 2017-09-18 |  |  |  |  | -56d | 1390d | finish on 2017-06-30 |  | UW1 |  |
| P1EWCC-PWP01-2370 |  | Completion of Survey for Bats (98+000) | milestone | 0d | 2017-09-18 | 2017-09-18 |  |  |  |  | -56d | 1390d | finish on 2017-06-30 |  | UW1 |  |
| P1EWCC-PWP02-9380 |  | Completion of Species Translocation/ exclusion - Reptiles | milestone | 0d | 2019-09-30 | 2019-09-30 | P1EWCC-PWP02-9370 |  |  |  | -66d | 860d | finish on 2019-06-28 |  | AWE1 |  |
| P1EWCC-PWP02-9390 |  | Completion of Species Translocation/ exclusion - Bats | milestone | 0d | 2019-09-30 | 2019-09-30 | P1EWCC-PWP02-9370 |  |  |  | -66d | 860d | finish on 2019-06-28 |  | AWE1 |  |
| P1EWCC-PWP02-9400 |  | Completion of Species Translocation/ exclusion - Badgers | milestone | 0d | 2019-09-30 | 2019-09-30 | P1EWCC-PWP02-9370 |  |  |  | -66d | 860d | finish on 2019-06-28 |  | AWE1 |  |
| P1EWCC-PWP02-9410 |  | Completion of Species Translocation/ exclusion - Otters | milestone | 0d | 2019-09-30 | 2019-09-30 | P1EWCC-PWP02-9370 |  |  |  | -66d | 860d | finish on 2019-06-28 |  | AWE1 |  |
|  | 4 | **098-L1 - Brackley North Cutting** |  |  | 2017-03-20 | 2020-03-31 |  |  |  |  |  |  |  |  |  |  |
|  | 8 | **Land Access** |  |  | 2017-04-24 | 2018-07-30 |  |  |  |  |  |  |  |  |  |  |
|  | 1 | **Survey Work** |  |  | 2017-04-24 | 2017-04-24 |  |  |  |  |  |  |  |  |  |  |
| P1EWCC-AWP01-6990 |  | Land Access Granted for Survey Work (Schedule 2) | milestone | 0d | 2017-04-24 A | 2017-04-24 A |  | 100% | 2017-04-03 | 2017-04-03 |  |  | as late as possible |  | AW1 | y |
|  | 2 | **Possession** |  |  | 2018-07-30 | 2018-07-30 |  |  |  |  |  |  |  |  |  |  |
| P1EWCC-AWP01-7000 |  | Land Access Possession Granted for Construction (Schedule 16) | milestone | 0d | 2018-07-30 | 2018-07-30 |  |  |  |  | 105d | 0d | as late as possible |  | AW1 | y |
|  | 3 | **Survey Works** |  |  | 2017-03-20 | 2019-11-22 |  |  |  |  |  |  |  |  |  |  |
| P1EWCC-AWP01-6980 |  | Planning Consent & Licensing for Survey Work |  | 10d | 2017-03-20 A | 2017-04-21 A | P1EWCC-AWP01-1230 | 100% | 2017-03-20 | 2017-03-31 |  |  |  |  | AW1 |  |
| P1EWCC-FWP01-3570 |  | Undertake Remaining Soil Surveys |  | 120d | 2017-12-15 | 2018-06-01 | P1EWCC-PWP01-5610 |  |  |  | 427d |  |  |  | AWS | y |
| P1EWCC-FWP01-3590 |  | Undertake Remaining Ecology & Environmental Surveys |  | 398d | 2017-12-15 | 2019-06-26 | P1EWCC-PWP01-5610 |  |  |  | 149d |  |  |  | AWS | y |

| ID | WBS | Activity | Type | Duration | Start | Finish | Predecessors | Complete | Planned start | Planned finish | Total float | Free float | Constraint | Calendar | Fusion - WPS | HS2 Filter |
| --- | --- | --- | --- | --- | --- | --- | --- | --- | --- | --- | --- | --- | --- | --- | --- | --- |
|  | 1 | **Ecological & Environmental Surveys** |  |  |  |  |  |  |  |  |  |  |  |  |  |  |
|  | 2 | **Engineering Surveys** |  |  |  |  |  |  |  |  |  |  |  |  |  |  |
|  | 3 | **Historic Environment** |  |  | 2018-04-27 | 2019-11-22 |  |  |  |  |  |  |  |  |  |  |
| P1EWCC-PWP06-6290 |  | Non-Intrusive Surveys (Upper Radstone Medieval Settlement) |  | 10d | 2018-04-27 | 2018-05-11 | P1EWCC-AWP01-6990, P1EWCC-PWP06-6270, P1EWCC-PWP05-240 |  |  |  | 42d | 0d |  |  | AWH |  |
| P1EWCC-PWP06-8380 |  | Trial Trenching (Upper Radstone Medieval Settlement) |  | 30d | 2018-08-10 | 2018-09-21 | P1EWCC-PWP06-6280 |  |  |  | 42d | 0d |  |  | AWH |  |
| P1EWCC-PWP06-6310 |  | Intrusive Surveys (Upper Radstone Medieval Settlement) |  | 240d | 2018-12-21 | 2019-11-22 | P1EWCC-PWP06-6280, P1EWCC-PWP06-8390, P1EWCC-PWP02-9420, P1EWCC-AWP01-7000 |  |  |  | 42d | 0d |  |  | AWH |  |
|  | 7 | **Historic Environment** |  |  | 2017-09-18 | 2020-01-10 |  |  |  |  |  |  |  |  |  |  |
| P1EWCC-PWP06-6260 |  | HS2 issue Project Plan |  | 1d | 2017-09-18 | 2017-09-18 |  |  |  |  | 105.88d | 63.88d | start on or after 2017-03-31 |  | AWH |  |
| P1EWCC-PWP06-6270 |  | Production and Approval of LS-WSI (non-intrusive surveys) |  | 95d | 2017-12-15 | 2018-04-27 | P1EWCC-PWP06-6260, P1EWCC-PWP05-240 |  |  |  | 42d | 0d |  |  | AWH |  |
| P1EWCC-PWP06-6280 |  | Update of Project Plans and LS-WSI and Approval (intrusive surveys & Trial Trenching) |  | 65d | 2018-05-11 | 2018-08-10 | P1EWCC-PWP06-6290 |  |  |  | 42d | 0d |  |  | AWH |  |
| P1EWCC-PWP06-8390 |  | Update of Project Plans and LS-WSI and Approval (intrusive surveys) |  | 65d | 2018-09-21 | 2018-12-21 | P1EWCC-PWP06-8380 |  |  |  | 42d | 0d |  |  | AWH |  |
| P1EWCC-PWP06-6300 |  | Report of Findings And Approval (Archaeological Investigation) |  | 35d | 2019-11-22 | 2020-01-10 | P1EWCC-PWP06-6310 |  |  |  | 785.12d |  |  |  | AWH |  |
|  | 4 | **Ecological Mitigation Works** |  |  | 2018-07-29 | 2018-09-26 |  |  |  |  |  |  |  |  |  |  |
|  | 5 | **Translocation of Species** |  |  | 2018-07-29 | 2018-09-26 |  |  |  |  |  |  |  |  |  |  |
| P1EWCC-PWP02-9420 |  | Species Translocation to Habitat Creation (099-M2E) |  | 60d | 2018-07-29 | 2018-09-26 | P1EWCC-PWP02-5920 SS+150d, P1EWCC-AWP01-7000, P1EWCC-PWP02-14610 |  |  |  | 146d | 86d |  | HS2 - 8h x 7d Workweek (No Holidays) | AWE1 |  |
|  | 6 | **SOW Completion Dates** |  |  | 2017-09-18 | 2020-03-31 |  |  |  |  |  |  |  |  |  |  |
| P1EWCC-PWP01-2410 |  | Completion of Survey for Badgers (99+000) | milestone | 0d | 2017-09-18 | 2017-09-18 |  |  |  |  | -56d | 1390d | finish on 2017-06-30 |  | UW1 |  |
| P1EWCC-PWP02-9430 |  | Completion of Species Translocation/ exclusion - Reptiles | milestone | 0d | 2020-03-31 | 2020-03-31 | P1EWCC-PWP02-9420 |  |  |  | 0d | 729d | finish on 2020-03-31 |  | AWE1 |  |
| P1EWCC-PWP02-9440 |  | Completion of Species Translocation/ exclusion - Bats | milestone | 0d | 2020-03-31 | 2020-03-31 | P1EWCC-PWP02-9420 |  |  |  | 0d | 729d | finish on 2020-03-31 |  | AWE1 |  |
| P1EWCC-PWP02-9450 |  | Completion of Species Translocation/ exclusion - Badgers | milestone | 0d | 2020-03-31 | 2020-03-31 | P1EWCC-PWP02-9420 |  |  |  | 0d | 729d | finish on 2020-03-31 |  | AWE1 |  |
|  | 9 | **099-L1 - Greatworth South Embankment** |  |  | 2017-03-20 | 2019-08-12 |  |  |  |  |  |  |  |  |  |  |
|  | 8 | **Land Access** |  |  | 2017-05-15 | 2019-03-01 |  |  |  |  |  |  |  |  |  |  |
|  | 1 | **Survey Work** |  |  | 2017-05-15 | 2017-05-15 |  |  |  |  |  |  |  |  |  |  |
| P1EWCC-AWP01-7020 |  | Land Access Granted for Survey Work (Schedule 2) | milestone | 0d | 2017-05-15 A | 2017-05-15 A |  | 100% | 2017-04-03 | 2017-04-03 |  |  | as late as possible |  | AW1 | y |

| ID | WBS | Activity | Type | Duration | Start | Finish | Predecessors | Complete | Planned start | Planned finish | Total float | Free float | Constraint | Calendar | HS2 Filter | Fusion - WPS |
| --- | --- | --- | --- | --- | --- | --- | --- | --- | --- | --- | --- | --- | --- | --- | --- | --- |
|  | 2 | **Possession** |  |  | 2019-03-01 | 2019-03-01 |  |  |  |  |  |  |  |  |  |  |
| P1EWCC-AWP01-7030 |  | Land Access Possession Granted for Construction (Schedule 16) | milestone | 0d | 2019-03-01 | 2019-03-01 |  |  |  |  | 41d | 0d | as late as possible |  | y | AW1 |
|  | 3 | **Survey Works** |  |  | 2017-03-20 | 2019-06-24 |  |  |  |  |  |  |  |  |  |  |
| P1EWCC-AWP01-7010 |  | Planning Consent & Licensing for Survey Work |  | 10d | 2017-03-20 A | 2017-05-12 A | P1EWCC-AWP01-1230 | 100% | 2017-03-20 | 2017-03-31 |  |  |  |  |  | AW1 |
| P1EWCC-FWP01-3610 |  | Undertake Arboricultural Surveys |  | 125d | 2017-12-15 | 2018-06-08 | P1EWCC-PWP01-5610 |  |  |  | 275.12d |  |  |  | y | AWS |
| P1EWCC-FWP01-3620 |  | Undertake Remaining Ecology & Environmental Surveys |  | 295d | 2017-12-15 | 2019-02-01 | P1EWCC-PWP01-5610 |  |  |  | 206d |  |  |  | y | AWS |
|  | 1 | **Ecological & Environmental Surveys** |  |  |  |  |  |  |  |  |  |  |  |  |  |  |
|  | 5 | **Arboricultural survey** |  |  |  |  |  |  |  |  |  |  |  |  |  |  |
|  | 2 | **Engineering Surveys** |  |  |  |  |  |  |  |  |  |  |  |  |  |  |
|  | 3 | **Historic Environment** |  |  | 2018-02-09 | 2019-06-24 |  |  |  |  |  |  |  |  |  |  |
| P1EWCC-PWP06-6350 |  | Non-Intrusive Surveys (geophysics) |  | 20d | 2018-02-09 | 2018-03-09 | P1EWCC-AWP01-7020, P1EWCC-PWP06-6330, P1EWCC-PWP05-240 |  |  |  | 291d | 0d |  |  |  | AWH |
| P1EWCC-PWP06-10280 |  | Non-Intrusive Surveys (trial trenching) |  | 30d | 2018-05-04 | 2018-06-15 | P1EWCC-PWP06-6340, P1EWCC-PWP05-240 |  |  |  | 291d | 0d |  |  |  | AWH |
| P1EWCC-PWP06-6370 |  | Intrusive Surveys |  | 40d | 2019-04-29 | 2019-06-24 | P1EWCC-PWP02-9460, P1EWCC-PWP06-6340, P1EWCC-PWP06-10290, P1EWCC-AWP01-7030 |  |  |  | 105d | 0d |  |  |  | AWH |
|  | 7 | **Historic Environment** |  |  | 2017-12-15 | 2019-08-12 |  |  |  |  |  |  |  |  |  |  |
| P1EWCC-PWP06-6330 |  | Production and Approval of Project Plans & LS-WSI (non-intrusive surveys) |  | 40d | 2017-12-15 | 2018-02-09 | P1EWCC-PWP05-240 |  |  |  | 291d | 0d |  |  |  | AWH |
| P1EWCC-PWP06-6340 |  | Update of Project Plans and LS-WSI and Approval (intrusive surveys) |  | 40d | 2018-03-09 | 2018-05-04 | P1EWCC-PWP06-6350 |  |  |  | 291d | 0d |  |  |  | AWH |
| P1EWCC-PWP06-10290 |  | Update of Project Plans and LS-WSI and Approval (intrusive surveys) |  | 40d | 2018-06-15 | 2018-08-10 | P1EWCC-PWP06-10280 |  |  |  | 291d | 186d |  |  |  | AWH |
| P1EWCC-PWP06-6360 |  | Report of Findings And Approval (Archaeological Investigation) |  | 35d | 2019-06-24 | 2019-08-12 | P1EWCC-PWP06-6370 |  |  |  | 894.12d |  |  |  |  | AWH |
|  | 4 | **Ecological Mitigation Works** |  |  | 2019-03-01 | 2019-04-29 |  |  |  |  |  |  |  |  |  |  |
|  | 5 | **Translocation of Species** |  |  | 2019-03-01 | 2019-04-29 |  |  |  |  |  |  |  |  |  |  |
| P1EWCC-PWP02-9460 |  | Species Translocation to Habitat Creation (099-M2E) |  | 60d | 2019-03-01 | 2019-04-29 | P1EWCC-PWP02-5920 SS+150d, P1EWCC-AWP01-7030, P1EWCC-PWP02-14610 |  |  |  | 59d | 0d | start on or after 2019-03-01 | HS2 - 8h x 7d Workweek (No Holidays) |  | AWE1 |
|  | 6 | **SOW Completion Dates** |  |  | 2019-06-28 | 2019-06-28 |  |  |  |  |  |  |  |  |  |  |
| P1EWCC-PWP02-9470 |  | Completion of Species Translocation/ exclusion - Reptiles | milestone | 0d | 2019-06-28 | 2019-06-28 | P1EWCC-PWP02-9460 |  |  |  | 0d | 926d | finish on 2019-06-28 |  |  | AWE1 |
| P1EWCC-PWP02-9480 |  | Completion of Species Translocation/ exclusion - Bats | milestone | 0d | 2019-06-28 | 2019-06-28 | P1EWCC-PWP02-9460 |  |  |  | 0d | 926d | finish on 2019-06-28 |  |  | AWE1 |
| P1EWCC-PWP02-9490 |  | Completion of Species Translocation/ exclusion - Badgers | milestone | 0d | 2019-06-28 | 2019-06-28 | P1EWCC-PWP02-9460 |  |  |  | 0d | 926d | finish on 2019-06-28 |  |  | AWE1 |
| P1EWCC-FWP06-7290 |  | Completion of Arboricultural survey | milestone | 0d | 2019-06-28 | 2019-06-28 | P1EWCC-FWP01-3610 |  |  |  | 0d | 925d | finish on 2019-06-28 |  |  | AWS |

| ID | WBS | Activity | Type | Duration | Start | Finish | Predecessors | Complete | Planned start | Planned finish | Total float | Free float | Constraint | HS2 Filter | Fusion - WPS |
| --- | --- | --- | --- | --- | --- | --- | --- | --- | --- | --- | --- | --- | --- | --- | --- |
|  | 5 | **099-L2 - Greatworth South Cutting** |  |  | 2017-03-20 | 2019-08-12 |  |  |  |  |  |  |  |  |  |
|  | 7 | **Land Access** |  |  | 2017-03-20 | 2019-03-01 |  |  |  |  |  |  |  |  |  |
|  | 1 | **Survey Work** |  |  | 2017-03-20 | 2017-03-20 |  |  |  |  |  |  |  |  |  |
| P1EWCC-AWP01-4860 |  | Land Access Granted for Survey Work (Schedule 2) | milestone | 0d | 2017-03-20 A | 2017-03-20 A |  | 100% | 2017-03-27 | 2017-03-27 |  |  | as late as possible | y | UW1 |
|  | 2 | **Possession** |  |  | 2017-11-28 | 2019-03-01 |  |  |  |  |  |  |  |  |  |
|  | 1 | **Ecological Mitigation Area** |  |  | 2017-11-28 | 2017-11-28 |  |  |  |  |  |  |  |  |  |
| P1EWCC-AWP01-4870 |  | Land Access Possession Granted for Ecolgical Mitigation Site (Schedule 16) 099-M2E (Halse Copse South) | milestone | 0d | 2017-11-28 | 2017-11-28 |  |  |  |  | 129d | 13.88d | start on or after 2017-11-28 | y | UW1 |
| P1EWCC-AWP01-8570 |  | Land Access Possession Granted for Ecolgical Mitigation Site (Schedule 16) 099-M2E (Halse Copse East) | milestone | 0d | 2017-11-28 | 2017-11-28 |  |  |  |  | 1339d |  | start on or after 2017-11-28 | y | UW1 |
|  | 2 | **099-L2 - Greatworth South Cutting** |  |  | 2019-03-01 | 2019-03-01 |  |  |  |  |  |  |  |  |  |
| P1EWCC-AWP01-4880 |  | Land Access Possession Granted for Construction of 099-L2 - Greatworth South Cutting (Schedule 16) | milestone | 0d | 2019-03-01 | 2019-03-01 |  |  |  |  | 41d | 0d | as late as possible | y | AW1 |
|  | 10 | **Survey Works** |  |  | 2017-03-20 | 2019-06-28 |  |  |  |  |  |  |  |  |  |
| P1EWCC-AWP01-4850 |  | Planning Consent & Licensing for Survey Work |  | 5d | 2017-03-20 A | 2017-03-20 A | P1EWCC-AWP01-1230 | 100% | 2017-03-20 | 2017-03-24 |  |  |  |  | UW1 |
| P1EWCC-FWP01-3630 |  | Undertake Remaining Soil Surveys |  | 120d | 2017-12-15 | 2018-06-01 | P1EWCC-PWP01-5610 |  |  |  | 381d |  |  | y | AWS |
| P1EWCC-FWP01-3640 |  | Undertake Arboricultural Surveys |  | 125d | 2017-12-15 | 2018-06-08 | P1EWCC-PWP01-5610 |  |  |  | 376d |  |  | y | AWS |
| P1EWCC-FWP01-3650 |  | Undertake Remaining Ecology & Environmental Surveys |  | 400d | 2017-12-15 | 2019-06-28 | P1EWCC-PWP01-5610 |  |  |  | 101d |  |  | y | AWS |
|  | 1 | **Ecological & Environmental Surveys** |  |  | 2017-03-20 | 2017-08-04 |  |  |  |  |  |  |  |  |  |
| P1EWCC-PWP01-3240 |  | Survey for Badgers, Bats, GCN & Reptiles |  | 25d | 2017-03-20 A | 2017-08-04 A | P1EWCC-AWP01-4860, P1EWCC-AWP01-4850 | 100% | 2017-03-27 | 2017-04-28 |  |  |  |  | UW1 |
|  | 4 | **Arboricultural survey** |  |  |  |  |  |  |  |  |  |  |  |  |  |
|  | 2 | **Engineering Surveys** |  |  | 2017-04-11 | 2017-05-09 |  |  |  |  |  |  |  |  |  |
| P1EWCC-PWP03-3310 |  | Survey for Engineering (Topo, GPR, Utility, Soil) |  | 15d | 2017-04-11 A | 2017-05-09 A | P1EWCC-AWP01-4860, P1EWCC-AWP01-4850 | 100% | 2017-03-27 | 2017-04-14 |  |  |  |  | UW1 |
|  | 3 | **Historic Environment Surveys** |  |  | 2017-09-11 | 2019-06-24 |  |  |  |  |  |  |  |  |  |
|  | 1 | **Ecological Mitigation Site Halse Copse 1065** |  |  | 2017-09-18 | 2017-12-22 |  |  |  |  |  |  |  |  |  |
| P1EWCC-PWP06-2710 |  | Geophysics (ecological mitigation site) |  | 4d | 2017-09-18 | 2017-09-21 | P1EWCC-PWP06-2700, P1EWCC-AWP01-4860, P1EWCC-AWP01-4850 |  |  |  | 146d | 0d |  |  | UW1 |
| P1EWCC-PWP06-2730 |  | Intrusive Surveys (ecological mitigation site) |  | 5d | 2017-12-15 | 2017-12-22 | P1EWCC-PWP06-2720, P1EWCC-AWP01-4870, P1EWCC-PWP05-240 |  |  |  | 115.12d | 0d |  |  | AWH |

| ID | WBS | Activity | Duration | Start | Finish | Predecessors | Complete | Remaining | Planned start | Planned finish | Total float | Free float | Expected finish | Fusion - WPS |
| --- | --- | --- | --- | --- | --- | --- | --- | --- | --- | --- | --- | --- | --- | --- |
|  | 3 | **Ecological Mitigation Site Halse Copse East CR01527** |  | 2017-09-11 | 2017-12-22 |  |  |  |  |  |  |  |  |  |
| P1EWCC-PWP06-11820 |  | Geophysics (ecological mitigation site) | 1d | 2017-09-11 A | 2017-09-11 A | P1EWCC-PWP06-11850 | 100% |  | 2017-07-24 | 2017-07-24 |  |  |  | UW1 |
| P1EWCC-PWP06-11830 |  | Intrusive Surveys (ecological mitigation site) | 5d | 2017-12-15 | 2017-12-22 | P1EWCC-PWP05-240, P1EWCC-PWP06-11870 |  |  |  |  | 1170.12d | 0d |  | AWH |
|  | 2 | **099-L2 - Greatworth South Cutting** |  | 2018-02-09 | 2019-06-24 |  |  |  |  |  |  |  |  |  |
| P1EWCC-PWP06-10300 |  | Non-Intrusive Surveys (geophysics) | 20d | 2018-02-09 | 2018-03-09 | P1EWCC-PWP06-10330, P1EWCC-PWP05-240 |  |  |  |  | 291d | 0d |  | AWH |
| P1EWCC-PWP06-10310 |  | Non-Intrusive Surveys (trial trenching) | 30d | 2018-05-04 | 2018-06-15 | P1EWCC-PWP06-10340, P1EWCC-PWP05-240 |  |  |  |  | 291d | 0d |  | AWH |
| P1EWCC-PWP06-2750 |  | Intrusive Surveys (099-L2 - Greatworth South Cutting) | 40d | 2019-04-29 | 2019-06-24 | P1EWCC-PWP02-5960, P1EWCC-PWP06-10350, P1EWCC-AWP01-4880 |  |  |  |  | 105d | 0d |  | AWH |
|  | 6 | **Historic Environment** |  | 2017-04-17 | 2019-08-12 |  |  |  |  |  |  |  |  |  |
|  | 1 | **Ecological Mitigation Site Halse Copse 1065** |  | 2017-04-17 | 2018-02-09 |  |  |  |  |  |  |  |  |  |
| P1EWCC-PWP06-2700 |  | Production and Approval of LS-WSI Northants & Oxon (non-intrusive surveys) | 20d | 2017-04-17 A | 2017-06-27 A | P1EWCC-PWP03-3310 | 100% |  | 2017-04-24 | 2017-05-19 |  |  |  | UW1 |
| P1EWCC-PWP06-3380 |  | HS2 issue Project Plan | 1d | 2017-09-18 | 2017-09-18 |  |  |  |  |  | 179d | 33d |  | UW1 |
| P1EWCC-PWP06-2720 |  | Update of Project Plans and LS-WSI and Approval (intrusive surveys) | 30d | 2017-09-22 | 2017-11-02 | P1EWCC-PWP06-2710, P1EWCC-PWP06-3380 FF |  |  |  |  | 146d | 30.88d |  | UW1 |
| P1EWCC-PWP06-2740 |  | Report of Findings And Approval (ecological mitigation site) | 35d | 2017-12-22 | 2018-02-09 | P1EWCC-PWP06-2730 |  |  |  |  | 1285.12d |  |  | AWH |
|  | 3 | **Ecological Mitigation Site Halse Copse East CR01527** |  | 2017-04-17 | 2018-01-19 |  |  |  |  |  |  |  |  |  |
| P1EWCC-PWP06-11850 |  | Production and Approval of LS-WSI Northants & Oxon (non-intrusive surveys) | 20d | 2017-04-17 A | 2017-06-27 A | P1EWCC-UWP01-1000 | 100% |  | 2017-04-24 | 2017-05-19 |  |  |  | UW1 |
| P1EWCC-PWP06-11870 |  | Report of Findings And Approval (ecological mitigation site) | 30d | 2017-09-12 A | 2017-10-23 | P1EWCC-PWP06-11820 | 14% | 25.88d | 2017-09-18 | 2017-10-27 | 1209.12d | 0d | 2017-10-23 | UW1 |
| P1EWCC-PWP06-11840 |  | HS2 issue Project Plan | 1d | 2017-09-18 | 2017-09-18 |  |  |  |  |  | 1389d | 88.88d |  | UW1 |
| P1EWCC-PWP06-11860 |  | Update of Project Plans and LS-WSI and Approval (intrusive surveys) | 20d | 2017-12-22 | 2018-01-19 | P1EWCC-PWP06-11840 FF, P1EWCC-PWP06-11830 |  |  |  |  | 1300.12d |  |  | AWH |
|  | 2 | **099-L2 - Greatworth South Cutting** |  | 2017-12-15 | 2019-08-12 |  |  |  |  |  |  |  |  |  |
| P1EWCC-PWP06-10330 |  | Production and Approval of Project Plans & LS-WSI (non-intrusive surveys) | 40d | 2017-12-15 | 2018-02-09 | P1EWCC-PWP05-240 |  |  |  |  | 291d | 0d |  | AWH |
| P1EWCC-PWP06-10340 |  | Update of Project Plans and LS-WSI and Approval (intrusive surveys) | 40d | 2018-03-09 | 2018-05-04 | P1EWCC-PWP06-10300 |  |  |  |  | 291d | 0d |  | AWH |
| P1EWCC-PWP06-10350 |  | Update of Project Plans and LS-WSI and Approval (intrusive surveys) | 40d | 2018-06-15 | 2018-08-10 | P1EWCC-PWP06-10310 |  |  |  |  | 291d | 186d |  | AWH |
| P1EWCC-PWP06-2760 |  | Report of Findings And Approval (099-L2 - Greatworth South Cutting) | 35d | 2019-06-24 | 2019-08-12 | P1EWCC-PWP06-2750 |  |  |  |  | 894.12d |  |  | AWH |
|  | 11 | **Ecological Mitigation Works** |  | 2017-04-24 | 2019-04-29 |  |  |  |  |  |  |  |  |  |
|  | 1 | **Design** |  | 2017-04-24 | 2018-01-16 |  |  |  |  |  |  |  |  |  |
|  | 1 | **99-M2E** |  | 2017-04-24 | 2017-10-31 |  |  |  |  |  |  |  |  |  |
| P1EWCC-PWP02-5930 |  | Design of Habitat Creation (099-M2E) | 25d | 2017-04-24 A | 2017-10-06 | P1EWCC-PWP03-3310 FF | 40% | 14.88d | 2017-04-17 | 2017-05-19 | 153.12d | 0d | 2017-10-06 | UW1 |
| P1EWCC-AWP01-4840 |  | Planning Consent & Licensing for Habitat Creation (099-M2E) | 65d | 2017-07-07 A | 2017-10-31 | P1EWCC-PWP02-5930 SS | 51% | 31.88d | 2017-07-07 | 2017-10-05 | 153.12d | 0d | 2017-10-31 | UW1 |

| ID | WBS | Activity | Type | Duration | Start | Finish | Predecessors | Complete | Remaining | Planned start | Planned finish | Total float | Free float | Constraint | Expected finish | Calendar | Fusion - WPS |
| --- | --- | --- | --- | --- | --- | --- | --- | --- | --- | --- | --- | --- | --- | --- | --- | --- | --- |
|  | 2 | **Halse Copse East** |  |  | 2017-07-17 | 2018-01-16 |  |  |  |  |  |  |  |  |  |  |  |
| P1EWCC-AWP01-8470 |  | Full TCPA Planning Consent & Licensing for Habitat Creation (Halse Copse East) |  | 113d | 2017-07-17 A | 2018-01-16 | P1EWCC-PWP02-12610 SS | 23% | 86.88d | 2017-07-21 | 2017-12-26 | 1153.12d | 0d |  | 2018-01-16 |  | UW1 |
| P1EWCC-PWP02-12610 |  | Design of Habitat Creation (Halse Copse East) |  | 104d | 2017-07-17 A | 2017-12-12 | P1EWCC-UWP01-1000 | 41% | 61.88d | 2017-07-03 | 2017-11-23 | 1153.12d | 0d |  | 2017-12-12 |  | UW1 |
|  | 2 | **Species Removal from Habitat Area** |  |  |  |  |  |  |  |  |  |  |  |  |  |  |  |
|  | 3 | **Habitat Creation** |  |  | 2018-01-05 | 2018-08-29 |  |  |  |  |  |  |  |  |  |  |  |
|  | 1 | **99-M2E** |  |  | 2018-01-05 | 2018-08-29 |  |  |  |  |  |  |  |  |  |  |  |
| P1EWCC-PWP02-5910 |  | Habitat Creation (099-M2E) |  | 60d | 2018-01-05 | 2018-03-30 | P1EWCC-AWP01-4840, P1EWCC-PWP06-2730, P1EWCC-PWP02-9220, P1EWCC-PWP02-5930 |  |  |  |  | 105.12d | 38.12d |  |  |  | AWE1 |
| P1EWCC-PWP02-5920 |  | Habitat Creation Maturity Period (099-M2E) |  | 182d | 2018-03-01 | 2018-08-29 | P1EWCC-PWP02-5910 SS |  |  |  |  | 93d | 0d | start on or after 2018-03-01 |  | HS2 - 8h x 7d Workweek (No Holidays) | AWE1 |
|  | 2 | **Halse Copse East** |  |  | 2018-02-01 | 2018-08-29 |  |  |  |  |  |  |  |  |  |  |  |
| P1EWCC-PWP02-12620 |  | Habitat Creation (Halse Copse East) |  | 30d | 2018-02-01 | 2018-03-14 | P1EWCC-AWP01-8470, P1EWCC-PWP02-12610, P1EWCC-PWP02-9220, P1EWCC-PWP06-11830 |  |  |  |  | 1142d | 20d | start on or after 2018-02-01 |  |  | AWE1 |
| P1EWCC-PWP02-12630 |  | Habitat Creation Maturity Period (Halse Copse East) |  | 182d | 2018-03-01 | 2018-08-29 | P1EWCC-PWP02-12620 SS |  |  |  |  | 1570d | 215d | start on or after 2018-03-01 |  | HS2 - 8h x 7d Workweek (No Holidays) | AWE1 |
|  | 5 | **Translocation of Species** |  |  | 2019-03-01 | 2019-04-29 |  |  |  |  |  |  |  |  |  |  |  |
|  | 1 | **99-M2E** |  |  | 2019-03-01 | 2019-04-29 |  |  |  |  |  |  |  |  |  |  |  |
| P1EWCC-PWP02-5960 |  | Species Translocation to Habitat Creation (099-M2E) |  | 60d | 2019-03-01 | 2019-04-29 | P1EWCC-PWP02-5920 SS+150d, P1EWCC-AWP01-4880, P1EWCC-PWP02-14610 |  |  |  |  | 59d | 0d | start on or after 2019-03-01 |  | HS2 - 8h x 7d Workweek (No Holidays) | AWE1 |
|  | 2 | **Halse Copse East** |  |  | 2019-03-01 | 2019-04-29 |  |  |  |  |  |  |  |  |  |  |  |
| P1EWCC-PWP02-12640 |  | Species Translocation to Habitat Creation (Halse Copse East) |  | 60d | 2019-03-01 | 2019-04-29 | P1EWCC-PWP02-12630 SS+150d, P1EWCC-AWP01-4880, P1EWCC-PWP02-14610 |  |  |  |  | 1355d |  | start on or after 2019-03-01 |  | HS2 - 8h x 7d Workweek (No Holidays) | AWE1 |
|  | 4 | **Water Resources** |  |  |  |  |  |  |  |  |  |  |  |  |  |  |  |
|  | 1 | **SOW Completion Dates** |  |  | 2017-09-18 | 2019-06-28 |  |  |  |  |  |  |  |  |  |  |  |
| P1EWCC-PWP01-2120 |  | Completion of Survey for Badgers (100+000 & 101+000) | milestone | 0d | 2017-09-18 | 2017-09-18 | P1EWCC-PWP01-3240 |  |  |  |  | -56d | 1390d | finish on 2017-06-30 |  |  | UW1 |
| P1EWCC-PWP01-2160 |  | Completion of Survey for Bats (100+000 & 101+000) | milestone | 0d | 2017-09-18 | 2017-09-18 | P1EWCC-PWP01-3240 |  |  |  |  | -56d | 1390d | finish on 2017-06-30 |  |  | UW1 |
| P1EWCC-PWP02-1420 |  | Completion of Species Translocation/ exclusion - Otters | milestone | 0d | 2019-06-28 | 2019-06-28 | P1EWCC-PWP02-5960 |  |  |  |  | 0d | 926d | finish on 2019-06-28 |  |  | AWE1 |
| P1EWCC-PWP02-1430 |  | Completion of Species Translocation/ exclusion - Badgers | milestone | 0d | 2019-06-28 | 2019-06-28 | P1EWCC-PWP02-5960 |  |  |  |  | 0d | 926d | finish on 2019-06-28 |  |  | AWE1 |
| P1EWCC-PWP02-1440 |  | Completion of Species Translocation/ exclusion - Reptiles | milestone | 0d | 2019-06-28 | 2019-06-28 | P1EWCC-PWP02-5960 |  |  |  |  | 0d | 926d | finish on 2019-06-28 |  |  | AWE1 |
| P1EWCC-PWP02-2170 |  | Completion of Species Translocation/ exclusion - GCN | milestone | 0d | 2019-06-28 | 2019-06-28 | P1EWCC-PWP02-5960 |  |  |  |  | 0d | 926d | finish on 2019-06-28 |  |  | AWE1 |
| P1EWCC-PWP02-2180 |  | Completion of Species Translocation/ exclusion - Bats | milestone | 0d | 2019-06-28 | 2019-06-28 | P1EWCC-PWP02-5960 |  |  |  |  | 0d | 926d | finish on 2019-06-28 |  |  | AWE1 |
| P1EWCC-FWP06-1430 |  | Completion of Arboricultural survey | milestone | 0d | 2019-06-28 | 2019-06-28 |  |  |  |  |  | 0d | 925d | finish on 2019-06-28 |  |  | UW1 |

| ID | WBS | Activity | Type | Duration | Start | Finish | Predecessors | Complete | Planned start | Planned finish | Total float | Free float | Constraint | Calendar | HS2 Filter | Fusion - WPS |
| --- | --- | --- | --- | --- | --- | --- | --- | --- | --- | --- | --- | --- | --- | --- | --- | --- |
|  | 6 | **101-L1 - Greatworth North Embankment** |  |  | 2017-03-20 | 2019-08-12 |  |  |  |  |  |  |  |  |  |  |
|  | 8 | **Land Access** |  |  | 2017-04-24 | 2019-03-01 |  |  |  |  |  |  |  |  |  |  |
|  | 1 | **Survey Work** |  |  | 2017-04-24 | 2017-04-24 |  |  |  |  |  |  |  |  |  |  |
| P1EWCC-AWP01-7050 |  | Land Access Granted for Survey Work (Schedule 2) | milestone | 0d | 2017-04-24 A | 2017-04-24 A |  | 100% | 2017-04-03 | 2017-04-03 |  |  | as late as possible |  | y | AW1 |
|  | 2 | **Possession** |  |  | 2019-03-01 | 2019-03-01 |  |  |  |  |  |  |  |  |  |  |
| P1EWCC-AWP01-7060 |  | Land Access Possession Granted for Construction (Schedule 16) | milestone | 0d | 2019-03-01 | 2019-03-01 |  |  |  |  | 41d | 0d | as late as possible |  | y | AW1 |
|  | 3 | **Survey Works** |  |  | 2017-03-20 | 2019-06-26 |  |  |  |  |  |  |  |  |  |  |
| P1EWCC-AWP01-7040 |  | Planning Consent & Licensing for Survey Work |  | 10d | 2017-03-20 A | 2017-04-21 A | P1EWCC-AWP01-1230 | 100% | 2017-03-20 | 2017-03-31 |  |  |  |  |  | AW1 |
| P1EWCC-FWP01-3660 |  | Undertake Remaining Soil Surveys |  | 120d | 2017-12-15 | 2018-06-01 | P1EWCC-PWP01-5610 |  |  |  | 381d |  |  |  | y | AWS |
| P1EWCC-FWP01-3680 |  | Undertake Remaining Ecology & Environmental Surveys |  | 398d | 2017-12-15 | 2019-06-26 | P1EWCC-PWP01-5610 |  |  |  | 103d |  |  |  | y | AWS |
|  | 1 | **Ecological & Environmental Surveys** |  |  |  |  |  |  |  |  |  |  |  |  |  |  |
|  | 2 | **Engineering Surveys** |  |  |  |  |  |  |  |  |  |  |  |  |  |  |
|  | 3 | **Historic Environment** |  |  | 2018-02-09 | 2019-06-24 |  |  |  |  |  |  |  |  |  |  |
| P1EWCC-PWP06-6410 |  | Non-Intrusive Surveys (geophysics) |  | 20d | 2018-02-09 | 2018-03-09 | P1EWCC-AWP01-7050, P1EWCC-PWP06-6390, P1EWCC-PWP05-240 |  |  |  | 291d | 0d |  |  |  | AWH |
| P1EWCC-PWP06-10360 |  | Non-Intrusive Surveys (trial trenching) |  | 30d | 2018-05-04 | 2018-06-15 | P1EWCC-PWP06-6400, P1EWCC-PWP05-240 |  |  |  | 291d | 0d |  |  |  | AWH |
| P1EWCC-PWP06-6430 |  | Intrusive Surveys |  | 40d | 2019-04-29 | 2019-06-24 | P1EWCC-PWP02-9500, P1EWCC-PWP06-6400, P1EWCC-PWP06-10370, P1EWCC-AWP01-7060 |  |  |  | 105d | 0d |  |  |  | AWH |
|  | 7 | **Historic Environment** |  |  | 2017-12-15 | 2019-08-12 |  |  |  |  |  |  |  |  |  |  |
| P1EWCC-PWP06-6390 |  | Production and Approval of Project Plans & LS-WSI (non-intrusive surveys) |  | 40d | 2017-12-15 | 2018-02-09 | P1EWCC-PWP05-240 |  |  |  | 291d | 0d |  |  |  | AWH |
| P1EWCC-PWP06-6400 |  | Update of Project Plans and LS-WSI and Approval (intrusive surveys) |  | 40d | 2018-03-09 | 2018-05-04 | P1EWCC-PWP06-6410 |  |  |  | 291d | 0d |  |  |  | AWH |
| P1EWCC-PWP06-10370 |  | Update of Project Plans and LS-WSI and Approval (intrusive surveys) |  | 40d | 2018-06-15 | 2018-08-10 | P1EWCC-PWP06-10360 |  |  |  | 291d | 186d |  |  |  | AWH |
| P1EWCC-PWP06-6420 |  | Report of Findings And Approval (Archaeological Investigation) |  | 35d | 2019-06-24 | 2019-08-12 | P1EWCC-PWP06-6430 |  |  |  | 894.12d |  |  |  |  | AWH |
|  | 4 | **Ecological Mitigation Works** |  |  | 2019-03-01 | 2019-04-29 |  |  |  |  |  |  |  |  |  |  |
|  | 5 | **Translocation of Species** |  |  | 2019-03-01 | 2019-04-29 |  |  |  |  |  |  |  |  |  |  |
| P1EWCC-PWP02-9500 |  | Species Translocation to Habitat Creation (099-M2E) |  | 60d | 2019-03-01 | 2019-04-29 | P1EWCC-PWP02-5920 SS+150d, P1EWCC-AWP01-7060, P1EWCC-PWP02-14610 |  |  |  | 59d | 0d | start on or after 2019-03-01 | HS2 - 8h x 7d Workweek (No Holidays) |  | AWE1 |

| ID | WBS | Activity | Type | Duration | Start | Finish | Predecessors | Complete | Planned start | Planned finish | Total float | Free float | Constraint | Fusion - WPS | HS2 Filter |
| --- | --- | --- | --- | --- | --- | --- | --- | --- | --- | --- | --- | --- | --- | --- | --- |
|  | 6 | **SOW Completion Dates** |  |  | 2019-06-28 | 2019-06-28 |  |  |  |  |  |  |  |  |  |
| P1EWCC-PWP02-9510 |  | Completion of Species Translocation/ exclusion - Reptiles | milestone | 0d | 2019-06-28 | 2019-06-28 | P1EWCC-PWP02-9500 |  |  |  | 0d | 926d | finish on 2019-06-28 | AWE1 |  |
| P1EWCC-PWP02-9520 |  | Completion of Species Translocation/ exclusion - Bats | milestone | 0d | 2019-06-28 | 2019-06-28 | P1EWCC-PWP02-9500 |  |  |  | 0d | 926d | finish on 2019-06-28 | AWE1 |  |
| P1EWCC-PWP02-9530 |  | Completion of Species Translocation/ exclusion - Badgers | milestone | 0d | 2019-06-28 | 2019-06-28 | P1EWCC-PWP02-9500 |  |  |  | 0d | 926d | finish on 2019-06-28 | AWE1 |  |
| P1EWCC-PWP02-9540 |  | Completion of Species Translocation/ exclusion - Otters | milestone | 0d | 2019-06-28 | 2019-06-28 | P1EWCC-PWP02-9500 |  |  |  | 0d | 926d | finish on 2019-06-28 | AWE1 |  |
|  | 7 | **101-L2 - Greatworth North Cutting** |  |  | 2017-03-20 | 2019-08-12 |  |  |  |  |  |  |  |  |  |
|  | 8 | **Land Access** |  |  | 2017-04-24 | 2019-03-01 |  |  |  |  |  |  |  |  |  |
|  | 1 | **Survey Work** |  |  | 2017-04-24 | 2017-04-24 |  |  |  |  |  |  |  |  |  |
| P1EWCC-AWP01-7080 |  | Land Access Granted for Survey Work (Schedule 2) | milestone | 0d | 2017-04-24 A | 2017-04-24 A |  | 100% | 2017-04-03 | 2017-04-03 |  |  | as late as possible | AW1 | y |
|  | 2 | **Possession** |  |  | 2019-03-01 | 2019-03-01 |  |  |  |  |  |  |  |  |  |
| P1EWCC-AWP01-7090 |  | Land Access Possession Granted for Construction (Schedule 16) | milestone | 0d | 2019-03-01 | 2019-03-01 |  |  |  |  | -88d | 0d | as late as possible | AW1 | y |
|  | 3 | **Survey Works** |  |  | 2017-03-20 | 2019-06-26 |  |  |  |  |  |  |  |  |  |
| P1EWCC-AWP01-7070 |  | Planning Consent & Licensing for Survey Work |  | 10d | 2017-03-20 A | 2017-04-21 A | P1EWCC-AWP01-1230 | 100% | 2017-03-20 | 2017-03-31 |  |  |  | AW1 |  |
| P1EWCC-FWP01-3710 |  | Undertake Remaining Ecology & Environmental Surveys |  | 398d | 2017-12-15 | 2019-06-26 | P1EWCC-PWP01-5610 |  |  |  | 927.12d |  |  | AWS | y |
|  | 1 | **Ecological & Environmental Surveys** |  |  |  |  |  |  |  |  |  |  |  |  |  |
|  | 2 | **Engineering Surveys** |  |  |  |  |  |  |  |  |  |  |  |  |  |
|  | 3 | **Historic Environment** |  |  | 2018-02-09 | 2019-06-24 |  |  |  |  |  |  |  |  |  |
| P1EWCC-PWP06-6470 |  | Non-Intrusive Surveys (geophysics) |  | 20d | 2018-02-09 | 2018-03-09 | P1EWCC-PWP06-6450, P1EWCC-AWP01-7080, P1EWCC-PWP05-240 |  |  |  | 291d | 0d |  | AWH |  |
| P1EWCC-PWP06-10380 |  | Non-Intrusive Surveys (trail trenching) |  | 30d | 2018-05-04 | 2018-06-15 | P1EWCC-PWP06-6460, P1EWCC-PWP05-240 |  |  |  | 291d | 0d |  | AWH |  |
| P1EWCC-PWP06-6490 |  | Intrusive Surveys |  | 40d | 2019-04-29 | 2019-06-24 | P1EWCC-PWP02-9550, P1EWCC-PWP06-6460, P1EWCC-PWP06-10390, P1EWCC-AWP01-7090 |  |  |  | 105d | 0d |  | AWH |  |
|  | 7 | **Historic Environment** |  |  | 2017-12-15 | 2019-08-12 |  |  |  |  |  |  |  |  |  |
| P1EWCC-PWP06-6450 |  | Production and Approval of Project Plans & LS-WSI (non-intrusive surveys) |  | 40d | 2017-12-15 | 2018-02-09 | P1EWCC-PWP05-240 |  |  |  | 291d | 0d |  | AWH |  |
| P1EWCC-PWP06-6460 |  | Update of Project Plans and LS-WSI and Approval (intrusive surveys) |  | 40d | 2018-03-09 | 2018-05-04 | P1EWCC-PWP06-6470 |  |  |  | 291d | 0d |  | AWH |  |
| P1EWCC-PWP06-10390 |  | Update of Project Plans and LS-WSI and Approval (intrusive surveys) |  | 40d | 2018-06-15 | 2018-08-10 | P1EWCC-PWP06-10380 |  |  |  | 291d | 186d |  | AWH |  |
| P1EWCC-PWP06-6480 |  | Report of Findings And Approval (Archaeological Investigation) |  | 35d | 2019-06-24 | 2019-08-12 | P1EWCC-PWP06-6490 |  |  |  | 894.12d |  |  | AWH |  |

| ID | WBS | Activity | Type | Duration | Start | Finish | Predecessors | Complete | Planned start | Planned finish | Total float | Free float | Constraint | Calendar | Fusion - WPS | HS2 Filter | Key Milestones |
| --- | --- | --- | --- | --- | --- | --- | --- | --- | --- | --- | --- | --- | --- | --- | --- | --- | --- |
|  | 4 | **Ecological Mitigation Works** |  |  | 2019-03-01 | 2019-04-29 |  |  |  |  |  |  |  |  |  |  |  |
|  | 5 | **Translocation of Species** |  |  | 2019-03-01 | 2019-04-29 |  |  |  |  |  |  |  |  |  |  |  |
| P1EWCC-PWP02-9550 |  | Species Translocation to Habitat Creation (099-M2E) |  | 60d | 2019-03-01 | 2019-04-29 | P1EWCC-AWP01-7090, P1EWCC-PWP02-5920 SS+150d, P1EWCC-PWP02-14610 |  |  |  | -122d | 0d | start on or after 2019-03-01 | HS2 - 8h x 7d Workweek (No Holidays) | AWE1 |  |  |
|  | 2 | **Water Resources** |  |  |  |  |  |  |  |  |  |  |  |  |  |  |  |
|  | 6 | **SOW Completion Dates** |  |  | 2019-04-29 | 2019-04-29 |  |  |  |  |  |  |  |  |  |  |  |
| P1EWCC-PWP02-9560 |  | Completion of Species Translocation/ exclusion - Reptiles | milestone | 0d | 2019-04-29 | 2019-04-29 | P1EWCC-PWP02-9550 |  |  |  | -85.88d | 969.12d | finish on 2018-12-31 |  | AWE1 |  |  |
| P1EWCC-PWP02-9570 |  | Completion of Species Translocation/ exclusion - Bats | milestone | 0d | 2019-04-29 | 2019-04-29 | P1EWCC-PWP02-9550 |  |  |  | -85.88d | 969.12d | finish on 2018-12-31 |  | AWE1 |  |  |
| P1EWCC-PWP02-9580 |  | Completion of Species Translocation/ exclusion - Badgers | milestone | 0d | 2019-04-29 | 2019-04-29 | P1EWCC-PWP02-9550 |  |  |  | -85.88d | 969.12d | finish on 2018-12-31 |  | AWE1 |  |  |
|  | C312 | **Greatworth to Thorpe Mandeville (Ch. 101950 to 104800)** |  |  | 2017-03-20 | 2019-06-28 |  |  |  |  |  |  |  |  |  |  |  |
|  | 1 | **102-L1 - Greatworth Green Tunnel** |  |  | 2017-03-20 | 2019-06-28 |  |  |  |  |  |  |  |  |  |  |  |
|  | 8 | **Land Access** |  |  | 2017-03-27 | 2018-07-26 |  |  |  |  |  |  |  |  |  |  |  |
|  | 1 | **Survey Work** |  |  | 2017-03-27 | 2017-03-27 |  |  |  |  |  |  |  |  |  |  |  |
| P1EWCC-AWP01-7110 |  | Land Access Granted for Survey Work (Schedule 2) | milestone | 0d | 2017-03-27 A | 2017-03-27 A |  | 100% | 2017-04-03 | 2017-04-03 |  |  | as late as possible |  | AW1 | y |  |
|  | 2 | **Possession** |  |  | 2018-07-26 | 2018-07-26 |  |  |  |  |  |  |  |  |  |  |  |
| P1EWCC-AWP01-7120 |  | Land Access Possession Granted for Construction (Schedule 16) | milestone | 0d | 2018-07-26 | 2018-07-26 |  |  |  |  | 61.88d | 0d | as late as possible |  | AW1 | y |  |
|  | 3 | **Survey Works** |  |  | 2017-03-20 | 2018-11-16 |  |  |  |  |  |  |  |  |  |  |  |
| P1EWCC-AWP01-7100 |  | Planning Consent & Licensing for Survey Work |  | 10d | 2017-03-20 A | 2017-03-24 A | P1EWCC-AWP01-1230 | 100% | 2017-03-20 | 2017-03-31 |  |  |  |  | AW1 |  |  |
| P1EWCC-FWP01-3720 |  | Undertake Remaining Soil Surveys |  | 120d | 2017-12-15 | 2018-06-01 | P1EWCC-PWP01-5610 |  |  |  | 195d |  |  |  | AWS | y |  |
| P1EWCC-FWP01-3730 |  | Undertake Arboricultural Surveys |  | 125d | 2017-12-15 | 2018-06-08 | P1EWCC-PWP01-5610 |  |  |  | 190d |  |  |  | AWS | y |  |
| P1EWCC-FWP01-3740 |  | Undertake Remaining Ecology & Environmental Surveys |  | 137d | 2017-12-15 | 2018-06-26 | P1EWCC-PWP01-5610 |  |  |  | 178d |  |  |  | AWS | y |  |
|  | 1 | **Ecological & Environmental Surveys** |  |  | 2017-03-27 | 2017-08-04 |  |  |  |  |  |  |  |  |  |  |  |
| P1EWCC-PWP01-4310 |  | Survey for Badgers, Bats, GCN & Reptiles |  | 25d | 2017-03-27 A | 2017-08-04 A | P1EWCC-AWP01-7110, P1EWCC-AWP01-7100 | 100% | 2017-04-03 | 2017-05-05 |  |  |  |  | UW1 |  |  |
|  | 4 | **Arboricultural survey** |  |  |  |  |  |  |  |  |  |  |  |  |  |  |  |
|  | 2 | **Engineering Surveys** |  |  |  |  |  |  |  |  |  |  |  |  |  |  |  |
|  | 3 | **Historic Environment** |  |  | 2018-02-09 | 2018-11-16 |  |  |  |  |  |  |  |  |  |  |  |
| P1EWCC-PWP06-6530 |  | Non-Intrusive Surveys (geophysics) |  | 20d | 2018-02-09 | 2018-03-09 | P1EWCC-PWP06-6510, P1EWCC-AWP01-7110, P1EWCC-PWP05-240 |  |  |  | 105d | 0d |  |  | AWH |  | Key MS |
| P1EWCC-PWP06-10400 |  | Non-Intrusive Surveys (trail trenching) |  | 30d | 2018-05-04 | 2018-06-15 | P1EWCC-PWP06-6520, P1EWCC-PWP05-240 |  |  |  | 105d | 0d |  |  | AWH |  | Key MS |
| P1EWCC-PWP06-6550 |  | Intrusive Surveys |  | 40d | 2018-09-24 | 2018-11-16 | P1EWCC-PWP06-6520, P1EWCC-PWP02-9590, P1EWCC-PWP06-10410, P1EWCC-AWP01-7120 |  |  |  | 74.88d | 0d |  |  | AWH |  | Key MS |

| ID | WBS | Activity | Type | Duration | Start | Finish | Predecessors | Complete | Planned start | Planned finish | Total float | Free float | Constraint | Calendar | Fusion - WPS | Key Milestones | HS2 Filter |
| --- | --- | --- | --- | --- | --- | --- | --- | --- | --- | --- | --- | --- | --- | --- | --- | --- | --- |
|  | 7 | **Historic Environment** |  |  | 2017-12-15 | 2019-01-04 |  |  |  |  |  |  |  |  |  |  |  |
| P1EWCC-PWP06-6510 |  | Production and Approval of Project Plans & LS-WSI (non-intrusive surveys) |  | 40d | 2017-12-15 | 2018-02-09 | P1EWCC-PWP05-240 |  |  |  | 105d | 0d |  |  | AWH |  |  |
| P1EWCC-PWP06-6520 |  | Update of Project Plans and LS-WSI and Approval (intrusive surveys) |  | 40d | 2018-03-09 | 2018-05-04 | P1EWCC-PWP06-6530 |  |  |  | 105d | 0d |  |  | AWH |  |  |
| P1EWCC-PWP06-10410 |  | Update of Project Plans and LS-WSI and Approval (intrusive surveys) |  | 40d | 2018-06-15 | 2018-08-10 | P1EWCC-PWP06-10400 |  |  |  | 105d | 30.12d |  |  | AWH |  |  |
| P1EWCC-PWP06-6540 |  | Report of Findings And Approval (Archaeological Investigation) |  | 35d | 2018-11-19 | 2019-01-04 | P1EWCC-PWP06-6550 |  |  |  | 1050d |  |  |  | AWH |  |  |
|  | 4 | **Ecological Mitigation Works** |  |  | 2018-07-26 | 2018-09-23 |  |  |  |  |  |  |  |  |  |  |  |
|  | 5 | **Translocation of Species** |  |  | 2018-07-26 | 2018-09-23 |  |  |  |  |  |  |  |  |  |  |  |
| P1EWCC-PWP02-9590 |  | Species Translocation to Habitat Creation (105-M1E) |  | 60d | 2018-07-26 | 2018-09-23 | P1EWCC-AWP01-7120, P1EWCC-PWP01-4310, P1EWCC-PWP02-12670, P1EWCC-PWP02-14610 |  |  |  | 96d | 0d |  | HS2 - 8h x 7d Workweek (No Holidays) | AWE1 | Key MS |  |
|  | 9 | **Highway Works** |  |  | 2017-10-13 | 2019-01-07 |  |  |  |  |  |  |  |  |  |  |  |
| P1EWCC-PWP09-7040 |  | Scheme Highways Design & Approval - B4525 Welsh Road / Sulgrave Road junction improvements |  | 90d | 2017-10-13 | 2018-02-16 | P1EWCC-PWP01-6210 |  |  |  | -51.88d | 0d |  |  | DC3A |  |  |
| P1EWCC-PWP09-7200 |  | Detailed Highways Design & Approval - B4525 Welsh Road / Sulgrave Road junction improvements |  | 101d | 2018-04-06 | 2018-08-27 | P1EWCC-PWP09-7040, P1EWCC-PWP01-8760 |  |  |  | 39d | 0d |  |  | DC3F |  |  |
| P1EWCC-AWP01-7130 |  | Planning Consent & Licensing -B4525 Welsh Road / Sulgrave Road junction improvements |  | 50d | 2018-06-18 | 2018-08-27 | P1EWCC-PWP09-7200 FF, P1EWCC-PWP09-7040 |  |  |  | 39d | 0d |  |  | DC3F |  |  |
| P1EWCC-EWP06-7040 |  | Highways Construction - B4525 Welsh Road / Sulgrave Road junction improvements |  | 95d | 2018-08-27 | 2019-01-07 | P1EWCC-AWP01-7130, P1EWCC-AWP01-7120 |  |  |  | 39d |  |  |  | DC3F |  |  |
|  | 2 | **Water Resources** |  |  |  |  |  |  |  |  |  |  |  |  |  |  |  |
|  | 6 | **SOW Completion Dates** |  |  | 2017-09-18 | 2019-06-28 |  |  |  |  |  |  |  |  |  |  |  |
| P1EWCC-PWP01-2360 |  | Completion of Survey for Badgers (103+000) | milestone | 0d | 2017-09-18 | 2017-09-18 | P1EWCC-PWP01-4310 |  |  |  | -56d | 1390d | finish on 2017-06-30 |  | UW1 |  |  |
| P1EWCC-PWP01-2380 |  | Completion of Survey for Bats (103+000) | milestone | 0d | 2017-09-18 | 2017-09-18 | P1EWCC-PWP01-4310 |  |  |  | -56d | 1390d | finish on 2017-06-30 |  | UW1 |  |  |
| P1EWCC-PWP02-9600 |  | Completion of Species Translocation/ exclusion - Reptiles | milestone | 0d | 2018-12-31 | 2018-12-31 | P1EWCC-PWP02-9590 |  |  |  | 0d | 1055d | finish on 2018-12-31 |  | AWE1 |  |  |
| P1EWCC-PWP02-9610 |  | Completion of Species Translocation/ exclusion - Bats | milestone | 0d | 2018-12-31 | 2018-12-31 | P1EWCC-PWP02-9590 |  |  |  | 0d | 1055d | finish on 2018-12-31 |  | AWE1 |  |  |
| P1EWCC-PWP02-9620 |  | Completion of Species Translocation/ exclusion - Badgers | milestone | 0d | 2018-12-31 | 2018-12-31 | P1EWCC-PWP02-9590 |  |  |  | 0d | 1055d | finish on 2018-12-31 |  | AWE1 |  |  |
| P1EWCC-PWP02-9630 |  | Completion of Species Translocation/ exclusion - GCN | milestone | 0d | 2018-12-31 | 2018-12-31 | P1EWCC-PWP02-9590 |  |  |  | 0d | 1055d | finish on 2018-12-31 |  | AWE1 |  |  |
| P1EWCC-EWP06-7050 |  | Completion of Highways Construction - B4525 Welsh Road / Sulgrave Road junction improvements | milestone | 0d | 2019-03-29 | 2019-03-29 | P1EWCC-EWP06-7040 |  |  |  | 0d | 990.88d | finish on 2019-03-29 |  | DC3F |  |  |
| P1EWCC-FWP06-7030 |  | Completion of Arboricultural survey of Greatworth Park | milestone | 0d | 2019-06-28 | 2019-06-28 | P1EWCC-FWP01-3730 |  |  |  | 0d | 925d | finish on 2019-06-28 |  | AWS |  |  |
|  | 2 | **104-L1 - Thorpe Mandeville Cutting** |  |  | 2017-03-20 | 2019-06-28 |  |  |  |  |  |  |  |  |  |  |  |
|  | 8 | **Land Access** |  |  | 2017-03-20 | 2018-07-26 |  |  |  |  |  |  |  |  |  |  |  |
|  | 1 | **Survey Work** |  |  | 2017-03-20 | 2017-03-20 |  |  |  |  |  |  |  |  |  |  |  |
| P1EWCC-AWP01-7150 |  | Land Access Granted for Survey Work (Schedule 2) | milestone | 0d | 2017-03-20 A | 2017-03-20 A |  | 100% | 2017-04-03 | 2017-04-03 |  |  | as late as possible |  | AW1 |  | y |

| ID | WBS | Activity | Type | Duration | Start | Finish | Predecessors | Complete | Planned start | Planned finish | Total float | Free float | Constraint | Calendar | HS2 Filter | Fusion - WPS |
| --- | --- | --- | --- | --- | --- | --- | --- | --- | --- | --- | --- | --- | --- | --- | --- | --- |
|  | 2 | **Possession** |  |  | 2018-07-26 | 2018-07-26 |  |  |  |  |  |  |  |  |  |  |
| P1EWCC-AWP01-7160 |  | Land Access Possession Granted for Construction (Schedule 16) | milestone | 0d | 2018-07-26 | 2018-07-26 |  |  |  |  | 68d | 0d | as late as possible |  | y | AW1 |
|  | 3 | **Survey Works** |  |  | 2017-03-20 | 2018-11-16 |  |  |  |  |  |  |  |  |  |  |
| P1EWCC-AWP01-7140 |  | Planning Consent & Licensing for Survey Work |  | 10d | 2017-03-20 A | 2017-03-20 A | P1EWCC-AWP01-1230 | 100% | 2017-03-20 | 2017-03-31 |  |  |  |  |  | AW1 |
| P1EWCC-FWP01-3760 |  | Undertake Arboricultural Surveys |  | 125d | 2017-12-15 | 2018-06-08 | P1EWCC-PWP01-5610 |  |  |  | 190d |  |  |  | y | AWS |
| P1EWCC-FWP01-3770 |  | Undertake Remaining Ecology & Environmental Surveys |  | 137d | 2017-12-15 | 2018-06-26 | P1EWCC-PWP01-5610 |  |  |  | 178d |  |  |  | y | AWS |
|  | 1 | **Ecological & Environmental Surveys** |  |  | 2017-03-20 | 2017-09-15 |  |  |  |  |  |  |  |  |  |  |
| P1EWCC-PWP01-4320 |  | Survey for Badgers, Bats, GCN & Reptiles |  | 25d | 2017-03-20 A | 2017-09-15 A | P1EWCC-AWP01-7150, P1EWCC-AWP01-7140 | 100% | 2017-04-03 | 2017-05-05 |  |  |  |  |  | UW1 |
|  | 4 | **Arboricultural survey** |  |  |  |  |  |  |  |  |  |  |  |  |  |  |
|  | 2 | **Engineering Surveys** |  |  |  |  |  |  |  |  |  |  |  |  |  |  |
|  | 3 | **Historic Environment** |  |  | 2018-02-09 | 2018-11-16 |  |  |  |  |  |  |  |  |  |  |
| P1EWCC-PWP06-6590 |  | Non-Intrusive Surveys (geophysics) |  | 20d | 2018-02-09 | 2018-03-09 | P1EWCC-AWP01-7150, P1EWCC-PWP06-6570, P1EWCC-PWP05-240 |  |  |  | 105d | 0d |  |  |  | AWH |
| P1EWCC-PWP06-10420 |  | Non-Intrusive Surveys (trial trenching) |  | 30d | 2018-05-04 | 2018-06-15 | P1EWCC-PWP06-6580, P1EWCC-PWP05-240 |  |  |  | 105d | 0d |  |  |  | AWH |
| P1EWCC-PWP06-6610 |  | Intrusive Surveys |  | 40d | 2018-09-24 | 2018-11-16 | P1EWCC-PWP02-9640, P1EWCC-PWP06-6580, P1EWCC-PWP06-10430, P1EWCC-AWP01-7160 |  |  |  | 74.88d | 0d |  |  |  | AWH |
|  | 7 | **Historic Environment** |  |  | 2017-12-15 | 2019-01-04 |  |  |  |  |  |  |  |  |  |  |
| P1EWCC-PWP06-6570 |  | Production and Approval of Project Plans & LS-WSI (non-intrusive surveys) |  | 40d | 2017-12-15 | 2018-02-09 | P1EWCC-PWP05-240 |  |  |  | 105d | 0d |  |  |  | AWH |
| P1EWCC-PWP06-6580 |  | Update of Project Plans and LS-WSI and Approval (intrusive surveys) |  | 40d | 2018-03-09 | 2018-05-04 | P1EWCC-PWP06-6590 |  |  |  | 105d | 0d |  |  |  | AWH |
| P1EWCC-PWP06-10430 |  | Update of Project Plans and LS-WSI and Approval (intrusive surveys) |  | 40d | 2018-06-15 | 2018-08-10 | P1EWCC-PWP06-10420 |  |  |  | 105d | 30.12d |  |  |  | AWH |
| P1EWCC-PWP06-6600 |  | Report of Findings And Approval (Archaeological Investigation) |  | 35d | 2018-11-19 | 2019-01-04 | P1EWCC-PWP06-6610 |  |  |  | 1050d |  |  |  |  | AWH |
|  | 4 | **Ecological Mitigation Works** |  |  | 2018-07-26 | 2018-09-23 |  |  |  |  |  |  |  |  |  |  |
|  | 5 | **Translocation of Species** |  |  | 2018-07-26 | 2018-09-23 |  |  |  |  |  |  |  |  |  |  |
| P1EWCC-PWP02-9640 |  | Species Translocation to Habitat Creation (105-M1E) |  | 60d | 2018-07-26 | 2018-09-23 | P1EWCC-PWP01-4320, P1EWCC-AWP01-7160, P1EWCC-PWP02-12670, P1EWCC-PWP02-14610 |  |  |  | 96d | 0d |  | HS2 - 8h x 7d Workweek (No Holidays) |  | AWE1 |
|  | 2 | **Water Resources** |  |  |  |  |  |  |  |  |  |  |  |  |  |  |
|  | 6 | **SOW Completion Dates** |  |  | 2018-12-31 | 2019-06-28 |  |  |  |  |  |  |  |  |  |  |
| P1EWCC-PWP02-9650 |  | Completion of Species Translocation/ exclusion - Reptiles | milestone | 0d | 2018-12-31 | 2018-12-31 | P1EWCC-PWP02-9640 |  |  |  | 0d | 1055d | finish on 2018-12-31 |  |  | AWE1 |
| P1EWCC-PWP02-9660 |  | Completion of Species Translocation/ exclusion - Bats | milestone | 0d | 2018-12-31 | 2018-12-31 | P1EWCC-PWP02-9640 |  |  |  | 0d | 1055d | finish on 2018-12-31 |  |  | AWE1 |
| P1EWCC-PWP02-9670 |  | Completion of Species Translocation/ exclusion - Badgers | milestone | 0d | 2018-12-31 | 2018-12-31 | P1EWCC-PWP02-9640 |  |  |  | 0d | 1055d | finish on 2018-12-31 |  |  | AWE1 |
| P1EWCC-PWP02-9680 |  | Completion of Species Translocation/ exclusion - GCN | milestone | 0d | 2018-12-31 | 2018-12-31 | P1EWCC-PWP02-9640 |  |  |  | 0d | 1055d | finish on 2018-12-31 |  |  | AWE1 |
| P1EWCC-PWP02-9690 |  | Completion of Species Translocation/ exclusion - Otters | milestone | 0d | 2018-12-31 | 2018-12-31 | P1EWCC-PWP02-9640 |  |  |  | 0d | 1055d | finish on 2018-12-31 |  |  | AWE1 |
| P1EWCC-FWP06-7050 |  | Completion of Arboricultural Survey of effected trees along water course | milestone | 0d | 2019-06-28 | 2019-06-28 | P1EWCC-FWP01-3760 |  |  |  | 0d | 925d | finish on 2019-06-28 |  |  | AWS |

| ID | WBS | Activity | Type | Duration | Start | Finish | Predecessors | Complete | Remaining | Planned start | Planned finish | Total float | Free float | Constraint | Expected finish | HS2 Filter | Fusion - WPS |
| --- | --- | --- | --- | --- | --- | --- | --- | --- | --- | --- | --- | --- | --- | --- | --- | --- | --- |
|  | C313 | **Thorpe Mandeville to Edgcote (Ch. 104800 to 109830)** |  |  | 2017-02-17 | 2020-03-31 |  |  |  |  |  |  |  |  |  |  |  |
|  | 1 | **104-L2 - Thorpe Mandeville Embankment** |  |  | 2017-02-17 | 2019-12-31 |  |  |  |  |  |  |  |  |  |  |  |
|  | 10 | **Land Access** |  |  | 2017-04-06 | 2018-07-26 |  |  |  |  |  |  |  |  |  |  |  |
|  | 1 | **Survey Work** |  |  | 2017-04-06 | 2017-04-06 |  |  |  |  |  |  |  |  |  |  |  |
| P1EWCC-AWP01-4240 |  | Land Access Granted for Survey Work (Schedule 2) | milestone | 0d | 2017-04-06 A | 2017-04-06 A |  | 100% |  | 2017-03-28 | 2017-03-28 |  |  | as late as possible |  | y | UW1 |
|  | 2 | **Possession** |  |  | 2018-07-26 | 2018-07-26 |  |  |  |  |  |  |  |  |  |  |  |
|  | 1 | **Ecological Mitigation Area** |  |  |  |  |  |  |  |  |  |  |  |  |  |  |  |
|  | 2 | **104-L2 - Thorpe Mandeville Embankment** |  |  | 2018-07-26 | 2018-07-26 |  |  |  |  |  |  |  |  |  |  |  |
| P1EWCC-AWP01-4260 |  | Land Access Possession Granted for Lower Thorpe Embankment (Schedule 16) | milestone | 0d | 2018-07-26 | 2018-07-26 |  |  |  |  |  | 68d | 0d | as late as possible |  | y | AW1 |
|  | 5 | **Survey Works** |  |  | 2017-03-20 | 2019-06-28 |  |  |  |  |  |  |  |  |  |  |  |
| P1EWCC-AWP01-3900 |  | Planning Consent & Licensing for Survey Work |  | 6d | 2017-03-20 A | 2017-04-05 A | P1EWCC-AWP01-1230 | 100% |  | 2017-03-20 | 2017-03-27 |  |  |  |  |  | UW1 |
| P1EWCC-FWP01-3780 |  | Undertake Remaining Soil Surveys |  | 120d | 2017-12-15 | 2018-06-01 | P1EWCC-PWP01-5610 |  |  |  |  | 461d |  |  |  | y | AWS |
| P1EWCC-FWP01-3790 |  | Undertake Arboricultural Surveys |  | 125d | 2017-12-15 | 2018-06-08 | P1EWCC-PWP01-5610 |  |  |  |  | 456d |  |  |  | y | AWS |
| P1EWCC-FWP01-3800 |  | Undertake Remaining Ecology & Environmental Surveys |  | 400d | 2017-12-15 | 2019-06-28 | P1EWCC-PWP01-5610 |  |  |  |  | 181d |  |  |  | y | AWS |
|  | 1 | **Ecological & Environmental Surveys** |  |  | 2017-05-15 | 2017-09-22 |  |  |  |  |  |  |  |  |  |  |  |
| P1EWCC-PWP01-3090 |  | Survey for Badgers, Bats, GCN & Reptiles |  | 25d | 2017-05-15 A | 2017-09-22 | P1EWCC-AWP01-4240, P1EWCC-AWP01-3900 | 80% | 4.88d | 2017-03-28 | 2017-05-01 | -60.88d | 0d |  | 2017-09-22 |  | UW1 |
|  | 5 | **Arboricultural survey** |  |  |  |  |  |  |  |  |  |  |  |  |  |  |  |
|  | 2 | **Engineering Surveys** |  |  | 2017-04-06 | 2017-04-21 |  |  |  |  |  |  |  |  |  |  |  |
| P1EWCC-PWP03-3160 |  | Survey for Engineering (Topo, GPR, Utility, Soil) |  | 20d | 2017-04-06 A | 2017-04-21 A | P1EWCC-AWP01-4240, P1EWCC-AWP01-3900 | 100% |  | 2017-03-28 | 2017-04-24 |  |  |  |  |  | UW1 |
|  | 3 | **Watercourse Surveys** |  |  | 2017-06-26 | 2017-09-18 |  |  |  |  |  |  |  |  |  |  |  |
| P1EWCC-PWP04-1330 |  | Survey - Watercourse Works |  | 20d | 2017-06-26 A | 2017-09-18 | P1EWCC-AWP01-3900, P1EWCC-AWP01-4240 | 100% | 0d | 2017-06-26 | 2017-07-21 | 1390d | 0d |  | 2017-07-24 | y | UW1 |
|  | 4 | **Historic Environment** |  |  | 2018-02-09 | 2018-11-16 |  |  |  |  |  |  |  |  |  |  |  |
|  | 1 | **Ecological Mitigation Site** |  |  |  |  |  |  |  |  |  |  |  |  |  |  |  |
|  | 2 | **104-L2 - Thorpe Mandeville Embankment** |  |  | 2018-02-09 | 2018-11-16 |  |  |  |  |  |  |  |  |  |  |  |
| P1EWCC-PWP06-10440 |  | Non-Intrusive Surveys (geophysics) |  | 20d | 2018-02-09 | 2018-03-09 | P1EWCC-PWP06-10470, P1EWCC-PWP05-240 |  |  |  |  | 371d | 0d |  |  |  | AWH |
| P1EWCC-PWP06-10450 |  | Non-Intrusive Surveys (trial trenching) |  | 30d | 2018-05-04 | 2018-06-15 | P1EWCC-PWP06-10480, P1EWCC-PWP05-240 |  |  |  |  | 371d | 0d |  |  |  | AWH |
| P1EWCC-PWP06-1930 |  | Intrusive Surveys (104-L2 - Thorpe Mandeville Embankment) |  | 40d | 2018-09-24 | 2018-11-16 | P1EWCC-PWP02-4570, P1EWCC-PWP06-10490, P1EWCC-AWP01-4260 |  |  |  |  | 340.88d | 0d |  |  |  | AWH |

| ID | WBS | Activity | Type | Duration | Start | Finish | Predecessors | Complete | Remaining | Planned start | Planned finish | Total float | Free float | Constraint | Expected finish | Calendar | Fusion - WPS | HS2 Filter |
| --- | --- | --- | --- | --- | --- | --- | --- | --- | --- | --- | --- | --- | --- | --- | --- | --- | --- | --- |
|  | 9 | **Historic Environment** |  |  | 2017-12-15 | 2019-01-04 |  |  |  |  |  |  |  |  |  |  |  |  |
|  | 1 | **Ecological Mitigation Site** |  |  |  |  |  |  |  |  |  |  |  |  |  |  |  |  |
|  | 2 | **104-L2 - Thorpe Mandeville Embankment** |  |  | 2017-12-15 | 2019-01-04 |  |  |  |  |  |  |  |  |  |  |  |  |
| P1EWCC-PWP06-10470 |  | Production and Approval of Project Plans & LS-WSI (non-intrusive surveys) |  | 40d | 2017-12-15 | 2018-02-09 | P1EWCC-PWP05-240 |  |  |  |  | 371d | 0d |  |  |  | AWH |  |
| P1EWCC-PWP06-10480 |  | Update of Project Plans and LS-WSI and Approval (intrusive surveys) |  | 40d | 2018-03-09 | 2018-05-04 | P1EWCC-PWP06-10440 |  |  |  |  | 371d | 0d |  |  |  | AWH |  |
| P1EWCC-PWP06-10490 |  | Update of Project Plans and LS-WSI and Approval (intrusive surveys) |  | 40d | 2018-06-15 | 2018-08-10 | P1EWCC-PWP06-10450 |  |  |  |  | 371d | 30.12d |  |  |  | AWH |  |
| P1EWCC-PWP06-1940 |  | Report of Findings And Approval (104-L2 - Thorpe Mandeville Embankment) |  | 35d | 2018-11-19 | 2019-01-04 | P1EWCC-PWP06-1930 |  |  |  |  | 1050d |  |  |  |  | AWH |  |
|  | 6 | **Ecological Mitigation Works** |  |  | 2017-02-17 | 2019-01-24 |  |  |  |  |  |  |  |  |  |  |  |  |
|  | 1 | **Design** |  |  | 2017-02-17 | 2017-09-18 |  |  |  |  |  |  |  |  |  |  |  |  |
| P1EWCC-PWP02-4540 |  | HS2 issue Prelimanry Design of Habitat Creation (105-M1E) |  | 1d | 2017-02-17 A | 2017-02-17 A |  | 100% |  |  |  |  |  |  |  |  | UW1 |  |
| P1EWCC-PWP02-4530 |  | Design of Habitat Creation (105-M1E) (deleted PMI9) |  | 25d | 2017-03-30 A | 2017-09-18 | P1EWCC-PWP02-4540 | 96% | 0.88d | 2017-02-20 | 2017-03-24 | 1389.12d | 0d |  | 2017-09-18 |  | UW1 |  |
|  | 3 | **Habitat Creation** |  |  |  |  |  |  |  |  |  |  |  |  |  |  |  |  |
|  | 5 | **Translocation of Species** |  |  | 2018-03-01 | 2018-09-23 |  |  |  |  |  |  |  |  |  |  |  |  |
| P1EWCC-PWP02-12670 |  | Earliest Availability for Species Translocation to Habitat Creation (105-M1E) | milestone | 0d | 2018-03-01 | 2018-03-01 |  |  |  |  |  | 156d | 147d | start on or after 2018-03-01 |  | HS2 - 8h x 7d Workweek (No Holidays) | AWE1 |  |
| P1EWCC-PWP02-4570 |  | Species Translocation to Habitat Creation (105-M1E) |  | 60d | 2018-07-26 | 2018-09-23 | P1EWCC-AWP01-4260, P1EWCC-PWP02-12670, P1EWCC-PWP02-14610 |  |  |  |  | 96d | 0d |  |  | HS2 - 8h x 7d Workweek (No Holidays) | AWE1 |  |
|  | 15 | **Landscape Planting - Thorpe Mandeville (105-M2W)** |  |  | 2018-03-01 | 2019-01-24 |  |  |  |  |  |  |  |  |  |  |  |  |
|  | 1 | **Design** |  |  | 2018-03-01 | 2018-07-05 |  |  |  |  |  |  |  |  |  |  |  |  |
| P1EWCC-PWP02-14030 |  | Review and Vaildate HS2 design for planning |  | 80d | 2018-03-01 | 2018-06-21 | P1EWCC-PWP02-14440, P1EWCC-PWP02-11910 SS+5d |  |  |  |  | -99.75d | 0d |  |  |  | AWE2 | y |
| P1EWCC-PWP02-14020 |  | Schedule 17 Planning Consent Approval Period |  | 56d | 2018-04-27 | 2018-06-21 | P1EWCC-PWP02-14030 FF |  |  |  |  | 1613d | 161d |  |  | HS2 - 8h x 7d Workweek (No Holidays) | AWE2 | y |
| P1EWCC-PWP02-14010 |  | HS2 approval period of vaildated design |  | 14d | 2018-06-22 | 2018-07-05 | P1EWCC-PWP02-14030 |  |  |  |  | 1508.12d | 0d |  |  | HS2 - 8h x 7d Workweek (No Holidays) | AWE2 | y |
|  | 2 | **Installation** |  |  | 2018-07-05 | 2019-01-24 |  |  |  |  |  |  |  |  |  |  |  |  |
| P1EWCC-PWP02-13990 |  | Call off of Landscape Planting | milestone | 0d | 2018-07-05 | 2018-07-05 | P1EWCC-PWP02-14010 |  |  |  |  | 1076.25d | 0d |  |  |  | AWE2 | y |
| P1EWCC-PWP02-14000 |  | Call off period for Landscape Planting |  | 64.88d | 2018-07-05 | 2018-10-04 | P1EWCC-PWP02-13990 |  |  |  |  | 1076.25d | 40.12d |  |  |  | AWE2 | y |
| P1EWCC-PWP02-13980 |  | Advance Planting to Manor House Thorpe Mandeville (105-M2W) |  | 40d | 2018-11-29 | 2019-01-24 | P1EWCC-PWP02-14000, P1EWCC-AWP01-4260, P1EWCC-PWP02-14020, P1EWCC-PWP02-11910, P1EWCC-PWP02-4570, P1EWCC-PWP02-15070 |  |  |  |  | 1036.12d |  | start on or after 2018-11-01 |  |  | AWE2 | y |

| ID | WBS | Activity | Type | Duration | Start | Finish | Predecessors | Complete | Planned start | Planned finish | Total float | Free float | Constraint | HS2 Filter | Fusion - WPS |
| --- | --- | --- | --- | --- | --- | --- | --- | --- | --- | --- | --- | --- | --- | --- | --- |
|  | 8 | **Water Resources** |  |  | 2017-10-13 | 2018-05-01 |  |  |  |  |  |  |  |  |  |
| P1EWCC-PWP04-2230 |  | Preliminary Flood Plain Storage Design for Culworth Brook |  | 142d | 2017-10-13 | 2018-05-01 | P1EWCC-PWP04-1700, P1EWCC-PWP02-12060 |  |  |  | 484d |  |  | y | AWE3 |
|  | 4 | **SOW Completion Dates** |  |  | 2017-09-22 | 2019-12-31 |  |  |  |  |  |  |  |  |  |
| P1EWCC-PWP01-2130 |  | Completion of Survey for Badgers (105+000) | milestone | 0d | 2017-09-22 | 2017-09-22 | P1EWCC-PWP01-3090 |  |  |  | -60.88d | 1385.12d | finish on 2017-06-30 |  | UW1 |
| P1EWCC-PWP01-2170 |  | Completion of Survey for Bats (105+000) | milestone | 0d | 2017-09-22 | 2017-09-22 | P1EWCC-PWP01-3090 |  |  |  | -60.88d | 1385.12d | finish on 2017-06-30 |  | UW1 |
| P1EWCC-PWP01-2300 |  | Completion of Survey for GCN (105+000) | milestone | 0d | 2017-09-22 | 2017-09-22 | P1EWCC-PWP01-3090 |  |  |  | -60.88d | 1385.12d | finish on 2017-06-30 |  | UW1 |
| P1EWCC-PWP04-1350 |  | Completion of Early Flood Compensation Storage/Area modelling/Design | milestone | 0d | 2018-09-28 | 2018-09-28 |  |  |  |  | 0d | 1120d | finish on 2018-09-28 | y | UW1 |
| P1EWCC-PWP04-1690 |  | Fluvial/hydrological modelling,initial site visits, inception report, topographical survey, and modelling. | milestone | 0d | 2018-09-28 | 2018-09-28 |  |  |  |  | 0d | 1120d | finish on 2018-09-28 | y | AWE3 |
| P1EWCC-PWP02-4640 |  | Completion of Species Translocation/ exclusion - Otters | milestone | 0d | 2018-12-31 | 2018-12-31 | P1EWCC-PWP02-4570 |  |  |  | 0d | 1055d | finish on 2018-12-31 |  | AWE1 |
| P1EWCC-PWP02-4590 |  | Completion of Species Translocation/ exclusion - Badgers | milestone | 0d | 2019-06-28 | 2019-06-28 | P1EWCC-PWP02-4570 |  |  |  | 0d | 926d | finish on 2019-06-28 |  | AWE1 |
| P1EWCC-PWP02-4600 |  | Completion of Species Translocation/ exclusion - Bats | milestone | 0d | 2019-06-28 | 2019-06-28 | P1EWCC-PWP02-4570 |  |  |  | 0d | 926d | finish on 2019-06-28 |  | AWE1 |
| P1EWCC-PWP02-4610 |  | Completion of Species Translocation/ exclusion - Great Crested Newts | milestone | 0d | 2019-06-28 | 2019-06-28 | P1EWCC-PWP02-4570 |  |  |  | 0d | 926d | finish on 2019-06-28 |  | AWE1 |
| P1EWCC-PWP02-4620 |  | Completion of Species Translocation/ exclusion - Reptiles | milestone | 0d | 2019-06-28 | 2019-06-28 | P1EWCC-PWP02-4570 |  |  |  | 0d | 926d | finish on 2019-06-28 |  | AWE1 |
| P1EWCC-FWP06-7070 |  | Completion of Arboricultural Survey of effected trees along water course | milestone | 0d | 2019-06-28 | 2019-06-28 |  |  |  |  | 0d | 925d | finish on 2019-06-28 |  | UW1 |
| P1EWCC-PWP02-4580 |  | Completion of Habitat Creation (105-M1E) | milestone | 0d | 2019-12-31 | 2019-12-31 |  |  |  |  | 0d | 794d | finish on 2019-12-31 |  | AWE1 |
|  | 2 | **105-L1 - Lower Thorpe Viaduct** |  |  | 2017-03-20 | 2020-01-10 |  |  |  |  |  |  |  |  |  |
|  | 8 | **Land Access** |  |  | 2017-05-01 | 2019-08-01 |  |  |  |  |  |  |  |  |  |
|  | 1 | **Survey Work** |  |  | 2017-05-01 | 2017-05-01 |  |  |  |  |  |  |  |  |  |
| P1EWCC-AWP01-7180 |  | Land Access Granted for Survey Work (Schedule 2) | milestone | 0d | 2017-05-01 A | 2017-05-01 A |  | 100% | 2017-04-03 | 2017-04-03 |  |  | as late as possible | y | AW1 |
|  | 2 | **Possession** |  |  | 2019-08-01 | 2019-08-01 |  |  |  |  |  |  |  |  |  |
| P1EWCC-AWP01-7190 |  | Land Access Possession Granted for Construction (Schedule 16) | milestone | 0d | 2019-08-01 | 2019-08-01 |  |  |  |  | -197d | 0d | as late as possible | y | AW1 |
|  | 3 | **Survey Works** |  |  | 2017-03-20 | 2019-11-22 |  |  |  |  |  |  |  |  |  |
| P1EWCC-AWP01-7170 |  | Planning Consent & Licensing for Survey Work |  | 10d | 2017-03-20 A | 2017-04-28 A | P1EWCC-AWP01-1230 | 100% | 2017-03-20 | 2017-03-31 |  |  |  |  | AW1 |
| P1EWCC-FWP01-3810 |  | Undertake Remaining Soil Surveys |  | 120d | 2017-12-15 | 2018-06-01 | P1EWCC-PWP01-5610 |  |  |  | 461d |  |  | y | AWS |
| P1EWCC-FWP01-3820 |  | Undertake Arboricultural Surveys |  | 125d | 2017-12-15 | 2018-06-08 | P1EWCC-PWP01-5610 |  |  |  | 341.12d |  |  | y | AWS |
| P1EWCC-FWP01-3830 |  | Undertake Remaining Ecology & Environmental Surveys |  | 340d | 2017-12-15 | 2019-04-05 | P1EWCC-PWP01-5610 |  |  |  | 241d |  |  | y | AWS |

| ID | WBS | Activity | Type | Duration | Start | Finish | Predecessors | Complete | Planned start | Planned finish | Total float | Free float | Constraint | Calendar | Fusion - WPS | HS2 Filter |
| --- | --- | --- | --- | --- | --- | --- | --- | --- | --- | --- | --- | --- | --- | --- | --- | --- |
|  | 1 | **Ecological & Environmental Surveys** |  |  |  |  |  |  |  |  |  |  |  |  |  |  |
|  | 4 | **Arboricultural survey** |  |  |  |  |  |  |  |  |  |  |  |  |  |  |
|  | 2 | **Engineering Surveys** |  |  |  |  |  |  |  |  |  |  |  |  |  |  |
|  | 3 | **Historic Environment** |  |  | 2018-02-09 | 2019-11-22 |  |  |  |  |  |  |  |  |  |  |
| P1EWCC-PWP06-6650 |  | Non-Intrusive Surveys (geophysics) |  | 20d | 2018-02-09 | 2018-03-09 | P1EWCC-AWP01-7180, P1EWCC-PWP06-6630, P1EWCC-PWP05-240 |  |  |  | 371d | 0d |  |  | AWH |  |
| P1EWCC-PWP06-10500 |  | Non-Intrusive Surveys (trial trenching) |  | 30d | 2018-05-04 | 2018-06-15 | P1EWCC-PWP06-6640, P1EWCC-PWP05-240 |  |  |  | 371d | 0d |  |  | AWH |  |
| P1EWCC-PWP06-6670 |  | Intrusive Surveys |  | 40d | 2019-09-30 | 2019-11-22 | P1EWCC-PWP06-6640, P1EWCC-PWP02-9700, P1EWCC-PWP06-10510, P1EWCC-AWP01-7190 |  |  |  | 75.88d | 0d |  |  | AWH |  |
|  | 7 | **Historic Environment** |  |  | 2017-12-15 | 2020-01-10 |  |  |  |  |  |  |  |  |  |  |
| P1EWCC-PWP06-6630 |  | Production and Approval of Project Plans & LS-WSI (non-intrusive surveys) |  | 40d | 2017-12-15 | 2018-02-09 | P1EWCC-PWP05-240 |  |  |  | 371d | 0d |  |  | AWH |  |
| P1EWCC-PWP06-6640 |  | Update of Project Plans and LS-WSI and Approval (intrusive surveys) |  | 40d | 2018-03-09 | 2018-05-04 | P1EWCC-PWP06-6650 |  |  |  | 371d | 0d |  |  | AWH |  |
| P1EWCC-PWP06-10510 |  | Update of Project Plans and LS-WSI and Approval (intrusive surveys) |  | 40d | 2018-06-15 | 2018-08-10 | P1EWCC-PWP06-10500 |  |  |  | 371d | 295.12d |  |  | AWH |  |
| P1EWCC-PWP06-6660 |  | Report of Findings And Approval (Archaeological Investigation) |  | 35d | 2019-11-25 | 2020-01-10 | P1EWCC-PWP06-6670 |  |  |  | 785d |  |  |  | AWH |  |
|  | 4 | **Ecological Mitigation Works** |  |  | 2019-08-01 | 2019-09-29 |  |  |  |  |  |  |  |  |  |  |
|  | 5 | **Translocation of Species** |  |  | 2019-08-01 | 2019-09-29 |  |  |  |  |  |  |  |  |  |  |
| P1EWCC-PWP02-9700 |  | Species Translocation to Habitat Creation (105-M1E) |  | 60d | 2019-08-01 | 2019-09-29 | P1EWCC-AWP01-7190, P1EWCC-PWP02-12670, P1EWCC-PWP02-14610 |  |  |  | -275d | 0d | start on or after 2019-08-01 | HS2 - 8h x 7d Workweek (No Holidays) | AWE1 |  |
|  | 2 | **Water Resources** |  |  | 2017-06-07 | 2017-09-15 |  |  |  |  |  |  |  |  |  |  |
| P1EWCC-PWP04-1700 |  | Hydrological Modelling - Culworth Brook |  | 194.62d | 2017-06-07 A | 2017-09-15 A | P1EWCC-UWP01-1000 | 100% | 2017-09-28 | 2018-06-27 |  |  |  |  | UW1 | y |
|  | 6 | **SOW Completion Dates** |  |  | 2017-09-18 | 2019-09-30 |  |  |  |  |  |  |  |  |  |  |
| P1EWCC-PWP01-2280 |  | Completion of Survey for Water Voles (105+300) | milestone | 0d | 2017-09-18 | 2017-09-18 |  |  |  |  | -55d | 1390d | finish on 2017-06-30 |  | UW1 |  |
| P1EWCC-PWP04-1710 |  | Completion of Fluvial/hydrological modelling,initial site visits, inception report, topographical survey, and modelling. | milestone | 0d | 2018-09-28 | 2018-09-28 | P1EWCC-PWP04-1700 |  |  |  | 0d | 1120d | finish on 2018-09-28 |  | UW1 | y |
| P1EWCC-PWP02-9710 |  | Completion of Species Translocation/ exclusion - Reptiles | milestone | 0d | 2019-09-30 | 2019-09-30 | P1EWCC-PWP02-9700 |  |  |  | -195d | 860d | finish on 2018-12-31 |  | AWE1 |  |
| P1EWCC-PWP02-9720 |  | Completion of Species Translocation/ exclusion - Bats | milestone | 0d | 2019-09-30 | 2019-09-30 | P1EWCC-PWP02-9700 |  |  |  | -195d | 860d | finish on 2018-12-31 |  | AWE1 |  |
| P1EWCC-PWP02-9730 |  | Completion of Species Translocation/ exclusion - Badgers | milestone | 0d | 2019-09-30 | 2019-09-30 | P1EWCC-PWP02-9700 |  |  |  | -195d | 860d | finish on 2018-12-31 |  | AWE1 |  |
| P1EWCC-PWP02-9740 |  | Completion of Species Translocation/ exclusion - GCN | milestone | 0d | 2019-09-30 | 2019-09-30 | P1EWCC-PWP02-9700 |  |  |  | -195d | 860d | finish on 2018-12-31 |  | AWE1 |  |
| P1EWCC-FWP06-7090 |  | Completion of Arboricultural Survey of effected trees along water course | milestone | 0d | 2019-09-30 | 2019-09-30 | P1EWCC-FWP01-3820 |  |  |  | 0d | 859d | finish on 2019-09-30 |  | AWS |  |

| ID | WBS | Activity | Type | Duration | Start | Finish | Predecessors | Complete | Planned start | Planned finish | Total float | Free float | Constraint | Calendar | HS2 Filter | Fusion - WPS |
| --- | --- | --- | --- | --- | --- | --- | --- | --- | --- | --- | --- | --- | --- | --- | --- | --- |
|  | 11 | **105-L2 - Lower Thorpe South Embankment** |  |  | 2017-03-20 | 2020-01-10 |  |  |  |  |  |  |  |  |  |  |
|  | 8 | **Land Access** |  |  | 2017-05-08 | 2019-08-01 |  |  |  |  |  |  |  |  |  |  |
|  | 1 | **Survey Work** |  |  | 2017-05-08 | 2017-05-08 |  |  |  |  |  |  |  |  |  |  |
| P1EWCC-AWP01-7210 |  | Land Access Granted for Survey Work (Schedule 2) | milestone | 0d | 2017-05-08 A | 2017-05-08 A |  | 100% | 2017-05-22 | 2017-05-22 |  |  |  |  | y | AW1 |
|  | 2 | **Possession** |  |  | 2019-08-01 | 2019-08-01 |  |  |  |  |  |  |  |  |  |  |
| P1EWCC-AWP01-7220 |  | Land Access Possession Granted for Construction (Schedule 16) | milestone | 0d | 2019-08-01 | 2019-08-01 |  |  |  |  | -197d | 0d | as late as possible |  | y | AW1 |
|  | 3 | **Survey Works** |  |  | 2017-03-20 | 2019-11-22 |  |  |  |  |  |  |  |  |  |  |
| P1EWCC-AWP01-7200 |  | Planning Consent & Licensing for Survey Work |  | 10d | 2017-03-20 A | 2017-05-05 A | P1EWCC-AWP01-1230 | 100% | 2017-05-22 | 2017-06-02 |  |  |  |  |  | AW1 |
|  | 1 | **Ecological & Environmental Surveys** |  |  |  |  |  |  |  |  |  |  |  |  |  |  |
|  | 2 | **Engineering Surveys** |  |  |  |  |  |  |  |  |  |  |  |  |  |  |
|  | 3 | **Historic Environment** |  |  | 2018-02-09 | 2019-11-22 |  |  |  |  |  |  |  |  |  |  |
| P1EWCC-PWP06-6710 |  | Non-Intrusive Surveys (geophysics) |  | 20d | 2018-02-09 | 2018-03-09 | P1EWCC-AWP01-7210, P1EWCC-PWP06-6690, P1EWCC-PWP05-240 |  |  |  | 371d | 0d |  |  |  | AWH |
| P1EWCC-PWP06-10520 |  | Non-Intrusive Surveys (trial trenching) |  | 30d | 2018-05-04 | 2018-06-15 | P1EWCC-PWP06-6700, P1EWCC-PWP05-240 |  |  |  | 371d | 0d |  |  |  | AWH |
| P1EWCC-PWP06-6730 |  | Intrusive Surveys |  | 40d | 2019-09-30 | 2019-11-22 | P1EWCC-PWP06-6700, P1EWCC-PWP02-9750, P1EWCC-PWP06-10530, P1EWCC-AWP01-7220 |  |  |  | 75.88d | 0d |  |  |  | AWH |
|  | 7 | **Historic Environment** |  |  | 2017-12-15 | 2020-01-10 |  |  |  |  |  |  |  |  |  |  |
| P1EWCC-PWP06-6690 |  | Production and Approval of Project Plans & LS-WSI (non-intrusive surveys) |  | 40d | 2017-12-15 | 2018-02-09 | P1EWCC-PWP05-240 |  |  |  | 371d | 0d |  |  |  | AWH |
| P1EWCC-PWP06-6700 |  | Update of Project Plans and LS-WSI and Approval (intrusive surveys) |  | 40d | 2018-03-09 | 2018-05-04 | P1EWCC-PWP06-6710 |  |  |  | 371d | 0d |  |  |  | AWH |
| P1EWCC-PWP06-10530 |  | Update of Project Plans and LS-WSI and Approval (intrusive surveys) |  | 40d | 2018-06-15 | 2018-08-10 | P1EWCC-PWP06-10520 |  |  |  | 371d | 295.12d |  |  |  | AWH |
| P1EWCC-PWP06-6720 |  | Report of Findings And Approval (Archaeological Investigation) |  | 35d | 2019-11-25 | 2020-01-10 | P1EWCC-PWP06-6730 |  |  |  | 785d |  |  |  |  | AWH |
|  | 4 | **Ecological Mitigation Works** |  |  | 2019-08-01 | 2019-09-29 |  |  |  |  |  |  |  |  |  |  |
|  | 5 | **Translocation of Species** |  |  | 2019-08-01 | 2019-09-29 |  |  |  |  |  |  |  |  |  |  |
| P1EWCC-PWP02-9750 |  | Species Translocation to Habitat Creation (105-M1E) |  | 60d | 2019-08-01 | 2019-09-29 | P1EWCC-AWP01-7220, P1EWCC-PWP02-12670, P1EWCC-PWP02-14610 |  |  |  | -275d | 0d | start on or after 2019-08-01 | HS2 - 8h x 7d Workweek (No Holidays) |  | AWE1 |
|  | 2 | **Water Resources** |  |  |  |  |  |  |  |  |  |  |  |  |  |  |
|  | 6 | **SOW Completion Dates** |  |  | 2019-09-30 | 2019-09-30 |  |  |  |  |  |  |  |  |  |  |
| P1EWCC-PWP02-9770 |  | Completion of Species Translocation/ exclusion - Bats | milestone | 0d | 2019-09-30 | 2019-09-30 | P1EWCC-PWP02-9750 |  |  |  | -195d | 860d | finish on 2018-12-31 |  |  | AWE1 |

| ID | WBS | Activity | Type | Duration | Start | Finish | Predecessors | Complete | Planned start | Planned finish | Total float | Free float | Constraint | Calendar | HS2 Filter | Fusion - WPS |
| --- | --- | --- | --- | --- | --- | --- | --- | --- | --- | --- | --- | --- | --- | --- | --- | --- |
|  | 12 | **105-L3 - Lower Thorpe South Cutting** |  |  | 2017-03-20 | 2020-03-31 |  |  |  |  |  |  |  |  |  |  |
|  | 8 | **Land Access** |  |  | 2017-05-08 | 2019-03-01 |  |  |  |  |  |  |  |  |  |  |
|  | 1 | **Survey Work** |  |  | 2017-05-08 | 2017-05-08 |  |  |  |  |  |  |  |  |  |  |
| P1EWCC-AWP01-7240 |  | Land Access Granted for Survey Work (Schedule 2) | milestone | 0d | 2017-05-08 A | 2017-05-08 A |  | 100% | 2017-04-03 | 2017-04-03 |  |  | as late as possible |  | y | AW1 |
|  | 2 | **Possession** |  |  | 2019-03-01 | 2019-03-01 |  |  |  |  |  |  |  |  |  |  |
| P1EWCC-AWP01-7250 |  | Land Access Possession Granted for Construction (Schedule 16) | milestone | 0d | 2019-03-01 | 2019-03-01 |  |  |  |  | 97d | 0d | as late as possible |  | y | AW1 |
|  | 3 | **Survey Works** |  |  | 2017-03-20 | 2019-06-24 |  |  |  |  |  |  |  |  |  |  |
| P1EWCC-AWP01-7230 |  | Planning Consent & Licensing for Survey Work |  | 10d | 2017-03-20 A | 2017-05-05 A | P1EWCC-AWP01-1230 | 100% | 2017-03-20 | 2017-03-31 |  |  |  |  |  | AW1 |
|  | 1 | **Ecological & Environmental Surveys** |  |  |  |  |  |  |  |  |  |  |  |  |  |  |
|  | 2 | **Engineering Surveys** |  |  |  |  |  |  |  |  |  |  |  |  |  |  |
|  | 3 | **Historic Environment** |  |  | 2018-02-09 | 2019-06-24 |  |  |  |  |  |  |  |  |  |  |
| P1EWCC-PWP06-6770 |  | Non-Intrusive Surveys (geophysics) |  | 20d | 2018-02-09 | 2018-03-09 | P1EWCC-AWP01-7240, P1EWCC-PWP06-6750, P1EWCC-PWP05-240 |  |  |  | 285d | 0d |  |  |  | AWH |
| P1EWCC-PWP06-10540 |  | Non-Intrusive Surveys (trial trenching) |  | 30d | 2018-05-04 | 2018-06-15 | P1EWCC-PWP06-6760, P1EWCC-PWP05-240 |  |  |  | 285d | 0d |  |  |  | AWH |
| P1EWCC-PWP06-6790 |  | Intrusive Surveys |  | 40d | 2019-04-29 | 2019-06-24 | P1EWCC-PWP06-6760, P1EWCC-PWP02-9780, P1EWCC-PWP06-10550, P1EWCC-AWP01-7250 |  |  |  | 99d | 0d |  |  |  | AWH |
|  | 7 | **Historic Environment** |  |  | 2017-12-15 | 2019-08-12 |  |  |  |  |  |  |  |  |  |  |
| P1EWCC-PWP06-6750 |  | Production and Approval of Proejct Plan & LS-WSI (non-intrusive surveys) |  | 40d | 2017-12-15 | 2018-02-09 | P1EWCC-PWP05-240 |  |  |  | 285d | 0d |  |  |  | AWH |
| P1EWCC-PWP06-6760 |  | Update of Project Plans and LS-WSI and Approval (intrusive surveys) |  | 40d | 2018-03-09 | 2018-05-04 | P1EWCC-PWP06-6770 |  |  |  | 285d | 0d |  |  |  | AWH |
| P1EWCC-PWP06-10550 |  | Update of Project Plans and LS-WSI and Approval (intrusive surveys) |  | 40d | 2018-06-15 | 2018-08-10 | P1EWCC-PWP06-10540 |  |  |  | 285d | 186d |  |  |  | AWH |
| P1EWCC-PWP06-6780 |  | Report of Findings And Approval (Archaeological Investigation) |  | 35d | 2019-06-24 | 2019-08-12 | P1EWCC-PWP06-6790 |  |  |  | 894.12d |  |  |  |  | AWH |
|  | 4 | **Ecological Mitigation Works** |  |  | 2019-03-01 | 2019-04-29 |  |  |  |  |  |  |  |  |  |  |
|  | 5 | **Translocation of Species** |  |  | 2019-03-01 | 2019-04-29 |  |  |  |  |  |  |  |  |  |  |
| P1EWCC-PWP02-9780 |  | Species Translocation to Habitat Creation (105-M1E) |  | 60d | 2019-03-01 | 2019-04-29 | P1EWCC-AWP01-7250, P1EWCC-PWP02-12670, P1EWCC-PWP02-14610 |  |  |  | 137d | 0d | start on or after 2019-03-01 | HS2 - 8h x 7d Workweek (No Holidays) |  | AWE1 |
|  | 2 | **Water Resources** |  |  |  |  |  |  |  |  |  |  |  |  |  |  |
|  | 6 | **SOW Completion Dates** |  |  | 2020-03-31 | 2020-03-31 |  |  |  |  |  |  |  |  |  |  |
| P1EWCC-PWP02-9790 |  | Completion of Species Translocation/ exclusion - Bats | milestone | 0d | 2020-03-31 | 2020-03-31 | P1EWCC-PWP02-9780 |  |  |  | 0d | 729d | finish on 2020-03-31 |  |  | AWE1 |

| ID | WBS | Activity | Type | Duration | Start | Finish | Predecessors | Complete | Remaining | Planned start | Planned finish | Total float | Free float | Constraint | Expected finish | HS2 Filter | Fusion - WPS |
| --- | --- | --- | --- | --- | --- | --- | --- | --- | --- | --- | --- | --- | --- | --- | --- | --- | --- |
|  | 3 | **105-L4 - Lower Thorpe North Embankment** |  |  | 2017-02-17 | 2019-12-31 |  |  |  |  |  |  |  |  |  |  |  |
|  | 10 | **Land Access** |  |  | 2017-04-03 | 2018-07-26 |  |  |  |  |  |  |  |  |  |  |  |
|  | 1 | **Survey Work** |  |  | 2017-04-03 | 2017-04-03 |  |  |  |  |  |  |  |  |  |  |  |
| P1EWCC-AWP01-4210 |  | Land Access Granted for Survey Work (Schedule 2) | milestone | 0d | 2017-04-03 A | 2017-04-03 A |  | 100% |  | 2017-03-29 | 2017-03-29 |  |  | as late as possible |  | y | UW1 |
|  | 2 | **Possession** |  |  | 2017-11-27 | 2018-07-26 |  |  |  |  |  |  |  |  |  |  |  |
|  | 1 | **Ecological Mitigation Area** |  |  | 2017-11-27 | 2017-11-27 |  |  |  |  |  |  |  |  |  |  |  |
| P1EWCC-AWP01-4220 |  | Land Access Possession Granted for Ecolgical Mitigation Sites (Schedule 16) 105-M4E | milestone | 0d | 2017-11-27 | 2017-11-27 |  |  |  |  |  | 408d | 0d | start on or after 2017-11-27 |  | y | UW1 |
|  | 2 | **105-L4 - Lower Thorpe North Embankment** |  |  | 2018-07-26 | 2018-07-26 |  |  |  |  |  |  |  |  |  |  |  |
| P1EWCC-AWP01-4230 |  | Land Access Possession Granted for Chetwode Embankment (Schedule 16) | milestone | 0d | 2018-07-26 | 2018-07-26 |  |  |  |  |  | 197d | 0d | as late as possible |  | y | AW1 |
|  | 5 | **Survey Works** |  |  | 2017-03-20 | 2019-06-26 |  |  |  |  |  |  |  |  |  |  |  |
| P1EWCC-AWP01-3920 |  | Planning Consent & Licensing for Survey Work |  | 7d | 2017-03-20 A | 2017-03-31 A | P1EWCC-AWP01-1230 | 100% |  | 2017-03-20 | 2017-03-28 |  |  |  |  |  | UW1 |
| P1EWCC-FWP01-3910 |  | Undertake Arboricultural Surveys |  | 125d | 2017-12-15 | 2018-06-08 | P1EWCC-PWP01-5610 |  |  |  |  | 370d |  |  |  | y | AWS |
| P1EWCC-FWP01-3920 |  | Undertake Remaining Ecology & Environmental Surveys |  | 398d | 2017-12-15 | 2019-06-26 | P1EWCC-PWP01-5610 |  |  |  |  | 97d |  |  |  | y | AWS |
|  | 1 | **Ecological & Environmental Surveys** |  |  | 2017-04-03 | 2017-09-22 |  |  |  |  |  |  |  |  |  |  |  |
| P1EWCC-PWP01-3130 |  | Survey for Badgers, Bats, GCN, Reptiles |  | 25d | 2017-04-03 A | 2017-09-22 | P1EWCC-AWP01-4210, P1EWCC-AWP01-3920 | 80% | 4.88d | 2017-03-29 | 2017-05-02 | -60.88d | 0d |  | 2017-09-22 |  | UW1 |
|  | 5 | **Arboricultural survey** |  |  |  |  |  |  |  |  |  |  |  |  |  |  |  |
|  | 2 | **Engineering Surveys** |  |  | 2017-04-06 | 2017-04-21 |  |  |  |  |  |  |  |  |  |  |  |
| P1EWCC-PWP03-3170 |  | Survey for Engineering (Topo, GPR, Utility, Soil) |  | 20d | 2017-04-06 A | 2017-04-21 A | P1EWCC-AWP01-4210, P1EWCC-AWP01-3920 | 100% |  | 2017-03-29 | 2017-04-25 |  |  |  |  |  | UW1 |
|  | 3 | **Watercourse Surveys** |  |  |  |  |  |  |  |  |  |  |  |  |  |  |  |
|  | 4 | **Historic Environment** |  |  | 2017-09-18 | 2018-11-16 |  |  |  |  |  |  |  |  |  |  |  |
|  | 1 | **Ecological Mitigation Site North Lower Thorpe 1069 (105-M4E)** |  |  | 2017-09-18 | 2017-12-22 |  |  |  |  |  |  |  |  |  |  |  |
| P1EWCC-PWP06-1700 |  | Trial Trenching (ecological mitigation site) |  | 5d | 2017-09-18 | 2017-09-22 | P1EWCC-PWP06-1730, P1EWCC-AWP01-4210 |  |  |  |  | 426d | 0d |  |  |  | UW1 |
| P1EWCC-PWP06-1710 |  | Intrusive Surveys (ecological mitigation site) |  | 5d | 2017-12-15 | 2017-12-22 | P1EWCC-PWP06-1740, P1EWCC-PWP02-4690, P1EWCC-PWP05-240 |  |  |  |  | 396.12d | 0d |  |  |  | AWH |
|  | 2 | **105-L4 - Lower Thorpe North Embankment** |  |  | 2018-02-09 | 2018-11-16 |  |  |  |  |  |  |  |  |  |  |  |
| P1EWCC-PWP06-10560 |  | Non-Intrusive Surveys (geophysics) |  | 20d | 2018-02-09 | 2018-03-09 | P1EWCC-PWP06-10580, P1EWCC-PWP05-240 |  |  |  |  | 285d | 0d |  |  |  | AWH |
| P1EWCC-PWP06-10570 |  | Non-Intrusive Surveys (trial trenching) |  | 30d | 2018-05-04 | 2018-06-15 | P1EWCC-PWP06-10590, P1EWCC-PWP05-240 |  |  |  |  | 285d | 0d |  |  |  | AWH |
| P1EWCC-PWP06-1950 |  | Intrusive Surveys (105-L4 - Lower Thorpe North Embankment) |  | 40d | 2018-09-24 | 2018-11-16 | P1EWCC-PWP02-4710, P1EWCC-PWP06-10600, P1EWCC-AWP01-4230 |  |  |  |  | 254.88d | 0d |  |  |  | AWH |

| ID | WBS | Activity | Duration | Start | Finish | Predecessors | Complete | Remaining | Planned start | Planned finish | Total float | Free float | Constraint | Expected finish | Calendar | Fusion - WPS | Key Milestones |
| --- | --- | --- | --- | --- | --- | --- | --- | --- | --- | --- | --- | --- | --- | --- | --- | --- | --- |
|  | 9 | **Historic Environment** |  | 2017-04-17 | 2019-01-04 |  |  |  |  |  |  |  |  |  |  |  |  |
|  | 1 | **Ecological Mitigation Site North Lower Thorpe 1069 (105-M4E)** |  | 2017-04-17 | 2018-02-09 |  |  |  |  |  |  |  |  |  |  |  |  |
| P1EWCC-PWP06-1730 |  | Production and Approval of LS-WSI Lower Thorpe North Embankment (non-intrusive surveys) Code 2 | 20d | 2017-04-17 A | 2017-08-14 A | P1EWCC-UWP01-1000 | 100% |  | 2017-04-24 | 2017-05-19 |  |  |  |  |  | UW1 |  |
| P1EWCC-PWP06-1720 |  | HS2 issue Project Plan | 1d | 2017-09-18 | 2017-09-18 |  |  |  |  |  | 460d | 34d |  |  |  | UW1 |  |
| P1EWCC-PWP06-1740 |  | Update of Project Plans and LS-WSI and Approval (intrusive surveys) | 30d | 2017-09-25 | 2017-11-03 | P1EWCC-PWP06-1700, P1EWCC-PWP06-1720 FF |  |  |  |  | 426d | 29.88d |  |  |  | UW1 |  |
| P1EWCC-PWP06-1750 |  | Report of Findings And Approval (ecological mitigation site) | 35d | 2017-12-22 | 2018-02-09 | P1EWCC-PWP06-1710 |  |  |  |  | 1285.12d |  |  |  |  | AWH |  |
|  | 2 | **105-L4 - Lower Thorpe North Embankment** |  | 2017-12-15 | 2019-01-04 |  |  |  |  |  |  |  |  |  |  |  |  |
| P1EWCC-PWP06-10580 |  | Production and Approval of Project Plan & LS-WSI (non-intrusive surveys) | 40d | 2017-12-15 | 2018-02-09 | P1EWCC-PWP05-240 |  |  |  |  | 285d | 0d |  |  |  | AWH |  |
| P1EWCC-PWP06-10590 |  | Update of Project Plans and LS-WSI and Approval (intrusive surveys) | 40d | 2018-03-09 | 2018-05-04 | P1EWCC-PWP06-10560 |  |  |  |  | 285d | 0d |  |  |  | AWH |  |
| P1EWCC-PWP06-10600 |  | Update of Project Plans and LS-WSI and Approval (intrusive surveys) | 40d | 2018-06-15 | 2018-08-10 | P1EWCC-PWP06-10570 |  |  |  |  | 285d | 30.12d |  |  |  | AWH |  |
| P1EWCC-PWP06-1960 |  | Report of Findings And Approval (105-L4 - Lower Thorpe North Embankment) | 35d | 2018-11-19 | 2019-01-04 | P1EWCC-PWP06-1950 |  |  |  |  | 1050d |  |  |  |  | AWH |  |
|  | 6 | **Ecological Mitigation Works** |  | 2017-02-17 | 2019-01-30 |  |  |  |  |  |  |  |  |  |  |  |  |
|  | 1 | **Design** |  | 2017-02-17 | 2017-10-06 |  |  |  |  |  |  |  |  |  |  |  |  |
| P1EWCC-PWP02-4680 |  | HS2 issue Prelimanry Design of Habitat Creation (105-M4E) | 1d | 2017-02-17 A | 2017-02-17 A |  | 100% |  |  |  |  |  |  |  |  | UW1 |  |
| P1EWCC-PWP02-4670 |  | Design of Habitat Creation (105-M4E) | 25d | 2017-03-30 A | 2017-09-15 A | P1EWCC-PWP02-4680 | 100% |  | 2017-02-20 | 2017-03-24 |  |  |  |  |  | UW1 |  |
| P1EWCC-AWP01-3910 |  | Planning Consent & Licensing for Habitat Creation (105-M4E) | 40d | 2017-05-26 A | 2017-10-06 | P1EWCC-PWP02-4670 SS | 63% | 14.88d | 2017-07-05 | 2017-08-29 | 451.12d | 0d |  | 2017-10-06 |  | UW1 |  |
|  | 2 | **Species Removal from Habitat Area** |  | 2017-07-31 | 2017-12-01 |  |  |  |  |  |  |  |  |  |  |  |  |
| P1EWCC-PWP02-4700 |  | MS/RAMS for GCN/Reptile Clearance from Habitat Creation Site (105-M4E) | 15d | 2017-07-31 A | 2017-09-12 A | P1EWCC-AWP01-1230 | 100% |  | 2017-08-23 | 2017-09-12 |  |  |  |  |  | UW1 |  |
| P1EWCC-PWP02-4690 |  | Exclude GCN/Reptile from Habitat Creation (105-M4E) | 5d | 2017-11-27 | 2017-12-01 | P1EWCC-PWP02-4700, P1EWCC-AWP01-4220 |  |  |  |  | 570d | 14d |  |  | HS2 - 8h x 7d Workweek (No Holidays) | UW1 |  |
|  | 3 | **Habitat Creation** |  | 2018-01-05 | 2018-08-29 |  |  |  |  |  |  |  |  |  |  |  |  |
| P1EWCC-PWP02-4650 |  | Habitat Creation (105-M4E) | 60d | 2018-01-05 | 2018-03-30 | P1EWCC-PWP02-4690, P1EWCC-AWP01-3910, P1EWCC-PWP03-3170 FF, P1EWCC-PWP06-1710, P1EWCC-PWP01-3130, P1EWCC-PWP02-9220, P1EWCC-PWP02-4670 |  |  |  |  | 386.12d | 38.12d |  |  |  | AWE1 | Key MS |
| P1EWCC-PWP02-4660 |  | Habitat Creation Maturity Period (105-M4E) | 182d | 2018-03-01 | 2018-08-29 | P1EWCC-PWP02-4650 SS |  |  |  |  | 488d |  | start on or after 2018-03-01 |  | HS2 - 8h x 7d Workweek (No Holidays) | AWE1 | Key MS |
|  | 5 | **Translocation of Species** |  | 2018-07-26 | 2018-09-23 |  |  |  |  |  |  |  |  |  |  |  |  |
| P1EWCC-PWP02-4710 |  | Species Translocation to Habitat Creation (105-M1E) | 60d | 2018-07-26 | 2018-09-23 | P1EWCC-AWP01-4230, P1EWCC-PWP02-12670, P1EWCC-PWP02-12670 SS, P1EWCC-PWP02-14610 |  |  |  |  | 277d | 0d |  |  | HS2 - 8h x 7d Workweek (No Holidays) | AWE1 |  |

| ID | WBS | Activity | Type | Duration | Start | Finish | Predecessors | Complete | Planned start | Planned finish | Total float | Free float | Constraint | Calendar | HS2 Filter | Fusion - WPS |
| --- | --- | --- | --- | --- | --- | --- | --- | --- | --- | --- | --- | --- | --- | --- | --- | --- |
|  | 15 | **Landscape Planting - Culworth (105-M4E)** |  |  | 2018-03-01 | 2019-01-30 |  |  |  |  |  |  |  |  |  |  |
|  | 1 | **Design** |  |  | 2018-03-01 | 2018-07-05 |  |  |  |  |  |  |  |  |  |  |
| P1EWCC-PWP02-14090 |  | Review and Vaildate HS2 design for planning |  | 80d | 2018-03-01 | 2018-06-21 | P1EWCC-PWP02-11910 SS+5d |  |  |  | -99.75d | 0d |  |  | y | AWE2 |
| P1EWCC-PWP02-14080 |  | Schedule 17 Planning Consent Approval Period |  | 56d | 2018-04-27 | 2018-06-21 | P1EWCC-PWP02-14090 FF |  |  |  | 1607.88d | 161d |  | HS2 - 8h x 7d Workweek (No Holidays) | y | AWE2 |
| P1EWCC-PWP02-14070 |  | HS2 approval period of vaildated design |  | 14d | 2018-06-22 | 2018-07-05 | P1EWCC-PWP02-14090 |  |  |  | 1503d | 0d |  | HS2 - 8h x 7d Workweek (No Holidays) | y | AWE2 |
|  | 2 | **Installation** |  |  | 2018-07-05 | 2019-01-30 |  |  |  |  |  |  |  |  |  |  |
| P1EWCC-PWP02-14050 |  | Call off of Landscape Planting | milestone | 0d | 2018-07-05 | 2018-07-05 | P1EWCC-PWP02-14070 |  |  |  | 1073d | 0d |  |  | y | AWE2 |
| P1EWCC-PWP02-14060 |  | Call off period for Landscape Planting |  | 64.88d | 2018-07-05 | 2018-10-04 | P1EWCC-PWP02-14050 |  |  |  | 1073d | 40.12d |  |  | y | AWE2 |
| P1EWCC-PWP02-14040 |  | Advance Planting to Culworth (105-M4E) |  | 43.25d | 2018-11-29 | 2019-01-30 | P1EWCC-PWP02-14060, P1EWCC-AWP01-4230, P1EWCC-PWP02-4710, P1EWCC-PWP02-14080, P1EWCC-PWP02-15070 |  |  |  | 1032.88d |  | start on or after 2018-11-01 |  | y | AWE2 |
|  | 1 | **Water Resources** |  |  |  |  |  |  |  |  |  |  |  |  |  |  |
|  | 4 | **SOW Completion Dates** |  |  | 2017-09-22 | 2019-12-31 |  |  |  |  |  |  |  |  |  |  |
| P1EWCC-PWP01-2310 |  | Completion of Survey for GCN (105+500) | milestone | 0d | 2017-09-22 | 2017-09-22 | P1EWCC-PWP01-3130 |  |  |  | -60.88d | 1385.12d | finish on 2017-06-30 |  |  | UW1 |
| P1EWCC-PWP02-4730 |  | Completion of Species Translocation/ exclusion - Badgers | milestone | 0d | 2019-06-28 | 2019-06-28 | P1EWCC-PWP02-4710 |  |  |  | 0d | 926d | finish on 2019-06-28 |  |  | AWE1 |
| P1EWCC-PWP02-4740 |  | Completion of Species Translocation/ exclusion - Bats | milestone | 0d | 2019-06-28 | 2019-06-28 | P1EWCC-PWP02-4710 |  |  |  | 0d | 926d | finish on 2019-06-28 |  |  | AWE1 |
| P1EWCC-PWP02-4750 |  | Completion of Species Translocation/ exclusion - Great Crested Newts | milestone | 0d | 2019-06-28 | 2019-06-28 | P1EWCC-PWP02-4710 |  |  |  | 0d | 926d | finish on 2019-06-28 |  |  | AWE1 |
| P1EWCC-PWP02-4760 |  | Completion of Species Translocation/ exclusion - Reptiles | milestone | 0d | 2019-06-28 | 2019-06-28 | P1EWCC-PWP02-4710 |  |  |  | 0d | 926d | finish on 2019-06-28 |  |  | AWE1 |
| P1EWCC-PWP02-4770 |  | Completion of Species Translocation/ exclusion - Otters | milestone | 0d | 2019-06-28 | 2019-06-28 | P1EWCC-PWP02-4710 |  |  |  | 0d | 926d | finish on 2019-06-28 |  |  | AWE1 |
| P1EWCC-PWP02-9800 |  | Completion of Arboricultural Survey of effected mature hedgerow and trees | milestone | 0d | 2019-06-28 | 2019-06-28 |  |  |  |  | 0d | 926d | finish on 2019-06-28 |  |  | UW1 |
| P1EWCC-PWP02-4720 |  | Completion of Habitat Creation (105-M4E) | milestone | 0d | 2019-12-31 | 2019-12-31 | P1EWCC-PWP02-4660 |  |  |  | 0d | 794d | finish on 2019-12-31 |  |  | AWE1 |
|  | 4 | **106-L1 - Lower Thorpe North Cutting** |  |  | 2017-03-20 | 2019-08-12 |  |  |  |  |  |  |  |  |  |  |
|  | 8 | **Land Access** |  |  | 2017-05-22 | 2019-03-01 |  |  |  |  |  |  |  |  |  |  |
|  | 1 | **Survey Work** |  |  | 2017-05-22 | 2017-05-22 |  |  |  |  |  |  |  |  |  |  |
| P1EWCC-AWP01-7270 |  | Land Access Granted for Survey Work (Schedule 2) | milestone | 0d | 2017-05-22 A | 2017-05-22 A |  | 100% | 2017-04-03 | 2017-04-03 |  |  | as late as possible |  | y | AW1 |
|  | 2 | **Possession** |  |  | 2019-03-01 | 2019-03-01 |  |  |  |  |  |  |  |  |  |  |
| P1EWCC-AWP01-7280 |  | Land Access Possession Granted for Construction (Schedule 16) | milestone | 0d | 2019-03-01 | 2019-03-01 |  |  |  |  | 41d | 0d | as late as possible |  | y | AW1 |

| ID | WBS | Activity | Type | Duration | Start | Finish | Predecessors | Complete | Planned start | Planned finish | Total float | Free float | Constraint | Calendar | Fusion - WPS | HS2 Filter |
| --- | --- | --- | --- | --- | --- | --- | --- | --- | --- | --- | --- | --- | --- | --- | --- | --- |
|  | 3 | **Survey Works** |  |  | 2017-03-20 | 2019-06-26 |  |  |  |  |  |  |  |  |  |  |
| P1EWCC-AWP01-7260 |  | Planning Consent & Licensing for Survey Work |  | 10d | 2017-03-20 A | 2017-05-19 A | P1EWCC-AWP01-1230 | 100% | 2017-03-20 | 2017-03-31 |  |  |  |  | AW1 |  |
| P1EWCC-FWP01-3940 |  | Undertake Arboricultural Surveys |  | 125d | 2017-12-15 | 2018-06-08 | P1EWCC-PWP01-5610 |  |  |  | 274.12d |  |  |  | AWS | y |
| P1EWCC-FWP01-3950 |  | Undertake Remaining Ecology & Environmental Surveys |  | 398d | 2017-12-15 | 2019-06-26 | P1EWCC-PWP01-5610 |  |  |  | 97d |  |  |  | AWS | y |
|  | 1 | **Ecological & Environmental Surveys** |  |  | 2017-05-22 | 2017-05-26 |  |  |  |  |  |  |  |  |  |  |
| P1EWCC-PWP01-4370 |  | Survey for Badgers, Bats, GCN & Reptiles |  | 25d | 2017-05-22 A | 2017-05-26 A | P1EWCC-AWP01-7260, P1EWCC-AWP01-7270 | 100% | 2017-04-03 | 2017-05-05 |  |  |  |  | UW1 |  |
|  | 5 | **Arboricultural survey** |  |  |  |  |  |  |  |  |  |  |  |  |  |  |
|  | 2 | **Engineering Surveys** |  |  |  |  |  |  |  |  |  |  |  |  |  |  |
|  | 3 | **Historic Environment** |  |  | 2018-02-09 | 2019-06-24 |  |  |  |  |  |  |  |  |  |  |
| P1EWCC-PWP06-6830 |  | Non-Intrusive Surveys (geophysics) |  | 20d | 2018-02-09 | 2018-03-09 | P1EWCC-AWP01-7270, P1EWCC-PWP06-6810, P1EWCC-PWP05-240 |  |  |  | 285d | 0d |  |  | AWH |  |
| P1EWCC-PWP06-10610 |  | Non-Intrusive Surveys (trial trenching) |  | 30d | 2018-05-04 | 2018-06-15 | P1EWCC-PWP06-6820, P1EWCC-PWP05-240 |  |  |  | 285d | 0d |  |  | AWH |  |
| P1EWCC-PWP06-6850 |  | Intrusive Surveys |  | 40d | 2019-04-29 | 2019-06-24 | P1EWCC-PWP06-6820, P1EWCC-PWP02-9810, P1EWCC-PWP06-10620, P1EWCC-AWP01-7280 |  |  |  | 99d | 0d |  |  | AWH |  |
|  | 7 | **Historic Environment** |  |  | 2017-12-15 | 2019-08-12 |  |  |  |  |  |  |  |  |  |  |
| P1EWCC-PWP06-6810 |  | Production and Approval of Proejct Plans & LS-WSI (non-intrusive surveys) |  | 40d | 2017-12-15 | 2018-02-09 | P1EWCC-PWP05-240 |  |  |  | 285d | 0d |  |  | AWH |  |
| P1EWCC-PWP06-6820 |  | Update of Project Plans and LS-WSI and Approval (intrusive surveys) |  | 40d | 2018-03-09 | 2018-05-04 | P1EWCC-PWP06-6830 |  |  |  | 285d | 0d |  |  | AWH |  |
| P1EWCC-PWP06-10620 |  | Update of Project Plans and LS-WSI and Approval (intrusive surveys) |  | 40d | 2018-06-15 | 2018-08-10 | P1EWCC-PWP06-10610 |  |  |  | 285d | 186d |  |  | AWH |  |
| P1EWCC-PWP06-6840 |  | Report of Findings And Approval (Archaeological Investigation) |  | 35d | 2019-06-24 | 2019-08-12 | P1EWCC-PWP06-6850 |  |  |  | 894.12d |  |  |  | AWH |  |
|  | 4 | **Ecological Mitigation Works** |  |  | 2019-03-01 | 2019-04-29 |  |  |  |  |  |  |  |  |  |  |
|  | 5 | **Translocation of Species** |  |  | 2019-03-01 | 2019-04-29 |  |  |  |  |  |  |  |  |  |  |
| P1EWCC-PWP02-9810 |  | Species Translocation to Habitat Creation (105-M1E) |  | 60d | 2019-03-01 | 2019-04-29 | P1EWCC-PWP01-4370, P1EWCC-AWP01-7280, P1EWCC-PWP02-12670, P1EWCC-PWP02-14610 |  |  |  | 59d | 0d | start on or after 2019-03-01 | HS2 - 8h x 7d Workweek (No Holidays) | AWE1 |  |
|  | 2 | **Water Resources** |  |  |  |  |  |  |  |  |  |  |  |  |  |  |
|  | 6 | **SOW Completion Dates** |  |  | 2017-09-18 | 2019-06-28 |  |  |  |  |  |  |  |  |  |  |
| P1EWCC-PWP01-2100 |  | Completion of Survey for Badgers (106+000 & 106+250) | milestone | 0d | 2017-09-18 | 2017-09-18 | P1EWCC-PWP01-4370 |  |  |  | -56d | 1390d | finish on 2017-06-30 |  | UW1 |  |
| P1EWCC-PWP01-2180 |  | Completion of Survey for Bats (106+000 & 106+250) | milestone | 0d | 2017-09-18 | 2017-09-18 | P1EWCC-PWP01-4370 |  |  |  | -56d | 1390d | finish on 2017-06-30 |  | UW1 |  |
| P1EWCC-PWP01-2420 |  | Completion of Survey for GCN (106+000) | milestone | 0d | 2017-09-18 | 2017-09-18 | P1EWCC-PWP01-4370 |  |  |  | -56d | 1390d | finish on 2017-06-30 |  | UW1 |  |
| P1EWCC-PWP02-9820 |  | Completion of Species Translocation/ exclusion - Reptiles | milestone | 0d | 2019-06-28 | 2019-06-28 | P1EWCC-PWP02-9810 |  |  |  | 0d | 926d | finish on 2019-06-28 |  | AWE1 |  |
| P1EWCC-PWP02-9830 |  | Completion of Species Translocation/ exclusion - Badgers | milestone | 0d | 2019-06-28 | 2019-06-28 | P1EWCC-PWP02-9810 |  |  |  | 0d | 926d | finish on 2019-06-28 |  | AWE1 |  |
| P1EWCC-PWP02-9840 |  | Completion of Species Translocation/ exclusion - GCN | milestone | 0d | 2019-06-28 | 2019-06-28 | P1EWCC-PWP02-9810 |  |  |  | 0d | 926d | finish on 2019-06-28 |  | AWE1 |  |
| P1EWCC-PWP02-9850 |  | Completion of Species Translocation/ exclusion - Bats | milestone | 0d | 2019-06-28 | 2019-06-28 | P1EWCC-PWP02-9810 |  |  |  | 0d | 926d | finish on 2019-06-28 |  | AWE1 |  |
| P1EWCC-PWP02-9860 |  | Completion of Arboricultural Survey of effected mature hedgerow and trees | milestone | 0d | 2019-06-28 | 2019-06-28 | P1EWCC-FWP01-3940 |  |  |  | 0d | 926d | finish on 2019-06-28 |  | AWS |  |

| ID | WBS | Activity | Type | Duration | Start | Finish | Predecessors | Complete | Remaining | Planned start | Planned finish | Total float | Free float | Constraint | Expected finish | Calendar | HS2 Filter | Fusion - WPS |
| --- | --- | --- | --- | --- | --- | --- | --- | --- | --- | --- | --- | --- | --- | --- | --- | --- | --- | --- |
|  | 5 | **106-L2 - Culworth Embankment** |  |  | 2017-03-20 | 2019-10-11 |  |  |  |  |  |  |  |  |  |  |  |  |
|  | 8 | **Land Access** |  |  | 2017-05-22 | 2018-07-26 |  |  |  |  |  |  |  |  |  |  |  |  |
|  | 1 | **Survey Work** |  |  | 2017-05-22 | 2017-05-22 |  |  |  |  |  |  |  |  |  |  |  |  |
| P1EWCC-AWP01-7300 |  | Land Access Granted for Survey Work (Schedule 2) | milestone | 0d | 2017-05-22 A | 2017-05-22 A |  | 100% |  | 2017-04-03 | 2017-04-03 |  |  | as late as possible |  |  | y | AW1 |
|  | 2 | **Possession** |  |  | 2018-07-26 | 2018-07-26 |  |  |  |  |  |  |  |  |  |  |  |  |
| P1EWCC-AWP01-7310 |  | Land Access Possession Granted for Construction (Schedule 16) | milestone | 0d | 2018-07-26 | 2018-07-26 |  |  |  |  |  | 53d | 0d | as late as possible |  |  | y | AW1 |
|  | 3 | **Survey Works** |  |  | 2017-03-20 | 2019-08-23 |  |  |  |  |  |  |  |  |  |  |  |  |
| P1EWCC-AWP01-7290 |  | Planning Consent & Licensing for Survey Work |  | 10d | 2017-03-20 A | 2017-05-19 A | P1EWCC-AWP01-1230 | 100% |  | 2017-03-20 | 2017-03-31 |  |  |  |  |  |  | AW1 |
| P1EWCC-FWP01-3980 |  | Undertake Remaining Ecology & Environmental Surveys |  | 398d | 2017-12-15 | 2019-06-26 | P1EWCC-PWP01-5610 |  |  |  |  | 97d |  |  |  |  | y | AWS |
|  | 1 | **Ecological & Environmental Surveys** |  |  |  |  |  |  |  |  |  |  |  |  |  |  |  |  |
|  | 2 | **Engineering Surveys** |  |  |  |  |  |  |  |  |  |  |  |  |  |  |  |  |
|  | 3 | **Historic Environment** |  |  | 2017-12-15 | 2019-08-23 |  |  |  |  |  |  |  |  |  |  |  |  |
| P1EWCC-PWP06-6890 |  | Non-Intrusive Surveys (geophysics) |  | 20d | 2017-12-15 | 2018-01-12 | P1EWCC-PWP06-6870, P1EWCC-AWP01-7300, P1EWCC-PWP05-240 |  |  |  |  | 65d | 0d |  |  |  |  | AWH |
| P1EWCC-PWP06-10630 |  | Non-Intrusive Surveys (trial trenching) |  | 40d | 2018-04-13 | 2018-06-08 | P1EWCC-PWP06-6880, P1EWCC-PWP05-240 |  |  |  |  | 65d | 0d |  |  |  |  | AWH |
| P1EWCC-PWP06-6910 |  | Intrusive Surveys (Edgcote Battlefield) |  | 240d | 2018-09-24 | 2019-08-23 | P1EWCC-PWP02-9870, P1EWCC-PWP06-6880, P1EWCC-PWP06-10640, P1EWCC-AWP01-7310 |  |  |  |  | 54.88d | 0d |  |  |  |  | AWH |
|  | 7 | **Historic Environment** |  |  | 2017-08-04 | 2019-10-11 |  |  |  |  |  |  |  |  |  |  |  |  |
| P1EWCC-PWP06-6870 |  | Production and Approval of Proejct Plans & LS-WSI (non-intrusive surveys) |  | 95d | 2017-08-04 A | 2017-10-13 | P1EWCC-PWP05-150 SS | 79% | 20d | 2017-09-18 | 2018-01-26 | 109.88d | 0d |  | 2017-10-13 |  |  | AWH |
| P1EWCC-PWP06-6880 |  | Update of Project Plans and LS-WSI and Approval (intrusive surveys) |  | 65d | 2018-01-12 | 2018-04-13 | P1EWCC-PWP06-6890 |  |  |  |  | 65d | 0d |  |  |  |  | AWH |
| P1EWCC-PWP06-10640 |  | Update of Project Plans and LS-WSI and Approval (intrusive surveys) |  | 65d | 2018-06-08 | 2018-09-07 | P1EWCC-PWP06-10630 |  |  |  |  | 65d | 10.12d |  |  |  |  | AWH |
| P1EWCC-PWP06-6900 |  | Report of Findings And Approval (Archaeological Investigation) |  | 35d | 2019-08-26 | 2019-10-11 | P1EWCC-PWP06-6910 |  |  |  |  | 850d |  |  |  |  |  | AWH |
|  | 4 | **Ecological Mitigation Works** |  |  | 2018-07-26 | 2018-09-23 |  |  |  |  |  |  |  |  |  |  |  |  |
|  | 5 | **Translocation of Species** |  |  | 2018-07-26 | 2018-09-23 |  |  |  |  |  |  |  |  |  |  |  |  |
| P1EWCC-PWP02-9870 |  | Species Translocation to Habitat Creation (105-M1E) |  | 60d | 2018-07-26 | 2018-09-23 | P1EWCC-AWP01-7310, P1EWCC-PWP02-12670, P1EWCC-PWP02-14610 |  |  |  |  | 75d | 0d |  |  | HS2 - 8h x 7d Workweek (No Holidays) |  | AWE1 |
|  | 2 | **Water Resources** |  |  |  |  |  |  |  |  |  |  |  |  |  |  |  |  |
|  | 6 | **SOW Completion Dates** |  |  | 2017-09-18 | 2019-06-28 |  |  |  |  |  |  |  |  |  |  |  |  |
| P1EWCC-PWP01-2150 |  | Completion of Survey for Bats (106+250) | milestone | 0d | 2017-09-18 | 2017-09-18 |  |  |  |  |  | -56d | 1390d | finish on 2017-06-30 |  |  |  | UW1 |
| P1EWCC-PWP01-2210 |  | Completion of Survey for GCN (106+000 & 106+250) | milestone | 0d | 2017-09-18 | 2017-09-18 |  |  |  |  |  | -56d | 1390d | finish on 2017-06-30 |  |  |  | UW1 |
| P1EWCC-PWP01-2220 |  | Completion of Survey for Otter (106+250) | milestone | 0d | 2017-09-18 | 2017-09-18 |  |  |  |  |  | -56d | 1390d | finish on 2017-06-30 |  |  |  | UW1 |
| P1EWCC-PWP01-2250 |  | Completion of Survey for Reptiles (106+250) | milestone | 0d | 2017-09-18 | 2017-09-18 |  |  |  |  |  | -56d | 1390d | finish on 2017-06-30 |  |  |  | UW1 |
| P1EWCC-PWP01-2270 |  | Completion of Survey for Barn Owl (106+250) | milestone | 0d | 2017-09-18 | 2017-09-18 |  |  |  |  |  | -56d | 1390d | finish on 2017-06-30 |  |  |  | UW1 |
| P1EWCC-PWP02-9880 |  | Completion of Species Translocation/ exclusion - Reptiles | milestone | 0d | 2019-06-28 | 2019-06-28 | P1EWCC-PWP02-9870 |  |  |  |  | 0d | 926d | finish on 2019-06-28 |  |  |  | AWE1 |
| P1EWCC-PWP02-9890 |  | Completion of Species Translocation/ exclusion - Badgers | milestone | 0d | 2019-06-28 | 2019-06-28 | P1EWCC-PWP02-9870 |  |  |  |  | 0d | 926d | finish on 2019-06-28 |  |  |  | AWE1 |
| P1EWCC-PWP02-9910 |  | Completion of Species Translocation/ exclusion - Bats | milestone | 0d | 2019-06-28 | 2019-06-28 | P1EWCC-PWP02-9870 |  |  |  |  | 0d | 926d | finish on 2019-06-28 |  |  |  | AWE1 |

| ID | WBS | Activity | Type | Duration | Start | Finish | Predecessors | Complete | Remaining | Planned start | Planned finish | Total float | Free float | Constraint | Expected finish | Calendar | HS2 Filter | Fusion - WPS |
| --- | --- | --- | --- | --- | --- | --- | --- | --- | --- | --- | --- | --- | --- | --- | --- | --- | --- | --- |
|  | 6 | **107-L1 - Culworth Cutting** |  |  | 2017-03-20 | 2019-10-11 |  |  |  |  |  |  |  |  |  |  |  |  |
|  | 8 | **Land Access** |  |  | 2017-05-22 | 2018-07-26 |  |  |  |  |  |  |  |  |  |  |  |  |
|  | 1 | **Survey Work** |  |  | 2017-05-22 | 2017-05-22 |  |  |  |  |  |  |  |  |  |  |  |  |
| P1EWCC-AWP01-7330 |  | Land Access Granted for Survey Work (Schedule 2) | milestone | 0d | 2017-05-22 A | 2017-05-22 A |  | 100% |  | 2017-04-03 | 2017-04-03 |  |  | as late as possible |  |  | y | AW1 |
|  | 2 | **Possession** |  |  | 2018-07-26 | 2018-07-26 |  |  |  |  |  |  |  |  |  |  |  |  |
| P1EWCC-AWP01-7340 |  | Land Access Possession Granted for Construction (Schedule 16) | milestone | 0d | 2018-07-26 | 2018-07-26 |  |  |  |  |  | 53d | 0d | as late as possible |  |  | y | AW1 |
|  | 3 | **Survey Works** |  |  | 2017-03-20 | 2019-08-23 |  |  |  |  |  |  |  |  |  |  |  |  |
| P1EWCC-AWP01-7320 |  | Planning Consent & Licensing for Survey Work |  | 10d | 2017-03-20 A | 2017-05-19 A | P1EWCC-AWP01-1230 | 100% |  | 2017-03-20 | 2017-03-31 |  |  |  |  |  |  | AW1 |
|  | 1 | **Ecological & Environmental Surveys** |  |  |  |  |  |  |  |  |  |  |  |  |  |  |  |  |
|  | 2 | **Engineering Surveys** |  |  |  |  |  |  |  |  |  |  |  |  |  |  |  |  |
|  | 3 | **Historic Environment** |  |  | 2017-12-15 | 2019-08-23 |  |  |  |  |  |  |  |  |  |  |  |  |
| P1EWCC-PWP06-6950 |  | Non-Intrusive Surveys (geophysics) |  | 20d | 2017-12-15 | 2018-01-12 | P1EWCC-AWP01-7330, P1EWCC-PWP06-6930, P1EWCC-PWP05-240 |  |  |  |  | 65d | 0d |  |  |  |  | AWH |
| P1EWCC-PWP06-10650 |  | Non-Intrusive Surveys (trial trenching) |  | 40d | 2018-04-13 | 2018-06-08 | P1EWCC-PWP06-6940, P1EWCC-PWP05-240 |  |  |  |  | 65d | 0d |  |  |  |  | AWH |
| P1EWCC-PWP06-6970 |  | Intrusive Surveys (Edgcote Battlefield) |  | 240d | 2018-09-24 | 2019-08-23 | P1EWCC-PWP02-9920, P1EWCC-PWP06-6940, P1EWCC-PWP06-10660, P1EWCC-AWP01-7340 |  |  |  |  | 54.88d | 0d |  |  |  |  | AWH |
|  | 7 | **Historic Environment** |  |  | 2017-08-04 | 2019-10-11 |  |  |  |  |  |  |  |  |  |  |  |  |
| P1EWCC-PWP06-6930 |  | Production and Approval of Project Plans & LS-WSI (non-intrusive surveys) |  | 95d | 2017-08-04 A | 2017-10-13 | P1EWCC-PWP05-150 SS | 79% | 20d | 2017-09-18 | 2018-01-26 | 109.88d | 0d |  | 2017-10-13 |  |  | AWH |
| P1EWCC-PWP06-6940 |  | Update of Project Plans and LS-WSI and Approval (intrusive surveys) |  | 65d | 2018-01-12 | 2018-04-13 | P1EWCC-PWP06-6950 |  |  |  |  | 65d | 0d |  |  |  |  | AWH |
| P1EWCC-PWP06-10660 |  | Update of Project Plans and LS-WSI and Approval (intrusive surveys) |  | 65d | 2018-06-08 | 2018-09-07 | P1EWCC-PWP06-10650 |  |  |  |  | 65d | 10.12d |  |  |  |  | AWH |
| P1EWCC-PWP06-6960 |  | Report of Findings And Approval (Archaeological Investigation) |  | 35d | 2019-08-26 | 2019-10-11 | P1EWCC-PWP06-6970 |  |  |  |  | 850d |  |  |  |  |  | AWH |
|  | 4 | **Ecological Mitigation Works** |  |  | 2018-07-26 | 2018-09-23 |  |  |  |  |  |  |  |  |  |  |  |  |
|  | 5 | **Translocation of Species** |  |  | 2018-07-26 | 2018-09-23 |  |  |  |  |  |  |  |  |  |  |  |  |
| P1EWCC-PWP02-9920 |  | Species Translocation to Habitat Creation (105-M1E) |  | 60d | 2018-07-26 | 2018-09-23 | P1EWCC-AWP01-7340, P1EWCC-PWP02-12670, P1EWCC-PWP02-14610 |  |  |  |  | 75d | 0d |  |  | HS2 - 8h x 7d Workweek (No Holidays) |  | AWE1 |
|  | 2 | **Water Resources** |  |  |  |  |  |  |  |  |  |  |  |  |  |  |  |  |
|  | 6 | **SOW Completion Dates** |  |  | 2019-06-28 | 2019-06-28 |  |  |  |  |  |  |  |  |  |  |  |  |
| P1EWCC-PWP02-9940 |  | Completion of Species Translocation/ exclusion - Badgers | milestone | 0d | 2019-06-28 | 2019-06-28 | P1EWCC-PWP02-9920 |  |  |  |  | 0d | 926d | finish on 2019-06-28 |  |  |  | AWE1 |
| P1EWCC-PWP02-9950 |  | Completion of Species Translocation/ exclusion - Bats | milestone | 0d | 2019-06-28 | 2019-06-28 | P1EWCC-PWP02-9920 |  |  |  |  | 0d | 926d | finish on 2019-06-28 |  |  |  | AWE1 |

| ID | WBS | Activity | Type | Duration | Start | Finish | Predecessors | Complete | Remaining | Planned start | Planned finish | Total float | Free float | Constraint | Expected finish | Calendar | HS2 Filter | Fusion - WPS | Key Milestones |
| --- | --- | --- | --- | --- | --- | --- | --- | --- | --- | --- | --- | --- | --- | --- | --- | --- | --- | --- | --- |
|  | 7 | **107-L2 - Edgcote South Embankment** |  |  | 2017-03-20 | 2019-10-11 |  |  |  |  |  |  |  |  |  |  |  |  |  |
|  | 8 | **Land Access** |  |  | 2017-05-15 | 2018-07-26 |  |  |  |  |  |  |  |  |  |  |  |  |  |
|  | 1 | **Survey Work** |  |  | 2017-05-15 | 2017-05-15 |  |  |  |  |  |  |  |  |  |  |  |  |  |
| P1EWCC-AWP01-7360 |  | Land Access Granted for Survey Work (Schedule 2) | milestone | 0d | 2017-05-15 A | 2017-05-15 A |  | 100% |  | 2017-04-03 | 2017-04-03 |  |  | as late as possible |  |  | y | AW1 |  |
|  | 2 | **Possession** |  |  | 2018-07-26 | 2018-07-26 |  |  |  |  |  |  |  |  |  |  |  |  |  |
| P1EWCC-AWP01-7370 |  | Land Access Possession Granted for Construction (Schedule 16) | milestone | 0d | 2018-07-26 | 2018-07-26 |  |  |  |  |  | 53d | 0d | as late as possible |  |  | y | AW1 |  |
|  | 3 | **Survey Works** |  |  | 2017-03-20 | 2019-08-23 |  |  |  |  |  |  |  |  |  |  |  |  |  |
| P1EWCC-AWP01-7350 |  | Planning Consent & Licensing for Survey Work |  | 10d | 2017-03-20 A | 2017-05-12 A | P1EWCC-AWP01-1230 | 100% |  | 2017-03-20 | 2017-03-31 |  |  |  |  |  |  | AW1 |  |
|  | 1 | **Ecological & Environmental Surveys** |  |  |  |  |  |  |  |  |  |  |  |  |  |  |  |  |  |
|  | 2 | **Engineering Surveys** |  |  |  |  |  |  |  |  |  |  |  |  |  |  |  |  |  |
|  | 3 | **Historic Environment** |  |  | 2017-12-15 | 2019-08-23 |  |  |  |  |  |  |  |  |  |  |  |  |  |
| P1EWCC-PWP06-7010 |  | Non-Intrusive Surveys (Edgcote Battlefield) |  | 10d | 2017-12-15 | 2017-12-29 | P1EWCC-AWP01-7360, P1EWCC-PWP06-6990, P1EWCC-PWP05-240 |  |  |  |  | 85d | 0d |  |  |  |  | AWH | Key MS |
| P1EWCC-PWP06-8400 |  | Trial Trenching (Edgcote Battlefield) |  | 30d | 2018-03-30 | 2018-05-11 | P1EWCC-PWP06-7000 |  |  |  |  | 85d | 0d |  |  |  |  | AWH | Key MS |
| P1EWCC-PWP06-7030 |  | Intrusive Surveys (Edgcote Battlefield) |  | 240d | 2018-09-24 | 2019-08-23 | P1EWCC-PWP06-8410, P1EWCC-PWP02-9960, P1EWCC-PWP06-7000, P1EWCC-AWP01-7370 |  |  |  |  | 54.88d | 0d |  |  |  |  | AWH | Key MS |
|  | 7 | **Historic Environment** |  |  | 2017-08-04 | 2019-10-11 |  |  |  |  |  |  |  |  |  |  |  |  |  |
| P1EWCC-PWP06-6990 |  | Production and Approval of LS-WSI (non-intrusive surveys) |  | 95d | 2017-08-04 A | 2017-10-13 | P1EWCC-PWP05-150 SS | 79% | 20d | 2017-09-19 | 2018-01-29 | 129.88d | 0d |  | 2017-10-13 |  |  | AWH |  |
| P1EWCC-PWP06-6980 |  | HS2 issue Project Plan |  | 1d | 2017-10-13 | 2017-10-13 | P1EWCC-PWP06-6990 FF |  |  |  |  | 139.88d | 54.88d | start on or after 2017-04-03 |  |  |  | AWH |  |
| P1EWCC-PWP06-7000 |  | Update of Project Plans and LS-WSI and Approval (intrusive surveys & Trial Trenching) |  | 65d | 2017-12-29 | 2018-03-30 | P1EWCC-PWP06-7010, P1EWCC-PWP06-6980 |  |  |  |  | 85d | 0d |  |  |  |  | AWH |  |
| P1EWCC-PWP06-8410 |  | Update of Project Plans and LS-WSI and Approval (intrusive surveys) |  | 65d | 2018-05-11 | 2018-08-10 | P1EWCC-PWP06-8400 |  |  |  |  | 85d | 30.12d |  |  |  |  | AWH |  |
| P1EWCC-PWP06-7020 |  | Report of Findings And Approval (Archaeological Investigation) |  | 35d | 2019-08-26 | 2019-10-11 | P1EWCC-PWP06-7030 |  |  |  |  | 850d |  |  |  |  |  | AWH |  |
|  | 4 | **Ecological Mitigation Works** |  |  | 2018-07-26 | 2018-09-23 |  |  |  |  |  |  |  |  |  |  |  |  |  |
|  | 5 | **Translocation of Species** |  |  | 2018-07-26 | 2018-09-23 |  |  |  |  |  |  |  |  |  |  |  |  |  |
| P1EWCC-PWP02-9960 |  | Species Translocation to Habitat Creation (105-M1E) |  | 60d | 2018-07-26 | 2018-09-23 | P1EWCC-AWP01-7370, P1EWCC-PWP02-12670, P1EWCC-PWP02-14610 |  |  |  |  | 75d | 0d |  |  | HS2 - 8h x 7d Workweek (No Holidays) |  | AWE1 |  |
|  | 6 | **SOW Completion Dates** |  |  | 2019-06-28 | 2019-06-28 |  |  |  |  |  |  |  |  |  |  |  |  |  |
| P1EWCC-PWP02-10000 |  | Completion of Species Translocation/ exclusion - Reptiles | milestone | 0d | 2019-06-28 | 2019-06-28 | P1EWCC-PWP02-9960 |  |  |  |  | 0d | 926d | finish on 2019-06-28 |  |  |  | AWE1 |  |
| P1EWCC-PWP02-10010 |  | Completion of Species Translocation/ exclusion - Otters | milestone | 0d | 2019-06-28 | 2019-06-28 | P1EWCC-PWP02-9960 |  |  |  |  | 0d | 926d | finish on 2019-06-28 |  |  |  | AWE1 |  |
| P1EWCC-PWP02-9970 |  | Completion of Species Translocation/ exclusion - Badgers | milestone | 0d | 2019-06-28 | 2019-06-28 | P1EWCC-PWP02-9960 |  |  |  |  | 0d | 926d | finish on 2019-06-28 |  |  |  | AWE1 |  |
| P1EWCC-PWP02-9980 |  | Completion of Species Translocation/ exclusion - Bats | milestone | 0d | 2019-06-28 | 2019-06-28 | P1EWCC-PWP02-9960 |  |  |  |  | 0d | 926d | finish on 2019-06-28 |  |  |  | AWE1 |  |
| P1EWCC-PWP02-9990 |  | Completion of Species Translocation/ exclusion - GCN | milestone | 0d | 2019-06-28 | 2019-06-28 | P1EWCC-PWP02-9960 |  |  |  |  | 0d | 926d | finish on 2019-06-28 |  |  |  | AWE1 |  |

| ID | WBS | Activity | Type | Duration | Start | Finish | Predecessors | Complete | Remaining | Planned start | Planned finish | Total float | Free float | Constraint | Expected finish | Calendar | HS2 Filter | Fusion - WPS | Key Milestones |
| --- | --- | --- | --- | --- | --- | --- | --- | --- | --- | --- | --- | --- | --- | --- | --- | --- | --- | --- | --- |
|  | 8 | **108-L1 - Edgcote Viaduct** |  |  | 2017-03-20 | 2020-03-31 |  |  |  |  |  |  |  |  |  |  |  |  |  |
|  | 8 | **Land Access** |  |  | 2017-12-15 | 2018-07-26 |  |  |  |  |  |  |  |  |  |  |  |  |  |
|  | 1 | **Survey Work** |  |  | 2017-12-15 | 2017-12-15 |  |  |  |  |  |  |  |  |  |  |  |  |  |
| P1EWCC-AWP01-7390 |  | Land Access Granted for Survey Work (Schedule 2) | milestone | 0d | 2017-12-15 | 2017-12-15 |  |  |  |  |  | 65d | 0d | as late as possible |  |  | y | AW1 |  |
|  | 2 | **Possession** |  |  | 2018-07-26 | 2018-07-26 |  |  |  |  |  |  |  |  |  |  |  |  |  |
| P1EWCC-AWP01-7400 |  | Land Access Possession Granted for Construction (Schedule 16) | milestone | 0d | 2018-07-26 | 2018-07-26 |  |  |  |  |  | 53d | 0d | as late as possible |  |  | y | AW1 |  |
|  | 3 | **Survey Works** |  |  | 2017-03-20 | 2019-08-23 |  |  |  |  |  |  |  |  |  |  |  |  |  |
| P1EWCC-AWP01-7380 |  | Planning Consent & Licensing for Survey Work |  | 10d | 2017-03-20 A | 2017-05-12 A | P1EWCC-AWP01-1230 | 100% |  | 2017-03-20 | 2017-03-31 |  |  |  |  |  |  | AW1 |  |
| P1EWCC-FWP01-4070 |  | Undertake Remaining Ecology & Environmental Surveys |  | 398d | 2017-12-15 | 2019-06-26 | P1EWCC-PWP01-5610 |  |  |  |  | 97d |  |  |  |  | y | AWS |  |
|  | 1 | **Ecological & Environmental Surveys** |  |  |  |  |  |  |  |  |  |  |  |  |  |  |  |  |  |
|  | 2 | **Engineering Surveys** |  |  |  |  |  |  |  |  |  |  |  |  |  |  |  |  |  |
|  | 3 | **Historic Environment** |  |  | 2017-12-15 | 2019-08-23 |  |  |  |  |  |  |  |  |  |  |  |  |  |
| P1EWCC-PWP06-7070 |  | Non-Intrusive Surveys (geophysics) |  | 20d | 2017-12-15 | 2018-01-12 | P1EWCC-AWP01-7390, P1EWCC-PWP06-7050, P1EWCC-PWP05-240 |  |  |  |  | 65d | 0d |  |  |  |  | AWH |  |
| P1EWCC-PWP06-10670 |  | Non-Intrusive Surveys (trial trenching) |  | 40d | 2018-04-13 | 2018-06-08 | P1EWCC-PWP06-7060, P1EWCC-PWP05-240 |  |  |  |  | 65d | 0d |  |  |  |  | AWH |  |
| P1EWCC-PWP06-7090 |  | Intrusive Surveys (Edgcote Battlefield) |  | 240d | 2018-09-24 | 2019-08-23 | P1EWCC-PWP06-7060, P1EWCC-PWP02-10020, P1EWCC-PWP06-10680, P1EWCC-AWP01-7400 |  |  |  |  | 54.88d | 0d |  |  |  |  | AWH |  |
|  | 7 | **Historic Environment** |  |  | 2017-08-04 | 2019-10-11 |  |  |  |  |  |  |  |  |  |  |  |  |  |
| P1EWCC-PWP06-7050 |  | Production and Approval of Proejct Plans & LS-WSI (non-intrusive surveys) |  | 95d | 2017-08-04 A | 2017-10-13 | P1EWCC-PWP05-150 SS | 79% | 20d | 2017-09-18 | 2018-01-26 | 109.88d | 0d |  | 2017-10-13 |  |  | AWH |  |
| P1EWCC-PWP06-7060 |  | Update of Project Plans and LS-WSI and Approval (intrusive surveys) |  | 65d | 2018-01-12 | 2018-04-13 | P1EWCC-PWP06-7070 |  |  |  |  | 65d | 0d |  |  |  |  | AWH |  |
| P1EWCC-PWP06-10680 |  | Update of Project Plans and LS-WSI and Approval (intrusive surveys) |  | 65d | 2018-06-08 | 2018-09-07 | P1EWCC-PWP06-10670 |  |  |  |  | 65d | 10.12d |  |  |  |  | AWH |  |
| P1EWCC-PWP06-7080 |  | Report of Findings And Approval (Archaeological Investigation) |  | 35d | 2019-08-26 | 2019-10-11 | P1EWCC-PWP06-7090 |  |  |  |  | 850d |  |  |  |  |  | AWH |  |
|  | 4 | **Ecological Mitigation Works** |  |  | 2018-03-01 | 2019-01-24 |  |  |  |  |  |  |  |  |  |  |  |  |  |
|  | 5 | **Translocation of Species** |  |  | 2018-07-26 | 2018-09-23 |  |  |  |  |  |  |  |  |  |  |  |  |  |
| P1EWCC-PWP02-10020 |  | Species Translocation to Habitat Creation (105-M1E) |  | 60d | 2018-07-26 | 2018-09-23 | P1EWCC-AWP01-7400, P1EWCC-PWP02-12670, P1EWCC-PWP02-14610 |  |  |  |  | 75d | 0d |  |  | HS2 - 8h x 7d Workweek (No Holidays) |  | AWE1 | Key MS |
|  | 15 | **Landscape Planting - Edgcote (108-M3E)** |  |  | 2018-03-01 | 2019-01-24 |  |  |  |  |  |  |  |  |  |  |  |  |  |
|  | 1 | **Design** |  |  | 2018-03-01 | 2018-07-05 |  |  |  |  |  |  |  |  |  |  |  |  |  |
| P1EWCC-PWP02-14120 |  | Review and Vaildate HS2 design for planning |  | 80d | 2018-03-01 | 2018-06-21 | P1EWCC-PWP02-14440, P1EWCC-PWP02-11910 SS+5d |  |  |  |  | -99.75d | 0d |  |  |  | y | AWE2 |  |
| P1EWCC-PWP02-14110 |  | Schedule 17 Planning Consent Approval Period |  | 56d | 2018-04-27 | 2018-06-21 | P1EWCC-PWP02-14120 FF |  |  |  |  | 449d | 161d |  |  | HS2 - 8h x 7d Workweek (No Holidays) | y | AWE2 |  |
| P1EWCC-PWP02-14100 |  | HS2 approval period of vaildated design |  | 14d | 2018-06-22 | 2018-07-05 | P1EWCC-PWP02-14120 |  |  |  |  | 346d | 0d |  |  | HS2 - 8h x 7d Workweek (No Holidays) | y | AWE2 |  |

| ID | WBS | Activity | Type | Duration | Start | Finish | Predecessors | Complete | Planned start | Planned finish | Total float | Free float | Constraint | HS2 Filter | Fusion - WPS |
| --- | --- | --- | --- | --- | --- | --- | --- | --- | --- | --- | --- | --- | --- | --- | --- |
|  | 2 | **Installation** |  |  | 2018-07-05 | 2019-01-24 |  |  |  |  |  |  |  |  |  |
| P1EWCC-PWP02-10090 |  | Call off of Landscape Planting | milestone | 0d | 2018-07-05 | 2018-07-05 | P1EWCC-PWP02-14100 |  |  |  | 246.12d | 0d |  | y | AWE2 |
| P1EWCC-PWP02-10100 |  | Call off period for Landscape Planting |  | 64.88d | 2018-07-05 | 2018-10-04 | P1EWCC-PWP02-10090 |  |  |  | 246.12d | 40.12d |  | y | AWE2 |
| P1EWCC-PWP02-10080 |  | Landscape Planting in grounds of Edgcote to screen views of house and around trafford bridge (108-M3E) |  | 40d | 2018-11-29 | 2019-01-24 | P1EWCC-PWP02-10100, P1EWCC-PWP02-14110, P1EWCC-PWP02-11910, P1EWCC-AWP01-7400, P1EWCC-PWP02-10020, P1EWCC-PWP02-15070 |  |  |  | 206d |  | start on or after 2018-11-01 | y | AWE2 |
|  | 2 | **Water Resources** |  |  |  |  |  |  |  |  |  |  |  |  |  |
|  | 6 | **SOW Completion Dates** |  |  | 2019-06-28 | 2020-03-31 |  |  |  |  |  |  |  |  |  |
| P1EWCC-PWP02-10030 |  | Completion of Species Translocation/ exclusion - Badgers | milestone | 0d | 2019-06-28 | 2019-06-28 | P1EWCC-PWP02-10020 |  |  |  | 0d | 926d | finish on 2019-06-28 |  | AWE1 |
| P1EWCC-PWP02-10040 |  | Completion of Species Translocation/ exclusion - Bats | milestone | 0d | 2019-06-28 | 2019-06-28 | P1EWCC-PWP02-10020 |  |  |  | 0d | 926d | finish on 2019-06-28 |  | AWE1 |
| P1EWCC-PWP02-10060 |  | Completion of Species Translocation/ exclusion - Reptiles | milestone | 0d | 2019-06-28 | 2019-06-28 | P1EWCC-PWP02-10020 |  |  |  | 0d | 926d | finish on 2019-06-28 |  | AWE1 |
| P1EWCC-PWP02-10070 |  | Completion of Species Translocation/ exclusion - GCN | milestone | 0d | 2019-06-28 | 2019-06-28 | P1EWCC-PWP02-10020 |  |  |  | 0d | 926d | finish on 2019-06-28 |  | AWE1 |
| P1EWCC-PWP02-10110 |  | Woodland planting in three areas north east of Trafford bridge farm and 6 areas around the track at Trafford Bridge | milestone | 0d | 2020-03-31 | 2020-03-31 | P1EWCC-PWP02-10080 |  |  |  | 0d | 729d | finish on 2020-03-31 | y | AWE2 |
|  | 10 | **108-L3 - Edgcote North Embankment** |  |  | 2017-03-20 | 2019-10-11 |  |  |  |  |  |  |  |  |  |
|  | 8 | **Land Access** |  |  | 2017-06-19 | 2018-07-26 |  |  |  |  |  |  |  |  |  |
|  | 1 | **Survey Work** |  |  | 2017-06-19 | 2017-06-19 |  |  |  |  |  |  |  |  |  |
| P1EWCC-AWP01-7450 |  | Land Access Granted for Survey Work (Schedule 2) | milestone | 0d | 2017-06-19 A | 2017-06-19 A |  | 100% | 2017-04-03 | 2017-04-03 |  |  | as late as possible | y | AW1 |
|  | 2 | **Possession** |  |  | 2018-07-26 | 2018-07-26 |  |  |  |  |  |  |  |  |  |
| P1EWCC-AWP01-7460 |  | Land Access Possession Granted for Construction (Schedule 16) | milestone | 0d | 2018-07-26 | 2018-07-26 |  |  |  |  | 53d | 0d | as late as possible | y | AW1 |
|  | 3 | **Survey Works** |  |  | 2017-03-20 | 2019-08-23 |  |  |  |  |  |  |  |  |  |
| P1EWCC-AWP01-7440 |  | Planning Consent & Licensing for Survey Work |  | 10d | 2017-03-20 A | 2017-06-16 A | P1EWCC-AWP01-1230 | 100% | 2017-03-20 | 2017-03-31 |  |  |  |  | AW1 |
| P1EWCC-FWP01-4090 |  | Undertake Arboricultural Surveys |  | 125d | 2017-12-15 | 2018-06-08 | P1EWCC-PWP01-5610 |  |  |  | 275.12d |  |  | y | AWS |
|  | 1 | **Ecological & Environmental Surveys** |  |  |  |  |  |  |  |  |  |  |  |  |  |
|  | 4 | **Arboricultural survey** |  |  |  |  |  |  |  |  |  |  |  |  |  |
|  | 2 | **Engineering Surveys** |  |  |  |  |  |  |  |  |  |  |  |  |  |
|  | 3 | **Historic Environment** |  |  | 2017-12-15 | 2019-08-23 |  |  |  |  |  |  |  |  |  |
| P1EWCC-PWP06-7190 |  | Non-Intrusive Surveys (geophysics) |  | 20d | 2017-12-15 | 2018-01-12 | P1EWCC-PWP06-7170, P1EWCC-AWP01-7450, P1EWCC-PWP05-240 |  |  |  | 65d | 0d |  |  | AWH |
| P1EWCC-PWP06-10690 |  | Non-Intrusive Surveys (trial trenching) |  | 40d | 2018-04-13 | 2018-06-08 | P1EWCC-PWP06-7180, P1EWCC-PWP05-240 |  |  |  | 65d | 0d |  |  | AWH |
| P1EWCC-PWP06-7210 |  | Intrusive Surveys (Edgcote Villa) |  | 240d | 2018-09-24 | 2019-08-23 | P1EWCC-PWP06-7180, P1EWCC-PWP02-10230, P1EWCC-PWP06-10700, P1EWCC-AWP01-7460 |  |  |  | 54.88d | 0d |  |  | AWH |

| ID | WBS | Activity | Type | Duration | Start | Finish | Predecessors | Complete | Remaining | Planned start | Planned finish | Total float | Free float | Constraint | Expected finish | Calendar | Fusion - WPS | HS2 Filter |
| --- | --- | --- | --- | --- | --- | --- | --- | --- | --- | --- | --- | --- | --- | --- | --- | --- | --- | --- |
|  | 7 | **Historic Environment** |  |  | 2017-08-04 | 2019-10-11 |  |  |  |  |  |  |  |  |  |  |  |  |
| P1EWCC-PWP06-7170 |  | Production and Approval of Proejct Plans & LS-WSI (non-intrusive surveys) |  | 95d | 2017-08-04 A | 2017-10-13 | P1EWCC-PWP05-150 SS | 79% | 20d | 2017-09-18 | 2018-01-26 | 109.88d | 0d |  | 2017-10-13 |  | AWH |  |
| P1EWCC-PWP06-7180 |  | Update of Project Plans and LS-WSI and Approval (intrusive surveys) |  | 65d | 2018-01-12 | 2018-04-13 | P1EWCC-PWP06-7190 |  |  |  |  | 65d | 0d |  |  |  | AWH |  |
| P1EWCC-PWP06-10700 |  | Update of Project Plans and LS-WSI and Approval (intrusive surveys) |  | 65d | 2018-06-08 | 2018-09-07 | P1EWCC-PWP06-10690 |  |  |  |  | 65d | 10.12d |  |  |  | AWH |  |
| P1EWCC-PWP06-7200 |  | Report of Findings And Approval (Archaeological Investigation) |  | 35d | 2019-08-26 | 2019-10-11 | P1EWCC-PWP06-7210 |  |  |  |  | 850d |  |  |  |  | AWH |  |
|  | 4 | **Ecological Mitigation Works** |  |  | 2018-07-26 | 2018-09-23 |  |  |  |  |  |  |  |  |  |  |  |  |
|  | 5 | **Translocation of Species** |  |  | 2018-07-26 | 2018-09-23 |  |  |  |  |  |  |  |  |  |  |  |  |
| P1EWCC-PWP02-10230 |  | Species Translocation to Habitat Creation (105-M1E) |  | 60d | 2018-07-26 | 2018-09-23 | P1EWCC-AWP01-7460, P1EWCC-PWP02-12670, P1EWCC-PWP02-14610 |  |  |  |  | 75d | 0d |  |  | HS2 - 8h x 7d Workweek (No Holidays) | AWE1 |  |
|  | 2 | **Water Resources** |  |  |  |  |  |  |  |  |  |  |  |  |  |  |  |  |
|  | 6 | **SOW Completion Dates** |  |  | 2017-09-18 | 2019-06-28 |  |  |  |  |  |  |  |  |  |  |  |  |
| P1EWCC-PWP01-2110 |  | Completion of Survey for Badgers (108+750) | milestone | 0d | 2017-09-18 | 2017-09-18 |  |  |  |  |  | -56d | 1390d | finish on 2017-06-30 |  |  | UW1 |  |
| P1EWCC-PWP01-2140 |  | Completion of Survey for Bats (109+000) | milestone | 0d | 2017-09-18 | 2017-09-18 |  |  |  |  |  | -56d | 1390d | finish on 2017-06-30 |  |  | UW1 |  |
| P1EWCC-PWP01-2240 |  | Completion of Survey for Reptiles (109+000) | milestone | 0d | 2017-09-18 | 2017-09-18 |  |  |  |  |  | -56d | 1390d | finish on 2017-06-30 |  |  | UW1 |  |
| P1EWCC-PWP01-2290 |  | Completion of Survey for Water Voles (109+000) | milestone | 0d | 2017-09-18 | 2017-09-18 |  |  |  |  |  | -56d | 1390d | finish on 2017-06-30 |  |  | UW1 |  |
| P1EWCC-PWP02-10240 |  | Completion of Species Translocation/ exclusion - Reptiles | milestone | 0d | 2019-06-28 | 2019-06-28 | P1EWCC-PWP02-10230 |  |  |  |  | 0d | 926d | finish on 2019-06-28 |  |  | AWE1 |  |
| P1EWCC-PWP02-10250 |  | Completion of Species Translocation/ exclusion - Bats | milestone | 0d | 2019-06-28 | 2019-06-28 | P1EWCC-PWP02-10230 |  |  |  |  | 0d | 926d | finish on 2019-06-28 |  |  | AWE1 |  |
| P1EWCC-PWP02-10260 |  | Completion of Species Translocation/ exclusion - Badgers | milestone | 0d | 2019-06-28 | 2019-06-28 | P1EWCC-PWP02-10230 |  |  |  |  | 0d | 926d | finish on 2019-06-28 |  |  | AWE1 |  |
| P1EWCC-PWP02-10270 |  | Completion of Species Translocation/ exclusion - GCN | milestone | 0d | 2019-06-28 | 2019-06-28 | P1EWCC-PWP02-10230 |  |  |  |  | 0d | 926d | finish on 2019-06-28 |  |  | AWE1 |  |
| P1EWCC-PWP02-10280 |  | Completion of Species Translocation/ exclusion - Otters | milestone | 0d | 2019-06-28 | 2019-06-28 | P1EWCC-PWP02-10230 |  |  |  |  | 0d | 926d | finish on 2019-06-28 |  |  | AWE1 |  |
| P1EWCC-FWP06-7130 |  | Completion of Arboricultural Survey of River Cherwell and Osierbed Spinney | milestone | 0d | 2019-06-28 | 2019-06-28 | P1EWCC-FWP01-4090 |  |  |  |  | 0d | 925d | finish on 2019-06-28 |  |  | AWS |  |
|  | 9 | **108-L2 - Edgcote Cutting** |  |  | 2017-03-20 | 2019-10-11 |  |  |  |  |  |  |  |  |  |  |  |  |
|  | 8 | **Land Access** |  |  | 2017-06-19 | 2018-07-26 |  |  |  |  |  |  |  |  |  |  |  |  |
|  | 1 | **Survey Work** |  |  | 2017-06-19 | 2017-06-19 |  |  |  |  |  |  |  |  |  |  |  |  |
| P1EWCC-AWP01-7420 |  | Land Access Granted for Survey Work (Schedule 2) | milestone | 0d | 2017-06-19 A | 2017-06-19 A |  | 100% |  | 2017-06-26 | 2017-06-26 |  |  |  |  |  | AW1 | y |

| ID | WBS | Activity | Type | Duration | Start | Finish | Predecessors | Complete | Remaining | Planned start | Planned finish | Total float | Free float | Constraint | Expected finish | Calendar | HS2 Filter | Fusion - WPS |
| --- | --- | --- | --- | --- | --- | --- | --- | --- | --- | --- | --- | --- | --- | --- | --- | --- | --- | --- |
|  | 2 | **Possession** |  |  | 2018-07-26 | 2018-07-26 |  |  |  |  |  |  |  |  |  |  |  |  |
| P1EWCC-AWP01-7430 |  | Land Access Possession Granted for Construction (Schedule 16) | milestone | 0d | 2018-07-26 | 2018-07-26 |  |  |  |  |  | 53d | 0d | as late as possible |  |  | y | AW1 |
|  | 3 | **Survey Works** |  |  | 2017-03-20 | 2019-08-23 |  |  |  |  |  |  |  |  |  |  |  |  |
| P1EWCC-AWP01-7410 |  | Planning Consent & Licensing for Survey Work |  | 10d | 2017-03-20 A | 2017-06-16 A | P1EWCC-AWP01-1230 | 100% |  | 2017-03-20 | 2017-03-31 |  |  |  |  |  |  | AW1 |
| P1EWCC-FWP01-4110 |  | Undertake Remaining Soil Surveys |  | 120d | 2017-12-15 | 2018-06-01 | P1EWCC-PWP01-5610 |  |  |  |  | 375d |  |  |  |  | y | AWS |
|  | 1 | **Ecological & Environmental Surveys** |  |  | 2017-06-19 | 2017-11-24 |  |  |  |  |  |  |  |  |  |  |  |  |
| P1EWCC-PWP01-4500 |  | Survey for Badgers, Bats, GCN & Reptiles |  | 25d | 2017-06-19 A | 2017-11-24 | P1EWCC-AWP01-7410, P1EWCC-AWP01-7420 |  | 49.88d | 2017-04-03 | 2017-05-05 | 226.12d | 0d |  | 2017-11-24 |  |  | UW1 |
|  | 2 | **Engineering Surveys** |  |  |  |  |  |  |  |  |  |  |  |  |  |  |  |  |
|  | 3 | **Historic Environment** |  |  | 2017-12-15 | 2019-08-23 |  |  |  |  |  |  |  |  |  |  |  |  |
| P1EWCC-PWP06-7130 |  | Non-Intrusive Surveys (Edgcote Villa) |  | 20d | 2017-12-15 | 2018-01-12 | P1EWCC-PWP06-7110, P1EWCC-AWP01-7420, P1EWCC-PWP05-240 |  |  |  |  | 65d | 0d |  |  |  |  | AWH |
| P1EWCC-PWP06-8420 |  | Trial Trenching (Edgcote Villa) |  | 40d | 2018-04-13 | 2018-06-08 | P1EWCC-PWP06-7120 |  |  |  |  | 65d | 0d |  |  |  |  | AWH |
| P1EWCC-PWP06-7150 |  | Intrusive Surveys (Edgcote Villa) |  | 240d | 2018-09-24 | 2019-08-23 | P1EWCC-PWP06-8430, P1EWCC-PWP02-10120, P1EWCC-AWP01-7430 |  |  |  |  | 54.88d | 0d |  |  |  |  | AWH |
|  | 7 | **Historic Environment** |  |  | 2017-08-04 | 2019-10-11 |  |  |  |  |  |  |  |  |  |  |  |  |
| P1EWCC-PWP06-7110 |  | Production and Approval of LS-WSI (non-intrusive surveys) |  | 95d | 2017-08-04 A | 2017-10-13 | P1EWCC-PWP05-150 SS | 79% | 20d | 2017-09-18 | 2018-01-26 | 109.88d | 0d |  | 2017-10-13 |  |  | AWH |
| P1EWCC-PWP06-7100 |  | HS2 issue Project Plan |  | 1d | 2017-10-13 | 2017-10-13 | P1EWCC-PWP06-7110 FF |  |  |  |  | 1370d |  | start on or after 2017-03-31 |  |  |  | AWH |
| P1EWCC-PWP06-7120 |  | Update of Project Plans and LS-WSI and Approval (intrusive surveys & trail trenching) |  | 65d | 2018-01-12 | 2018-04-13 | P1EWCC-PWP06-7130 |  |  |  |  | 65d | 0d |  |  |  |  | AWH |
| P1EWCC-PWP06-8430 |  | Update of Project Plans and LS-WSI and Approval (intrusive surveys) |  | 65d | 2018-06-08 | 2018-09-07 | P1EWCC-PWP06-8420 |  |  |  |  | 65d | 10.12d |  |  |  |  | AWH |
| P1EWCC-PWP06-7140 |  | Report of Findings And Approval (Archaeological Investigation) |  | 35d | 2019-08-26 | 2019-10-11 | P1EWCC-PWP06-7150 |  |  |  |  | 850d |  |  |  |  |  | AWH |
|  | 4 | **Ecological Mitigation Works** |  |  | 2018-07-26 | 2018-09-23 |  |  |  |  |  |  |  |  |  |  |  |  |
|  | 5 | **Translocation of Species** |  |  | 2018-07-26 | 2018-09-23 |  |  |  |  |  |  |  |  |  |  |  |  |
| P1EWCC-PWP02-10120 |  | Species Translocation to Habitat Creation (105-M1E) |  | 60d | 2018-07-26 | 2018-09-23 | P1EWCC-AWP01-7430, P1EWCC-PWP01-4500, P1EWCC-PWP02-12670, P1EWCC-PWP02-14610 |  |  |  |  | 75d | 0d |  |  | HS2 - 8h x 7d Workweek (No Holidays) |  | AWE1 |
|  | 2 | **Water Resources** |  |  |  |  |  |  |  |  |  |  |  |  |  |  |  |  |
|  | 6 | **SOW Completion Dates** |  |  | 2019-03-29 | 2019-06-28 |  |  |  |  |  |  |  |  |  |  |  |  |
| P1EWCC-PWP02-10150 |  | Completion of Species Translocation/ exclusion - Reptiles | milestone | 0d | 2019-03-29 | 2019-03-29 | P1EWCC-PWP02-10120 |  |  |  |  | 0d | 991d | finish on 2019-03-29 |  |  |  | AWE1 |
| P1EWCC-PWP02-10130 |  | Completion of Species Translocation/ exclusion - Badgers | milestone | 0d | 2019-06-28 | 2019-06-28 | P1EWCC-PWP02-10120 |  |  |  |  | 0d | 926d | finish on 2019-06-28 |  |  |  | AWE1 |
| P1EWCC-PWP02-10140 |  | Completion of Species Translocation/ exclusion - Bats | milestone | 0d | 2019-06-28 | 2019-06-28 | P1EWCC-PWP02-10120 |  |  |  |  | 0d | 926d | finish on 2019-06-28 |  |  |  | AWE1 |
| P1EWCC-PWP02-10160 |  | Completion of Species Translocation/ exclusion - GCN | milestone | 0d | 2019-06-28 | 2019-06-28 | P1EWCC-PWP02-10120 |  |  |  |  | 0d | 926d | finish on 2019-06-28 |  |  |  | AWE1 |
| P1EWCC-PWP02-10210 |  | Completion of Species Translocation/ exclusion - Water Voles | milestone | 0d | 2019-06-28 | 2019-06-28 | P1EWCC-PWP02-10120 |  |  |  |  | 0d | 926d | finish on 2019-06-28 |  |  |  | AWE1 |
| P1EWCC-PWP02-10220 |  | Completion of Species Translocation/ exclusion - Otters | milestone | 0d | 2019-06-28 | 2019-06-28 | P1EWCC-PWP02-10120 |  |  |  |  | 0d | 926d | finish on 2019-06-28 |  |  |  | AWE1 |

| ID | WBS | Activity | Type | Duration | Start | Finish | Predecessors | Complete | Planned start | Planned finish | Total float | Free float | Constraint | HS2 Filter | Fusion - WPS | Key Milestones |
| --- | --- | --- | --- | --- | --- | --- | --- | --- | --- | --- | --- | --- | --- | --- | --- | --- |
|  | C314 | **Chipping Warden (Ch. 109830To Ch. 112320)** |  |  | 2017-03-20 | 2019-06-28 |  |  |  |  |  |  |  |  |  |  |
|  | 11 | **109-L1 - Chipping Warden Green Tunnel** |  |  | 2017-03-20 | 2019-06-28 |  |  |  |  |  |  |  |  |  |  |
|  | 8 | **Land Access** |  |  | 2017-04-24 | 2018-07-09 |  |  |  |  |  |  |  |  |  |  |
|  | 1 | **Survey Work** |  |  | 2017-04-24 | 2017-04-24 |  |  |  |  |  |  |  |  |  |  |
| P1EWCC-AWP01-7480 |  | Land Access Granted for Survey Work (Schedule 2) | milestone | 0d | 2017-04-24 A | 2017-04-24 A |  | 100% | 2017-04-03 | 2017-04-03 |  |  | as late as possible | y | AW1 |  |
|  | 2 | **Possession** |  |  | 2018-07-09 | 2018-07-09 |  |  |  |  |  |  |  |  |  |  |
| P1EWCC-AWP01-7490 |  | Land Access Possession Granted for Construction (Schedule 16) | milestone | 0d | 2018-07-09 | 2018-07-09 |  |  |  |  | -35.88d | 0d | as late as possible | y | AW1 |  |
|  | 3 | **Survey Works** |  |  | 2017-03-20 | 2018-11-13 |  |  |  |  |  |  |  |  |  |  |
| P1EWCC-AWP01-7470 |  | Planning Consent & Licensing for Survey Work |  | 10d | 2017-03-20 A | 2017-04-21 A | P1EWCC-AWP01-1230 | 100% | 2017-03-20 | 2017-03-31 |  |  |  |  | AW1 |  |
| P1EWCC-FWP01-4140 |  | Undertake Remaining Soil Surveys |  | 120d | 2017-12-15 | 2018-06-01 | P1EWCC-PWP01-5610 |  |  |  | 195d |  |  | y | AWS |  |
| P1EWCC-FWP01-4160 |  | Undertake Remaining Ecology & Environmental Surveys |  | 137d | 2017-12-15 | 2018-06-26 | P1EWCC-PWP01-5610 |  |  |  | 178d |  |  | y | AWS |  |
|  | 1 | **Ecological & Environmental Surveys** |  |  | 2017-04-24 | 2017-08-04 |  |  |  |  |  |  |  |  |  |  |
| P1EWCC-PWP01-4570 |  | Survey for Badgers, Bats, GCN & Reptiles |  | 25d | 2017-04-24 A | 2017-08-04 A | P1EWCC-AWP01-7480, P1EWCC-AWP01-7470 | 100% | 2017-04-03 | 2017-05-05 |  |  |  |  | UW1 |  |
|  | 4 | **Arboricultural survey** |  |  |  |  |  |  |  |  |  |  |  |  |  |  |
|  | 2 | **Engineering Surveys** |  |  |  |  |  |  |  |  |  |  |  |  |  |  |
|  | 3 | **Historic Environment** |  |  | 2018-01-19 | 2018-11-13 |  |  |  |  |  |  |  |  |  |  |
| P1EWCC-PWP06-7250 |  | Non-Intrusive Surveys (geophysics) |  | 20d | 2018-01-19 | 2018-02-16 | P1EWCC-AWP01-7480, P1EWCC-PWP06-7230, P1EWCC-PWP05-240 |  |  |  | 160d | 0d |  |  | AWH | Key MS |
| P1EWCC-PWP06-10710 |  | Non-Intrusive Surveys (trial trenching) |  | 30d | 2018-03-16 | 2018-04-27 | P1EWCC-PWP06-7240, P1EWCC-PWP05-240 |  |  |  | 160d | 0d |  |  | AWH | Key MS |
| P1EWCC-PWP06-7270 |  | Intrusive Surveys |  | 40d | 2018-09-18 | 2018-11-13 | P1EWCC-PWP02-10290, P1EWCC-PWP06-7240, P1EWCC-PWP06-10720, P1EWCC-AWP01-7490 |  |  |  | 78d | 0d |  |  | AWH | Key MS |
|  | 7 | **Historic Environment** |  |  | 2017-12-15 | 2019-01-01 |  |  |  |  |  |  |  |  |  |  |
| P1EWCC-PWP06-7230 |  | Production and Approval of Proejct Plans & LS-WSI (non-intrusive surveys) |  | 25d | 2017-12-15 | 2018-01-19 | P1EWCC-PWP05-240 |  |  |  | 160d | 0d |  |  | AWH |  |
| P1EWCC-PWP06-7240 |  | Update of Project Plans and LS-WSI and Approval (intrusive surveys) |  | 20d | 2018-02-16 | 2018-03-16 | P1EWCC-PWP06-7250 |  |  |  | 160d | 0d |  |  | AWH |  |
| P1EWCC-PWP06-10720 |  | Update of Project Plans and LS-WSI and Approval (intrusive surveys) |  | 20d | 2018-04-27 | 2018-05-25 | P1EWCC-PWP06-10710 |  |  |  | 160d | 82d |  |  | AWH |  |
| P1EWCC-PWP06-7260 |  | Report of Findings And Approval (Archaeological Investigation) |  | 35d | 2018-11-13 | 2019-01-01 | P1EWCC-PWP06-7270 |  |  |  | 1053.12d |  |  |  | AWH |  |

| ID | WBS | Activity | Duration | Start | Finish | Predecessors | Total float | Free float | Constraint | Calendar | Fusion - WPS | HS2 Filter | Key Milestones |
| --- | --- | --- | --- | --- | --- | --- | --- | --- | --- | --- | --- | --- | --- |
|  | 4 | **Ecological Mitigation Works** |  | 2018-07-26 | 2018-09-18 |  |  |  |  |  |  |  |  |
|  | 5 | **Translocation of Species** |  | 2018-07-26 | 2018-09-18 |  |  |  |  |  |  |  |  |
| P1EWCC-PWP02-10290 |  | Species Translocation to Habitat Creation (105-M1E) | 55d | 2018-07-26 | 2018-09-18 | P1EWCC-PWP01-4570, P1EWCC-AWP01-7490, P1EWCC-PWP02-12670, P1EWCC-PWP02-14610 | 9d | 0d |  | HS2 - 8h x 7d Workweek (No Holidays) | AWE1 |  |  |
|  | 1 | **Site Clearance Works** |  | 2017-10-13 | 2018-10-23 |  |  |  |  |  |  |  |  |
| P1EWCC-PWP10-1150 |  | Scheme Design and Approval of Site Clearance of Main Compound Site - Chipping Warden compound | 90d | 2017-10-13 | 2018-02-16 | P1EWCC-PWP01-6210 | -51.88d | 0d |  |  | DC3A | y |  |
| P1EWCC-PWP10-1240 |  | Detailed Design and Approval of Site Clearance of Main Compound Site - Chipping Warden compound | 127d | 2018-04-06 | 2018-10-02 | P1EWCC-PWP10-1150, P1EWCC-PWP01-8760 | -17.88d | 0d |  |  | DC3F | y |  |
| P1EWCC-AWP01-7500 |  | Planning Consent & Licensing for Site Clearance of Main Compound Site - Chipping Warden compound | 50d | 2018-07-24 | 2018-10-02 | P1EWCC-PWP10-1240 FF, P1EWCC-PWP10-1150 | -17.88d | 0d |  |  | DC3F |  |  |
| P1EWCC-EWP06-5900 |  | Site Clearance of Main Compound Site - Chipping Warden compound | 15d | 2018-10-02 | 2018-10-23 | P1EWCC-AWP01-7500, P1EWCC-AWP01-7490 | -17.88d | 0d | start on or after 2018-09-03 |  | DC3F | y |  |
|  | 5 | **Ground Remediation Works** |  | 2017-10-13 | 2018-12-18 |  |  |  |  |  |  |  |  |
| P1EWCC-FWP01-1130 |  | Scheme Design and Approval of Ground Remediation works - RAF Chipping Warden Airfield | 90d | 2017-10-13 | 2018-02-16 | P1EWCC-PWP01-6210 | -51.88d | 0d |  |  | DC3A | y |  |
| P1EWCC-FWP01-1140 |  | Detailed Design and Approval of Ground Remediation works - RAF Chipping Warden Airfield | 127d | 2018-04-06 | 2018-10-02 | P1EWCC-FWP01-1130, P1EWCC-PWP01-8760 | 8.88d | 0d |  |  | DC3F | y |  |
| P1EWCC-AWP01-7550 |  | Planning Consent & Licensing for Ground Remediation works - RAF Chipping Warden Airfield | 50d | 2018-07-24 | 2018-10-02 | P1EWCC-FWP01-1130, P1EWCC-FWP01-1140 FF | 8.88d | 0d |  |  | DC3F |  |  |
| P1EWCC-FWP06-1290 |  | Ground Remediation Works - Ground Remediation works - RAF Chipping Warden Airfield | 55d | 2018-10-02 | 2018-12-18 | P1EWCC-AWP01-7550, P1EWCC-AWP01-7490 | 8.88d |  |  |  | DC3F | y |  |
|  | 9 | **Highway Works** |  | 2017-10-13 | 2019-03-01 |  |  |  |  |  |  |  |  |
|  | 1 | **A361 (Wardington) safety improvements** |  | 2017-10-13 | 2018-12-11 |  |  |  |  |  |  |  |  |
| P1EWCC-PWP09-7050 |  | Highways Scheme Design & Approval - A361 (Wardington) safety improvements | 90d | 2017-10-13 | 2018-02-16 | P1EWCC-PWP01-6210 | -51.88d | 0d |  |  | DC3A |  |  |
| P1EWCC-PWP09-7210 |  | Highways Detailed Design & Approval - A361 (Wardington) safety improvements | 82d | 2018-04-06 | 2018-07-31 | P1EWCC-PWP09-7050, P1EWCC-PWP01-8760 | -51.88d | 0d |  |  | DC3F |  |  |
| P1EWCC-AWP01-7510 |  | Planning Consent & Licensing -A361 (Wardington) safety improvements | 50d | 2018-05-22 | 2018-07-31 | P1EWCC-PWP09-7210 FF | -51.88d | 0d |  |  | DC3F |  |  |
| P1EWCC-EWP06-7070 |  | Highways Construction - A361 (Wardington) safety improvements | 95d | 2018-07-31 | 2018-12-11 | P1EWCC-AWP01-7510, P1EWCC-AWP01-7490 | -51.88d | 0d |  |  | DC3F |  |  |
|  | 2 | **Chipping Warden By-Pass - A361 Byfield Road Bypass works** |  | 2017-10-13 | 2019-03-01 |  |  |  |  |  |  |  |  |
| P1EWCC-PWP09-7060 |  | Highways Scheme Design & Approval - Chipping Warden By-Pass - A361 Byfield Road Bypass works | 90d | 2017-10-13 | 2018-02-16 | P1EWCC-PWP01-6210 | -51.88d | 0d |  |  | DC3A |  | Key MS |
| P1EWCC-PWP09-7220 |  | Highways Detailed Design & Approval - Chipping Warden By-Pass - A361 Byfield Road Bypass works | 101d | 2018-04-06 | 2018-08-27 | P1EWCC-PWP09-7060, P1EWCC-PWP01-8760 | 0d |  |  |  | DC3F |  |  |
| P1EWCC-AWP01-7520 |  | Planning Consent & Licensing -Chipping Warden By-Pass - A361 Byfield Road Bypass works | 50d | 2018-06-18 | 2018-08-27 | P1EWCC-PWP09-7060, P1EWCC-PWP09-7220 FF | 0d |  |  |  | DC3F |  | Key MS |
| P1EWCC-EWP06-7080 |  | Highways Construction - Chipping Warden By-Pass - A361 Byfield Road Bypass works | 134d | 2018-08-27 | 2019-03-01 | P1EWCC-AWP01-7520, P1EWCC-AWP01-7490 | 0d |  |  |  | DC3F |  | Key MS |

| ID | WBS | Activity | Type | Duration | Start | Finish | Predecessors | Total float | Free float | Constraint | Fusion - WPS | HS2 Filter |
| --- | --- | --- | --- | --- | --- | --- | --- | --- | --- | --- | --- | --- |
|  | 3 | **Welsh Road - A361 junction modification works** |  |  | 2017-10-13 | 2019-02-22 |  |  |  |  |  |  |
| P1EWCC-PWP09-7070 |  | Highways Scheme Design & Approval - Welsh Road - A361 junction modification works |  | 90d | 2017-10-13 | 2018-02-16 | P1EWCC-PWP01-6210 | -51.88d | 0d |  | DC3A |  |
| P1EWCC-PWP09-7230 |  | Highways Detailed Design & Approval - Welsh Road - A361 junction modification works |  | 101d | 2018-04-06 | 2018-08-27 | P1EWCC-PWP09-7070, P1EWCC-PWP01-8760 | 5d | 0d |  | DC3F |  |
| P1EWCC-AWP01-7530 |  | Planning Consent & Licensing - Welsh Road - A361 junction modification works |  | 50d | 2018-06-18 | 2018-08-27 | P1EWCC-PWP09-7230 FF | 5d | 0d |  | DC3F |  |
| P1EWCC-EWP06-7090 |  | Highways Construction - Welsh Road - A361 junction modification works |  | 129d | 2018-08-27 | 2019-02-22 | P1EWCC-AWP01-7530, P1EWCC-AWP01-7490 | 5d |  |  | DC3F |  |
|  | 4 | **M40 Junction 11 Improvement works** |  |  | 2017-10-13 | 2018-11-05 |  |  |  |  |  |  |
| P1EWCC-PWP09-7080 |  | Highways Scheme Design & Approval - M40 Junction 11 Improvement works |  | 125d | 2017-10-13 | 2018-04-06 | P1EWCC-PWP01-8610 | 84.12d | 0d |  | DC3C |  |
| P1EWCC-PWP09-7250 |  | Highways Detailed Design & Approval - M40 Junction 11 Improvement works |  | 63d | 2018-04-11 | 2018-07-09 | P1EWCC-PWP01-9060, P1EWCC-PWP09-7080 | 84d | 0d |  | DC3H |  |
| P1EWCC-AWP01-7540 |  | Planning Consent & Licensing - M40 Junction 11 Improvement works |  | 50d | 2018-04-30 | 2018-07-09 | P1EWCC-PWP09-7250 FF, P1EWCC-PWP09-7080 | 84d | 0d |  | DC3H |  |
| P1EWCC-EWP06-7100 |  | Highways Construction - M40 Junction 11 Improvement works |  | 85d | 2018-07-09 | 2018-11-05 | P1EWCC-AWP01-7540, P1EWCC-AWP01-7490 | 84d |  |  | DC3H |  |
|  | 2 | **Water Resources** |  |  | 2017-10-13 | 2018-01-05 |  |  |  |  |  |  |
| P1EWCC-PWP04-1880 |  | Fluvial/hydrological modelling,initial site visits, inception report, topographical survey, and modelling. |  | 60d | 2017-10-13 | 2018-01-05 | P1EWCC-PWP01-6210 | 189.75d |  |  | DC3A | y |
|  | 6 | **SOW Completion Dates** |  |  | 2017-09-18 | 2019-06-28 |  |  |  |  |  |  |
| P1EWCC-PWP01-2190 |  | Completion of Survey for Bats (112+000) | milestone | 0d | 2017-09-18 | 2017-09-18 | P1EWCC-PWP01-4570 | -56d | 1390d | finish on 2017-06-30 | UW1 |  |
| P1EWCC-PWP01-2260 |  | Completion of Survey for Reptiles (112+000) | milestone | 0d | 2017-09-18 | 2017-09-18 | P1EWCC-PWP01-4570 | -56d | 1390d | finish on 2017-06-30 | UW1 |  |
| P1EWCC-PWP01-2320 |  | Completion of Survey for GCN (110+100) | milestone | 0d | 2017-09-18 | 2017-09-18 | P1EWCC-PWP01-4570 | -56d | 1390d | finish on 2017-06-30 | UW1 |  |
| P1EWCC-PWP02-10300 |  | Completion of Species Translocation/ exclusion - Reptiles | milestone | 0d | 2018-09-28 | 2018-09-28 | P1EWCC-PWP02-10290 | 0d | 1121d | finish on 2018-09-28 | AWE1 |  |
| P1EWCC-PWP02-10310 |  | Completion of Species Translocation/ exclusion - Bats | milestone | 0d | 2018-09-28 | 2018-09-28 | P1EWCC-PWP02-10290 | 0d | 1121d | finish on 2018-09-28 | AWE1 |  |
| P1EWCC-PWP02-10320 |  | Completion of Species Translocation/ exclusion - Badgers | milestone | 0d | 2018-09-28 | 2018-09-28 | P1EWCC-PWP02-10290 | 0d | 1121d | finish on 2018-09-28 | AWE1 |  |
| P1EWCC-PWP02-10330 |  | Completion of Species Translocation/ exclusion - GCN | milestone | 0d | 2018-09-28 | 2018-09-28 | P1EWCC-PWP02-10290 | 0d | 1121d | finish on 2018-09-28 | AWE1 |  |
| P1EWCC-PWP04-1890 |  | Completion of Fluvial/hydrological modelling,initial site visits, inception report, topographical survey, and modelling. | milestone | 0d | 2018-09-28 | 2018-09-28 | P1EWCC-PWP04-1880 | 0d | 1120.38d | finish on 2018-09-28 | DC3A | y |
| P1EWCC-EWP06-7060 |  | Completion of Site Clearance of Main Compound Site - Chipping Warden compound | milestone | 0d | 2018-10-23 | 2018-10-23 | P1EWCC-EWP06-5900 | -17.88d | 1103.12d | finish on 2018-09-28 | DC3F | y |
| P1EWCC-EWP06-7110 |  | Completion of Highways Construction - A361 (Wardington) safety improvements | milestone | 0d | 2018-12-11 | 2018-12-11 | P1EWCC-EWP06-7070 | -51.88d | 1068.12d | finish on 2018-09-28 | DC3F |  |
| P1EWCC-FWP06-7160 |  | Completion of Ground Remediation Works - Ground Remediation works - RAF Chipping Warden Airfield | milestone | 0d | 2018-12-31 | 2018-12-31 | P1EWCC-FWP06-1290 | 0d | 1054.25d | finish on 2018-12-31 | DC3F | y |
| P1EWCC-EWP06-7130 |  | Completion of Highways Construction - Welsh Road - A361 junction modification works | milestone | 0d | 2019-03-29 | 2019-03-29 | P1EWCC-EWP06-7090 | 0d | 990d | finish on 2019-03-29 | DC3F |  |
| P1EWCC-EWP06-7140 |  | Completion of Highways Construction - M40 Junction 11 Improvement works | milestone | 0d | 2019-03-29 | 2019-03-29 | P1EWCC-EWP06-7100 | 0d | 990d | finish on 2019-03-29 | DC3H |  |
| P1EWCC-EWP06-7120 |  | Completion of Highways Construction - Chipping Warden By-Pass - A361 Byfield Road Bypass works | milestone | 0d | 2019-06-28 | 2019-06-28 | P1EWCC-EWP06-7080 | 0d | 925d | finish on 2019-06-28 | DC3F |  |

| ID | WBS | Activity | Type | Duration | Start | Finish | Predecessors | Complete | Planned start | Planned finish | Total float | Free float | Constraint | HS2 Filter | Fusion - WPS |
| --- | --- | --- | --- | --- | --- | --- | --- | --- | --- | --- | --- | --- | --- | --- | --- |
|  | C315 | **Aston Le Walls to Boddington (Ch. 112320 To Ch. 117720)** |  |  | 2017-03-20 | 2020-03-31 |  |  |  |  |  |  |  |  |  |
|  | 1 | **112-L2 - Aston le Walls Embankment** |  |  | 2017-03-20 | 2019-06-28 |  |  |  |  |  |  |  |  |  |
|  | 8 | **Land Access** |  |  | 2017-06-05 | 2018-07-26 |  |  |  |  |  |  |  |  |  |
|  | 1 | **Survey Work** |  |  | 2017-06-05 | 2017-06-05 |  |  |  |  |  |  |  |  |  |
| P1EWCC-AWP01-7570 |  | Land Access Granted for Survey Work (Schedule 2) | milestone | 0d | 2017-06-05 A | 2017-06-05 A |  | 100% | 2017-05-22 | 2017-05-22 |  |  |  | y | AW1 |
|  | 2 | **Possession** |  |  | 2018-07-26 | 2018-07-26 |  |  |  |  |  |  |  |  |  |
| P1EWCC-AWP01-7580 |  | Land Access Possession Granted for Construction (Schedule 16) | milestone | 0d | 2018-07-26 | 2018-07-26 |  |  |  |  | 73d | 0d | as late as possible | y | AW1 |
|  | 3 | **Survey Works** |  |  | 2017-03-20 | 2018-11-16 |  |  |  |  |  |  |  |  |  |
| P1EWCC-AWP01-7560 |  | Planning Consent & Licensing for Survey Work |  | 10d | 2017-03-20 A | 2017-06-02 A | P1EWCC-AWP01-1230 | 100% | 2017-03-20 | 2017-03-31 |  |  |  |  | AW1 |
| P1EWCC-FWP01-4170 |  | Undertake Remaining Soil Surveys |  | 120d | 2017-12-15 | 2018-06-01 | P1EWCC-PWP01-5610 |  |  |  | 195d |  |  | y | AWS |
| P1EWCC-FWP01-4180 |  | Undertake Arboricultural Surveys |  | 125d | 2017-12-15 | 2018-06-08 | P1EWCC-PWP01-5610 |  |  |  | 190d |  |  | y | AWS |
| P1EWCC-FWP01-4190 |  | Undertake Remaining Ecology & Environmental Surveys |  | 137d | 2017-12-15 | 2018-06-26 | P1EWCC-PWP01-5610 |  |  |  | 178d |  |  | y | AWS |
|  | 1 | **Ecological & Environmental Surveys** |  |  | 2017-06-05 | 2017-09-15 |  |  |  |  |  |  |  |  |  |
| P1EWCC-PWP01-4580 |  | Survey for Badgers, Bats, GCN & Reptiles |  | 25d | 2017-06-05 A | 2017-09-15 A | P1EWCC-AWP01-7560, P1EWCC-AWP01-7570 | 100% | 2017-05-22 | 2017-06-23 |  |  |  |  | UW1 |
|  | 4 | **Arboricultural survey** |  |  |  |  |  |  |  |  |  |  |  |  |  |
|  | 2 | **Engineering Surveys** |  |  |  |  |  |  |  |  |  |  |  |  |  |
|  | 3 | **Historic Environment** |  |  | 2018-02-09 | 2018-11-16 |  |  |  |  |  |  |  |  |  |
| P1EWCC-PWP06-7310 |  | Non-Intrusive Surveys (geophysics) |  | 20d | 2018-02-09 | 2018-03-09 | P1EWCC-AWP01-7570, P1EWCC-PWP06-7290, P1EWCC-PWP05-240 |  |  |  | 105d | 0d |  |  | AWH |
| P1EWCC-PWP06-10730 |  | Non-Intrusive Surveys (trial trenching) |  | 30d | 2018-05-04 | 2018-06-15 | P1EWCC-PWP06-7300, P1EWCC-PWP05-240 |  |  |  | 105d | 0d |  |  | AWH |
| P1EWCC-PWP06-7330 |  | Intrusive Surveys |  | 40d | 2018-09-24 | 2018-11-16 | P1EWCC-PWP02-10340, P1EWCC-PWP06-7300, P1EWCC-PWP06-10740, P1EWCC-AWP01-7580 |  |  |  | 74.88d | 0d |  |  | AWH |
|  | 7 | **Historic Environment** |  |  | 2017-12-15 | 2019-01-04 |  |  |  |  |  |  |  |  |  |
| P1EWCC-PWP06-7290 |  | Production and Approval of Proejct Plans & LS-WSI (non-intrusive surveys) |  | 40d | 2017-12-15 | 2018-02-09 | P1EWCC-PWP05-240 |  |  |  | 105d | 0d |  |  | AWH |
| P1EWCC-PWP06-7300 |  | Update of Project Plans and LS-WSI and Approval (intrusive surveys) |  | 40d | 2018-03-09 | 2018-05-04 | P1EWCC-PWP06-7310 |  |  |  | 105d | 0d |  |  | AWH |
| P1EWCC-PWP06-10740 |  | Update of Project Plans and LS-WSI and Approval (intrusive surveys) |  | 40d | 2018-06-15 | 2018-08-10 | P1EWCC-PWP06-10730 |  |  |  | 105d | 30.12d |  |  | AWH |
| P1EWCC-PWP06-7320 |  | Report of Findings And Approval (Archaeological Investigation) |  | 35d | 2018-11-19 | 2019-01-04 | P1EWCC-PWP06-7330 |  |  |  | 1050d |  |  |  | AWH |

| ID | WBS | Activity | Type | Duration | Start | Finish | Predecessors | Complete | Planned start | Planned finish | Total float | Free float | Constraint | Calendar | Fusion - WPS | HS2 Filter |
| --- | --- | --- | --- | --- | --- | --- | --- | --- | --- | --- | --- | --- | --- | --- | --- | --- |
|  | 4 | **Ecological Mitigation Works** |  |  | 2018-07-26 | 2018-09-23 |  |  |  |  |  |  |  |  |  |  |
|  | 5 | **Translocation of Species** |  |  | 2018-07-26 | 2018-09-23 |  |  |  |  |  |  |  |  |  |  |
| P1EWCC-PWP02-10340 |  | Species Translocation to Habitat Creation (Fox Covert LS003) |  | 60d | 2018-07-26 | 2018-09-23 | P1EWCC-AWP01-7580, P1EWCC-PWP01-4580, P1EWCC-PWP02-5980 SS+60d, P1EWCC-PWP02-14610 |  |  |  | 103d | 0d |  | HS2 - 8h x 7d Workweek (No Holidays) | AWE1 |  |
|  | 6 | **SOW Completion Dates** |  |  | 2017-09-18 | 2019-06-28 |  |  |  |  |  |  |  |  |  |  |
| P1EWCC-PWP01-2390 |  | Completion of Survey for Bats (112+750) | milestone | 0d | 2017-09-18 | 2017-09-18 | P1EWCC-PWP01-4580 |  |  |  | -56d | 1390d | finish on 2017-06-30 |  | UW1 |  |
| P1EWCC-PWP02-10350 |  | Completion of Species Translocation/ exclusion - Badgers | milestone | 0d | 2019-06-28 | 2019-06-28 | P1EWCC-PWP02-10340 |  |  |  | 0d | 926d | finish on 2019-06-28 |  | AWE1 |  |
| P1EWCC-PWP02-10360 |  | Completion of Species Translocation/ exclusion - Bats | milestone | 0d | 2019-06-28 | 2019-06-28 | P1EWCC-PWP02-10340 |  |  |  | 0d | 926d | finish on 2019-06-28 |  | AWE1 |  |
| P1EWCC-PWP02-10370 |  | Completion of Species Translocation/ exclusion - Reptiles | milestone | 0d | 2019-06-28 | 2019-06-28 | P1EWCC-PWP02-10340 |  |  |  | 0d | 926d | finish on 2019-06-28 |  | AWE1 |  |
| P1EWCC-PWP02-10380 |  | Completion of Species Translocation/ exclusion - GCN | milestone | 0d | 2019-06-28 | 2019-06-28 | P1EWCC-PWP02-10340 |  |  |  | 0d | 926d | finish on 2019-06-28 |  | AWE1 |  |
| P1EWCC-PWP02-10390 |  | Completion of Species Translocation/ exclusion - Water Voles | milestone | 0d | 2019-06-28 | 2019-06-28 | P1EWCC-PWP02-10340 |  |  |  | 0d | 926d | finish on 2019-06-28 |  | AWE1 |  |
| P1EWCC-FWP06-7180 |  | Completion of Arboricultural Survey | milestone | 0d | 2019-06-28 | 2019-06-28 | P1EWCC-FWP01-4180 |  |  |  | 0d | 925d | finish on 2019-06-28 |  | AWS |  |
|  | 6 | **112-L3 - Highfurlong Brook Viaduct** |  |  | 2017-03-20 | 2020-01-10 |  |  |  |  |  |  |  |  |  |  |
| P1EWCC-FWP01-4200 |  | Undertake Remaining Soil Surveys |  | 120d | 2017-12-15 | 2018-06-01 | P1EWCC-PWP01-5610 |  |  |  | 451d |  |  |  | AWS | y |
| P1EWCC-FWP01-4220 |  | Undertake Remaining Ecology & Environmental Surveys |  | 240d | 2017-12-15 | 2018-11-16 | P1EWCC-PWP01-5610 |  |  |  | 331d |  |  |  | AWS | y |
|  | 8 | **Land Access** |  |  | 2017-03-27 | 2019-08-01 |  |  |  |  |  |  |  |  |  |  |
|  | 1 | **Survey Work** |  |  | 2017-03-27 | 2017-03-27 |  |  |  |  |  |  |  |  |  |  |
| P1EWCC-AWP01-7600 |  | Land Access Granted for Survey Work (Schedule 2) | milestone | 0d | 2017-03-27 A | 2017-03-27 A |  | 100% | 2017-05-29 | 2017-05-29 |  |  |  |  | AW1 | y |
|  | 2 | **Possession** |  |  | 2019-08-01 | 2019-08-01 |  |  |  |  |  |  |  |  |  |  |
| P1EWCC-AWP01-7610 |  | Land Access Possession Granted for Construction (Schedule 16) | milestone | 0d | 2019-08-01 | 2019-08-01 |  |  |  |  | -68d | 0d | as late as possible |  | AW1 | y |
|  | 3 | **Survey Works** |  |  | 2017-03-20 | 2019-11-22 |  |  |  |  |  |  |  |  |  |  |
| P1EWCC-AWP01-7590 |  | Planning Consent & Licensing for Survey Work |  | 10d | 2017-03-20 A | 2017-03-24 A | P1EWCC-AWP01-1230 | 100% | 2017-03-20 | 2017-03-31 |  |  |  |  | AW1 |  |
|  | 1 | **Ecological & Environmental Surveys** |  |  |  |  |  |  |  |  |  |  |  |  |  |  |
|  | 2 | **Engineering Surveys** |  |  |  |  |  |  |  |  |  |  |  |  |  |  |
|  | 3 | **Historic Environment** |  |  | 2018-02-09 | 2019-11-22 |  |  |  |  |  |  |  |  |  |  |
| P1EWCC-PWP06-7370 |  | Non-Intrusive Surveys (geophysics) |  | 20d | 2018-02-09 | 2018-03-09 | P1EWCC-AWP01-7600, P1EWCC-PWP06-7350, P1EWCC-PWP05-240 |  |  |  | 431d | 0d |  |  | AWH |  |
| P1EWCC-PWP06-10750 |  | Non-Intrusive Surveys (trial trenching) |  | 30d | 2018-05-04 | 2018-06-15 | P1EWCC-PWP06-7360, P1EWCC-PWP05-240 |  |  |  | 1155.12d | 0d |  |  | AWH |  |
| P1EWCC-PWP06-7390 |  | Intrusive Surveys |  | 40d | 2019-09-30 | 2019-11-22 | P1EWCC-PWP06-7360, P1EWCC-PWP02-10400, P1EWCC-AWP01-7610 |  |  |  | 65.88d | 0d |  |  | AWH |  |

| ID | WBS | Activity | Type | Duration | Start | Finish | Predecessors | Complete | Planned start | Planned finish | Total float | Free float | Constraint | Calendar | Fusion - WPS | HS2 Filter |
| --- | --- | --- | --- | --- | --- | --- | --- | --- | --- | --- | --- | --- | --- | --- | --- | --- |
|  | 7 | **Historic Environment** |  |  | 2017-12-15 | 2020-01-10 |  |  |  |  |  |  |  |  |  |  |
| P1EWCC-PWP06-7350 |  | Production and Approval of Project Plans & LS-WSI (non-intrusive surveys) |  | 40d | 2017-12-15 | 2018-02-09 | P1EWCC-PWP05-240 |  |  |  | 431d | 0d |  |  | AWH |  |
| P1EWCC-PWP06-7360 |  | Update of Project Plans and LS-WSI and Approval (intrusive surveys) |  | 40d | 2018-03-09 | 2018-05-04 | P1EWCC-PWP06-7370 |  |  |  | 431d | 0d |  |  | AWH |  |
| P1EWCC-PWP06-10760 |  | Update of Project Plans and LS-WSI and Approval (intrusive surveys) |  | 40d | 2018-06-15 | 2018-08-10 | P1EWCC-PWP06-10750 |  |  |  | 1155.12d |  |  |  | AWH |  |
| P1EWCC-PWP06-7380 |  | Report of Findings And Approval (Archaeological Investigation) |  | 35d | 2019-11-25 | 2020-01-10 | P1EWCC-PWP06-7390 |  |  |  | 785d |  |  |  | AWH |  |
|  | 4 | **Ecological Mitigation Works** |  |  | 2019-08-01 | 2019-09-29 |  |  |  |  |  |  |  |  |  |  |
|  | 5 | **Translocation of Species** |  |  | 2019-08-01 | 2019-09-29 |  |  |  |  |  |  |  |  |  |  |
| P1EWCC-PWP02-10400 |  | Species Translocation to Habitat Creation (Fox Covert LS003) |  | 60d | 2019-08-01 | 2019-09-29 | P1EWCC-AWP01-7610, P1EWCC-PWP02-5980 SS+60d, P1EWCC-PWP02-14610 |  |  |  | -94d | 0d | start on or after 2019-08-01 | HS2 - 8h x 7d Workweek (No Holidays) | AWE1 |  |
|  | 2 | **Water Resources** |  |  | 2017-10-13 | 2018-05-18 |  |  |  |  |  |  |  |  |  |  |
| P1EWCC-PWP04-1900 |  | Hydrological Modelling - Furlong Brook |  | 155d | 2017-10-13 | 2018-05-18 | P1EWCC-PWP02-12060 |  |  |  | 94.75d |  |  |  | AWE3 | y |
|  | 6 | **SOW Completion Dates** |  |  | 2017-09-18 | 2019-09-30 |  |  |  |  |  |  |  |  |  |  |
| P1EWCC-PWP01-2230 |  | Completion of Survey for Reptiles (113+000) | milestone | 0d | 2017-09-18 | 2017-09-18 |  |  |  |  | -56d | 1390d | finish on 2017-06-30 |  | AWS |  |
| P1EWCC-PWP04-1910 |  | Completion of Fluvial/hydrological modelling,initial site visits, inception report, topographical survey, and modelling. | milestone | 0d | 2018-09-28 | 2018-09-28 | P1EWCC-PWP04-1900 |  |  |  | 0d | 1120.38d | finish on 2018-09-28 |  | AWE3 | y |
| P1EWCC-PWP02-10430 |  | Completion of Species Translocation/ exclusion - Reptiles | milestone | 0d | 2019-09-30 | 2019-09-30 | P1EWCC-PWP02-10400 |  |  |  | -66d | 860d | finish on 2019-06-28 |  | AWE1 |  |
| P1EWCC-PWP02-10450 |  | Completion of Species Translocation/ exclusion - Otter | milestone | 0d | 2019-09-30 | 2019-09-30 | P1EWCC-PWP02-10400 |  |  |  | 0d | 860d | finish on 2019-09-30 |  | AWE1 |  |
|  | 2 | **113-L1 - Highfurlong Brook Embankment** |  |  | 2017-03-20 | 2020-01-10 |  |  |  |  |  |  |  |  |  |  |
|  | 8 | **Land Access** |  |  | 2017-06-26 | 2019-08-01 |  |  |  |  |  |  |  |  |  |  |
|  | 1 | **Survey Work** |  |  | 2017-06-26 | 2017-06-26 |  |  |  |  |  |  |  |  |  |  |
| P1EWCC-AWP01-7630 |  | Land Access Granted for Survey Work (Schedule 2) | milestone | 0d | 2017-06-26 A | 2017-06-26 A |  | 100% | 2017-07-24 | 2017-07-24 |  |  |  |  | AW1 | y |
|  | 2 | **Possession** |  |  | 2019-08-01 | 2019-08-01 |  |  |  |  |  |  |  |  |  |  |
| P1EWCC-AWP01-7640 |  | Land Access Possession Granted for Construction (Schedule 16) | milestone | 0d | 2019-08-01 | 2019-08-01 |  |  |  |  | -197d | 0d | as late as possible |  | AW1 | y |
|  | 3 | **Survey Works** |  |  | 2017-03-20 | 2019-11-22 |  |  |  |  |  |  |  |  |  |  |
| P1EWCC-AWP01-7620 |  | Planning Consent & Licensing for Survey Work |  | 10d | 2017-03-20 A | 2017-06-23 A | P1EWCC-AWP01-1230 | 100% | 2017-03-20 | 2017-03-31 |  |  |  |  | AW1 |  |
| P1EWCC-FWP01-4230 |  | Undertake Remaining Soil Surveys |  | 120d | 2017-12-15 | 2018-06-01 | P1EWCC-PWP01-5610 |  |  |  | 451d |  |  |  | AWS | y |
| P1EWCC-FWP01-4240 |  | Undertake Arboricultural Surveys |  | 125d | 2017-12-15 | 2018-06-08 | P1EWCC-PWP01-5610 |  |  |  | 146.12d |  |  |  | AWS | y |

| ID | WBS | Activity | Type | Duration | Start | Finish | Predecessors | Complete | Planned start | Planned finish | Total float | Free float | Constraint | Calendar | Fusion - WPS | HS2 Filter |
| --- | --- | --- | --- | --- | --- | --- | --- | --- | --- | --- | --- | --- | --- | --- | --- | --- |
|  | 1 | **Ecological & Environmental Surveys** |  |  | 2017-06-26 | 2017-07-07 |  |  |  |  |  |  |  |  |  |  |
| P1EWCC-PWP01-4620 |  | Survey for Badgers, Bats, GCN & Reptiles |  | 25d | 2017-06-26 A | 2017-07-07 A | P1EWCC-AWP01-7620, P1EWCC-AWP01-7630 | 100% | 2017-06-26 | 2017-07-28 |  |  |  |  | UW1 |  |
|  | 4 | **Arboricultural survey** |  |  |  |  |  |  |  |  |  |  |  |  |  |  |
|  | 2 | **Engineering Surveys** |  |  |  |  |  |  |  |  |  |  |  |  |  |  |
|  | 3 | **Historic Environment** |  |  | 2018-02-09 | 2019-11-22 |  |  |  |  |  |  |  |  |  |  |
| P1EWCC-PWP06-7430 |  | Non-Intrusive Surveys (geophysics) |  | 20d | 2018-02-09 | 2018-03-09 | P1EWCC-PWP06-7410, P1EWCC-AWP01-7630, P1EWCC-PWP05-240 |  |  |  | 361d | 0d |  |  | AWH |  |
| P1EWCC-PWP06-10770 |  | Non-Intrusive Surveys (trial trenching) |  | 30d | 2018-05-04 | 2018-06-15 | P1EWCC-PWP06-7420, P1EWCC-PWP05-240 |  |  |  | 361d | 0d |  |  | AWH |  |
| P1EWCC-PWP06-7450 |  | Intrusive Surveys |  | 40d | 2019-09-30 | 2019-11-22 | P1EWCC-PWP02-10460, P1EWCC-PWP06-7420, P1EWCC-PWP06-10780, P1EWCC-AWP01-7640 |  |  |  | 65.88d | 0d |  |  | AWH |  |
|  | 7 | **Historic Environment** |  |  | 2017-12-15 | 2020-01-10 |  |  |  |  |  |  |  |  |  |  |
| P1EWCC-PWP06-7410 |  | Production and Approval of Project Plans & LS-WSI (non-intrusive surveys) |  | 40d | 2017-12-15 | 2018-02-09 | P1EWCC-PWP05-240 |  |  |  | 361d | 0d |  |  | AWH |  |
| P1EWCC-PWP06-7420 |  | Update of Project Plans and LS-WSI and Approval (intrusive surveys) |  | 40d | 2018-03-09 | 2018-05-04 | P1EWCC-PWP06-7430 |  |  |  | 361d | 0d |  |  | AWH |  |
| P1EWCC-PWP06-10780 |  | Update of Project Plans and LS-WSI and Approval (intrusive surveys) |  | 40d | 2018-06-15 | 2018-08-10 | P1EWCC-PWP06-10770 |  |  |  | 361d | 295.12d |  |  | AWH |  |
| P1EWCC-PWP06-7440 |  | Report of Findings And Approval (Archaeological Investigation) |  | 35d | 2019-11-25 | 2020-01-10 | P1EWCC-PWP06-7450 |  |  |  | 785d |  |  |  | AWH |  |
|  | 4 | **Ecological Mitigation Works** |  |  | 2019-08-01 | 2019-09-29 |  |  |  |  |  |  |  |  |  |  |
|  | 5 | **Translocation of Species** |  |  | 2019-08-01 | 2019-09-29 |  |  |  |  |  |  |  |  |  |  |
| P1EWCC-PWP02-10460 |  | Species Translocation to Habitat Creation (Fox Covert LS003) |  | 60d | 2019-08-01 | 2019-09-29 | P1EWCC-AWP01-7640, P1EWCC-PWP01-4620, P1EWCC-PWP02-5980 SS+60d, P1EWCC-PWP02-14610 |  |  |  | -275d | 0d | start on or after 2019-08-01 | HS2 - 8h x 7d Workweek (No Holidays) | AWE1 |  |
|  | 6 | **SOW Completion Dates** |  |  | 2018-12-31 | 2019-09-30 |  |  |  |  |  |  |  |  |  |  |
| P1EWCC-FWP06-7200 |  | Completion of Arboricultural Survey | milestone | 0d | 2018-12-31 | 2018-12-31 | P1EWCC-FWP01-4240 |  |  |  | 0d | 1054d | finish on 2018-12-31 |  | AWS |  |
| P1EWCC-PWP02-10470 |  | Completion of Species Translocation/ exclusion - Reptiles | milestone | 0d | 2019-09-30 | 2019-09-30 | P1EWCC-PWP02-10460 |  |  |  | -195d | 860d | finish on 2018-12-31 |  | AWE1 |  |
| P1EWCC-PWP02-10480 |  | Completion of Species Translocation/ exclusion - Badgers | milestone | 0d | 2019-09-30 | 2019-09-30 | P1EWCC-PWP02-10460 |  |  |  | -195d | 860d | finish on 2018-12-31 |  | AWE1 |  |
| P1EWCC-PWP02-10490 |  | Completion of Species Translocation/ exclusion - Bats | milestone | 0d | 2019-09-30 | 2019-09-30 | P1EWCC-PWP02-10460 |  |  |  | -195d | 860d | finish on 2018-12-31 |  | AWE1 |  |
|  | 3 | **113-L2 - Lower Boddington Cutting** |  |  | 2017-03-20 | 2019-09-30 |  |  |  |  |  |  |  |  |  |  |
|  | 8 | **Land Access** |  |  | 2017-03-20 | 2019-03-01 |  |  |  |  |  |  |  |  |  |  |
|  | 1 | **Survey Work** |  |  | 2017-03-20 | 2017-03-20 |  |  |  |  |  |  |  |  |  |  |
| P1EWCC-AWP01-7660 |  | Land Access Granted for Survey Work (Schedule 2) | milestone | 0d | 2017-03-20 A | 2017-03-20 A |  | 100% | 2017-04-03 | 2017-04-03 |  |  | as late as possible |  | AW1 | y |

| ID | WBS | Activity | Type | Duration | Start | Finish | Predecessors | Complete | Planned start | Planned finish | Total float | Free float | Constraint | Calendar | HS2 Filter | Fusion - WPS |
| --- | --- | --- | --- | --- | --- | --- | --- | --- | --- | --- | --- | --- | --- | --- | --- | --- |
|  | 2 | **Possession** |  |  | 2019-03-01 | 2019-03-01 |  |  |  |  |  |  |  |  |  |  |
| P1EWCC-AWP01-7670 |  | Land Access Possession Granted for Construction (Schedule 16) | milestone | 0d | 2019-03-01 | 2019-03-01 |  |  |  |  | 41d | 0d | as late as possible |  | y | AW1 |
|  | 3 | **Survey Works** |  |  | 2017-03-20 | 2019-06-24 |  |  |  |  |  |  |  |  |  |  |
| P1EWCC-AWP01-7650 |  | Planning Consent & Licensing for Survey Work |  | 10d | 2017-03-20 A | 2017-03-20 A | P1EWCC-AWP01-1230 | 100% | 2017-03-20 | 2017-03-31 |  |  |  |  |  | AW1 |
|  | 1 | **Ecological & Environmental Surveys** |  |  | 2017-03-20 | 2017-07-07 |  |  |  |  |  |  |  |  |  |  |
| P1EWCC-PWP01-4640 |  | Survey for Badgers, Bats, GCN & Reptiles |  | 25d | 2017-03-20 A | 2017-07-07 A | P1EWCC-AWP01-7660, P1EWCC-AWP01-7650 | 100% | 2017-04-03 | 2017-05-05 |  |  |  |  |  | UW1 |
|  | 2 | **Engineering Surveys** |  |  |  |  |  |  |  |  |  |  |  |  |  |  |
|  | 3 | **Historic Environment** |  |  | 2018-02-09 | 2019-06-24 |  |  |  |  |  |  |  |  |  |  |
| P1EWCC-PWP06-7490 |  | Non-Intrusive Surveys (geophysics) |  | 20d | 2018-02-09 | 2018-03-09 | P1EWCC-PWP06-7470, P1EWCC-AWP01-7660, P1EWCC-PWP05-240 |  |  |  | 285d | 0d |  |  |  | AWH |
| P1EWCC-PWP06-10790 |  | Non-Intrusive Surveys (trial trenching) |  | 30d | 2018-05-04 | 2018-06-15 | P1EWCC-PWP06-7480, P1EWCC-PWP05-240 |  |  |  | 285d | 0d |  |  |  | AWH |
| P1EWCC-PWP06-7510 |  | Intrusive Surveys |  | 40d | 2019-04-29 | 2019-06-24 | P1EWCC-PWP06-7480, P1EWCC-PWP02-10500, P1EWCC-PWP06-10800, P1EWCC-AWP01-7670 |  |  |  | 99d | 0d |  |  |  | AWH |
|  | 7 | **Historic Environment** |  |  | 2017-12-15 | 2019-08-12 |  |  |  |  |  |  |  |  |  |  |
| P1EWCC-PWP06-7470 |  | Production and Approval of Proejct Plans & LS-WSI (non-intrusive surveys) |  | 40d | 2017-12-15 | 2018-02-09 | P1EWCC-PWP05-240 |  |  |  | 285d | 0d |  |  |  | AWH |
| P1EWCC-PWP06-7480 |  | Update of Project Plans and LS-WSI and Approval (intrusive surveys) |  | 40d | 2018-03-09 | 2018-05-04 | P1EWCC-PWP06-7490 |  |  |  | 285d | 0d |  |  |  | AWH |
| P1EWCC-PWP06-10800 |  | Update of Project Plans and LS-WSI and Approval (intrusive surveys) |  | 40d | 2018-06-15 | 2018-08-10 | P1EWCC-PWP06-10790 |  |  |  | 285d | 186d |  |  |  | AWH |
| P1EWCC-PWP06-7500 |  | Report of Findings And Approval (Archaeological Investigation) |  | 35d | 2019-06-24 | 2019-08-12 | P1EWCC-PWP06-7510 |  |  |  | 894.12d |  |  |  |  | AWH |
|  | 4 | **Ecological Mitigation Works** |  |  | 2019-03-01 | 2019-04-29 |  |  |  |  |  |  |  |  |  |  |
|  | 5 | **Translocation of Species** |  |  | 2019-03-01 | 2019-04-29 |  |  |  |  |  |  |  |  |  |  |
| P1EWCC-PWP02-10500 |  | Species Translocation to Habitat Creation (Fox Covert LS003) |  | 60d | 2019-03-01 | 2019-04-29 | P1EWCC-AWP01-7670, P1EWCC-PWP01-4640, P1EWCC-PWP02-5980 SS+60d, P1EWCC-PWP02-14610 |  |  |  | 59d | 0d | start on or after 2019-03-01 | HS2 - 8h x 7d Workweek (No Holidays) |  | AWE1 |
|  | 2 | **Water Resources** |  |  |  |  |  |  |  |  |  |  |  |  |  |  |
|  | 6 | **SOW Completion Dates** |  |  | 2019-06-28 | 2019-09-30 |  |  |  |  |  |  |  |  |  |  |
| P1EWCC-PWP02-10510 |  | Completion of Species Translocation/ exclusion - Reptiles | milestone | 0d | 2019-06-28 | 2019-06-28 | P1EWCC-PWP02-10500 |  |  |  | 0d | 926d | finish on 2019-06-28 |  |  | AWE1 |
| P1EWCC-PWP02-10530 |  | Completion of Species Translocation/ exclusion - Badgers | milestone | 0d | 2019-06-28 | 2019-06-28 | P1EWCC-PWP02-10500 |  |  |  | 0d | 926d | finish on 2019-06-28 |  |  | AWE1 |
| P1EWCC-PWP02-10540 |  | Completion of Species Translocation/ exclusion - Bats | milestone | 0d | 2019-06-28 | 2019-06-28 | P1EWCC-PWP02-10500 |  |  |  | 0d | 926d | finish on 2019-06-28 |  |  | AWE1 |
| P1EWCC-PWP02-10550 |  | Completion of Species Translocation/ exclusion - GCN | milestone | 0d | 2019-06-28 | 2019-06-28 | P1EWCC-PWP02-10500 |  |  |  | 0d | 926d | finish on 2019-06-28 |  |  | AWE1 |
| P1EWCC-PWP02-10520 |  | Completion of Species Translocation/ exclusion - Otter | milestone | 0d | 2019-09-30 | 2019-09-30 | P1EWCC-PWP02-10500 |  |  |  | 0d | 860d | finish on 2019-09-30 |  |  | AWE1 |

| ID | WBS | Activity | Type | Duration | Start | Finish | Predecessors | Complete | Remaining | Planned start | Planned finish | Total float | Free float | Constraint | Expected finish | Calendar | HS2 Filter | Fusion - WPS |
| --- | --- | --- | --- | --- | --- | --- | --- | --- | --- | --- | --- | --- | --- | --- | --- | --- | --- | --- |
|  | 4 | **114-L1 - Lower Boddington Embankment** |  |  | 2017-03-20 | 2020-01-10 |  |  |  |  |  |  |  |  |  |  |  |  |
|  | 8 | **Land Access** |  |  | 2017-03-20 | 2019-08-01 |  |  |  |  |  |  |  |  |  |  |  |  |
|  | 1 | **Survey Work** |  |  | 2017-03-20 | 2017-03-20 |  |  |  |  |  |  |  |  |  |  |  |  |
| P1EWCC-AWP01-7690 |  | Land Access Granted for Survey Work (Schedule 2) | milestone | 0d | 2017-03-20 A | 2017-03-20 A |  | 100% |  | 2017-04-03 | 2017-04-03 |  |  | as late as possible |  |  | y | AW1 |
|  | 2 | **Possession** |  |  | 2019-08-01 | 2019-08-01 |  |  |  |  |  |  |  |  |  |  |  |  |
| P1EWCC-AWP01-7700 |  | Land Access Possession Granted for Construction (Schedule 16) | milestone | 0d | 2019-08-01 | 2019-08-01 |  |  |  |  |  | -68d | 0d | as late as possible |  |  | y | AW1 |
|  | 3 | **Survey Works** |  |  | 2017-03-20 | 2019-11-22 |  |  |  |  |  |  |  |  |  |  |  |  |
| P1EWCC-AWP01-7680 |  | Planning Consent & Licensing for Survey Work |  | 10d | 2017-03-20 A | 2017-03-20 A | P1EWCC-AWP01-1230 | 100% |  | 2017-03-20 | 2017-03-31 |  |  |  |  |  |  | AW1 |
| P1EWCC-FWP01-4410 |  | Undertake Remaining Soil Surveys |  | 120d | 2017-12-15 | 2018-06-01 | P1EWCC-PWP01-5610 |  |  |  |  | 489d |  |  |  |  | y | AWS |
| P1EWCC-FWP01-4430 |  | Undertake Remaining Ecology & Environmental Surveys |  | 400d | 2017-12-15 | 2019-06-28 | P1EWCC-PWP01-5610 |  |  |  |  | 209d |  |  |  |  | y | AWS |
|  | 1 | **Ecological & Environmental Surveys** |  |  | 2017-03-20 | 2017-09-29 |  |  |  |  |  |  |  |  |  |  |  |  |
| P1EWCC-PWP01-4650 |  | Survey for Badgers, Bats, GCN & Reptiles |  | 25d | 2017-03-20 A | 2017-09-29 | P1EWCC-AWP01-7690, P1EWCC-AWP01-7680 | 60% | 9.88d | 2017-04-03 | 2017-05-05 | -65.88d | 0d |  | 2017-09-29 |  |  | UW1 |
|  | 2 | **Engineering Surveys** |  |  |  |  |  |  |  |  |  |  |  |  |  |  |  |  |
|  | 3 | **Historic Environment** |  |  | 2018-02-09 | 2019-11-22 |  |  |  |  |  |  |  |  |  |  |  |  |
| P1EWCC-PWP06-7550 |  | Non-Intrusive Surveys (geophysics) |  | 20d | 2018-02-09 | 2018-03-09 | P1EWCC-AWP01-7690, P1EWCC-PWP06-7530, P1EWCC-PWP05-240 |  |  |  |  | 399d | 0d |  |  |  |  | AWH |
| P1EWCC-PWP06-10810 |  | Non-Intrusive Surveys (trial trenching) |  | 30d | 2018-05-04 | 2018-06-15 | P1EWCC-PWP06-7540, P1EWCC-PWP05-240 |  |  |  |  | 399d | 0d |  |  |  |  | AWH |
| P1EWCC-PWP06-7570 |  | Intrusive Surveys |  | 40d | 2019-09-30 | 2019-11-22 | P1EWCC-PWP02-10560, P1EWCC-PWP06-7540, P1EWCC-PWP06-10820, P1EWCC-AWP01-7700 |  |  |  |  | 103.88d | 0d |  |  |  |  | AWH |
|  | 7 | **Historic Environment** |  |  | 2017-12-15 | 2020-01-10 |  |  |  |  |  |  |  |  |  |  |  |  |
| P1EWCC-PWP06-7530 |  | Production and Approval of Project Plans & LS-WSI (non-intrusive surveys) |  | 40d | 2017-12-15 | 2018-02-09 | P1EWCC-PWP05-240 |  |  |  |  | 399d | 0d |  |  |  |  | AWH |
| P1EWCC-PWP06-7540 |  | Update of Project Plans and LS-WSI and Approval (intrusive surveys) |  | 40d | 2018-03-09 | 2018-05-04 | P1EWCC-PWP06-7550 |  |  |  |  | 399d | 0d |  |  |  |  | AWH |
| P1EWCC-PWP06-10820 |  | Update of Project Plans and LS-WSI and Approval (intrusive surveys) |  | 40d | 2018-06-15 | 2018-08-10 | P1EWCC-PWP06-10810 |  |  |  |  | 399d | 295.12d |  |  |  |  | AWH |
| P1EWCC-PWP06-7560 |  | Report of Findings And Approval (Archaeological Investigation) |  | 35d | 2019-11-25 | 2020-01-10 | P1EWCC-PWP06-7570 |  |  |  |  | 785d |  |  |  |  |  | AWH |
|  | 4 | **Ecological Mitigation Works** |  |  | 2019-08-01 | 2019-09-29 |  |  |  |  |  |  |  |  |  |  |  |  |
|  | 5 | **Translocation of Species** |  |  | 2019-08-01 | 2019-09-29 |  |  |  |  |  |  |  |  |  |  |  |  |
| P1EWCC-PWP02-10560 |  | Species Translocation to Habitat Creation (Fox Covert LS003) |  | 60d | 2019-08-01 | 2019-09-29 | P1EWCC-AWP01-7700, P1EWCC-PWP01-4650, P1EWCC-PWP02-5980 SS+60d, P1EWCC-PWP02-14610 |  |  |  |  | -94d | 0d | start on or after 2019-08-01 |  | HS2 - 8h x 7d Workweek (No Holidays) |  | AWE1 |

| ID | WBS | Activity | Type | Duration | Start | Finish | Predecessors | Complete | Planned start | Planned finish | Total float | Free float | Constraint | HS2 Filter | Fusion - WPS |
| --- | --- | --- | --- | --- | --- | --- | --- | --- | --- | --- | --- | --- | --- | --- | --- |
|  | 2 | **Water Resources** |  |  | 2017-10-13 | 2018-09-12 |  |  |  |  |  |  |  |  |  |
| P1EWCC-PWP04-1940 |  | Hydrological Modelling - Boddington Feeder Channel to Oxford Canal |  | 133d | 2017-10-13 | 2018-04-18 | P1EWCC-PWP02-12060 |  |  |  | 11.75d | 0d |  | y | AWE3 |
| P1EWCC-PWP04-1960 |  | Undertake preliminary floodplain storage design - Boddington Feeder Channel to Oxford Canal |  | 105d | 2018-04-18 | 2018-09-12 | P1EWCC-PWP02-12060, P1EWCC-PWP04-1940 |  |  |  | 11.75d |  |  | y | AWE3 |
|  | 6 | **SOW Completion Dates** |  |  | 2017-09-29 | 2019-09-30 |  |  |  |  |  |  |  |  |  |
| P1EWCC-PWP01-2200 |  | Completion of Survey for Bats (115+000) | milestone | 0d | 2017-09-29 | 2017-09-29 | P1EWCC-PWP01-4650 |  |  |  | -65.88d | 1380.12d | finish on 2017-06-30 |  | UW1 |
| P1EWCC-PWP01-2340 |  | Completion of Survey for Badgers (114+700 & 115+000) | milestone | 0d | 2017-09-29 | 2017-09-29 | P1EWCC-PWP01-4650 |  |  |  | -65.88d | 1380.12d | finish on 2017-06-30 |  | UW1 |
| P1EWCC-PWP04-1950 |  | Completion of Fluvial/hydrological modelling,initial site visits, inception report, topographical survey, and modelling. | milestone | 0d | 2018-09-28 | 2018-09-28 | P1EWCC-PWP04-1940 |  |  |  | 0d | 1120.38d | finish on 2018-09-28 | y | AWE3 |
| P1EWCC-PWP04-1970 |  | Completion of Undertake preliminary floodplain storage design | milestone | 0d | 2018-09-28 | 2018-09-28 | P1EWCC-PWP04-1960 |  |  |  | 0d | 1120.38d | finish on 2018-09-28 | y | AWE3 |
| P1EWCC-PWP02-10570 |  | Completion of Species Translocation/ exclusion - Reptiles | milestone | 0d | 2019-09-30 | 2019-09-30 | P1EWCC-PWP02-10560 |  |  |  | -66d | 860d | finish on 2019-06-28 |  | AWE1 |
| P1EWCC-PWP02-10580 |  | Completion of Species Translocation/ exclusion - Otter | milestone | 0d | 2019-09-30 | 2019-09-30 | P1EWCC-PWP02-10560 |  |  |  | -66d | 860d | finish on 2019-06-28 |  | AWE1 |
| P1EWCC-PWP02-10590 |  | Completion of Species Translocation/ exclusion - Badgers | milestone | 0d | 2019-09-30 | 2019-09-30 | P1EWCC-PWP02-10560 |  |  |  | -66d | 860d | finish on 2019-06-28 |  | AWE1 |
| P1EWCC-PWP02-10600 |  | Completion of Species Translocation/ exclusion - Bats | milestone | 0d | 2019-09-30 | 2019-09-30 | P1EWCC-PWP02-10560 |  |  |  | -66d | 860d | finish on 2019-06-28 |  | AWE1 |
| P1EWCC-PWP02-10610 |  | Completion of Species Translocation/ exclusion - GCN | milestone | 0d | 2019-09-30 | 2019-09-30 | P1EWCC-PWP02-10560 |  |  |  | -66d | 860d | finish on 2019-06-28 |  | AWE1 |
|  | 5 | **115-L1 - Boddington Cutting** |  |  | 2017-03-20 | 2020-03-31 |  |  |  |  |  |  |  |  |  |
|  | 7 | **Land Access** |  |  | 2017-03-20 | 2018-07-26 |  |  |  |  |  |  |  |  |  |
|  | 1 | **Survey Work** |  |  | 2017-03-20 | 2017-03-20 |  |  |  |  |  |  |  |  |  |
| P1EWCC-AWP01-4910 |  | Land Access Granted for Survey Work (Schedule 2) | milestone | 0d | 2017-03-20 A | 2017-03-20 A |  | 100% | 2017-03-27 | 2017-03-27 |  |  | as late as possible | y | UW1 |
|  | 2 | **Possession** |  |  | 2017-11-27 | 2018-07-26 |  |  |  |  |  |  |  |  |  |
|  | 1 | **Ecological Mitigation Area** |  |  | 2017-11-27 | 2017-12-06 |  |  |  |  |  |  |  |  |  |
| P1EWCC-AWP01-4920 |  | Land Access Possession Granted for Ecolgical Mitigation Site (Schedule 16) LS003 | milestone | 0d | 2017-11-27 | 2017-11-27 |  |  |  |  | 190d | 0d | start on or after 2017-11-27 | y | UW1 |
| P1EWCC-AWP01-8380 |  | Land Access Possession Granted for Ecolgical Mitigation Site (Schedule 16) LS015.1 | milestone | 0d | 2017-12-06 | 2017-12-06 |  |  |  |  | 1225d | 22.88d | start on or after 2017-12-06 | y | UW1 |
|  | 2 | **115-L1 - Boddington Cutting** |  |  | 2018-07-26 | 2018-07-26 |  |  |  |  |  |  |  |  |  |
| P1EWCC-AWP01-4930 |  | Land Access Possession Granted for Construction of 115-L1 - Boddington Cutting (Schedule 16) | milestone | 0d | 2018-07-26 | 2018-07-26 |  |  |  |  | 68d | 0d | as late as possible | y | AW1 |
|  | 10 | **Survey Works** |  |  | 2017-03-20 | 2019-06-28 |  |  |  |  |  |  |  |  |  |
| P1EWCC-AWP01-4900 |  | Planning Consent & Licensing for Survey Work |  | 5d | 2017-03-20 A | 2017-03-20 A | P1EWCC-AWP01-1230 | 100% | 2017-03-20 | 2017-03-24 |  |  |  |  | UW1 |
| P1EWCC-FWP01-4260 |  | Undertake Remaining Soil Surveys |  | 120d | 2017-12-15 | 2018-06-01 | P1EWCC-PWP01-5610 |  |  |  | 342d |  |  | y | AWS |
| P1EWCC-FWP01-4270 |  | Undertake Arboricultural Surveys |  | 125d | 2017-12-15 | 2018-06-08 | P1EWCC-PWP01-5610 |  |  |  | 337d |  |  | y | AWS |
| P1EWCC-FWP01-4280 |  | Undertake Remaining Ecology & Environmental Surveys |  | 400d | 2017-12-15 | 2019-06-28 | P1EWCC-PWP01-5610 |  |  |  | 62d |  |  | y | AWS |

| ID | WBS | Activity | Duration | Start | Finish | Predecessors | Complete | Remaining | Planned start | Planned finish | Total float | Free float | Constraint | Expected finish | Fusion - WPS |
| --- | --- | --- | --- | --- | --- | --- | --- | --- | --- | --- | --- | --- | --- | --- | --- |
|  | 1 | **Ecological & Environmental Surveys** |  | 2017-03-20 | 2017-09-29 |  |  |  |  |  |  |  |  |  |  |
| P1EWCC-PWP01-3250 |  | Survey for Badgers, Bats, GCN & Reptiles | 25d | 2017-03-20 A | 2017-09-29 | P1EWCC-AWP01-4910, P1EWCC-AWP01-4900 | 60% | 9.88d | 2017-03-27 | 2017-04-28 | -65.88d | 0d |  | 2017-09-29 | UW1 |
|  | 4 | **Arboricultural survey** |  |  |  |  |  |  |  |  |  |  |  |  |  |
|  | 2 | **Engineering Surveys** |  | 2017-04-12 | 2017-05-09 |  |  |  |  |  |  |  |  |  |  |
| P1EWCC-PWP03-3320 |  | Survey for Engineering (Topo, GPR, Utility, Soil) | 15d | 2017-04-12 A | 2017-05-09 A | P1EWCC-AWP01-4910, P1EWCC-AWP01-4900 | 100% |  | 2017-03-27 | 2017-04-14 |  |  |  |  | UW1 |
|  | 3 | **Historic Environment Surveys** |  | 2017-09-21 | 2018-11-16 |  |  |  |  |  |  |  |  |  |  |
|  | 1 | **Ecological Mitigation Sites Stoneton Lane 1073 LS003** |  | 2017-09-21 | 2017-12-22 |  |  |  |  |  |  |  |  |  |  |
| P1EWCC-PWP06-2780 |  | Geophysics (ecological mitigation site) | 1d | 2017-09-21 | 2017-09-21 | P1EWCC-AWP01-4910, P1EWCC-AWP01-4900, P1EWCC-PWP06-2770 |  |  |  |  | 210d | 0d | start on or after 2017-09-21 |  | UW1 |
| P1EWCC-PWP06-2800 |  | Intrusive Surveys (ecological mitigation site) | 5d | 2017-12-15 | 2017-12-22 | P1EWCC-PWP02-6000, P1EWCC-PWP06-2790, P1EWCC-PWP05-240 |  |  |  |  | 179.12d | 0d |  |  | AWH |
|  | 2 | **115-L1 - Boddington Cutting** |  | 2018-02-09 | 2018-11-16 |  |  |  |  |  |  |  |  |  |  |
| P1EWCC-PWP06-10830 |  | Non-Intrusive Surveys (geophysics) | 20d | 2018-02-09 | 2018-03-09 | P1EWCC-PWP06-10850, P1EWCC-PWP05-240 |  |  |  |  | 252d | 0d |  |  | AWH |
| P1EWCC-PWP06-10840 |  | Non-Intrusive Surveys (trial trenching) | 30d | 2018-05-04 | 2018-06-15 | P1EWCC-PWP06-10860, P1EWCC-PWP05-240 |  |  |  |  | 252d | 0d |  |  | AWH |
| P1EWCC-PWP06-2820 |  | Intrusive Surveys (115-L1 - Boddington Cutting) | 40d | 2018-09-24 | 2018-11-16 | P1EWCC-PWP02-6020, P1EWCC-PWP06-10870, P1EWCC-AWP01-4930 |  |  |  |  | 221.88d | 0d |  |  | AWH |
|  | 6 | **Historic Environment** |  | 2017-04-17 | 2019-01-04 |  |  |  |  |  |  |  |  |  |  |
|  | 1 | **Ecological Mitigation Sites Stoneton Lane 1073 LS003** |  | 2017-04-17 | 2018-02-09 |  |  |  |  |  |  |  |  |  |  |
| P1EWCC-PWP06-2770 |  | Production and Approval of LS-WSI Northants & Oxon (non-intrusive surveys) | 20d | 2017-04-17 A | 2017-06-27 A | P1EWCC-PWP03-3320 | 100% |  | 2017-05-08 | 2017-06-02 |  |  |  |  | UW1 |
| P1EWCC-PWP06-3390 |  | HS2 issue Project Plan | 1d | 2017-09-18 | 2017-09-18 |  |  |  |  |  | 243d | 33d |  |  | UW1 |
| P1EWCC-PWP06-2790 |  | Update of Project Plans and LS-WSI and Approval (intrusive surveys) | 30d | 2017-09-22 | 2017-11-02 | P1EWCC-PWP06-2780, P1EWCC-PWP06-3390 FF |  |  |  |  | 210d | 30.88d |  |  | UW1 |
| P1EWCC-PWP06-2810 |  | Report of Findings And Approval (ecological mitigation site) | 35d | 2017-12-22 | 2018-02-09 | P1EWCC-PWP06-2800 |  |  |  |  | 1285.12d |  |  |  | AWH |
|  | 2 | **115-L1 - Boddington Cutting** |  | 2017-12-15 | 2019-01-04 |  |  |  |  |  |  |  |  |  |  |
| P1EWCC-PWP06-10850 |  | Production and Approval of Project Plans & LS-WSI (non-intrusive surveys) | 40d | 2017-12-15 | 2018-02-09 | P1EWCC-PWP05-240 |  |  |  |  | 252d | 0d |  |  | AWH |
| P1EWCC-PWP06-10860 |  | Update of Project Plans and LS-WSI and Approval (intrusive surveys) | 40d | 2018-03-09 | 2018-05-04 | P1EWCC-PWP06-10830 |  |  |  |  | 252d | 0d |  |  | AWH |
| P1EWCC-PWP06-10870 |  | Update of Project Plans and LS-WSI and Approval (intrusive surveys) | 40d | 2018-06-15 | 2018-08-10 | P1EWCC-PWP06-10840 |  |  |  |  | 252d | 30.12d |  |  | AWH |
| P1EWCC-PWP06-2830 |  | Report of Findings And Approval (115-L1 - Boddington Cutting) | 35d | 2018-11-19 | 2019-01-04 | P1EWCC-PWP06-2820 |  |  |  |  | 1050d |  |  |  | AWH |

| ID | WBS | Activity | Duration | Start | Finish | Predecessors | Complete | Remaining | Planned start | Planned finish | Total float | Free float | Constraint | Expected finish | Calendar | Fusion - WPS | HS2 Filter |
| --- | --- | --- | --- | --- | --- | --- | --- | --- | --- | --- | --- | --- | --- | --- | --- | --- | --- |
|  | 11 | **Ecological Mitigation Works** |  | 2017-04-24 | 2019-01-30 |  |  |  |  |  |  |  |  |  |  |  |  |
|  | 1 | **Design** |  | 2017-04-24 | 2017-11-03 |  |  |  |  |  |  |  |  |  |  |  |  |
|  | 1 | **Fox Covert LS003** |  | 2017-04-24 | 2017-11-03 |  |  |  |  |  |  |  |  |  |  |  |  |
| P1EWCC-PWP02-5990 |  | Design of Habitat Creation (Fox Covert LS003) | 25d | 2017-04-24 A | 2017-10-06 | P1EWCC-PWP03-3320 FF | 40% | 14.88d | 2017-04-17 | 2017-05-19 | 214.12d | 0d |  | 2017-10-06 |  | UW1 |  |
| P1EWCC-AWP01-4890 |  | Planning Consent & Licensing for Habitat Creation (Fox Covert LS003) | 40d | 2017-06-19 A | 2017-11-03 | P1EWCC-PWP02-5990 SS | 13% | 34.88d | 2017-07-19 | 2017-09-12 | 214.12d | 0d |  | 2017-11-03 |  | UW1 |  |
|  | 2 | **Pond 030-AA-117002 LS015.1** |  | 2017-04-24 | 2017-11-03 |  |  |  |  |  |  |  |  |  |  |  |  |
| P1EWCC-PWP02-12550 |  | Design of Habitat Creation (Pond 030-AA-117002 LS015.1) | 25d | 2017-04-24 A | 2017-10-06 | P1EWCC-PWP03-3320 FF | 40% | 14.88d | 2017-04-17 | 2017-05-19 | 1247.12d | 0d |  | 2017-10-06 |  | UW1 |  |
| P1EWCC-AWP01-8390 |  | Planning Consent & Licensing for Habitat Creation (Pond 030-AA-117002 LS015.1) | 40d | 2017-06-19 A | 2017-11-03 | P1EWCC-PWP02-12550 SS | 13% | 34.88d | 2017-07-19 | 2017-09-12 | 1247.12d | 0d |  | 2017-11-03 |  | UW1 |  |
|  | 2 | **Species Removal from Habitat Area** |  | 2017-07-31 | 2017-12-01 |  |  |  |  |  |  |  |  |  |  |  |  |
| P1EWCC-PWP02-6010 |  | MS/RAMS for GCN/Reptile Clearance from Habitat Creation Site (Fox Covert LS003) | 15d | 2017-07-31 A | 2017-09-15 A |  | 100% |  | 2017-10-02 | 2017-10-20 |  |  |  |  |  | UW1 |  |
| P1EWCC-PWP02-6000 |  | Exclude GCN/Reptile from Habitat Creation (Fox Covert LS003) | 5d | 2017-11-27 | 2017-12-01 | P1EWCC-AWP01-4920, P1EWCC-PWP02-6010 |  |  |  |  | 265d | 14d |  |  | HS2 - 8h x 7d Workweek (No Holidays) | UW1 |  |
|  | 3 | **Habitat Creation** |  | 2018-01-05 | 2018-08-29 |  |  |  |  |  |  |  |  |  |  |  |  |
|  | 1 | **Fox Covert LS003** |  | 2018-01-05 | 2018-08-29 |  |  |  |  |  |  |  |  |  |  |  |  |
| P1EWCC-PWP02-5970 |  | Habitat Creation (Fox Covert LS003) | 60d | 2018-01-05 | 2018-03-30 | P1EWCC-AWP01-4890, P1EWCC-PWP02-6000, P1EWCC-PWP06-2800, P1EWCC-PWP02-9220, P1EWCC-PWP02-5990 |  |  |  |  | 169.12d | 38.12d |  |  |  | AWE1 |  |
| P1EWCC-PWP02-5980 |  | Habitat Creation Maturity Period (Fox Covert LS003) | 182d | 2018-03-01 | 2018-08-29 | P1EWCC-PWP02-5970 SS |  |  |  |  | 183d | 87d | start on or after 2018-03-01 |  | HS2 - 8h x 7d Workweek (No Holidays) | AWE1 |  |
|  | 2 | **Pond 030-AA-117002 LS015.1** |  | 2018-01-05 | 2018-07-28 |  |  |  |  |  |  |  |  |  |  |  |  |
| P1EWCC-PWP02-12560 |  | Habitat Creation (Pond 030-AA-117002 LS015.1) | 15d | 2018-01-05 | 2018-01-26 | P1EWCC-AWP01-8390, P1EWCC-AWP01-8380, P1EWCC-PWP02-9220, P1EWCC-PWP02-12550 |  |  |  |  | 1202.12d | 38.12d |  |  |  | AWE1 |  |
| P1EWCC-PWP02-12570 |  | Habitat Creation Maturity Period (Pond 030-AA-117002 LS015.1) | 150d | 2018-03-01 | 2018-07-28 | P1EWCC-PWP02-12560 SS |  |  |  |  | 1630d |  | start on or after 2018-03-01 |  | HS2 - 8h x 7d Workweek (No Holidays) | AWE1 |  |
|  | 5 | **Translocation of Species** |  | 2018-07-26 | 2018-09-23 |  |  |  |  |  |  |  |  |  |  |  |  |
| P1EWCC-PWP02-6020 |  | Species Translocation to Habitat Creation (Fox Covert LS003) | 60d | 2018-07-26 | 2018-09-23 | P1EWCC-PWP02-5980 SS+60d, P1EWCC-AWP01-4930, P1EWCC-PWP02-14610 |  |  |  |  | 96d | 0d |  |  | HS2 - 8h x 7d Workweek (No Holidays) | AWE1 |  |
|  | 15 | **Woodland Habitat Creation Site (not in AWE2)** |  | 2018-03-01 | 2019-01-30 |  |  |  |  |  |  |  |  |  |  |  |  |
|  | 1 | **Design** |  | 2018-03-01 | 2018-07-19 |  |  |  |  |  |  |  |  |  |  |  |  |
| P1EWCC-PWP02-14950 |  | Develop Scheme Design | 40d | 2018-03-01 | 2018-04-26 | P1EWCC-PWP02-11910 SS+5d |  |  |  |  | -109.75d | 0d |  |  |  | AWE2 | y |
| P1EWCC-PWP02-14980 |  | Develop Detailed Design | 50d | 2018-04-26 | 2018-07-05 | P1EWCC-PWP02-14950 |  |  |  |  | -109.75d | 0d |  |  |  | AWE2 | y |
| P1EWCC-PWP02-14970 |  | Schedule 17 Planning Consent Approval Period | 56d | 2018-04-27 | 2018-06-21 | P1EWCC-PWP02-14950 |  |  |  |  | 398.75d | 161d |  |  | HS2 - 8h x 7d Workweek (No Holidays) | AWE2 | y |
| P1EWCC-PWP02-14960 |  | HS2 approval period of vaildated design | 14d | 2018-07-06 | 2018-07-19 | P1EWCC-PWP02-14980 |  |  |  |  | 279.88d | 42d |  |  | HS2 - 8h x 7d Workweek (No Holidays) | AWE2 | y |

| ID | WBS | Activity | Type | Duration | Start | Finish | Predecessors | Complete | Total float | Free float | Constraint | HS2 Filter | Fusion - WPS |
| --- | --- | --- | --- | --- | --- | --- | --- | --- | --- | --- | --- | --- | --- |
|  | 2 | **Installation** |  |  | 2018-08-31 | 2019-01-30 |  |  |  |  |  |  |  |
| P1EWCC-PWP02-10630 |  | Call off of Create Habitat - Woodland Habitat Creation | milestone | 0d | 2018-08-31 | 2018-08-31 | P1EWCC-PWP02-11910, P1EWCC-PWP02-14960 |  | 169.75d | 0d | as late as possible | y | AWE2 |
| P1EWCC-PWP02-10640 |  | Call off period for Create Habitat - Woodland Habitat Creation |  | 64.88d | 2018-08-31 | 2018-11-29 | P1EWCC-PWP02-10630 |  | 169.75d | 0d | as late as possible | y | AWE2 |
| P1EWCC-PWP02-10620 |  | Lowland mixed deciduous woodland planting in Fox Covert (Glyn Davies Wood) (not in AWE2) |  | 43.25d | 2018-11-29 | 2019-01-30 | P1EWCC-PWP02-10640, P1EWCC-AWP01-4930, P1EWCC-PWP02-6020, P1EWCC-PWP02-14970, P1EWCC-PWP02-15070 |  | 169.75d |  | start on or after 2018-11-01 | y | AWE2 |
|  | 4 | **Translocation of Veteran Oak Tree** |  |  |  |  |  |  |  |  |  |  |  |
|  | 4 | **Water Resources** |  |  |  |  |  |  |  |  |  |  |  |
|  | 1 | **SOW Completion Dates** |  |  | 2017-09-29 | 2020-03-31 |  |  |  |  |  |  |  |
| P1EWCC-PWP01-2330 |  | Completion of Survey for GCN (115+300 & 116+250) | milestone | 0d | 2017-09-29 | 2017-09-29 | P1EWCC-PWP01-3250 |  | -65.88d | 1380.12d | finish on 2017-06-30 |  | UW1 |
| P1EWCC-PWP01-2400 |  | Completion of Survey for Bats (116+250) | milestone | 0d | 2017-09-29 | 2017-09-29 | P1EWCC-PWP01-3250 |  | -65.88d | 1380.12d | finish on 2017-06-30 |  | UW1 |
| P1EWCC-PWP02-6030 |  | Completion of Habitat Creation Site - LS015.1 (Pond 030-AA-117002) | milestone | 0d | 2018-09-28 | 2018-09-28 |  |  | 0d | 1121d | finish on 2018-09-28 |  | AWE1 |
| P1EWCC-PWP02-3310 |  | Completion of Species Translocation/ exclusion - Water Vole | milestone | 0d | 2018-12-31 | 2018-12-31 | P1EWCC-PWP02-6020 |  | 0d | 1055d | finish on 2018-12-31 |  | AWE1 |
| P1EWCC-PWP02-2500 |  | Completion of Habitat Creation Site - LS003 Fox Covert (Glyn Davis Wood) | milestone | 0d | 2019-12-31 | 2019-12-31 | P1EWCC-PWP02-5980 |  | 0d | 794d | finish on 2019-12-31 |  | AWE1 |
| P1EWCC-FWP06-1230 |  | Completion of Arboricultural Surveys | milestone | 0d | 2020-03-31 | 2020-03-31 | P1EWCC-PWP02-6020 |  | 0d | 729d | finish on 2020-03-31 |  | UW1 |
| P1EWCC-PWP02-10650 |  | Completion of Lowland mixed deciduous woodland planting in Fox Covert (Glyn Davies Wood) | milestone | 0d | 2020-03-31 | 2020-03-31 | P1EWCC-PWP02-10620 |  | 0d | 729d | finish on 2020-03-31 | y | AWE2 |
| P1EWCC-PWP02-1730 |  | Completion of Species Translocation/ exclusion - Otters | milestone | 0d | 2020-03-31 | 2020-03-31 | P1EWCC-PWP02-6020 |  | 0d | 729d | finish on 2020-03-31 |  | AWE1 |
| P1EWCC-PWP02-2510 |  | Completion of Species Translocation/ exclusion - GCN | milestone | 0d | 2020-03-31 | 2020-03-31 | P1EWCC-PWP02-6020 |  | 0d | 729d | finish on 2020-03-31 |  | AWE1 |
| P1EWCC-PWP02-2520 |  | Completion of Species Translocation/ exclusion - Reptiles | milestone | 0d | 2020-03-31 | 2020-03-31 | P1EWCC-PWP02-6020 |  | 0d | 729d | finish on 2020-03-31 |  | AWE1 |
| P1EWCC-PWP02-3300 |  | Completion of Species Translocation/ exclusion - Bats | milestone | 0d | 2020-03-31 | 2020-03-31 | P1EWCC-PWP02-6020 |  | 0d | 729d | finish on 2020-03-31 |  | AWE1 |
|  | C316 | **Oxford Canal to Ladbroke Grove (Ch. 117720 to Ch. 121800)** |  |  | 2017-03-20 | 2020-03-31 |  |  |  |  |  |  |  |
|  | 4 | **117-L1 - Oxford Canal South Embankment** |  |  | 2017-03-20 | 2019-06-28 |  |  |  |  |  |  |  |
|  | 8 | **Land Access** |  |  | 2017-04-03 | 2018-07-26 |  |  |  |  |  |  |  |
|  | 1 | **Survey Work** |  |  | 2017-04-03 | 2017-04-03 |  |  |  |  |  |  |  |
| P1EWCC-AWP01-7720 |  | Land Access Granted for Survey Work (Schedule 2) | milestone | 0d | 2017-04-03 A | 2017-04-03 A |  | 100% |  |  | as late as possible | y | AW1 |
|  | 2 | **Possession** |  |  | 2018-07-26 | 2018-07-26 |  |  |  |  |  |  |  |
| P1EWCC-AWP01-7730 |  | Land Access Possession Granted for Construction (Schedule 16) | milestone | 0d | 2018-07-26 | 2018-07-26 |  |  | 155.75d | 0d | as late as possible | y | AW1 |

| ID | WBS | Activity | Duration | Start | Finish | Predecessors | Complete | Remaining | Planned start | Planned finish | Total float | Free float | Expected finish | Calendar | Fusion - WPS | HS2 Filter |
| --- | --- | --- | --- | --- | --- | --- | --- | --- | --- | --- | --- | --- | --- | --- | --- | --- |
|  | 3 | **Survey Works** |  | 2017-03-20 | 2019-06-28 |  |  |  |  |  |  |  |  |  |  |  |
| P1EWCC-AWP01-7710 |  | Planning Consent & Licensing for Survey Work | 10d | 2017-03-20 A | 2017-03-31 A | P1EWCC-AWP01-1230 | 100% |  |  |  |  |  |  |  | AW1 |  |
| P1EWCC-FWP01-4300 |  | Undertake Arboricultural Surveys | 125d | 2017-12-15 | 2018-06-08 | P1EWCC-PWP01-5610 |  |  |  |  | 275.12d |  |  |  | AWS | y |
| P1EWCC-FWP01-4310 |  | Undertake Remaining Ecology & Environmental Surveys | 400d | 2017-12-15 | 2019-06-28 | P1EWCC-PWP01-5610 |  |  |  |  | 209d |  |  |  | AWS | y |
|  | 1 | **Ecological & Environmental Surveys** |  | 2017-04-03 | 2017-09-29 |  |  |  |  |  |  |  |  |  |  |  |
| P1EWCC-PWP01-4680 |  | Survey for Badgers, Bats, GCN & Reptiles | 25d | 2017-04-03 A | 2017-09-29 | P1EWCC-AWP01-7710, P1EWCC-AWP01-7720 | 60% | 9.88d | 2017-04-03 | 2017-05-05 | 368.88d | 0d | 2017-09-29 |  | UW1 |  |
|  | 4 | **Arboricultural survey** |  |  |  |  |  |  |  |  |  |  |  |  |  |  |
|  | 2 | **Engineering Surveys** |  |  |  |  |  |  |  |  |  |  |  |  |  |  |
|  | 3 | **Historic Environment** |  | 2018-02-09 | 2018-11-16 |  |  |  |  |  |  |  |  |  |  |  |
| P1EWCC-PWP06-7610 |  | Non-Intrusive Surveys (geophysics) | 20d | 2018-02-09 | 2018-03-09 | P1EWCC-PWP06-7590, P1EWCC-AWP01-7720, P1EWCC-PWP05-240 |  |  |  |  | 399d | 0d |  |  | AWH |  |
| P1EWCC-PWP06-10880 |  | Non-Intrusive Surveys (trial trenching)) | 30d | 2018-05-04 | 2018-06-15 | P1EWCC-PWP06-7600, P1EWCC-PWP05-240 |  |  |  |  | 399d | 0d |  |  | AWH |  |
| P1EWCC-PWP06-7630 |  | Intrusive Surveys | 40d | 2018-09-24 | 2018-11-16 | P1EWCC-PWP02-10660, P1EWCC-PWP06-7600, P1EWCC-PWP06-10890, P1EWCC-AWP01-7730 |  |  |  |  | 368.88d | 0d |  |  | AWH |  |
|  | 7 | **Historic Environment** |  | 2017-12-15 | 2019-01-04 |  |  |  |  |  |  |  |  |  |  |  |
| P1EWCC-PWP06-7590 |  | Production and Approval of Project Plans & LS-WSI (non-intrusive surveys) | 40d | 2017-12-15 | 2018-02-09 | P1EWCC-PWP05-240 |  |  |  |  | 399d | 0d |  |  | AWH |  |
| P1EWCC-PWP06-7600 |  | Update of Project Plans and LS-WSI and Approval (intrusive surveys) | 40d | 2018-03-09 | 2018-05-04 | P1EWCC-PWP06-7610 |  |  |  |  | 399d | 0d |  |  | AWH |  |
| P1EWCC-PWP06-10890 |  | Update of Project Plans and LS-WSI and Approval (intrusive surveys) | 40d | 2018-06-15 | 2018-08-10 | P1EWCC-PWP06-10880 |  |  |  |  | 399d | 30.12d |  |  | AWH |  |
| P1EWCC-PWP06-7620 |  | Report of Findings And Approval (Archaeological Investigation) | 35d | 2018-11-19 | 2019-01-04 | P1EWCC-PWP06-7630 |  |  |  |  | 1050d |  |  |  | AWH |  |
|  | 4 | **Ecological Mitigation Works** |  | 2018-03-01 | 2019-01-30 |  |  |  |  |  |  |  |  |  |  |  |
|  | 5 | **Translocation of Species** |  | 2018-07-26 | 2018-09-23 |  |  |  |  |  |  |  |  |  |  |  |
| P1EWCC-PWP02-10660 |  | Species Translocation to Habitat Creation (Fox Covert LS003) | 60d | 2018-07-26 | 2018-09-23 | P1EWCC-AWP01-7730, P1EWCC-PWP01-4680, P1EWCC-PWP02-5980 SS+60d, P1EWCC-PWP02-14610 |  |  |  |  | 217.88d | 0d |  | HS2 - 8h x 7d Workweek (No Holidays) | AWE1 |  |
|  | 15 | **Landscape Planting (not in AWE2)** |  | 2018-03-01 | 2019-01-30 |  |  |  |  |  |  |  |  |  |  |  |
|  | 1 | **Design** |  | 2018-03-01 | 2018-07-19 |  |  |  |  |  |  |  |  |  |  |  |
| P1EWCC-PWP02-14990 |  | Develop Scheme Design | 40d | 2018-03-01 | 2018-04-26 | P1EWCC-PWP02-11910 SS+5d |  |  |  |  | -109.75d | 0d |  |  | AWE2 | y |
| P1EWCC-PWP02-15020 |  | Develop Detailed Design | 50d | 2018-04-26 | 2018-07-05 | P1EWCC-PWP02-14990 |  |  |  |  | -109.75d | 0d |  |  | AWE2 | y |
| P1EWCC-PWP02-15010 |  | Schedule 17 Planning Consent Approval Period | 56d | 2018-04-27 | 2018-06-21 | P1EWCC-PWP02-14990 |  |  |  |  | 311.88d | 161d |  | HS2 - 8h x 7d Workweek (No Holidays) | AWE2 | y |
| P1EWCC-PWP02-15000 |  | HS2 approval period of vaildated design | 14d | 2018-07-06 | 2018-07-19 | P1EWCC-PWP02-15020 |  |  |  |  | 193d | 42d |  | HS2 - 8h x 7d Workweek (No Holidays) | AWE2 | y |

| ID | WBS | Activity | Type | Duration | Start | Finish | Predecessors | Complete | Planned start | Planned finish | Total float | Free float | Constraint | HS2 Filter | Fusion - WPS |
| --- | --- | --- | --- | --- | --- | --- | --- | --- | --- | --- | --- | --- | --- | --- | --- |
|  | 2 | **Installation** |  |  | 2018-08-31 | 2019-01-30 |  |  |  |  |  |  |  |  |  |
| P1EWCC-FWP07-10740 |  | Call off of Landscape Planting | milestone | 0d | 2018-08-31 | 2018-08-31 | P1EWCC-PWP02-11910, P1EWCC-PWP02-15000 |  |  |  | 106.88d | 0d | as late as possible | y | AWE2 |
| P1EWCC-FWP07-10750 |  | Call off period for Landscape Planting |  | 64.88d | 2018-08-31 | 2018-11-29 | P1EWCC-FWP07-10740 |  |  |  | 106.88d | 0d | as late as possible | y | AWE2 |
| P1EWCC-FWP07-10730 |  | Landscape Planting for Oxford Canal South Embankment (not in AWE2) |  | 43.25d | 2018-11-29 | 2019-01-30 | P1EWCC-FWP07-10750, P1EWCC-AWP01-7730, P1EWCC-PWP02-10660, P1EWCC-PWP02-15010, P1EWCC-PWP02-15070 |  |  |  | 106.88d |  | start on or after 2018-11-01 | y | AWE2 |
|  | 6 | **SOW Completion Dates** |  |  | 2019-06-28 | 2019-06-28 |  |  |  |  |  |  |  |  |  |
| P1EWCC-FWP07-10760 |  | Completion of Landscape Planting for Oxford Canal South Embankment | milestone | 0d | 2019-06-28 | 2019-06-28 | P1EWCC-FWP07-10730 |  |  |  | 0d | 926d | finish on 2019-06-28 | y | AWE2 |
| P1EWCC-PWP02-10670 |  | Completion of Species Translocation/ exclusion - Reptiles | milestone | 0d | 2019-06-28 | 2019-06-28 | P1EWCC-PWP02-10660 |  |  |  | 0d | 926d | finish on 2019-06-28 |  | AWE1 |
| P1EWCC-PWP02-10680 |  | Completion of Species Translocation/ exclusion - Otter | milestone | 0d | 2019-06-28 | 2019-06-28 | P1EWCC-PWP02-10660 |  |  |  | 0d | 926d | finish on 2019-06-28 |  | AWE1 |
| P1EWCC-PWP02-10690 |  | Completion of Species Translocation/ exclusion - Badgers | milestone | 0d | 2019-06-28 | 2019-06-28 | P1EWCC-PWP02-10660 |  |  |  | 0d | 926d | finish on 2019-06-28 |  | AWE1 |
| P1EWCC-PWP02-10700 |  | Completion of Species Translocation/ exclusion - Bats | milestone | 0d | 2019-06-28 | 2019-06-28 | P1EWCC-PWP02-10660 |  |  |  | 0d | 926d | finish on 2019-06-28 |  | AWE1 |
| P1EWCC-PWP02-10710 |  | Completion of Species Translocation/ exclusion - GCN | milestone | 0d | 2019-06-28 | 2019-06-28 | P1EWCC-PWP02-10660 |  |  |  | 0d | 926d | finish on 2019-06-28 |  | AWE1 |
| P1EWCC-PWP02-10720 |  | Completion of Species Translocation/ exclusion - Water Voles | milestone | 0d | 2019-06-28 | 2019-06-28 | P1EWCC-PWP02-10660 |  |  |  | 0d | 926d | finish on 2019-06-28 |  | AWE1 |
| P1EWCC-FWP07-7220 |  | Completion of Arboricultural survey | milestone | 0d | 2019-06-28 | 2019-06-28 | P1EWCC-FWP01-4300 |  |  |  | 0d | 925d | finish on 2019-06-28 |  | AWS |
|  | 1 | **118-L3 - Oxford Canal Viaduct** |  |  | 2017-03-20 | 2020-01-10 |  |  |  |  |  |  |  |  |  |
|  | 8 | **Land Access** |  |  | 2018-02-09 | 2019-08-01 |  |  |  |  |  |  |  |  |  |
|  | 1 | **Survey Work** |  |  | 2018-02-09 | 2018-02-09 |  |  |  |  |  |  |  |  |  |
| P1EWCC-AWP01-7750 |  | Land Access Granted for Survey Work (Schedule 2) | milestone | 0d | 2018-02-09 | 2018-02-09 |  |  |  |  | 320d | 0d | as late as possible | y | AW1 |
|  | 2 | **Possession** |  |  | 2019-08-01 | 2019-08-01 |  |  |  |  |  |  |  |  |  |
| P1EWCC-AWP01-7760 |  | Land Access Possession Granted for Construction (Schedule 16) | milestone | 0d | 2019-08-01 | 2019-08-01 |  |  |  |  | -68d | 0d | as late as possible | y | AW1 |
|  | 3 | **Survey Works** |  |  | 2017-03-20 | 2019-11-22 |  |  |  |  |  |  |  |  |  |
| P1EWCC-AWP01-7740 |  | Planning Consent & Licensing for Survey Work |  | 10d | 2017-03-20 A | 2017-05-12 A | P1EWCC-AWP01-1230 | 100% | 2017-03-20 | 2017-03-31 |  |  |  |  | AW1 |
| P1EWCC-AWP01-7770 |  | Planning Consent & Licensing for Structural Survey Work |  | 64.88d | 2018-01-15 | 2018-04-13 | P1EWCC-AWP01-1230 |  |  |  | 275d | 0d | as late as possible |  | AW1 |
|  | 1 | **Ecological & Environmental Surveys** |  |  |  |  |  |  |  |  |  |  |  |  |  |
|  | 2 | **Engineering Surveys** |  |  | 2018-04-13 | 2018-05-04 |  |  |  |  |  |  |  |  |  |
|  | 5 | **Structural Surveys** |  |  | 2018-04-13 | 2018-05-04 |  |  |  |  |  |  |  |  |  |
| P1EWCC-FWP04-6530 |  | Structural Survey for Structural/ Condition Assessment of Oxford Canal. |  | 15d | 2018-04-13 | 2018-05-04 | P1EWCC-FWP07-6510, P1EWCC-AWP01-7770, P1EWCC-PWP01-5610, P1EWCC-AWP01-7750 |  |  |  | 275d | 0d |  |  | AWS |

| ID | WBS | Activity | Type | Duration | Start | Finish | Predecessors | Complete | Planned start | Planned finish | Total float | Free float | Constraint | Calendar | Fusion - WPS | HS2 Filter |
| --- | --- | --- | --- | --- | --- | --- | --- | --- | --- | --- | --- | --- | --- | --- | --- | --- |
|  | 3 | **Historic Environment** |  |  | 2018-02-09 | 2019-11-22 |  |  |  |  |  |  |  |  |  |  |
| P1EWCC-PWP06-7670 |  | Non-Intrusive Surveys (geophysics) |  | 20d | 2018-02-09 | 2018-03-09 | P1EWCC-PWP06-7650, P1EWCC-AWP01-7750, P1EWCC-PWP05-240 |  |  |  | 399d | 0d |  |  | AWH |  |
| P1EWCC-PWP06-10900 |  | Non-Intrusive Surveys (trial trenching) |  | 30d | 2018-05-04 | 2018-06-15 | P1EWCC-PWP06-7660, P1EWCC-PWP05-240 |  |  |  | 399d | 0d |  |  | AWH |  |
| P1EWCC-PWP06-7690 |  | Intrusive Surveys |  | 40d | 2019-09-30 | 2019-11-22 | P1EWCC-PWP06-7660, P1EWCC-PWP02-10730, P1EWCC-PWP06-10910, P1EWCC-AWP01-7760 |  |  |  | 103.88d | 0d |  |  | AWH |  |
|  | 7 | **Historic Environment** |  |  | 2017-12-15 | 2020-01-10 |  |  |  |  |  |  |  |  |  |  |
| P1EWCC-PWP06-7650 |  | Production and Approval of Project Plans & LS-WSI (non-intrusive surveys) |  | 40d | 2017-12-15 | 2018-02-09 | P1EWCC-PWP05-240 |  |  |  | 399d | 0d |  |  | AWH |  |
| P1EWCC-PWP06-7660 |  | Update of Project Plans and LS-WSI and Approval (intrusive surveys) |  | 40d | 2018-03-09 | 2018-05-04 | P1EWCC-PWP06-7670 |  |  |  | 399d | 0d |  |  | AWH |  |
| P1EWCC-PWP06-10910 |  | Update of Project Plans and LS-WSI and Approval (intrusive surveys) |  | 40d | 2018-06-15 | 2018-08-10 | P1EWCC-PWP06-10900 |  |  |  | 399d | 295.12d |  |  | AWH |  |
| P1EWCC-PWP06-7680 |  | Report of Findings And Approval (Archaeological Investigation) |  | 35d | 2019-11-25 | 2020-01-10 | P1EWCC-PWP06-7690 |  |  |  | 785d |  |  |  | AWH |  |
|  | 4 | **Ecological Mitigation Works** |  |  | 2019-08-01 | 2019-09-29 |  |  |  |  |  |  |  |  |  |  |
|  | 5 | **Translocation of Species** |  |  | 2019-08-01 | 2019-09-29 |  |  |  |  |  |  |  |  |  |  |
| P1EWCC-PWP02-10730 |  | Species Translocation to Habitat Creation (Fox Covert LS003) |  | 60d | 2019-08-01 | 2019-09-29 | P1EWCC-AWP01-7760, P1EWCC-PWP02-5980 SS+60d, P1EWCC-PWP02-14610 |  |  |  | -94d | 0d | start on or after 2019-08-01 | HS2 - 8h x 7d Workweek (No Holidays) | AWE1 |  |
|  | 10 | **Structural Work** |  |  | 2017-12-15 | 2018-06-08 |  |  |  |  |  |  |  |  |  |  |
| P1EWCC-FWP07-6510 |  | Prepare Investigation Plans for Structural/ Condition Assessment of Oxford Canal. |  | 85d | 2017-12-15 | 2018-04-13 | P1EWCC-PWP01-5610 |  |  |  | 280d | 0d | as late as possible |  | AWS |  |
| P1EWCC-FWP07-6520 |  | Report on Structural/ Condition Assessment of Oxford Canal. |  | 25d | 2018-05-04 | 2018-06-08 | P1EWCC-FWP04-6530, P1EWCC-PWP01-5610 |  |  |  | 275d |  |  |  | AWS |  |
|  | 6 | **SOW Completion Dates** |  |  | 2019-06-28 | 2019-09-30 |  |  |  |  |  |  |  |  |  |  |
| P1EWCC-FWP07-6540 |  | Report on Structural/ Condition Assessment of Oxford Canal. | milestone | 0d | 2019-06-28 | 2019-06-28 | P1EWCC-FWP07-6520 |  |  |  | 0d | 925.12d | finish on 2019-06-28 |  | AWS |  |
| P1EWCC-PWP02-10740 |  | Completion of Species Translocation/ exclusion - Reptiles | milestone | 0d | 2019-09-30 | 2019-09-30 | P1EWCC-PWP02-10730 |  |  |  | -66d | 860d | finish on 2019-06-28 |  | AWE1 |  |
| P1EWCC-PWP02-10750 |  | Completion of Species Translocation/ exclusion - Otter | milestone | 0d | 2019-09-30 | 2019-09-30 | P1EWCC-PWP02-10730 |  |  |  | -66d | 860d | finish on 2019-06-28 |  | AWE1 |  |
| P1EWCC-PWP02-10760 |  | Completion of Species Translocation/ exclusion - Badgers | milestone | 0d | 2019-09-30 | 2019-09-30 | P1EWCC-PWP02-10730 |  |  |  | -66d | 860d | finish on 2019-06-28 |  | AWE1 |  |
| P1EWCC-PWP02-10770 |  | Completion of Species Translocation/ exclusion - Bats | milestone | 0d | 2019-09-30 | 2019-09-30 | P1EWCC-PWP02-10730 |  |  |  | -66d | 860d | finish on 2019-06-28 |  | AWE1 |  |
| P1EWCC-PWP02-10780 |  | Completion of Species Translocation/ exclusion - GCN | milestone | 0d | 2019-09-30 | 2019-09-30 | P1EWCC-PWP02-10730 |  |  |  | -66d | 860d | finish on 2019-06-28 |  | AWE1 |  |
| P1EWCC-PWP02-10790 |  | Completion of Species Translocation/ exclusion - Water Voles | milestone | 0d | 2019-09-30 | 2019-09-30 | P1EWCC-PWP02-10730 |  |  |  | -66d | 860d | finish on 2019-06-28 |  | AWE1 |  |
|  | 2 | **118-L4 - Oxford Canal North Embankment** |  |  | 2017-03-20 | 2019-06-28 |  |  |  |  |  |  |  |  |  |  |
|  | 8 | **Land Access** |  |  | 2017-06-12 | 2018-07-24 |  |  |  |  |  |  |  |  |  |  |
|  | 1 | **Survey Work** |  |  | 2017-06-12 | 2017-06-12 |  |  |  |  |  |  |  |  |  |  |
| P1EWCC-AWP01-7790 |  | Land Access Granted for Survey Work (Schedule 2) | milestone | 0d | 2017-06-12 A | 2017-06-12 A |  | 100% | 2017-04-03 | 2017-04-03 |  |  | as late as possible |  | AW1 | y |

| ID | WBS | Activity | Type | Duration | Start | Finish | Predecessors | Complete | Remaining | Planned start | Planned finish | Total float | Free float | Constraint | Expected finish | Calendar | HS2 Filter | Fusion - WPS |
| --- | --- | --- | --- | --- | --- | --- | --- | --- | --- | --- | --- | --- | --- | --- | --- | --- | --- | --- |
|  | 2 | **Possession** |  |  | 2018-07-24 | 2018-07-24 |  |  |  |  |  |  |  |  |  |  |  |  |
| P1EWCC-AWP01-7800 |  | Land Access Possession Granted for Construction (Schedule 16) | milestone | 0d | 2018-07-24 | 2018-07-24 |  |  |  |  |  | 55.12d | 0d | as late as possible |  |  | y | AW1 |
|  | 3 | **Survey Works** |  |  | 2017-03-20 | 2019-06-28 |  |  |  |  |  |  |  |  |  |  |  |  |
| P1EWCC-AWP01-7780 |  | Planning Consent & Licensing for Survey Work |  | 10d | 2017-03-20 A | 2017-06-09 A | P1EWCC-AWP01-1230 | 100% |  | 2017-03-20 | 2017-03-31 |  |  |  |  |  |  | AW1 |
| P1EWCC-FWP01-4460 |  | Undertake Remaining Ecology & Environmental Surveys |  | 400d | 2017-12-15 | 2019-06-28 | P1EWCC-PWP01-5610 |  |  |  |  | 209d |  |  |  |  | y | AWS |
|  | 1 | **Ecological & Environmental Surveys** |  |  | 2017-06-12 | 2017-09-29 |  |  |  |  |  |  |  |  |  |  |  |  |
| P1EWCC-PWP01-4750 |  | Survey for Badgers, Bats, GCN & Reptiles |  | 25d | 2017-06-12 A | 2017-09-29 | P1EWCC-AWP01-7780, P1EWCC-AWP01-7790 | 60% | 9.88d | 2017-04-03 | 2017-05-05 | 413.12d | 0d |  | 2017-09-29 |  |  | UW1 |
|  | 2 | **Engineering Surveys** |  |  |  |  |  |  |  |  |  |  |  |  |  |  |  |  |
|  | 3 | **Historic Environment** |  |  | 2018-02-09 | 2018-11-16 |  |  |  |  |  |  |  |  |  |  |  |  |
| P1EWCC-PWP06-7730 |  | Non-Intrusive Surveys (geophysics) |  | 20d | 2018-02-09 | 2018-03-09 | P1EWCC-PWP06-7710, P1EWCC-AWP01-7790, P1EWCC-PWP05-240 |  |  |  |  | 399d | 0d |  |  |  |  | AWH |
| P1EWCC-PWP06-10920 |  | Non-Intrusive Surveys (trial trenching) |  | 30d | 2018-05-04 | 2018-06-15 | P1EWCC-PWP06-7720, P1EWCC-PWP05-240 |  |  |  |  | 399d | 0d |  |  |  |  | AWH |
| P1EWCC-PWP06-7750 |  | Intrusive Surveys |  | 40d | 2018-09-24 | 2018-11-16 | P1EWCC-PWP06-7720, P1EWCC-PWP02-10800, P1EWCC-PWP06-10930, P1EWCC-AWP01-7800 |  |  |  |  | 368.88d | 0d |  |  |  |  | AWH |
|  | 7 | **Historic Environment** |  |  | 2017-12-15 | 2019-01-11 |  |  |  |  |  |  |  |  |  |  |  |  |
| P1EWCC-PWP06-7710 |  | Production and Approval of Project Plans & LS-WSI (non-intrusive surveys) |  | 40d | 2017-12-15 | 2018-02-09 | P1EWCC-PWP05-240 |  |  |  |  | 399d | 0d |  |  |  |  | AWH |
| P1EWCC-PWP06-7720 |  | Update of Project Plans and LS-WSI and Approval (intrusive surveys) |  | 40d | 2018-03-09 | 2018-05-04 | P1EWCC-PWP06-7730 |  |  |  |  | 399d | 0d |  |  |  |  | AWH |
| P1EWCC-PWP06-10930 |  | Update of Project Plans and LS-WSI and Approval (intrusive surveys) |  | 40d | 2018-06-15 | 2018-08-10 | P1EWCC-PWP06-10920 |  |  |  |  | 399d | 30.12d |  |  |  |  | AWH |
| P1EWCC-PWP06-7740 |  | Report of Findings And Approval (Archaeological Investigation) |  | 40d | 2018-11-19 | 2019-01-11 | P1EWCC-PWP06-7750 |  |  |  |  | 1045d |  |  |  |  |  | AWH |
|  | 4 | **Ecological Mitigation Works** |  |  | 2018-07-29 | 2018-09-23 |  |  |  |  |  |  |  |  |  |  |  |  |
|  | 5 | **Translocation of Species** |  |  | 2018-07-29 | 2018-09-23 |  |  |  |  |  |  |  |  |  |  |  |  |
| P1EWCC-PWP02-10800 |  | Species Translocation to Habitat Creation (Radbourne Fish Ponds LS050) |  | 57d | 2018-07-29 | 2018-09-23 | P1EWCC-AWP01-7800, P1EWCC-PWP02-6070 SS+150d, P1EWCC-PWP01-4750, P1EWCC-PWP02-14610 |  |  |  |  | 277d | 0d |  |  | HS2 - 8h x 7d Workweek (No Holidays) |  | AWE1 |
|  | 9 | **Highway Works** |  |  | 2017-10-13 | 2019-01-11 |  |  |  |  |  |  |  |  |  |  |  |  |
| P1EWCC-PWP09-7090 |  | Highways Scheme Design & Approval - Wills Pasture Road realignment and Access to main site compound |  | 119d | 2017-10-13 | 2018-03-29 | P1EWCC-PWP01-6270 |  |  |  |  | 32.12d | 0d |  |  |  |  | DC3B |
| P1EWCC-PWP09-7240 |  | Highways Details Design & Approval - Wills Pasture Road realignment and Access to main site compound |  | 63d | 2018-04-26 | 2018-07-24 | P1EWCC-PWP01-8910, P1EWCC-PWP09-7090 |  |  |  |  | 55.12d | 0d |  |  |  |  | DC3G |
| P1EWCC-AWP01-7810 |  | Planning Consent & Licensing -Wills Pasture Road realignment and Access to main site compound |  | 50d | 2018-05-15 | 2018-07-24 | P1EWCC-PWP09-7240 FF, P1EWCC-PWP09-7090 |  |  |  |  | 55.12d | 0d |  |  |  |  | DC3G |
| P1EWCC-EWP06-7160 |  | Highways Construction - Wills Pasture Road realignment and Access to main site compound |  | 123d | 2018-07-24 | 2019-01-11 | P1EWCC-AWP01-7810, P1EWCC-AWP01-7800 |  |  |  |  | 55.12d |  |  |  |  |  | DC3G |

| ID | WBS | Activity | Type | Duration | Start | Finish | Predecessors | Complete | Planned start | Planned finish | Total float | Free float | Constraint | Fusion - WPS | HS2 Filter |
| --- | --- | --- | --- | --- | --- | --- | --- | --- | --- | --- | --- | --- | --- | --- | --- |
|  | 2 | **Water Resources** |  |  |  |  |  |  |  |  |  |  |  |  |  |
|  | 6 | **SOW Completion Dates** |  |  | 2019-03-29 | 2019-06-28 |  |  |  |  |  |  |  |  |  |
| P1EWCC-EWP07-7200 |  | Completion of Highways Construction - Wills Pasture Road realignment and Access to main site compound | milestone | 0d | 2019-03-29 | 2019-03-29 | P1EWCC-EWP06-7160 |  |  |  | 0d | 990d | finish on 2019-03-29 | DC3G |  |
| P1EWCC-PWP02-10810 |  | Completion of Species Translocation/ exclusion - Reptiles | milestone | 0d | 2019-06-28 | 2019-06-28 | P1EWCC-PWP02-10800 |  |  |  | 0d | 926d | finish on 2019-06-28 | AWE1 |  |
| P1EWCC-PWP02-10820 |  | Completion of Species Translocation/ exclusion - Bats | milestone | 0d | 2019-06-28 | 2019-06-28 | P1EWCC-PWP02-10800 |  |  |  | 0d | 926d | finish on 2019-06-28 | AWE1 |  |
| P1EWCC-PWP02-10830 |  | Completion of Species Translocation/ exclusion - Badgers | milestone | 0d | 2019-06-28 | 2019-06-28 | P1EWCC-PWP02-10800 |  |  |  | 0d | 926d | finish on 2019-06-28 | AWE1 |  |
| P1EWCC-PWP02-10840 |  | Completion of Species Translocation/ exclusion - GCN | milestone | 0d | 2019-06-28 | 2019-06-28 | P1EWCC-PWP02-10800 |  |  |  | 0d | 926d | finish on 2019-06-28 | AWE1 |  |
| P1EWCC-PWP02-10850 |  | Completion of Species Translocation/ exclusion - Otters | milestone | 0d | 2019-06-28 | 2019-06-28 | P1EWCC-PWP02-10800 |  |  |  | 0d | 926d | finish on 2019-06-28 | AWE1 |  |
| P1EWCC-PWP02-10860 |  | Completion of Species Translocation/ exclusion - Water Voles | milestone | 0d | 2019-06-28 | 2019-06-28 | P1EWCC-PWP02-10800 |  |  |  | 0d | 926d | finish on 2019-06-28 | AWE1 |  |
|  | 5 | **119-L1 - Lower Radbourne South Viaduct** |  |  | 2017-03-20 | 2020-01-09 |  |  |  |  |  |  |  |  |  |
|  | 8 | **Land Access** |  |  | 2017-06-01 | 2019-08-01 |  |  |  |  |  |  |  |  |  |
|  | 1 | **Survey Work** |  |  | 2017-06-01 | 2017-06-01 |  |  |  |  |  |  |  |  |  |
| P1EWCC-AWP01-7830 |  | Land Access Granted for Survey Work (Schedule 2) | milestone | 0d | 2017-06-01 A | 2017-06-01 A |  | 100% | 2018-01-08 | 2018-01-08 |  |  | as late as possible | AW1 | y |
|  | 2 | **Possession** |  |  | 2019-08-01 | 2019-08-01 |  |  |  |  |  |  |  |  |  |
| P1EWCC-AWP01-7840 |  | Land Access Possession Granted for Construction (Schedule 16) | milestone | 0d | 2019-08-01 | 2019-08-01 |  |  |  |  | -194d | 0d | as late as possible | AW1 | y |
|  | 3 | **Survey Works** |  |  | 2017-03-20 | 2019-11-21 |  |  |  |  |  |  |  |  |  |
| P1EWCC-AWP01-7820 |  | Planning Consent & Licensing for Survey Work |  | 10d | 2017-03-20 A | 2017-05-12 A | P1EWCC-AWP01-1230 | 100% | 2017-03-20 | 2017-03-31 |  |  |  | AW1 |  |
| P1EWCC-FWP01-4490 |  | Undertake Remaining Ecology & Environmental Surveys |  | 240d | 2017-12-15 | 2018-11-16 | P1EWCC-PWP01-5610 |  |  |  | 369d |  |  | AWS | y |
|  | 1 | **Ecological & Environmental Surveys** |  |  |  |  |  |  |  |  |  |  |  |  |  |
|  | 2 | **Engineering Surveys** |  |  |  |  |  |  |  |  |  |  |  |  |  |
|  | 3 | **Historic Environment** |  |  | 2018-02-09 | 2019-11-21 |  |  |  |  |  |  |  |  |  |
| P1EWCC-PWP06-7790 |  | Non-Intrusive Surveys (geophysics) |  | 20d | 2018-02-09 | 2018-03-09 | P1EWCC-AWP01-7830, P1EWCC-PWP06-7770, P1EWCC-PWP05-240 |  |  |  | 399d | 0d |  | AWH |  |
| P1EWCC-PWP06-10940 |  | Non-Intrusive Surveys (trial trenching) |  | 30d | 2018-05-04 | 2018-06-15 | P1EWCC-PWP06-7780, P1EWCC-PWP05-240 |  |  |  | 399d | 0d |  | AWH |  |
| P1EWCC-PWP06-7810 |  | Intrusive Surveys |  | 40d | 2019-09-26 | 2019-11-21 | P1EWCC-PWP06-7780, P1EWCC-PWP02-10870, P1EWCC-PWP06-10950, P1EWCC-AWP01-7840 |  |  |  | 105d | 0d |  | AWH |  |

| ID | WBS | Activity | Type | Duration | Start | Finish | Predecessors | Total float | Free float | Constraint | Calendar | Fusion - WPS | HS2 Filter |
| --- | --- | --- | --- | --- | --- | --- | --- | --- | --- | --- | --- | --- | --- |
|  | 7 | **Historic Environment** |  |  | 2017-12-15 | 2020-01-09 |  |  |  |  |  |  |  |
| P1EWCC-PWP06-7770 |  | Production and Approval of Project Plans & LS-WSI (non-intrusive surveys) |  | 40d | 2017-12-15 | 2018-02-09 | P1EWCC-PWP05-240 | 399d | 0d |  |  | AWH |  |
| P1EWCC-PWP06-7780 |  | Update of Project Plans and LS-WSI and Approval (intrusive surveys) |  | 40d | 2018-03-09 | 2018-05-04 | P1EWCC-PWP06-7790 | 399d | 0d |  |  | AWH |  |
| P1EWCC-PWP06-10950 |  | Update of Project Plans and LS-WSI and Approval (intrusive surveys) |  | 40d | 2018-06-15 | 2018-08-10 | P1EWCC-PWP06-10940 | 399d | 294d |  |  | AWH |  |
| P1EWCC-PWP06-7800 |  | Report of Findings And Approval (Archaeological Investigation) |  | 35d | 2019-11-21 | 2020-01-09 | P1EWCC-PWP06-7810 | 786.12d |  |  |  | AWH |  |
|  | 4 | **Ecological Mitigation Works** |  |  | 2019-08-01 | 2019-09-26 |  |  |  |  |  |  |  |
|  | 5 | **Translocation of Species** |  |  | 2019-08-01 | 2019-09-26 |  |  |  |  |  |  |  |
| P1EWCC-PWP02-10870 |  | Species Translocation to Habitat Creation (Radbourne Fish Ponds LS050) |  | 57d | 2019-08-01 | 2019-09-26 | P1EWCC-AWP01-7840, P1EWCC-PWP02-6070 SS+150d, P1EWCC-PWP02-14610 | -272d | 0d | start on or after 2019-08-01 | HS2 - 8h x 7d Workweek (No Holidays) | AWE1 |  |
|  | 2 | **Water Resources** |  |  | 2018-04-18 | 2018-06-06 |  |  |  |  |  |  |  |
| P1EWCC-PWP04-2020 |  | Undertake preliminary floodplain storage design - Lower Radbourne |  | 35d | 2018-04-18 | 2018-06-06 | P1EWCC-PWP04-1940, P1EWCC-PWP02-12060 | 81.75d |  |  |  | AWE3 | y |
|  | 6 | **SOW Completion Dates** |  |  | 2018-09-28 | 2019-09-26 |  |  |  |  |  |  |  |
| P1EWCC-PWP04-2030 |  | Undertake preliminary floodplain storage design | milestone | 0d | 2018-09-28 | 2018-09-28 | P1EWCC-PWP04-2020 | 0d | 1120.38d | finish on 2018-09-28 |  | AWE3 | y |
| P1EWCC-PWP02-10880 |  | Completion of Species Translocation/ exclusion - Reptiles | milestone | 0d | 2019-09-26 | 2019-09-26 | P1EWCC-PWP02-10870 | -64.88d | 861.12d | finish on 2019-06-28 |  | AWE1 |  |
| P1EWCC-PWP02-10890 |  | Completion of Species Translocation/ exclusion - Bats | milestone | 0d | 2019-09-26 | 2019-09-26 | P1EWCC-PWP02-10870 | -64.88d | 861.12d | finish on 2019-06-28 |  | AWE1 |  |
| P1EWCC-PWP02-10900 |  | Completion of Species Translocation/ exclusion - Badgers | milestone | 0d | 2019-09-26 | 2019-09-26 | P1EWCC-PWP02-10870 | -64.88d | 861.12d | finish on 2019-06-28 |  | AWE1 |  |
| P1EWCC-PWP02-10910 |  | Completion of Species Translocation/ exclusion - GCN | milestone | 0d | 2019-09-26 | 2019-09-26 | P1EWCC-PWP02-10870 | -64.88d | 861.12d | finish on 2019-06-28 |  | AWE1 |  |
| P1EWCC-PWP02-10920 |  | Completion of Species Translocation/ exclusion - Otters | milestone | 0d | 2019-09-26 | 2019-09-26 | P1EWCC-PWP02-10870 | -64.88d | 861.12d | finish on 2019-06-28 |  | AWE1 |  |
| P1EWCC-PWP02-10930 |  | Completion of Species Translocation/ exclusion - Water Voles | milestone | 0d | 2019-09-26 | 2019-09-26 | P1EWCC-PWP02-10870 | -64.88d | 861.12d | finish on 2019-06-28 |  | AWE1 |  |
| P1EWCC-PWP02-10940 |  | Completion of Species Translocation/ exclusion - WCC | milestone | 0d | 2019-09-26 | 2019-09-26 | P1EWCC-PWP02-10870 | -193.88d | 861.12d | finish on 2018-12-31 |  | AWE1 |  |
|  | 11 | **119-S1 - Wills Pastures Road Underpass** |  |  | 2017-03-20 | 2018-11-23 |  |  |  |  |  |  |  |
|  | 8 | **Land Access** |  |  | 2017-10-13 | 2018-08-10 |  |  |  |  |  |  |  |
|  | 1 | **Survey Work** |  |  | 2017-10-13 | 2017-10-13 |  |  |  |  |  |  |  |
| P1EWCC-AWP01-7860 |  | Land Access Granted for Survey Work (Schedule 2) | milestone | 0d | 2017-10-13 | 2017-10-13 |  | 38d | 0d | as late as possible |  | AW1 | y |
|  | 2 | **Possession** |  |  | 2018-08-10 | 2018-08-10 |  |  |  |  |  |  |  |
| P1EWCC-AWP01-7870 |  | Land Access Possession Granted for Construction (Schedule 16) | milestone | 0d | 2018-08-10 | 2018-08-10 |  | 19.12d | 0d | as late as possible |  | AW1 | y |

| ID | WBS | Activity | Type | Duration | Start | Finish | Predecessors | Complete | Planned start | Planned finish | Total float | Free float | Constraint | Fusion - WPS | HS2 Filter |
| --- | --- | --- | --- | --- | --- | --- | --- | --- | --- | --- | --- | --- | --- | --- | --- |
|  | 3 | **Survey Works** |  |  | 2017-03-20 | 2018-10-05 |  |  |  |  |  |  |  |  |  |
| P1EWCC-AWP01-7850 |  | Planning Consent & Licensing for Survey Work |  | 10d | 2017-03-20 A | 2017-05-12 A | P1EWCC-AWP01-1230 | 100% | 2017-03-20 | 2017-03-31 |  |  |  | AW1 |  |
|  | 1 | **Ecological & Environmental Surveys** |  |  |  |  |  |  |  |  |  |  |  |  |  |
|  | 2 | **Engineering Surveys** |  |  |  |  |  |  |  |  |  |  |  |  |  |
|  | 3 | **Historic Environment** |  |  | 2018-02-09 | 2018-10-05 |  |  |  |  |  |  |  |  |  |
| P1EWCC-PWP06-7850 |  | Non-Intrusive Surveys (geophysics) |  | 20d | 2018-02-09 | 2018-03-09 | P1EWCC-AWP01-7860, P1EWCC-PWP06-7830, P1EWCC-PWP05-240 |  |  |  | 399d | 0d |  | AWH |  |
| P1EWCC-PWP06-10960 |  | Non-Intrusive Surveys (trial trenching) |  | 30d | 2018-05-04 | 2018-06-15 | P1EWCC-PWP06-7840, P1EWCC-PWP05-240 |  |  |  | 399d | 0d |  | AWH |  |
| P1EWCC-PWP06-7870 |  | Intrusive Surveys |  | 40d | 2018-08-10 | 2018-10-05 | P1EWCC-PWP06-7840, P1EWCC-PWP06-10970, P1EWCC-AWP01-7870 |  |  |  | 399d | 0d |  | AWH |  |
|  | 7 | **Historic Environment** |  |  | 2017-12-15 | 2018-11-23 |  |  |  |  |  |  |  |  |  |
| P1EWCC-PWP06-7830 |  | Production and Approval of Project Plans & LS-WSI (non-intrusive surveys) |  | 40d | 2017-12-15 | 2018-02-09 | P1EWCC-PWP05-240 |  |  |  | 399d | 0d |  | AWH |  |
| P1EWCC-PWP06-7840 |  | Update of Project Plans and LS-WSI and Approval (intrusive surveys) |  | 40d | 2018-03-09 | 2018-05-04 | P1EWCC-PWP06-7850 |  |  |  | 399d | 0d |  | AWH |  |
| P1EWCC-PWP06-10970 |  | Update of Project Plans and LS-WSI and Approval (intrusive surveys) |  | 40d | 2018-06-15 | 2018-08-10 | P1EWCC-PWP06-10960 |  |  |  | 399d | 0d |  | AWH |  |
| P1EWCC-PWP06-7860 |  | Report of Findings And Approval (Archaeological Investigation) |  | 35d | 2018-10-05 | 2018-11-23 | P1EWCC-PWP06-7870 |  |  |  | 1080.12d |  |  | AWH |  |
|  | 1 | **Site Clearance Works** |  |  | 2017-10-13 | 2018-09-21 |  |  |  |  |  |  |  |  |  |
| P1EWCC-PWP10-1160 |  | Scheme Design and Approval of Site Clearance of Main Compound Site - Wills Pastures Road / Oxford Canal North Compound |  | 108.12d | 2017-10-13 | 2018-03-14 | P1EWCC-PWP01-6270, P1EWCC-AWP01-7860 |  |  |  | 38d | 5.88d |  | DC3B | y |
| P1EWCC-PWP10-1250 |  | Design and Approval of Site Clearance of Main Compound Site - Wills Pastures Road / Oxford Canal North Compound |  | 63d | 2018-06-06 | 2018-08-31 | P1EWCC-PWP01-8910, P1EWCC-PWP10-1160 |  |  |  | 4d | 0d | as late as possible | DC3G | y |
| P1EWCC-AWP01-7880 |  | Planning Consent & Licensing for Site Clearance of Main Compound Site |  | 50d | 2018-06-25 | 2018-08-31 | P1EWCC-PWP10-1250 FF, P1EWCC-PWP10-1160 |  |  |  | 4d | 0d | as late as possible | DC3G |  |
| P1EWCC-EWP07-7170 |  | Site Clearance at Site Clearance of Main Compound Site - Wills Pastures Road / Oxford Canal North Compound |  | 15d | 2018-09-03 | 2018-09-21 | P1EWCC-AWP01-7880, P1EWCC-AWP01-7870 |  |  |  | 4d |  | start on or after 2018-09-03 | DC3G | y |
|  | 6 | **SOW Completion Dates** |  |  | 2018-09-28 | 2018-09-28 |  |  |  |  |  |  |  |  |  |
| P1EWCC-EWP07-7180 |  | Completion of Site Clearance of Main Compound Site - Wills Pastures Road / Oxford Canal North Compound | milestone | 0d | 2018-09-28 | 2018-09-28 | P1EWCC-EWP07-7170 |  |  |  | 0d | 1121d | finish on 2018-09-28 | DC3G | y |
|  | 3 | **120-L1 - Upper Radbourne Embankment** |  |  | 2017-03-20 | 2020-03-31 |  |  |  |  |  |  |  |  |  |
|  | 7 | **Land Access** |  |  | 2017-04-12 | 2018-07-30 |  |  |  |  |  |  |  |  |  |
|  | 1 | **Survey Work** |  |  | 2017-04-12 | 2017-04-12 |  |  |  |  |  |  |  |  |  |
| P1EWCC-AWP01-4960 |  | Land Access Granted for Survey Work (Schedule 2) | milestone | 0d | 2017-04-12 A | 2017-04-12 A |  | 100% | 2017-06-26 | 2017-06-26 |  |  |  | AW1 | y |

| ID | WBS | Activity | Type | Duration | Start | Finish | Predecessors | Complete | Remaining | Planned start | Planned finish | Total float | Free float | Constraint | Expected finish | HS2 Filter | Fusion - WPS |
| --- | --- | --- | --- | --- | --- | --- | --- | --- | --- | --- | --- | --- | --- | --- | --- | --- | --- |
|  | 2 | **Possession** |  |  | 2017-12-06 | 2018-07-30 |  |  |  |  |  |  |  |  |  |  |  |
|  | 1 | **Ecological Mitigation Area** |  |  | 2017-12-06 | 2017-12-06 |  |  |  |  |  |  |  |  |  |  |  |
| P1EWCC-AWP01-4970 |  | Land Access Possession Granted for Ecolgical Mitigation Site (Schedule 16) LS050 | milestone | 0d | 2017-12-06 | 2017-12-06 |  |  |  |  |  | 121d | 0d | start on or after 2017-12-06 |  | y | UW1 |
|  | 2 | **120-L1 - Upper Radbourne Embankment** |  |  | 2018-07-30 | 2018-07-30 |  |  |  |  |  |  |  |  |  |  |  |
| P1EWCC-AWP01-4980 |  | Land Access Possession Granted for Construction of 120-L1 - Upper Radbourne Embankment (Schedule 16) | milestone | 0d | 2018-07-30 | 2018-07-30 |  |  |  |  |  | 165d | 0d | as late as possible |  | y | AW1 |
|  | 10 | **Survey Works** |  |  | 2017-03-20 | 2019-08-28 |  |  |  |  |  |  |  |  |  |  |  |
| P1EWCC-AWP01-4950 |  | Planning Consent & Licensing for Survey Work |  | 0d | 2017-03-20 A | 2017-04-11 A | P1EWCC-AWP01-1230 | 100% |  | 2017-03-20 | 2017-03-20 |  |  |  |  |  | UW1 |
| P1EWCC-FWP01-4360 |  | Undertake Arboricultural Surveys |  | 125d | 2017-12-15 | 2018-06-08 | P1EWCC-PWP01-5610 |  |  |  |  | 275.12d |  |  |  | y | AWS |
| P1EWCC-FWP01-4370 |  | Undertake Remaining Ecology & Environmental Surveys |  | 240d | 2017-12-15 | 2018-11-16 | P1EWCC-PWP01-5610 |  |  |  |  | 369d |  |  |  | y | AWS |
|  | 1 | **Ecological & Environmental Surveys** |  |  | 2017-06-26 | 2017-06-30 |  |  |  |  |  |  |  |  |  |  |  |
| P1EWCC-PWP01-3260 |  | Survey for Badgers, Bats, GCN & Reptiles |  | 5d | 2017-06-26 A | 2017-06-30 A | P1EWCC-AWP01-4950, P1EWCC-AWP01-4960 | 100% |  |  |  |  |  |  |  |  | UW1 |
|  | 4 | **Arboricultural survey** |  |  |  |  |  |  |  |  |  |  |  |  |  |  |  |
|  | 2 | **Engineering Surveys** |  |  | 2017-04-12 | 2017-05-09 |  |  |  |  |  |  |  |  |  |  |  |
| P1EWCC-PWP03-3330 |  | Survey for Engineering (Topo, GPR, Utility, Soil) |  | 15d | 2017-04-12 A | 2017-05-09 A | P1EWCC-AWP01-4950, P1EWCC-AWP01-4960 | 100% |  | 2017-03-20 | 2017-04-07 |  |  |  |  |  | UW1 |
|  | 3 | **Historic Environment Surveys** |  |  | 2017-09-14 | 2019-08-28 |  |  |  |  |  |  |  |  |  |  |  |
|  | 1 | **Ecological Mitigation Works Lower Radbourne East 1078 (LS050)** |  |  | 2017-09-14 | 2017-12-22 |  |  |  |  |  |  |  |  |  |  |  |
| P1EWCC-PWP06-2850 |  | Geophysics (ecological mitigation site) |  | 6d | 2017-09-14 A | 2017-09-21 | P1EWCC-AWP01-4950, P1EWCC-PWP06-2840, P1EWCC-AWP01-4960 | 35% | 3.88d | 2017-08-02 | 2017-08-09 | 147.12d | 0d |  | 2017-09-21 |  | UW1 |
| P1EWCC-PWP06-2870 |  | Intrusive Surveys (ecological mitigation site) |  | 5d | 2017-12-15 | 2017-12-22 | P1EWCC-PWP06-2860, P1EWCC-PWP02-6090, P1EWCC-PWP05-240 |  |  |  |  | 116.12d | 0d |  |  |  | AWH |
|  | 2 | **Lower Radbourne Medieval Site** |  |  | 2018-03-16 | 2019-08-28 |  |  |  |  |  |  |  |  |  |  |  |
| P1EWCC-PWP06-8440 |  | Non - Intrusive Surveys & Trial Trenching (Lower Radbourne Medieval Settlement) |  | 30d | 2018-03-16 | 2018-04-27 | P1EWCC-PWP06-8450 |  |  |  |  | 209d | 0d |  |  |  | AWH |
| P1EWCC-PWP06-2890 |  | Intrusive Surveys (Lower Radbourne Medieval Settlement) |  | 240d | 2018-09-26 | 2019-08-28 | P1EWCC-PWP02-6110, P1EWCC-PWP06-8460, P1EWCC-AWP01-4980 |  |  |  |  | 166d | 0d |  |  |  | AWH |
|  | 6 | **Historic Environment** |  |  | 2017-04-17 | 2019-10-16 |  |  |  |  |  |  |  |  |  |  |  |
|  | 1 | **Ecological Mitigation Site Lower Radbourne East 1078 (LS050)** |  |  | 2017-04-17 | 2018-02-09 |  |  |  |  |  |  |  |  |  |  |  |
| P1EWCC-PWP06-2840 |  | Production and Approval of LS-WSI Warwickshire (non-intrusive surveys) Code 2 |  | 20d | 2017-04-17 A | 2017-06-27 A | P1EWCC-UWP01-1000 | 100% |  | 2017-04-03 | 2017-04-28 |  |  |  |  |  | UW1 |
| P1EWCC-PWP06-3400 |  | HS2 issue Project Plan |  | 1d | 2017-09-18 | 2017-09-18 |  |  |  |  |  | 180d | 32.88d |  |  |  | UW1 |
| P1EWCC-PWP06-2860 |  | Update of Project Plans and LS-WSI and Approval (intrusive surveys) |  | 30d | 2017-09-21 | 2017-11-02 | P1EWCC-PWP06-2850, P1EWCC-PWP06-3400 FF |  |  |  |  | 147.12d | 31d |  |  |  | UW1 |
| P1EWCC-PWP06-2880 |  | Report of Findings And Approval (ecological mitigation site) |  | 35d | 2017-12-22 | 2018-02-09 | P1EWCC-PWP06-2870 |  |  |  |  | 264d | 55d |  |  |  | AWH |

| ID | WBS | Activity | Type | Duration | Start | Finish | Predecessors | Complete | Remaining | Planned start | Planned finish | Total float | Free float | Constraint | Expected finish | Calendar | Fusion - WPS |
| --- | --- | --- | --- | --- | --- | --- | --- | --- | --- | --- | --- | --- | --- | --- | --- | --- | --- |
|  | 2 | **Lower Radbourne Medieval Site** |  |  | 2017-12-15 | 2019-10-16 |  |  |  |  |  |  |  |  |  |  |  |
| P1EWCC-PWP06-8450 |  | Production and Approval of LS-WSI (non-intrusive surveys) |  | 65d | 2017-12-15 | 2018-03-16 | P1EWCC-PWP06-2850, P1EWCC-PWP05-240 |  |  |  |  | 209d | 0d |  |  |  | AWH |
| P1EWCC-PWP06-8460 |  | Update of Project Plans and LS-WSI and Approval (intrusive surveys & trial trenching) |  | 65d | 2018-04-27 | 2018-07-27 | P1EWCC-PWP06-2880, P1EWCC-PWP06-8450, P1EWCC-PWP06-8440 |  |  |  |  | 209d | 43d |  |  |  | AWH |
| P1EWCC-PWP06-2900 |  | Report of Findings And Approval (Lower Radbourne Medieval Settlement) |  | 35d | 2019-08-28 | 2019-10-16 | P1EWCC-PWP06-2890 |  |  |  |  | 847.12d |  |  |  |  | AWH |
|  | 11 | **Ecological Mitigation Works** |  |  | 2017-04-25 | 2018-09-26 |  |  |  |  |  |  |  |  |  |  |  |
|  | 1 | **Design** |  |  | 2017-04-25 | 2017-10-31 |  |  |  |  |  |  |  |  |  |  |  |
| P1EWCC-PWP02-6080 |  | Design of Habitat Creation (Radbourne Fish Ponds LS050) |  | 25d | 2017-04-25 A | 2017-10-06 | P1EWCC-PWP03-3330 FF | 40% | 14.88d | 2017-04-10 | 2017-05-12 | 154.12d | 0d |  | 2017-10-06 |  | UW1 |
| P1EWCC-AWP01-4940 |  | Planning Consent & Licensing for Habitat Creation (Radbourne Fish Ponds LS050) |  | 65d | 2017-07-07 A | 2017-10-31 | P1EWCC-PWP02-6080 SS | 51% | 31.88d | 2017-07-07 | 2017-10-05 | 154.12d | 0d |  | 2017-10-31 |  | UW1 |
|  | 2 | **Species Removal from Habitat Area** |  |  | 2017-07-31 | 2017-12-10 |  |  |  |  |  |  |  |  |  |  |  |
| P1EWCC-PWP02-6100 |  | MS/RAMS for GCN/Reptile Clearance from Habitat Creation Site (Radbourne Fish Ponds LS050) |  | 15d | 2017-07-31 A | 2017-09-11 A |  | 100% |  | 2017-07-24 | 2017-08-11 |  |  |  |  |  | UW1 |
| P1EWCC-PWP02-6090 |  | Exclude GCN/Reptile from Habitat Creation (Radbourne Fish Ponds LS050) |  | 5d | 2017-12-06 | 2017-12-10 | P1EWCC-PWP03-3330, P1EWCC-AWP01-4970, P1EWCC-PWP02-6100 |  |  |  |  | 169d | 5d |  |  | HS2 - 8h x 7d Workweek (No Holidays) | UW1 |
|  | 3 | **Habitat Creation** |  |  | 2018-01-05 | 2018-08-29 |  |  |  |  |  |  |  |  |  |  |  |
| P1EWCC-PWP02-6060 |  | Habitat Creation (Radbourne Fish Ponds LS050) |  | 60d | 2018-01-05 | 2018-03-30 | P1EWCC-PWP06-2870, P1EWCC-AWP01-4940, P1EWCC-PWP02-6090, P1EWCC-PWP02-9220, P1EWCC-PWP02-6080 |  |  |  |  | 106.12d | 38.12d |  |  |  | AWE1 |
| P1EWCC-PWP02-6070 |  | Habitat Creation Maturity Period (Radbourne Fish Ponds LS050) |  | 182d | 2018-03-01 | 2018-08-29 | P1EWCC-PWP02-6060 SS |  |  |  |  | 96d | 0d | start on or after 2018-03-01 |  | HS2 - 8h x 7d Workweek (No Holidays) | AWE1 |
|  | 5 | **Translocation of Species** |  |  | 2018-07-29 | 2018-09-26 |  |  |  |  |  |  |  |  |  |  |  |
| P1EWCC-PWP02-6110 |  | Species Translocation to Habitat Creation (Radbourne Fish Ponds LS050) |  | 60d | 2018-07-29 | 2018-09-26 | P1EWCC-AWP01-4980, P1EWCC-PWP02-6070 SS+150d, P1EWCC-PWP02-14610 |  |  |  |  | 232d | 0d |  |  | HS2 - 8h x 7d Workweek (No Holidays) | AWE1 |
|  | 4 | **SOW Completion Dates** |  |  | 2019-06-28 | 2020-03-31 |  |  |  |  |  |  |  |  |  |  |  |
| P1EWCC-PWP02-1770 |  | Completion of Species Translocation/ exclusion - Otters | milestone | 0d | 2019-06-28 | 2019-06-28 | P1EWCC-PWP02-6110 |  |  |  |  | 0d | 926d | finish on 2019-06-28 |  |  | AWE1 |
| P1EWCC-PWP02-2610 |  | Completion of Species Translocation/ exclusion - GCN | milestone | 0d | 2019-06-28 | 2019-06-28 | P1EWCC-PWP02-6110 |  |  |  |  | 0d | 926d | finish on 2019-06-28 |  |  | AWE1 |
| P1EWCC-PWP02-2620 |  | Completion of Species Translocation/ exclusion - Reptiles | milestone | 0d | 2019-06-28 | 2019-06-28 | P1EWCC-PWP02-6110 |  |  |  |  | 0d | 926d | finish on 2019-06-28 |  |  | AWE1 |
| P1EWCC-PWP02-6120 |  | Completion of Species Translocation/ exclusion - Bats | milestone | 0d | 2019-06-28 | 2019-06-28 | P1EWCC-PWP02-6110 |  |  |  |  | 0d | 926d | finish on 2019-06-28 |  |  | AWE1 |
| P1EWCC-PWP02-6130 |  | Completion of Species Translocation/ exclusion - Badgers | milestone | 0d | 2019-06-28 | 2019-06-28 | P1EWCC-PWP02-6110 |  |  |  |  | 0d | 926d | finish on 2019-06-28 |  |  | AWE1 |
| P1EWCC-FWP07-1010 |  | Completion of Arboricultural survey | milestone | 0d | 2019-06-28 | 2019-06-28 | P1EWCC-FWP01-4360 |  |  |  |  | 0d | 925d | finish on 2019-06-28 |  |  | AWS |
| P1EWCC-FWP07-10780 |  | Completion of Habitat Creation (Radbourne Fish Ponds LS050) | milestone | 0d | 2020-03-31 | 2020-03-31 | P1EWCC-PWP02-6070 |  |  |  |  | 0d | 728d | finish on 2020-03-31 |  |  | AWE1 |

| ID | WBS | Activity | Type | Duration | Start | Finish | Predecessors | Complete | Remaining | Planned start | Planned finish | Total float | Free float | Constraint | Expected finish | Calendar | HS2 Filter | Fusion - WPS |
| --- | --- | --- | --- | --- | --- | --- | --- | --- | --- | --- | --- | --- | --- | --- | --- | --- | --- | --- |
|  | 6 | **120-L2 - Lower Radbourne North Viaduct** |  |  | 2017-03-20 | 2020-01-09 |  |  |  |  |  |  |  |  |  |  |  |  |
|  | 8 | **Land Access** |  |  | 2017-06-01 | 2019-08-01 |  |  |  |  |  |  |  |  |  |  |  |  |
|  | 1 | **Survey Work** |  |  | 2017-06-01 | 2017-06-01 |  |  |  |  |  |  |  |  |  |  |  |  |
| P1EWCC-AWP01-7900 |  | Land Access Granted for Survey Work (Schedule 2) | milestone | 0d | 2017-06-01 A | 2017-06-01 A |  | 100% |  | 2018-01-08 | 2018-01-08 |  |  | as late as possible |  |  | y | AW1 |
|  | 2 | **Possession** |  |  | 2019-08-01 | 2019-08-01 |  |  |  |  |  |  |  |  |  |  |  |  |
| P1EWCC-AWP01-7910 |  | Land Access Possession Granted for Construction (Schedule 16) | milestone | 0d | 2019-08-01 | 2019-08-01 |  |  |  |  |  | -194d | 0d | as late as possible |  |  | y | AW1 |
|  | 3 | **Survey Works** |  |  | 2017-03-20 | 2019-11-21 |  |  |  |  |  |  |  |  |  |  |  |  |
| P1EWCC-AWP01-7890 |  | Planning Consent & Licensing for Survey Work |  | 10d | 2017-03-20 A | 2017-05-12 A | P1EWCC-AWP01-1230 | 100% |  | 2017-03-20 | 2017-03-31 |  |  |  |  |  |  | AW1 |
| P1EWCC-FWP01-4520 |  | Undertake Remaining Ecology & Environmental Surveys |  | 240d | 2017-12-15 | 2018-11-16 | P1EWCC-PWP01-5610 |  |  |  |  | 369d |  |  |  |  | y | AWS |
|  | 1 | **Ecological & Environmental Surveys** |  |  |  |  |  |  |  |  |  |  |  |  |  |  |  |  |
|  | 2 | **Engineering Surveys** |  |  |  |  |  |  |  |  |  |  |  |  |  |  |  |  |
|  | 3 | **Historic Environment** |  |  | 2018-02-09 | 2019-11-21 |  |  |  |  |  |  |  |  |  |  |  |  |
| P1EWCC-PWP06-7910 |  | Non-Intrusive Surveys (geophysics) |  | 20d | 2018-02-09 | 2018-03-09 | P1EWCC-AWP01-7900, P1EWCC-PWP06-7890, P1EWCC-PWP05-240 |  |  |  |  | 399d | 0d |  |  |  |  | AWH |
| P1EWCC-PWP06-10980 |  | Non-Intrusive Surveys (trial trenching) |  | 30d | 2018-05-04 | 2018-06-15 | P1EWCC-PWP06-7900, P1EWCC-PWP05-240 |  |  |  |  | 399d | 0d |  |  |  |  | AWH |
| P1EWCC-PWP06-7930 |  | Intrusive Surveys |  | 40d | 2019-09-26 | 2019-11-21 | P1EWCC-PWP02-10950, P1EWCC-PWP06-7900, P1EWCC-PWP06-10990, P1EWCC-AWP01-7910 |  |  |  |  | 105d | 0d |  |  |  |  | AWH |
|  | 7 | **Historic Environment** |  |  | 2017-12-15 | 2020-01-09 |  |  |  |  |  |  |  |  |  |  |  |  |
| P1EWCC-PWP06-7890 |  | Production and Approval of Project Plans & LS-WSI (non-intrusive surveys) |  | 40d | 2017-12-15 | 2018-02-09 | P1EWCC-PWP05-240 |  |  |  |  | 399d | 0d |  |  |  |  | AWH |
| P1EWCC-PWP06-7900 |  | Update of Project Plans and LS-WSI and Approval (intrusive surveys) |  | 40d | 2018-03-09 | 2018-05-04 | P1EWCC-PWP06-7910 |  |  |  |  | 399d | 0d |  |  |  |  | AWH |
| P1EWCC-PWP06-10990 |  | Update of Project Plans and LS-WSI and Approval (intrusive surveys) |  | 40d | 2018-06-15 | 2018-08-10 | P1EWCC-PWP06-10980 |  |  |  |  | 399d | 294d |  |  |  |  | AWH |
| P1EWCC-PWP06-7920 |  | Report of Findings And Approval (Archaeological Investigation) |  | 35d | 2019-11-21 | 2020-01-09 | P1EWCC-PWP06-7930 |  |  |  |  | 786.12d |  |  |  |  |  | AWH |
|  | 4 | **Ecological Mitigation Works** |  |  | 2019-08-01 | 2019-09-26 |  |  |  |  |  |  |  |  |  |  |  |  |
|  | 5 | **Translocation of Species** |  |  | 2019-08-01 | 2019-09-26 |  |  |  |  |  |  |  |  |  |  |  |  |
| P1EWCC-PWP02-10950 |  | Species Translocation to Habitat Creation (Radbourne Fish Ponds LS050) |  | 57d | 2019-08-01 | 2019-09-26 | P1EWCC-AWP01-7910, P1EWCC-PWP02-6070 SS+150d, P1EWCC-PWP02-14610 |  |  |  |  | -272d | 0d | start on or after 2019-08-01 |  | HS2 - 8h x 7d Workweek (No Holidays) |  | AWE1 |
|  | 2 | **Water Resources** |  |  | 2017-06-01 | 2017-10-27 |  |  |  |  |  |  |  |  |  |  |  |  |
| P1EWCC-PWP04-2040 |  | Hydrological Modelling - Lower Radbourne |  | 194.62d | 2017-06-01 A | 2017-10-27 | P1EWCC-UWP01-1000, P1EWCC-AWP01-7900 | 85% | 29.5d | 2017-09-28 | 2018-06-27 | 240.12d | 0d |  | 2017-10-27 |  | y | UW1 |

| ID | WBS | Activity | Type | Duration | Start | Finish | Predecessors | Complete | Planned start | Planned finish | Total float | Free float | Constraint | HS2 Filter | Fusion - WPS |
| --- | --- | --- | --- | --- | --- | --- | --- | --- | --- | --- | --- | --- | --- | --- | --- |
|  | 6 | **SOW Completion Dates** |  |  | 2018-09-28 | 2019-09-26 |  |  |  |  |  |  |  |  |  |
| P1EWCC-PWP04-2050 |  | Completion of Fluvial/hydrological modelling,initial site visits, inception report, topographical survey, and modelling. | milestone | 0d | 2018-09-28 | 2018-09-28 | P1EWCC-PWP04-2040 |  |  |  | 0d | 1120.38d | finish on 2018-09-28 | y | UW1 |
| P1EWCC-PWP02-10960 |  | Completion of Species Translocation/ exclusion - Reptiles | milestone | 0d | 2019-09-26 | 2019-09-26 | P1EWCC-PWP02-10950 |  |  |  | -64.88d | 861.12d | finish on 2019-06-28 |  | AWE1 |
| P1EWCC-PWP02-10970 |  | Completion of Species Translocation/ exclusion - Bats | milestone | 0d | 2019-09-26 | 2019-09-26 | P1EWCC-PWP02-10950 |  |  |  | -64.88d | 861.12d | finish on 2019-06-28 |  | AWE1 |
| P1EWCC-PWP02-10980 |  | Completion of Species Translocation/ exclusion - Badgers | milestone | 0d | 2019-09-26 | 2019-09-26 | P1EWCC-PWP02-10950 |  |  |  | -64.88d | 861.12d | finish on 2019-06-28 |  | AWE1 |
| P1EWCC-PWP02-10990 |  | Completion of Species Translocation/ exclusion - GCN | milestone | 0d | 2019-09-26 | 2019-09-26 | P1EWCC-PWP02-10950 |  |  |  | -64.88d | 861.12d | finish on 2019-06-28 |  | AWE1 |
| P1EWCC-PWP02-11000 |  | Completion of Species Translocation/ exclusion - Otters | milestone | 0d | 2019-09-26 | 2019-09-26 | P1EWCC-PWP02-10950 |  |  |  | -64.88d | 861.12d | finish on 2019-06-28 |  | AWE1 |
| P1EWCC-PWP02-11010 |  | Completion of Species Translocation/ exclusion - Water Voles | milestone | 0d | 2019-09-26 | 2019-09-26 | P1EWCC-PWP02-10950 |  |  |  | -64.88d | 861.12d | finish on 2019-06-28 |  | AWE1 |
| P1EWCC-PWP02-11020 |  | Completion of Species Translocation/ exclusion - WCC | milestone | 0d | 2019-09-26 | 2019-09-26 | P1EWCC-PWP02-10950 |  |  |  | -193.88d | 861.12d | finish on 2018-12-31 |  | AWE1 |
|  | 7 | **120-L3 - Lower Radbourne Embankment** |  |  | 2017-03-20 | 2020-01-09 |  |  |  |  |  |  |  |  |  |
|  | 8 | **Land Access** |  |  | 2018-02-09 | 2019-08-01 |  |  |  |  |  |  |  |  |  |
|  | 1 | **Survey Work** |  |  | 2018-02-09 | 2018-02-09 |  |  |  |  |  |  |  |  |  |
| P1EWCC-AWP01-7930 |  | Land Access Granted for Survey Work (Schedule 2) | milestone | 0d | 2018-02-09 | 2018-02-09 |  |  |  |  | 399d | 0d | as late as possible | y | AW1 |
|  | 2 | **Possession** |  |  | 2019-08-01 | 2019-08-01 |  |  |  |  |  |  |  |  |  |
| P1EWCC-AWP01-7940 |  | Land Access Possession Granted for Construction (Schedule 16) | milestone | 0d | 2019-08-01 | 2019-08-01 |  |  |  |  | -194d | 0d | as late as possible | y | AW1 |
|  | 3 | **Survey Works** |  |  | 2017-03-20 | 2019-11-21 |  |  |  |  |  |  |  |  |  |
| P1EWCC-AWP01-7920 |  | Planning Consent & Licensing for Survey Work |  | 10d | 2017-03-20 A | 2017-05-12 A | P1EWCC-AWP01-1230 | 100% | 2017-03-20 | 2017-03-31 |  |  |  |  | AW1 |
| P1EWCC-FWP01-4550 |  | Undertake Remaining Ecology & Environmental Surveys |  | 295d | 2017-12-15 | 2019-02-01 | P1EWCC-PWP01-5610 |  |  |  | 314d |  |  | y | AWS |
|  | 1 | **Ecological & Environmental Surveys** |  |  |  |  |  |  |  |  |  |  |  |  |  |
|  | 2 | **Engineering Surveys** |  |  |  |  |  |  |  |  |  |  |  |  |  |
|  | 3 | **Historic Environment** |  |  | 2018-02-09 | 2019-11-21 |  |  |  |  |  |  |  |  |  |
| P1EWCC-PWP06-7970 |  | Non-Intrusive Surveys (geophysics) |  | 20d | 2018-02-09 | 2018-03-09 | P1EWCC-PWP06-7950, P1EWCC-AWP01-7930, P1EWCC-PWP05-240 |  |  |  | 399d | 0d |  |  | AWH |
| P1EWCC-PWP06-11000 |  | Non-Intrusive Surveys (trial trenching) |  | 30d | 2018-05-04 | 2018-06-15 | P1EWCC-PWP06-7960, P1EWCC-PWP05-240 |  |  |  | 399d | 0d |  |  | AWH |
| P1EWCC-PWP06-7990 |  | Intrusive Surveys |  | 40d | 2019-09-26 | 2019-11-21 | P1EWCC-PWP02-11030, P1EWCC-PWP06-7960, P1EWCC-PWP06-11010, P1EWCC-AWP01-7940 |  |  |  | 105d | 0d |  |  | AWH |

| ID | WBS | Activity | Type | Duration | Start | Finish | Predecessors | Complete | Planned start | Planned finish | Total float | Free float | Constraint | Calendar | Fusion - WPS | HS2 Filter |
| --- | --- | --- | --- | --- | --- | --- | --- | --- | --- | --- | --- | --- | --- | --- | --- | --- |
|  | 7 | **Historic Environment** |  |  | 2017-12-15 | 2020-01-09 |  |  |  |  |  |  |  |  |  |  |
| P1EWCC-PWP06-7950 |  | Production and Approval of Project Plan & LS-WSI (non-intrusive surveys) |  | 40d | 2017-12-15 | 2018-02-09 | P1EWCC-PWP05-240 |  |  |  | 399d | 0d |  |  | AWH |  |
| P1EWCC-PWP06-7960 |  | Update of Project Plans and LS-WSI and Approval (intrusive surveys) |  | 40d | 2018-03-09 | 2018-05-04 | P1EWCC-PWP06-7970 |  |  |  | 399d | 0d |  |  | AWH |  |
| P1EWCC-PWP06-11010 |  | Update of Project Plans and LS-WSI and Approval (intrusive surveys) |  | 40d | 2018-06-15 | 2018-08-10 | P1EWCC-PWP06-11000 |  |  |  | 399d | 294d |  |  | AWH |  |
| P1EWCC-PWP06-7980 |  | Report of Findings And Approval (Archaeological Investigation) |  | 35d | 2019-11-21 | 2020-01-09 | P1EWCC-PWP06-7990 |  |  |  | 786.12d |  |  |  | AWH |  |
|  | 4 | **Ecological Mitigation Works** |  |  | 2019-08-01 | 2019-09-26 |  |  |  |  |  |  |  |  |  |  |
|  | 5 | **Translocation of Species** |  |  | 2019-08-01 | 2019-09-26 |  |  |  |  |  |  |  |  |  |  |
| P1EWCC-PWP02-11030 |  | Species Translocation to Habitat Creation (Windmill Hill LS093/94) |  | 57d | 2019-08-01 | 2019-09-26 | P1EWCC-PWP02-6150 SS+150d, P1EWCC-AWP01-7940, P1EWCC-PWP02-14610 |  |  |  | -272d | 0d | start on or after 2019-08-01 | HS2 - 8h x 7d Workweek (No Holidays) | AWE1 |  |
|  | 6 | **SOW Completion Dates** |  |  | 2019-09-26 | 2019-09-26 |  |  |  |  |  |  |  |  |  |  |
| P1EWCC-PWP02-11040 |  | Completion of Species Translocation/ exclusion - Reptiles | milestone | 0d | 2019-09-26 | 2019-09-26 | P1EWCC-PWP02-11030 |  |  |  | -64.88d | 861.12d | finish on 2019-06-28 |  | AWE1 |  |
| P1EWCC-PWP02-11050 |  | Completion of Species Translocation/ exclusion - Bats | milestone | 0d | 2019-09-26 | 2019-09-26 | P1EWCC-PWP02-11030 |  |  |  | -64.88d | 861.12d | finish on 2019-06-28 |  | AWE1 |  |
| P1EWCC-PWP02-11060 |  | Completion of Species Translocation/ exclusion - Badgers | milestone | 0d | 2019-09-26 | 2019-09-26 | P1EWCC-PWP02-11030 |  |  |  | -64.88d | 861.12d | finish on 2019-06-28 |  | AWE1 |  |
| P1EWCC-PWP02-11070 |  | Completion of Species Translocation/ exclusion - GCN | milestone | 0d | 2019-09-26 | 2019-09-26 | P1EWCC-PWP02-11030 |  |  |  | -64.88d | 861.12d | finish on 2019-06-28 |  | AWE1 |  |
| P1EWCC-PWP02-11080 |  | Completion of Species Translocation/ exclusion - Otters | milestone | 0d | 2019-09-26 | 2019-09-26 | P1EWCC-PWP02-11030 |  |  |  | -64.88d | 861.12d | finish on 2019-06-28 |  | AWE1 |  |
| P1EWCC-PWP02-11090 |  | Completion of Species Translocation/ exclusion - Water Voles | milestone | 0d | 2019-09-26 | 2019-09-26 | P1EWCC-PWP02-11030 |  |  |  | -64.88d | 861.12d | finish on 2019-06-28 |  | AWE1 |  |
| P1EWCC-PWP02-11100 |  | Completion of Species Translocation/ exclusion - WCC | milestone | 0d | 2019-09-26 | 2019-09-26 | P1EWCC-PWP02-11030 |  |  |  | -193.88d | 861.12d | finish on 2018-12-31 |  | AWE1 |  |
|  | 8 | **120-L4 - Ladbroke Grove Cutting** |  |  | 2017-03-20 | 2020-03-31 |  |  |  |  |  |  |  |  |  |  |
|  | 8 | **Land Access** |  |  | 2017-06-19 | 2018-07-30 |  |  |  |  |  |  |  |  |  |  |
|  | 1 | **Survey Work** |  |  | 2017-06-19 | 2017-06-19 |  |  |  |  |  |  |  |  |  |  |
| P1EWCC-AWP01-7960 |  | Land Access Granted for Survey Work (Schedule 2) | milestone | 0d | 2017-06-19 A | 2017-06-19 A |  | 100% | 2017-04-03 | 2017-04-03 |  |  | as late as possible |  | AW1 | y |
|  | 2 | **Possession** |  |  | 2018-07-30 | 2018-07-30 |  |  |  |  |  |  |  |  |  |  |
| P1EWCC-AWP01-7970 |  | Land Access Possession Granted for Construction (Schedule 16) | milestone | 0d | 2018-07-30 | 2018-07-30 |  |  |  |  | 69d | 0d | as late as possible |  | AW1 | y |
|  | 3 | **Survey Works** |  |  | 2017-03-20 | 2019-06-26 |  |  |  |  |  |  |  |  |  |  |
| P1EWCC-AWP01-7950 |  | Planning Consent & Licensing for Survey Work |  | 10d | 2017-03-20 A | 2017-06-16 A | P1EWCC-AWP01-1230 | 100% | 2017-03-20 | 2017-03-31 |  |  |  |  | AW1 |  |
| P1EWCC-FWP01-4580 |  | Undertake Remaining Ecology & Environmental Surveys |  | 398d | 2017-12-15 | 2019-06-26 | P1EWCC-PWP01-5610 |  |  |  | 51d |  |  |  | AWS | y |

| ID | WBS | Activity | Type | Duration | Start | Finish | Predecessors | Complete | Planned start | Planned finish | Total float | Free float | Constraint | Calendar | Fusion - WPS | HS2 Filter |
| --- | --- | --- | --- | --- | --- | --- | --- | --- | --- | --- | --- | --- | --- | --- | --- | --- |
|  | 1 | **Ecological & Environmental Surveys** |  |  | 2017-06-19 | 2017-08-25 |  |  |  |  |  |  |  |  |  |  |
| P1EWCC-PWP01-4830 |  | Survey for Badgers, Bats, GCN & Reptiles |  | 70d | 2017-06-19 A | 2017-08-25 A | P1EWCC-AWP01-7960, P1EWCC-AWP01-7950 | 100% | 2017-04-03 | 2017-07-07 |  |  |  |  | UW1 |  |
|  | 2 | **Engineering Surveys** |  |  |  |  |  |  |  |  |  |  |  |  |  |  |
|  | 3 | **Historic Environment** |  |  | 2018-02-09 | 2018-11-16 |  |  |  |  |  |  |  |  |  |  |
| P1EWCC-PWP06-8030 |  | Non-Intrusive Surveys (geophysics) |  | 20d | 2018-02-09 | 2018-03-09 | P1EWCC-AWP01-7960, P1EWCC-PWP06-8010, P1EWCC-PWP05-240 |  |  |  | 239d | 0d |  |  | AWH |  |
| P1EWCC-PWP06-11020 |  | Non-Intrusive Surveys (trial trenching) |  | 30d | 2018-05-04 | 2018-06-15 | P1EWCC-PWP06-8020, P1EWCC-PWP05-240 |  |  |  | 239d | 0d |  |  | AWH |  |
| P1EWCC-PWP06-8050 |  | Intrusive Surveys |  | 40d | 2018-09-24 | 2018-11-16 | P1EWCC-PWP06-8020, P1EWCC-PWP02-11110, P1EWCC-PWP06-11030, P1EWCC-AWP01-7970 |  |  |  | 208.88d | 0d |  |  | AWH |  |
|  | 7 | **Historic Environment** |  |  | 2017-12-15 | 2019-01-04 |  |  |  |  |  |  |  |  |  |  |
| P1EWCC-PWP06-8010 |  | Production and Approval of Project Plans & LS-WSI (non-intrusive surveys) |  | 40d | 2017-12-15 | 2018-02-09 | P1EWCC-PWP05-240 |  |  |  | 239d | 0d |  |  | AWH |  |
| P1EWCC-PWP06-8020 |  | Update of Project Plans and LS-WSI and Approval (intrusive surveys) |  | 40d | 2018-03-09 | 2018-05-04 | P1EWCC-PWP06-8030 |  |  |  | 239d | 0d |  |  | AWH |  |
| P1EWCC-PWP06-11030 |  | Update of Project Plans and LS-WSI and Approval (intrusive surveys) |  | 40d | 2018-06-15 | 2018-08-10 | P1EWCC-PWP06-11020 |  |  |  | 239d | 30.12d |  |  | AWH |  |
| P1EWCC-PWP06-8040 |  | Report of Findings And Approval (Archaeological Investigation) |  | 35d | 2018-11-19 | 2019-01-04 | P1EWCC-PWP06-8050 |  |  |  | 1050d |  |  |  | AWH |  |
|  | 4 | **Ecological Mitigation Works** |  |  | 2018-03-01 | 2019-01-30 |  |  |  |  |  |  |  |  |  |  |
|  | 5 | **Translocation of Species** |  |  | 2018-07-29 | 2018-09-23 |  |  |  |  |  |  |  |  |  |  |
| P1EWCC-PWP02-11110 |  | Species Translocation to Habitat Creation (Windmill Hill LS093/94) |  | 57d | 2018-07-29 | 2018-09-23 | P1EWCC-PWP02-6150 SS+150d, P1EWCC-AWP01-7970, P1EWCC-PWP01-4830, P1EWCC-PWP02-14610 |  |  |  | 96d | 0d |  | HS2 - 8h x 7d Workweek (No Holidays) | AWE1 |  |
|  | 15 | **Woodland Habitat Creation Site - Ladbroke Fox Culvert (LS081.1)** |  |  | 2018-03-01 | 2019-01-30 |  |  |  |  |  |  |  |  |  |  |
|  | 1 | **Design** |  |  | 2018-03-01 | 2018-07-05 |  |  |  |  |  |  |  |  |  |  |
| P1EWCC-PWP02-14150 |  | Review and Vaildate HS2 design for planning |  | 80d | 2018-03-01 | 2018-06-21 | P1EWCC-PWP02-11910 SS+5d |  |  |  | -99.75d | 0d |  |  | AWE2 | y |
| P1EWCC-PWP02-14140 |  | Schedule 17 Planning Consent Approval Period |  | 56d | 2018-04-27 | 2018-06-21 | P1EWCC-PWP02-14150 FF |  |  |  | 381.75d | 161d |  | HS2 - 8h x 7d Workweek (No Holidays) | AWE2 | y |
| P1EWCC-PWP02-14130 |  | HS2 approval period of vaildated design |  | 14d | 2018-06-22 | 2018-07-05 | P1EWCC-PWP02-14150 |  |  |  | 276.88d | 0d |  | HS2 - 8h x 7d Workweek (No Holidays) | AWE2 | y |
|  | 2 | **Installation** |  |  | 2018-07-05 | 2019-01-30 |  |  |  |  |  |  |  |  |  |  |
| P1EWCC-PWP02-11200 |  | Call off of Create Habitat -Compensatory woodland planting in Ladbroke Fox Culvert | milestone | 0d | 2018-07-05 | 2018-07-05 | P1EWCC-PWP02-11910, P1EWCC-PWP02-14130 |  |  |  | 196.88d | 0d |  |  | AWE2 | y |
| P1EWCC-PWP02-11210 |  | Call off period for Compensatory woodland planting in Ladbroke Fox Culvert |  | 64.88d | 2018-07-05 | 2018-10-04 | P1EWCC-PWP02-11200 |  |  |  | 196.88d | 40.12d |  |  | AWE2 | y |
| P1EWCC-PWP02-11190 |  | Compensatory woodland planting in Ladbroke Fox Culvert LS081.1 |  | 43.25d | 2018-11-29 | 2019-01-30 | P1EWCC-PWP02-11210, P1EWCC-AWP01-7970, P1EWCC-PWP02-11110, P1EWCC-PWP02-14140, P1EWCC-PWP02-15070 |  |  |  | 156.75d |  | start on or after 2018-11-01 |  | AWE2 | y |

| ID | WBS | Activity | Type | Duration | Start | Finish | Predecessors | Complete | Planned start | Planned finish | Total float | Free float | Constraint | Fusion - WPS | HS2 Filter |
| --- | --- | --- | --- | --- | --- | --- | --- | --- | --- | --- | --- | --- | --- | --- | --- |
|  | 6 | **SOW Completion Dates** |  |  | 2018-12-31 | 2020-03-31 |  |  |  |  |  |  |  |  |  |
| P1EWCC-PWP02-11180 |  | Completion of Species Translocation/ exclusion - WCC | milestone | 0d | 2018-12-31 | 2018-12-31 | P1EWCC-PWP02-11110 |  |  |  | 0d | 1055d | finish on 2018-12-31 | AWE1 |  |
| P1EWCC-PWP02-11120 |  | Completion of Species Translocation/ exclusion - Reptiles | milestone | 0d | 2019-06-28 | 2019-06-28 | P1EWCC-PWP02-11110 |  |  |  | 0d | 926d | finish on 2019-06-28 | AWE1 |  |
| P1EWCC-PWP02-11130 |  | Completion of Species Translocation/ exclusion - Bats | milestone | 0d | 2019-06-28 | 2019-06-28 | P1EWCC-PWP02-11110 |  |  |  | 0d | 926d | finish on 2019-06-28 | AWE1 |  |
| P1EWCC-PWP02-11140 |  | Completion of Species Translocation/ exclusion - Badgers | milestone | 0d | 2019-06-28 | 2019-06-28 | P1EWCC-PWP02-11110 |  |  |  | 0d | 926d | finish on 2019-06-28 | AWE1 |  |
| P1EWCC-PWP02-11150 |  | Completion of Species Translocation/ exclusion - GCN | milestone | 0d | 2019-06-28 | 2019-06-28 | P1EWCC-PWP02-11110 |  |  |  | 0d | 926d | finish on 2019-06-28 | AWE1 |  |
| P1EWCC-PWP02-11160 |  | Completion of Species Translocation/ exclusion - Otters | milestone | 0d | 2019-06-28 | 2019-06-28 | P1EWCC-PWP02-11110 |  |  |  | 0d | 926d | finish on 2019-06-28 | AWE1 |  |
| P1EWCC-PWP02-11170 |  | Completion of Species Translocation/ exclusion - Water Voles | milestone | 0d | 2019-06-28 | 2019-06-28 | P1EWCC-PWP02-11110 |  |  |  | 0d | 926d | finish on 2019-06-28 | AWE1 |  |
| P1EWCC-PWP02-11220 |  | Completion of Compensatory woodland planting in Ladbroke Fox Culvert | milestone | 0d | 2020-03-31 | 2020-03-31 | P1EWCC-PWP02-11190 |  |  |  | 0d | 729d | finish on 2020-03-31 | AWE2 | y |
|  | C317 | **Ladbroke to Southam (Ch. 121800 to Ch. 126540)** |  |  | 2017-03-20 | 2020-03-31 |  |  |  |  |  |  |  |  |  |
|  | 1 | **121-L1 - Ladbroke Grove Embankment** |  |  | 2017-03-20 | 2019-08-09 |  |  |  |  |  |  |  |  |  |
|  | 8 | **Land Access** |  |  | 2017-06-19 | 2019-03-01 |  |  |  |  |  |  |  |  |  |
|  | 1 | **Survey Work** |  |  | 2017-06-19 | 2017-06-19 |  |  |  |  |  |  |  |  |  |
| P1EWCC-AWP01-7990 |  | Land Access Granted for Survey Work (Schedule 2) | milestone | 0d | 2017-06-19 A | 2017-06-19 A |  | 100% | 2017-07-24 | 2017-07-24 |  |  | as late as possible | AW1 | y |
|  | 2 | **Possession** |  |  | 2019-03-01 | 2019-03-01 |  |  |  |  |  |  |  |  |  |
| P1EWCC-AWP01-8000 |  | Land Access Possession Granted for Construction (Schedule 16) | milestone | 0d | 2019-03-01 | 2019-03-01 |  |  |  |  | -85d | 0d | as late as possible | AW1 | y |
|  | 3 | **Survey Works** |  |  | 2017-03-20 | 2019-06-26 |  |  |  |  |  |  |  |  |  |
| P1EWCC-AWP01-7980 |  | Planning Consent & Licensing for Survey Work |  | 10d | 2017-03-20 A | 2017-06-16 A | P1EWCC-AWP01-1230 | 100% | 2017-03-20 | 2017-03-31 |  |  |  | AW1 |  |
| P1EWCC-FWP01-4730 |  | Undertake Remaining Ecology & Environmental Surveys |  | 398d | 2017-12-15 | 2019-06-26 | P1EWCC-PWP01-5610 |  |  |  | 51d |  |  | AWS | y |
|  | 1 | **Ecological & Environmental Surveys** |  |  | 2017-06-19 | 2017-09-15 |  |  |  |  |  |  |  |  |  |
| P1EWCC-PWP01-4840 |  | Survey for Badgers, Bats, GCN & Reptiles |  | 70d | 2017-06-19 A | 2017-09-15 A | P1EWCC-AWP01-7990, P1EWCC-AWP01-7980 | 100% | 2017-06-26 | 2017-09-29 |  |  |  | UW1 |  |
|  | 2 | **Engineering Surveys** |  |  |  |  |  |  |  |  |  |  |  |  |  |
|  | 3 | **Historic Environment** |  |  | 2018-02-09 | 2019-06-21 |  |  |  |  |  |  |  |  |  |
| P1EWCC-PWP06-8090 |  | Non-Intrusive Surveys (geophysics) |  | 20d | 2018-02-09 | 2018-03-09 | P1EWCC-AWP01-7990, P1EWCC-PWP06-8070, P1EWCC-PWP05-240 |  |  |  | 239d | 0d |  | AWH |  |
| P1EWCC-PWP06-11040 |  | Non-Intrusive Surveys (trial trenching) |  | 30d | 2018-05-04 | 2018-06-15 | P1EWCC-PWP06-8080, P1EWCC-PWP05-240 |  |  |  | 239d | 0d |  | AWH |  |
| P1EWCC-PWP06-8110 |  | Intrusive Surveys |  | 40d | 2019-04-26 | 2019-06-21 | P1EWCC-PWP02-11230, P1EWCC-PWP06-8080, P1EWCC-PWP06-11050, P1EWCC-AWP01-8000 |  |  |  | 54d | 0d |  | AWH |  |

| ID | WBS | Activity | Type | Duration | Start | Finish | Predecessors | Complete | Planned start | Planned finish | Total float | Free float | Constraint | Calendar | Fusion - WPS | HS2 Filter |
| --- | --- | --- | --- | --- | --- | --- | --- | --- | --- | --- | --- | --- | --- | --- | --- | --- |
|  | 7 | **Historic Environment** |  |  | 2017-12-15 | 2019-08-09 |  |  |  |  |  |  |  |  |  |  |
| P1EWCC-PWP06-8070 |  | Production and Approval of ProejctPlans & LS-WSI (non-intrusive surveys) |  | 40d | 2017-12-15 | 2018-02-09 | P1EWCC-PWP05-240 |  |  |  | 239d | 0d |  |  | AWH |  |
| P1EWCC-PWP06-8080 |  | Update of Project Plans and LS-WSI and Approval (intrusive surveys) |  | 40d | 2018-03-09 | 2018-05-04 | P1EWCC-PWP06-8090 |  |  |  | 239d | 0d |  |  | AWH |  |
| P1EWCC-PWP06-11050 |  | Update of Project Plans and LS-WSI and Approval (intrusive surveys) |  | 40d | 2018-06-15 | 2018-08-10 | P1EWCC-PWP06-11040 |  |  |  | 239d | 185d |  |  | AWH |  |
| P1EWCC-PWP06-8100 |  | Report of Findings And Approval (Archaeological Investigation) |  | 35d | 2019-06-21 | 2019-08-09 | P1EWCC-PWP06-8110 |  |  |  | 895.12d |  |  |  | AWH |  |
|  | 4 | **Ecological Mitigation Works** |  |  | 2019-03-01 | 2019-04-26 |  |  |  |  |  |  |  |  |  |  |
|  | 5 | **Translocation of Species** |  |  | 2019-03-01 | 2019-04-26 |  |  |  |  |  |  |  |  |  |  |
| P1EWCC-PWP02-11230 |  | Species Translocation to Habitat Creation (Windmill Hill LS093/94) |  | 57d | 2019-03-01 | 2019-04-26 | P1EWCC-PWP01-4840, P1EWCC-AWP01-8000, P1EWCC-PWP02-6150 SS+150d, P1EWCC-PWP02-14610 |  |  |  | -119d | 0d | start on or after 2019-03-01 | HS2 - 8h x 7d Workweek (No Holidays) | AWE1 |  |
|  | 2 | **Water Resources** |  |  |  |  |  |  |  |  |  |  |  |  |  |  |
|  | 6 | **SOW Completion Dates** |  |  | 2019-04-26 | 2019-06-28 |  |  |  |  |  |  |  |  |  |  |
| P1EWCC-PWP02-11260 |  | Completion of Species Translocation/ exclusion - Badgers | milestone | 0d | 2019-04-26 | 2019-04-26 | P1EWCC-PWP02-11230 |  |  |  | -84.88d | 970.12d | finish on 2018-12-31 |  | AWE1 |  |
| P1EWCC-PWP02-11250 |  | Completion of Species Translocation/ exclusion - Bats | milestone | 0d | 2019-06-28 | 2019-06-28 | P1EWCC-PWP02-11230 |  |  |  | 0d | 926d | finish on 2019-06-28 |  | AWE1 |  |
| P1EWCC-PWP02-11270 |  | Completion of Species Translocation/ exclusion - GCN | milestone | 0d | 2019-06-28 | 2019-06-28 | P1EWCC-PWP02-11230 |  |  |  | 0d | 926d | finish on 2019-06-28 |  | AWE1 |  |
| P1EWCC-PWP02-11280 |  | Completion of Species Translocation/ exclusion - Otters | milestone | 0d | 2019-06-28 | 2019-06-28 | P1EWCC-PWP02-11230 |  |  |  | 0d | 926d | finish on 2019-06-28 |  | AWE1 |  |
| P1EWCC-PWP02-11290 |  | Completion of Species Translocation/ exclusion - Water Voles | milestone | 0d | 2019-06-28 | 2019-06-28 | P1EWCC-PWP02-11230 |  |  |  | 0d | 926d | finish on 2019-06-28 |  | AWE1 |  |
|  | 2 | **122-L3 - Ladbroke Cutting** |  |  | 2017-03-20 | 2020-03-31 |  |  |  |  |  |  |  |  |  |  |
|  | 7 | **Land Access** |  |  | 2017-04-12 | 2018-07-30 |  |  |  |  |  |  |  |  |  |  |
|  | 1 | **Survey Work** |  |  | 2017-04-12 | 2017-04-12 |  |  |  |  |  |  |  |  |  |  |
| P1EWCC-AWP01-5010 |  | Land Access Granted for Survey Work (Schedule 2) | milestone | 0d | 2017-04-12 A | 2017-04-12 A |  | 100% | 2017-03-20 | 2017-03-20 |  |  |  |  | UW1 | y |
|  | 2 | **Possession** |  |  | 2017-09-26 | 2018-07-30 |  |  |  |  |  |  |  |  |  |  |
|  | 1 | **Ecological Mitigation Area** |  |  | 2017-09-26 | 2017-09-26 |  |  |  |  |  |  |  |  |  |  |
| P1EWCC-AWP01-5020 |  | Land Access Possession Granted for Ecolgical Mitigation Site (Schedule 16) LS093/94 | milestone | 0d | 2017-09-26 | 2017-09-26 |  |  |  |  | 169d | 0d | start on or after 2017-09-26 |  | UW1 | y |
|  | 2 | **122-L3 - Ladbroke Cutting** |  |  | 2018-07-30 | 2018-07-30 |  |  |  |  |  |  |  |  |  |  |
| P1EWCC-AWP01-5030 |  | Land Access Possession Granted for Construction of 122-L3 - Ladbroke Cutting (Schedule 16) | milestone | 0d | 2018-07-30 | 2018-07-30 |  |  |  |  | -19.75d | 0d | as late as possible |  | AW1 | y |

| ID | WBS | Activity | Duration | Start | Finish | Predecessors | Complete | Remaining | Planned start | Planned finish | Total float | Free float | Constraint | Expected finish | Fusion - WPS | HS2 Filter |
| --- | --- | --- | --- | --- | --- | --- | --- | --- | --- | --- | --- | --- | --- | --- | --- | --- |
|  | 10 | **Survey Works** |  | 2017-03-20 | 2019-06-28 |  |  |  |  |  |  |  |  |  |  |  |
| P1EWCC-AWP01-5000 |  | Planning Consent & Licensing for Survey Work | 0d | 2017-03-20 A | 2017-06-02 A | P1EWCC-AWP01-1230 | 100% |  | 2017-03-20 | 2017-03-20 |  |  |  |  | UW1 |  |
| P1EWCC-FWP01-4390 |  | Undertake Arboricultural Surveys | 125d | 2017-12-15 | 2018-06-08 | P1EWCC-PWP01-5610 |  |  |  |  | 324d |  |  |  | AWS | y |
| P1EWCC-FWP01-4400 |  | Undertake Remaining Ecology & Environmental Surveys | 400d | 2017-12-15 | 2019-06-28 | P1EWCC-PWP01-5610 |  |  |  |  | 49d |  |  |  | AWS | y |
| P1EWCC-AWP01-5040 |  | Planning Consent & Licensing for Demolition Survey Work | 64.88d | 2018-01-29 | 2018-04-27 | P1EWCC-AWP01-1230 |  |  |  |  | -29.62d | 0d | as late as possible |  | AW1 |  |
|  | 1 | **Ecological & Environmental Surveys** |  | 2017-06-05 | 2017-10-06 |  |  |  |  |  |  |  |  |  |  |  |
| P1EWCC-PWP01-3270 |  | Survey for Badgers, Bats, GCN & Reptiles | 25d | 2017-06-05 A | 2017-10-06 | P1EWCC-AWP01-5010, P1EWCC-AWP01-5000 | 40% | 14.88d | 2017-03-20 | 2017-04-21 | 1375.12d | 0d |  | 2017-10-06 | UW1 |  |
|  | 4 | **Arboricultural survey** |  |  |  |  |  |  |  |  |  |  |  |  |  |  |
|  | 2 | **Engineering Surveys** |  | 2017-04-12 | 2017-05-09 |  |  |  |  |  |  |  |  |  |  |  |
| P1EWCC-PWP03-3340 |  | Survey for Engineering (Topo, GPR, Utility, Soil) | 15d | 2017-04-12 A | 2017-05-09 A | P1EWCC-AWP01-5010, P1EWCC-AWP01-5000 | 100% |  | 2017-03-20 | 2017-04-07 |  |  |  |  | UW1 |  |
|  | 5 | **Demolition Surveys** |  | 2018-04-27 | 2018-05-11 |  |  |  |  |  |  |  |  |  |  |  |
| P1EWCC-FWP07-1200 |  | Demolition survey's for Harp Farm, Green Leaf Nursery & RVS Car Sales and Café Jam | 10d | 2018-04-27 | 2018-05-11 | P1EWCC-AWP01-5040, P1EWCC-FWP07-5070 |  |  |  |  | -29.62d | 0d |  |  | AWS |  |
|  | 3 | **Historic Environment Surveys** |  | 2017-09-21 | 2018-11-21 |  |  |  |  |  |  |  |  |  |  |  |
|  | 1 | **Ecological Mitigation Site Windmill Hill CR01080** |  | 2017-09-21 | 2017-11-09 |  |  |  |  |  |  |  |  |  |  |  |
| P1EWCC-PWP06-2920 |  | Geophysics (ecological mitigation site) | 1d | 2017-09-21 | 2017-09-21 | P1EWCC-AWP01-5000, P1EWCC-AWP01-5010, P1EWCC-PWP06-2910 |  |  |  |  | 146d | 0d | start on or after 2017-09-21 |  | UW1 |  |
| P1EWCC-PWP06-2940 |  | Intrusive Surveys (ecological mitigation site) | 5d | 2017-11-03 | 2017-11-09 | P1EWCC-PWP06-2930, P1EWCC-PWP02-6170 |  |  |  |  | 146d | 0d |  |  | AWH |  |
|  | 2 | **122-L3 - Ladbroke Cutting** |  | 2018-02-09 | 2018-11-21 |  |  |  |  |  |  |  |  |  |  |  |
| P1EWCC-PWP06-11090 |  | Non-Intrusive Surveys (geophysics) | 20d | 2018-02-09 | 2018-03-09 | P1EWCC-PWP06-11110, P1EWCC-PWP05-240 |  |  |  |  | 239d | 0d |  |  | AWH |  |
| P1EWCC-PWP06-11100 |  | Non-Intrusive Surveys (trial trenching) | 30d | 2018-05-04 | 2018-06-15 | P1EWCC-PWP06-11120, P1EWCC-PWP05-240 |  |  |  |  | 239d | 0d |  |  | AWH |  |
| P1EWCC-PWP06-2960 |  | Intrusive Surveys (122-L3 - Ladbroke Cutting) | 40d | 2018-09-26 | 2018-11-21 | P1EWCC-PWP02-6190, P1EWCC-PWP06-11130, P1EWCC-AWP01-5030 |  |  |  |  | 206d | 0d |  |  | AWH |  |
|  | 6 | **Historic Environment** |  | 2017-04-17 | 2019-01-09 |  |  |  |  |  |  |  |  |  |  |  |
|  | 1 | **Ecological Mitigation Site Windmill Hill CR01080** |  | 2017-04-17 | 2017-12-28 |  |  |  |  |  |  |  |  |  |  |  |
| P1EWCC-PWP06-2910 |  | Production and Approval of LS-WSI Warwickshire (non-intrusive surveys) Code 2 | 21d | 2017-04-17 A | 2017-06-27 A | P1EWCC-PWP03-3340 | 100% |  | 2017-04-17 | 2017-05-15 |  |  |  |  | UW1 |  |
| P1EWCC-PWP06-3410 |  | HS2 issue Project Plan | 1d | 2017-09-18 | 2017-09-18 |  |  |  |  |  | 179d | 33d |  |  | UW1 |  |
| P1EWCC-PWP06-2930 |  | Update of Project Plans and LS-WSI and Approval (intrusive surveys) | 30d | 2017-09-22 | 2017-11-02 | P1EWCC-PWP06-2920, P1EWCC-PWP06-3410 FF |  |  |  |  | 146d | 0d |  |  | UW1 |  |
| P1EWCC-PWP06-2950 |  | Report of Findings And Approval (ecological mitigation site) | 35d | 2017-11-10 | 2017-12-28 | P1EWCC-PWP06-2940 |  |  |  |  | 146d | 40.88d |  |  | AWH |  |

| ID | WBS | Activity | Type | Duration | Start | Finish | Predecessors | Complete | Remaining | Planned start | Planned finish | Total float | Free float | Constraint | Expected finish | Calendar | Fusion - WPS | HS2 Filter |
| --- | --- | --- | --- | --- | --- | --- | --- | --- | --- | --- | --- | --- | --- | --- | --- | --- | --- | --- |
|  | 2 | **122-L3 - Ladbroke Cutting** |  |  | 2017-12-15 | 2019-01-09 |  |  |  |  |  |  |  |  |  |  |  |  |
| P1EWCC-PWP06-11110 |  | Production and Approval of ProjectPlans & LS-WSI (non-intrusive surveys) |  | 40d | 2017-12-15 | 2018-02-09 | P1EWCC-PWP05-240 |  |  |  |  | 239d | 0d |  |  |  | AWH |  |
| P1EWCC-PWP06-11120 |  | Update of Project Plans and LS-WSI and Approval (intrusive surveys) |  | 40d | 2018-03-09 | 2018-05-04 | P1EWCC-PWP06-11090 |  |  |  |  | 239d | 0d |  |  |  | AWH |  |
| P1EWCC-PWP06-11130 |  | Update of Project Plans and LS-WSI and Approval (intrusive surveys) |  | 40d | 2018-06-15 | 2018-08-10 | P1EWCC-PWP06-11100 |  |  |  |  | 239d | 33d |  |  |  | AWH |  |
| P1EWCC-PWP06-2970 |  | Report of Findings And Approval (122-L3 - Ladbroke Cutting) |  | 35d | 2018-11-21 | 2019-01-09 | P1EWCC-PWP06-2960 |  |  |  |  | 1047.12d |  |  |  |  | AWH |  |
|  | 11 | **Ecological Mitigation Works** |  |  | 2017-04-26 | 2019-01-30 |  |  |  |  |  |  |  |  |  |  |  |  |
|  | 1 | **Design** |  |  | 2017-04-26 | 2017-11-07 |  |  |  |  |  |  |  |  |  |  |  |  |
| P1EWCC-PWP02-6160 |  | Design of Habitat Creation (Windmill Hill LS093/94) |  | 25d | 2017-04-26 A | 2017-10-06 | P1EWCC-PWP03-3340 FF | 40% | 14.88d | 2017-04-10 | 2017-05-12 | 148.12d | 0d |  | 2017-10-06 |  | UW1 |  |
| P1EWCC-AWP01-4990 |  | Planning Consent & Licensing for Habitat Creation (Windmill Hill LS093/94) |  | 40d | 2017-06-19 A | 2017-11-07 | P1EWCC-PWP02-6160 SS | 8% | 36.88d | 2017-07-19 | 2017-09-12 | 148.12d | 0d |  | 2017-11-07 |  | UW1 |  |
|  | 2 | **Species Removal from Habitat Area** |  |  | 2017-07-31 | 2017-10-02 |  |  |  |  |  |  |  |  |  |  |  |  |
| P1EWCC-PWP02-6180 |  | MS/RAMS for GCN/Reptile Clearance from Habitat Creation Site (Windmill Hill LS093/94) |  | 15d | 2017-07-31 A | 2017-09-15 A |  | 100% |  | 2017-09-05 | 2017-09-25 |  |  |  |  |  | UW1 |  |
| P1EWCC-PWP02-6170 |  | Exclude GCN/Reptile from Habitat Creation (Windmill Hill LS093/94) |  | 7d | 2017-09-26 | 2017-10-02 | P1EWCC-PWP03-3340, P1EWCC-PWP02-6180, P1EWCC-AWP01-5020 |  |  |  |  | 237d | 31d |  |  | HS2 - 8h x 7d Workweek (No Holidays) | UW1 |  |
|  | 3 | **Habitat Creation** |  |  | 2018-01-05 | 2018-08-29 |  |  |  |  |  |  |  |  |  |  |  |  |
| P1EWCC-PWP02-6140 |  | Habitat Creation (Windmill Hill LS093/94) |  | 60d | 2018-01-05 | 2018-03-30 | P1EWCC-PWP02-6170, P1EWCC-PWP06-2950 SS, P1EWCC-AWP01-4990, P1EWCC-PWP02-9220, P1EWCC-PWP06-2940, P1EWCC-PWP02-6160 |  |  |  |  | 105.12d | 38.12d |  |  |  | AWE1 |  |
| P1EWCC-PWP02-6150 |  | Habitat Creation Maturity Period (Windmill Hill LS093/94) |  | 182d | 2018-03-01 | 2018-08-29 | P1EWCC-PWP02-6140 SS |  |  |  |  | 93d | 0d | start on or after 2018-03-01 |  | HS2 - 8h x 7d Workweek (No Holidays) | AWE1 |  |
|  | 5 | **Translocation of Species** |  |  | 2018-07-29 | 2018-09-26 |  |  |  |  |  |  |  |  |  |  |  |  |
| P1EWCC-PWP02-6190 |  | Species Translocation to Habitat Creation (Windmill Hill LS093/94) |  | 60d | 2018-07-29 | 2018-09-26 | P1EWCC-AWP01-5030, P1EWCC-PWP02-6150 SS+150d, P1EWCC-PWP02-14610 |  |  |  |  | 93d | 0d |  |  | HS2 - 8h x 7d Workweek (No Holidays) | AWE1 |  |
|  | 15 | **Woodland Habitat Creation Site - Windmill Hill (LS093/94)** |  |  | 2018-03-01 | 2019-01-30 |  |  |  |  |  |  |  |  |  |  |  |  |
|  | 1 | **Design** |  |  | 2018-03-01 | 2018-07-05 |  |  |  |  |  |  |  |  |  |  |  |  |
| P1EWCC-PWP02-14210 |  | Review and Vaildate HS2 design for planning |  | 80d | 2018-03-01 | 2018-06-21 | P1EWCC-PWP02-11910 SS+5d |  |  |  |  | -99.75d | 0d |  |  |  | AWE2 | y |
| P1EWCC-PWP02-14200 |  | Schedule 17 Planning Consent Approval Period |  | 56d | 2018-04-27 | 2018-06-21 | P1EWCC-PWP02-14210 FF |  |  |  |  | 1607.88d | 161d |  |  | HS2 - 8h x 7d Workweek (No Holidays) | AWE2 | y |
| P1EWCC-PWP02-14190 |  | HS2 approval period of vaildated design |  | 14d | 2018-06-22 | 2018-07-05 | P1EWCC-PWP02-14210 |  |  |  |  | 1503d | 0d |  |  | HS2 - 8h x 7d Workweek (No Holidays) | AWE2 | y |
|  | 2 | **Installation** |  |  | 2018-07-05 | 2019-01-30 |  |  |  |  |  |  |  |  |  |  |  |  |
| P1EWCC-PWP02-14170 |  | Call off of Create Habitat -Compensatory woodland planting in Windmill Hill | milestone | 0d | 2018-07-05 | 2018-07-05 | P1EWCC-PWP02-14190 |  |  |  |  | 1073d | 0d |  |  |  | AWE2 | y |
| P1EWCC-PWP02-14180 |  | Call off period for Compensatory woodland planting in Windmill Hill |  | 64.88d | 2018-07-05 | 2018-10-04 | P1EWCC-PWP02-14170 |  |  |  |  | 1073d | 40.12d |  |  |  | AWE2 | y |
| P1EWCC-PWP02-14160 |  | Compensatory woodland planting in Windmill Hill (LS093/94) |  | 43.25d | 2018-11-29 | 2019-01-30 | P1EWCC-PWP02-14180, P1EWCC-AWP01-5030, P1EWCC-PWP02-6190, P1EWCC-PWP02-14200, P1EWCC-PWP02-15070 |  |  |  |  | 1032.88d |  | start on or after 2018-11-01 |  |  | AWE2 | y |

| ID | WBS | Activity | Type | Duration | Start | Finish | Predecessors | Total float | Free float | Constraint | Calendar | HS2 Filter | Fusion - WPS |
| --- | --- | --- | --- | --- | --- | --- | --- | --- | --- | --- | --- | --- | --- |
|  | 4 | **Landscape Planting - Windmill Hill (east)** |  |  | 2018-03-01 | 2019-01-30 |  |  |  |  |  |  |  |
|  | 1 | **Design** |  |  | 2018-03-01 | 2018-07-19 |  |  |  |  |  |  |  |
| P1EWCC-PWP02-14270 |  | Develop Scheme Design |  | 40d | 2018-03-01 | 2018-04-26 | P1EWCC-PWP02-11910 SS+5d | -109.75d | 0d |  |  | y | AWE2 |
| P1EWCC-PWP02-14280 |  | Develop Detailed Design |  | 50d | 2018-04-26 | 2018-07-05 | P1EWCC-PWP02-14270 | -109.75d | 0d |  |  | y | AWE2 |
| P1EWCC-PWP02-14260 |  | Schedule 17 Planning Consent Approval Period |  | 56d | 2018-04-27 | 2018-06-21 | P1EWCC-PWP02-14270 | 1607.88d | 161d |  | HS2 - 8h x 7d Workweek (No Holidays) | y | AWE2 |
| P1EWCC-PWP02-14250 |  | HS2 approval period of vaildated design |  | 14d | 2018-07-06 | 2018-07-19 | P1EWCC-PWP02-14280 | 1489d | 0d |  | HS2 - 8h x 7d Workweek (No Holidays) | y | AWE2 |
|  | 2 | **Installation** |  |  | 2018-07-19 | 2019-01-30 |  |  |  |  |  |  |  |
| P1EWCC-PWP02-14230 |  | Call off of Landscape Planting | milestone | 0d | 2018-07-19 | 2018-07-19 | P1EWCC-PWP02-14250 | 1063d | 0d |  |  | y | AWE2 |
| P1EWCC-PWP02-14240 |  | Call off period for Landcape Planting |  | 64.88d | 2018-07-19 | 2018-10-18 | P1EWCC-PWP02-14230 | 1063d | 30.12d |  |  | y | AWE2 |
| P1EWCC-PWP02-14220 |  | Landscape Planting to Windmill Hill (east) |  | 43.25d | 2018-11-29 | 2019-01-30 | P1EWCC-PWP02-14240, P1EWCC-AWP01-5030, P1EWCC-PWP02-6190, P1EWCC-PWP02-14260, P1EWCC-PWP02-15070 | 1032.88d |  | start on or after 2018-11-01 |  | y | AWE2 |
|  | 5 | **Demolition** |  |  | 2017-12-15 | 2019-02-08 |  |  |  |  |  |  |  |
| P1EWCC-FWP07-5070 |  | Prepare Investigation Plans for Scoping and Planning Demolitions inc Approval |  | 95d | 2017-12-15 | 2018-04-27 | P1EWCC-PWP01-5610 | -24.75d | 0d | as late as possible |  |  | AWS |
| P1EWCC-FWP07-5080 |  | Detailed Design of Harp Farm, Green Leaf Nursery & RVS Car Sales and Café Jam Demolitions inc Approval |  | 15d | 2018-05-11 | 2018-06-01 | P1EWCC-PWP01-5610, P1EWCC-FWP07-1200 | -29.62d | 0d |  |  |  | AWS |
| P1EWCC-EWP07-5090 |  | Mobilisation and Procurement of Harp Farm, Green Leaf Nursery & RVS Car Sales and Café Jam Demolitions |  | 50d | 2018-06-01 | 2018-08-10 | P1EWCC-PWP01-9810, P1EWCC-FWP07-5080 | -29.62d | 0d |  |  |  | DC3K |
| P1EWCC-EWP07-5100 |  | Demolition of Harp Farm, Green Leaf Nursery & RVS Car Sales and Café Jam Demolitions |  | 129.75d | 2018-08-10 | 2019-02-08 | P1EWCC-EWP07-5090, P1EWCC-AWP01-5030 | -29.62d | 0d |  |  |  | DC3K |
|  | 4 | **Water Resources** |  |  |  |  |  |  |  |  |  |  |  |
|  | 1 | **SOW Completion Dates** |  |  | 2018-12-31 | 2020-03-31 |  |  |  |  |  |  |  |
| P1EWCC-PWP02-1320 |  | Completion of Species Translocation/ exclusion - Badgers | milestone | 0d | 2018-12-31 | 2018-12-31 | P1EWCC-PWP02-6190 | 0d | 1055d | finish on 2018-12-31 |  |  | AWE1 |
| P1EWCC-EWP07-5110 |  | Demolition of Harp Farm, Green Leaf Nursery & RVS Car Sales and Café Jam Demolitions | milestone | 0d | 2019-02-08 | 2019-02-08 | P1EWCC-EWP07-5100 | -29.62d | 1025.38d | finish on 2018-12-28 |  |  | DC3K |
| P1EWCC-PWP02-1780 |  | Completion of Species Translocation/ exclusion - Otters | milestone | 0d | 2020-03-31 | 2020-03-31 | P1EWCC-PWP02-6190 | 0d | 729d | finish on 2020-03-31 |  |  | AWE1 |
| P1EWCC-PWP02-2780 |  | Completion of Species Translocation/ exclusion - Water Vole | milestone | 0d | 2020-03-31 | 2020-03-31 | P1EWCC-PWP02-6190 | 0d | 729d | finish on 2020-03-31 |  |  | AWE1 |
| P1EWCC-PWP02-2790 |  | Completion of Species Translocation/ exclusion - Reptiles | milestone | 0d | 2020-03-31 | 2020-03-31 | P1EWCC-PWP02-6190 | 0d | 729d | finish on 2020-03-31 |  |  | AWE1 |
| P1EWCC-PWP02-2800 |  | Completion of Species Translocation/ exclusion - GCN | milestone | 0d | 2020-03-31 | 2020-03-31 | P1EWCC-PWP02-6190 | 0d | 729d | finish on 2020-03-31 |  |  | AWE1 |
| P1EWCC-PWP02-3470 |  | Completion of Species Translocation/ exclusion - Bats | milestone | 0d | 2020-03-31 | 2020-03-31 | P1EWCC-PWP02-6190 | 0d | 729d | finish on 2020-03-31 |  |  | AWE1 |
| P1EWCC-FWP07-10770 |  | Completion of Habitat Creation (Windmill Hill LS093/94) | milestone | 0d | 2020-03-31 | 2020-03-31 | P1EWCC-PWP02-6150 | 0d | 728d | finish on 2020-03-31 |  |  | AWE1 |
| P1EWCC-FWP07-1470 |  | Completion of Arboricultural survey | milestone | 0d | 2020-03-31 | 2020-03-31 |  | 0d | 728d | finish on 2020-03-31 |  |  | UW1 |

| ID | WBS | Activity | Type | Duration | Start | Finish | Predecessors | Complete | Planned start | Planned finish | Total float | Free float | Constraint | Calendar | HS2 Filter | Fusion - WPS |
| --- | --- | --- | --- | --- | --- | --- | --- | --- | --- | --- | --- | --- | --- | --- | --- | --- |
|  | 5 | **124-L1 - Southam Embankment** |  |  | 2017-03-20 | 2020-01-09 |  |  |  |  |  |  |  |  |  |  |
|  | 8 | **Land Access** |  |  | 2018-02-09 | 2019-08-01 |  |  |  |  |  |  |  |  |  |  |
|  | 1 | **Survey Work** |  |  | 2018-02-09 | 2018-02-09 |  |  |  |  |  |  |  |  |  |  |
| P1EWCC-AWP01-8020 |  | Land Access Granted for Survey Work (Schedule 2) | milestone | 0d | 2018-02-09 | 2018-02-09 |  |  |  |  | 469d | 0d | as late as possible |  | y | AW1 |
|  | 2 | **Possession** |  |  | 2019-08-01 | 2019-08-01 |  |  |  |  |  |  |  |  |  |  |
| P1EWCC-AWP01-8030 |  | Land Access Possession Granted for Construction (Schedule 16) | milestone | 0d | 2019-08-01 | 2019-08-01 |  |  |  |  | -65d | 0d | as late as possible |  | y | AW1 |
|  | 3 | **Survey Works** |  |  | 2017-03-20 | 2019-11-21 |  |  |  |  |  |  |  |  |  |  |
| P1EWCC-AWP01-8010 |  | Planning Consent & Licensing for Survey Work |  | 10d | 2017-03-20 A | 2017-05-12 A | P1EWCC-AWP01-1230 | 100% | 2017-03-20 | 2017-03-31 |  |  |  |  |  | AW1 |
| P1EWCC-FWP01-4610 |  | Undertake Remaining Ecology & Environmental Surveys |  | 400d | 2017-12-15 | 2019-06-28 | P1EWCC-PWP01-5610 |  |  |  | 209d |  |  |  | y | AWS |
|  | 1 | **Ecological & Environmental Surveys** |  |  |  |  |  |  |  |  |  |  |  |  |  |  |
|  | 2 | **Engineering Surveys** |  |  |  |  |  |  |  |  |  |  |  |  |  |  |
|  | 3 | **Historic Environment** |  |  | 2018-02-09 | 2019-11-21 |  |  |  |  |  |  |  |  |  |  |
| P1EWCC-PWP06-8150 |  | Non-Intrusive Surveys (geophysics) |  | 20d | 2018-02-09 | 2018-03-09 | P1EWCC-AWP01-8020, P1EWCC-PWP06-8130, P1EWCC-PWP05-240 |  |  |  | 469d | 0d |  |  |  | AWH |
| P1EWCC-PWP06-11140 |  | Non-Intrusive Surveys (trial trenching) |  | 30d | 2018-05-04 | 2018-06-15 | P1EWCC-PWP06-8140, P1EWCC-PWP05-240 |  |  |  | 1155.12d | 0d |  |  |  | AWH |
| P1EWCC-PWP06-8170 |  | Intrusive Surveys |  | 40d | 2019-09-26 | 2019-11-21 | P1EWCC-PWP02-11300, P1EWCC-PWP06-8140, P1EWCC-AWP01-8030 |  |  |  | 105d | 0d |  |  |  | AWH |
|  | 7 | **Historic Environment** |  |  | 2017-12-15 | 2020-01-09 |  |  |  |  |  |  |  |  |  |  |
| P1EWCC-PWP06-8130 |  | Production and Approval of Project Plans & LS-WSI (non-intrusive surveys) |  | 40d | 2017-12-15 | 2018-02-09 | P1EWCC-PWP05-240 |  |  |  | 469d | 0d |  |  |  | AWH |
| P1EWCC-PWP06-8140 |  | Update of Project Plans and LS-WSI and Approval (intrusive surveys) |  | 40d | 2018-03-09 | 2018-05-04 | P1EWCC-PWP06-8150 |  |  |  | 469d | 0d |  |  |  | AWH |
| P1EWCC-PWP06-11150 |  | Update of Project Plans and LS-WSI and Approval (intrusive surveys) |  | 40d | 2018-06-15 | 2018-08-10 | P1EWCC-PWP06-11140 |  |  |  | 1155.12d |  |  |  |  | AWH |
| P1EWCC-PWP06-8160 |  | Report of Findings And Approval (Archaeological Investigation) |  | 35d | 2019-11-21 | 2020-01-09 | P1EWCC-PWP06-8170 |  |  |  | 786.12d |  |  |  |  | AWH |
|  | 4 | **Ecological Mitigation Works** |  |  | 2019-08-01 | 2019-09-26 |  |  |  |  |  |  |  |  |  |  |
|  | 5 | **Translocation of Species** |  |  | 2019-08-01 | 2019-09-26 |  |  |  |  |  |  |  |  |  |  |
| P1EWCC-PWP02-11300 |  | Species Translocation to Habitat Creation (Southam LS122) |  | 57d | 2019-08-01 | 2019-09-26 | P1EWCC-AWP01-8030, P1EWCC-PWP02-6210 SS+150d, P1EWCC-PWP02-14610 |  |  |  | -91d | 0d | start on or after 2019-08-01 | HS2 - 8h x 7d Workweek (No Holidays) |  | AWE1 |
|  | 2 | **Water Resources** |  |  |  |  |  |  |  |  |  |  |  |  |  |  |
|  | 6 | **SOW Completion Dates** |  |  | 2019-09-26 | 2019-09-26 |  |  |  |  |  |  |  |  |  |  |
| P1EWCC-PWP02-11310 |  | Completion of Species Translocation/ exclusion - Bats | milestone | 0d | 2019-09-26 | 2019-09-26 | P1EWCC-PWP02-11300 |  |  |  | -64.88d | 861.12d | finish on 2019-06-28 |  |  | AWE1 |
| P1EWCC-PWP02-11330 |  | Completion of Species Translocation/ exclusion - GCN | milestone | 0d | 2019-09-26 | 2019-09-26 | P1EWCC-PWP02-11300 |  |  |  | -64.88d | 861.12d | finish on 2019-06-28 |  |  | AWE1 |
| P1EWCC-PWP02-11340 |  | Completion of Species Translocation/ exclusion - Otters | milestone | 0d | 2019-09-26 | 2019-09-26 | P1EWCC-PWP02-11300 |  |  |  | -64.88d | 861.12d | finish on 2019-06-28 |  |  | AWE1 |
| P1EWCC-PWP02-11350 |  | Completion of Species Translocation/ exclusion - Water Voles | milestone | 0d | 2019-09-26 | 2019-09-26 | P1EWCC-PWP02-11300 |  |  |  | -64.88d | 861.12d | finish on 2019-06-28 |  |  | AWE1 |

| ID | WBS | Activity | Type | Duration | Start | Finish | Predecessors | Complete | Remaining | Planned start | Planned finish | Total float | Free float | Constraint | Expected finish | HS2 Filter | Fusion - WPS |
| --- | --- | --- | --- | --- | --- | --- | --- | --- | --- | --- | --- | --- | --- | --- | --- | --- | --- |
|  | 3 | **125-L1 - Southam Cutting** |  |  | 2017-03-20 | 2020-03-31 |  |  |  |  |  |  |  |  |  |  |  |
|  | 7 | **Land Access** |  |  | 2017-04-12 | 2019-08-01 |  |  |  |  |  |  |  |  |  |  |  |
|  | 1 | **Survey Work** |  |  | 2017-04-12 | 2017-04-12 |  |  |  |  |  |  |  |  |  |  |  |
| P1EWCC-AWP01-5070 |  | Land Access Granted for Survey Work (Schedule 2) | milestone | 0d | 2017-04-12 A | 2017-04-12 A |  | 100% |  | 2017-03-20 | 2017-03-20 |  |  |  |  | y | UW1 |
|  | 2 | **Possession** |  |  | 2017-09-26 | 2019-08-01 |  |  |  |  |  |  |  |  |  |  |  |
|  | 1 | **Ecological Mitigation Area** |  |  | 2017-09-26 | 2017-09-26 |  |  |  |  |  |  |  |  |  |  |  |
| P1EWCC-AWP01-5080 |  | Land Access Possession Granted for Ecolgical Mitigation Site (Schedule 16) LS122 | milestone | 0d | 2017-09-26 | 2017-09-26 |  |  |  |  |  | 169d | 0d | start on or after 2017-09-26 |  | y | UW1 |
|  | 2 | **125-L1 - Southam Cutting** |  |  | 2019-08-01 | 2019-08-01 |  |  |  |  |  |  |  |  |  |  |  |
| P1EWCC-AWP01-5090 |  | Land Access Possession Granted for Construction of 120-L1 - Upper Radbourne Embankment (Schedule 16) | milestone | 0d | 2019-08-01 | 2019-08-01 |  |  |  |  |  | -197d | 0d | as late as possible |  | y | AW1 |
|  | 10 | **Survey Works** |  |  | 2017-03-20 | 2019-11-22 |  |  |  |  |  |  |  |  |  |  |  |
| P1EWCC-AWP01-5060 |  | Planning Consent & Licensing for Survey Work |  | 0d | 2017-03-20 A | 2017-06-09 A | P1EWCC-AWP01-1230 | 100% |  | 2017-03-20 | 2017-03-20 |  |  |  |  |  | UW1 |
| P1EWCC-FWP01-4620 |  | Undertake Remaining Soil Surveys |  | 120d | 2017-12-15 | 2018-06-01 | P1EWCC-PWP01-5610 |  |  |  |  | 489d |  |  |  | y | AWS |
| P1EWCC-FWP01-4640 |  | Undertake Remaining Ecology & Environmental Surveys |  | 400d | 2017-12-15 | 2019-06-28 | P1EWCC-PWP01-5610 |  |  |  |  | 209d |  |  |  | y | AWS |
|  | 1 | **Ecological & Environmental Surveys** |  |  | 2017-06-12 | 2017-11-24 |  |  |  |  |  |  |  |  |  |  |  |
| P1EWCC-PWP01-3280 |  | Survey for Badgers, Bats, GCN & Reptiles |  | 25d | 2017-06-12 A | 2017-11-24 | P1EWCC-AWP01-5060, P1EWCC-AWP01-5070 |  | 49.88d | 2017-03-20 | 2017-04-21 | 1340.12d | 0d |  | 2017-11-24 |  | UW1 |
|  | 2 | **Engineering Surveys** |  |  | 2017-04-12 | 2017-05-09 |  |  |  |  |  |  |  |  |  |  |  |
| P1EWCC-PWP03-3350 |  | Survey for Engineering (Topo, GPR, Utility, Soil) |  | 15d | 2017-04-12 A | 2017-05-09 A | P1EWCC-AWP01-5060, P1EWCC-AWP01-5070 | 100% |  | 2017-03-20 | 2017-04-07 |  |  |  |  |  | UW1 |
|  | 3 | **Historic Environment Surveys** |  |  | 2017-09-11 | 2019-11-22 |  |  |  |  |  |  |  |  |  |  |  |
|  | 1 | **Ecological Mitigation Site North of Field Cottage 1083 (LS122)** |  |  | 2017-09-11 | 2019-11-22 |  |  |  |  |  |  |  |  |  |  |  |
| P1EWCC-PWP06-2990 |  | Geophysics (ecological mitigation site) |  | 1d | 2017-09-11 A | 2017-09-11 A | P1EWCC-PWP06-2980, P1EWCC-AWP01-5070, P1EWCC-AWP01-5060 | 100% |  | 2017-09-18 | 2017-09-18 |  |  | start on or after 2017-08-21 |  |  | UW1 |
| P1EWCC-PWP06-3010 |  | Intrusive Surveys (ecological mitigation site) |  | 5d | 2017-12-15 | 2017-12-22 | P1EWCC-PWP06-3000, P1EWCC-PWP02-6230, P1EWCC-PWP05-240 |  |  |  |  | 115.12d | 0d |  |  |  | AWH |
|  | 1 | **125-L1 - Southam Cutting** |  |  | 2018-02-09 | 2019-11-22 |  |  |  |  |  |  |  |  |  |  |  |
| P1EWCC-PWP06-11190 |  | Non-Intrusive Surveys (geophysics) |  | 20d | 2018-02-09 | 2018-03-09 | P1EWCC-PWP06-11160, P1EWCC-PWP05-240 |  |  |  |  | 399d | 0d |  |  |  | AWH |
| P1EWCC-PWP06-11200 |  | Non-Intrusive Surveys (trial trenching) |  | 30d | 2018-05-04 | 2018-06-15 | P1EWCC-PWP06-11170, P1EWCC-PWP05-240 |  |  |  |  | 399d | 0d |  |  |  | AWH |
| P1EWCC-PWP06-3030 |  | Intrusive Surveys (125-L1 - Southam Cutting) |  | 40d | 2019-09-30 | 2019-11-22 | P1EWCC-PWP02-6250, P1EWCC-PWP06-11180, P1EWCC-AWP01-5090 |  |  |  |  | 103.88d | 0d |  |  |  | AWH |

| ID | WBS | Activity | Type | Duration | Start | Finish | Predecessors | Complete | Remaining | Planned start | Planned finish | Total float | Free float | Constraint | Expected finish | Calendar | Fusion - WPS |
| --- | --- | --- | --- | --- | --- | --- | --- | --- | --- | --- | --- | --- | --- | --- | --- | --- | --- |
|  | 6 | **Historic Environment** |  |  | 2017-04-17 | 2020-01-10 |  |  |  |  |  |  |  |  |  |  |  |
|  | 1 | **Ecological Mitigation Site North of Field Cottage 1083 (LS122)** |  |  | 2017-04-17 | 2018-02-09 |  |  |  |  |  |  |  |  |  |  |  |
| P1EWCC-PWP06-2980 |  | Production and Approval of LS-WSI Warwickshire (non-intrusive surveys) |  | 20d | 2017-04-17 A | 2017-06-27 A | P1EWCC-PWP03-3350 | 100% |  | 2017-04-24 | 2017-05-19 |  |  |  |  |  | UW1 |
| P1EWCC-PWP06-3000 |  | Update of Project Plans and LS-WSI and Approval (intrusive surveys) |  | 30d | 2017-09-12 A | 2017-10-23 | P1EWCC-PWP06-2990, P1EWCC-PWP06-3420 FF | 14% | 25.88d | 2017-09-18 | 2017-10-27 | 154.12d | 0d |  | 2017-10-23 |  | UW1 |
| P1EWCC-PWP06-3420 |  | HS2 issue Project Plan |  | 1d | 2017-09-18 | 2017-09-18 |  |  |  |  |  | 179d | 24.88d |  |  |  | UW1 |
| P1EWCC-PWP06-3020 |  | Report of Findings And Approval (ecological mitigation site) |  | 35d | 2017-12-22 | 2018-02-09 | P1EWCC-PWP06-3010 |  |  |  |  | 115.12d | 10d |  |  |  | AWH |
|  | 2 | **125-L1 - Southam Cutting** |  |  | 2017-12-15 | 2020-01-10 |  |  |  |  |  |  |  |  |  |  |  |
| P1EWCC-PWP06-11160 |  | Production and Approval of Project Plans & LS-WSI (non-intrusive surveys) |  | 40d | 2017-12-15 | 2018-02-09 | P1EWCC-PWP05-240 |  |  |  |  | 399d | 0d |  |  |  | AWH |
| P1EWCC-PWP06-11170 |  | Update of Project Plans and LS-WSI and Approval (intrusive surveys) |  | 40d | 2018-03-09 | 2018-05-04 | P1EWCC-PWP06-11190 |  |  |  |  | 399d | 0d |  |  |  | AWH |
| P1EWCC-PWP06-11180 |  | Update of Project Plans and LS-WSI and Approval (intrusive surveys) |  | 40d | 2018-06-15 | 2018-08-10 | P1EWCC-PWP06-11200 |  |  |  |  | 399d | 295.12d |  |  |  | AWH |
| P1EWCC-PWP06-3040 |  | Report of Findings And Approval (125-L1 - Southam Cutting) |  | 35d | 2019-11-25 | 2020-01-10 | P1EWCC-PWP06-3030 |  |  |  |  | 785d |  |  |  |  | AWH |
|  | 11 | **Ecological Mitigation Works** |  |  | 2017-04-26 | 2019-09-29 |  |  |  |  |  |  |  |  |  |  |  |
|  | 1 | **Design** |  |  | 2017-04-26 | 2017-11-07 |  |  |  |  |  |  |  |  |  |  |  |
| P1EWCC-PWP02-6220 |  | Design of Habitat Creation (Southam LS122) |  | 25d | 2017-04-26 A | 2017-10-06 | P1EWCC-PWP03-3350 FF | 40% | 14.88d | 2017-04-10 | 2017-05-12 | 148.12d | 0d |  | 2017-10-06 |  | UW1 |
| P1EWCC-AWP01-5050 |  | Planning Consent & Licensing for Habitat Creation (Southam LS122) |  | 40d | 2017-06-19 A | 2017-11-07 | P1EWCC-PWP02-6220 SS | 8% | 36.88d | 2017-07-19 | 2017-09-12 | 148.12d | 0d |  | 2017-11-07 |  | UW1 |
|  | 2 | **Species Removal from Habitat Area** |  |  | 2017-07-31 | 2017-10-02 |  |  |  |  |  |  |  |  |  |  |  |
| P1EWCC-PWP02-6240 |  | MS/RAMS for GCN/Reptile Clearance from Habitat Creation Site (Southam LS122) |  | 15d | 2017-07-31 A | 2017-09-15 A |  | 100% |  | 2017-09-05 | 2017-09-25 |  |  |  |  |  | UW1 |
| P1EWCC-PWP02-6230 |  | Exclude GCN/Reptile from Habitat Creation (Southam LS122) |  | 7d | 2017-09-26 | 2017-10-02 | P1EWCC-AWP01-5080, P1EWCC-PWP02-6240, P1EWCC-PWP03-3350 |  |  |  |  | 237d | 74d |  |  | HS2 - 8h x 7d Workweek (No Holidays) | UW1 |
|  | 3 | **Habitat Creation** |  |  | 2018-01-05 | 2018-08-29 |  |  |  |  |  |  |  |  |  |  |  |
| P1EWCC-PWP02-6200 |  | Habitat Creation (Southam LS122) |  | 60d | 2018-01-05 | 2018-03-30 | P1EWCC-PWP06-3010, P1EWCC-PWP02-6230, P1EWCC-PWP06-3020 SS, P1EWCC-AWP01-5050, P1EWCC-PWP02-9220, P1EWCC-PWP02-6220 |  |  |  |  | 105.12d | 38.12d |  |  |  | AWE1 |
| P1EWCC-PWP02-6210 |  | Habitat Creation Maturity Period (Southam LS122) |  | 182d | 2018-03-01 | 2018-08-29 | P1EWCC-PWP02-6200 SS |  |  |  |  | 93d | 368d | start on or after 2018-03-01 |  | HS2 - 8h x 7d Workweek (No Holidays) | AWE1 |
|  | 5 | **Translocation of Species** |  |  | 2019-08-01 | 2019-09-29 |  |  |  |  |  |  |  |  |  |  |  |
| P1EWCC-PWP02-6250 |  | Species Translocation to Habitat Creation (Southam LS122) |  | 60d | 2019-08-01 | 2019-09-29 | P1EWCC-PWP02-6210 SS+150d, P1EWCC-AWP01-5090, P1EWCC-PWP02-14610 |  |  |  |  | -275d | 0d | start on or after 2019-08-01 |  | HS2 - 8h x 7d Workweek (No Holidays) | AWE1 |
|  | 4 | **SOW Completion Dates** |  |  | 2019-09-30 | 2020-03-31 |  |  |  |  |  |  |  |  |  |  |  |
| P1EWCC-PWP02-1330 |  | Completion of Species Translocation/ exclusion - Badgers | milestone | 0d | 2019-09-30 | 2019-09-30 | P1EWCC-PWP02-6250 |  |  |  |  | -195d | 860d | finish on 2018-12-31 |  |  | AWE1 |
| P1EWCC-PWP02-1790 |  | Completion of Species Translocation/ exclusion - Otters | milestone | 0d | 2019-09-30 | 2019-09-30 | P1EWCC-PWP02-6250 |  |  |  |  | -66d | 860d | finish on 2019-06-28 |  |  | AWE1 |
| P1EWCC-PWP02-2820 |  | Completion of Species Translocation/ exclusion - GCN | milestone | 0d | 2019-09-30 | 2019-09-30 | P1EWCC-PWP02-6250 |  |  |  |  | -66d | 860d | finish on 2019-06-28 |  |  | AWE1 |
| P1EWCC-PWP02-2830 |  | Completion of Species Translocation/ exclusion - Reptiles | milestone | 0d | 2019-09-30 | 2019-09-30 | P1EWCC-PWP02-6250 |  |  |  |  | -66d | 860d | finish on 2019-06-28 |  |  | AWE1 |
| P1EWCC-PWP02-3490 |  | Completion of Species Translocation/ exclusion - Bats | milestone | 0d | 2019-09-30 | 2019-09-30 | P1EWCC-PWP02-6250 |  |  |  |  | -66d | 860d | finish on 2019-06-28 |  |  | AWE1 |
| P1EWCC-PWP02-3500 |  | Completion of Species Translocation/ exclusion - WCC | milestone | 0d | 2019-09-30 | 2019-09-30 | P1EWCC-PWP02-6250 |  |  |  |  | -195d | 860d | finish on 2018-12-31 |  |  | AWE1 |
| P1EWCC-PWP02-6260 |  | Completion of Species Translocation/ exclusion - Water Voles | milestone | 0d | 2019-09-30 | 2019-09-30 | P1EWCC-PWP02-6250 |  |  |  |  | -66d | 860d | finish on 2019-06-28 |  |  | AWE1 |
| P1EWCC-PWP02-6270 |  | Completion of Species Translocation/ exclusion - Fish | milestone | 0d | 2019-09-30 | 2019-09-30 | P1EWCC-PWP02-6250 |  |  |  |  | -66d | 860d | finish on 2019-06-28 |  |  | AWE1 |
| P1EWCC-PWP02-11360 |  | Completion of Habitat Creation (Southam LS122) | milestone | 0d | 2020-03-31 | 2020-03-31 | P1EWCC-PWP02-6210 |  |  |  |  | 0d | 729d | finish on 2020-03-31 |  |  | AWE1 |

| ID | WBS | Activity | Type | Duration | Start | Finish | Predecessors | Complete | Planned start | Planned finish | Total float | Free float | Constraint | Calendar | HS2 Filter | Fusion - WPS |
| --- | --- | --- | --- | --- | --- | --- | --- | --- | --- | --- | --- | --- | --- | --- | --- | --- |
|  | 4 | **126-L1 - Mill Pond Embankment** |  |  | 2017-03-20 | 2020-01-09 |  |  |  |  |  |  |  |  |  |  |
|  | 8 | **Land Access** |  |  | 2018-02-09 | 2019-08-01 |  |  |  |  |  |  |  |  |  |  |
|  | 1 | **Survey Work** |  |  | 2018-02-09 | 2018-02-09 |  |  |  |  |  |  |  |  |  |  |
| P1EWCC-AWP01-8050 |  | Land Access Granted for Survey Work (Schedule 2) | milestone | 0d | 2018-02-09 | 2018-02-09 |  |  |  |  | 1080.12d | 0d | as late as possible |  | y | AW1 |
|  | 2 | **Possession** |  |  | 2019-08-01 | 2019-08-01 |  |  |  |  |  |  |  |  |  |  |
| P1EWCC-AWP01-8060 |  | Land Access Possession Granted for Construction (Schedule 16) | milestone | 0d | 2019-08-01 | 2019-08-01 |  |  |  |  | -194d | 0d | as late as possible |  | y | AW1 |
|  | 3 | **Survey Works** |  |  | 2017-03-20 | 2019-11-21 |  |  |  |  |  |  |  |  |  |  |
| P1EWCC-AWP01-8040 |  | Planning Consent & Licensing for Survey Work |  | 10d | 2017-03-20 A | 2017-05-12 A | P1EWCC-AWP01-1230 | 100% | 2017-03-20 | 2017-03-31 |  |  |  |  |  | AW1 |
| P1EWCC-FWP01-4670 |  | Undertake Remaining Ecology & Environmental Surveys |  | 400d | 2017-12-15 | 2019-06-28 | P1EWCC-PWP01-5610 |  |  |  | 171d |  |  |  | y | AWS |
|  | 1 | **Ecological & Environmental Surveys** |  |  |  |  |  |  |  |  |  |  |  |  |  |  |
|  | 2 | **Engineering Surveys** |  |  |  |  |  |  |  |  |  |  |  |  |  |  |
|  | 3 | **Historic Environment** |  |  | 2018-02-09 | 2019-11-21 |  |  |  |  |  |  |  |  |  |  |
| P1EWCC-PWP06-8210 |  | Non-Intrusive Surveys (geophysics) |  | 20d | 2018-02-09 | 2018-03-09 | P1EWCC-PWP06-8190, P1EWCC-AWP01-8050, P1EWCC-PWP05-240 |  |  |  | 1080.12d | 0d |  |  |  | AWH |
| P1EWCC-PWP06-11210 |  | Non-Intrusive Surveys (trial trenching) |  | 30d | 2018-05-04 | 2018-06-15 | P1EWCC-PWP06-8200, P1EWCC-PWP05-240 |  |  |  | 1080.12d | 0d |  |  |  | AWH |
| P1EWCC-PWP06-8230 |  | Intrusive Surveys |  | 40d | 2019-09-26 | 2019-11-21 | P1EWCC-PWP06-8200, P1EWCC-PWP02-11370, P1EWCC-PWP06-11220, P1EWCC-AWP01-8060 |  |  |  | 786.12d | 0d |  |  |  | AWH |
|  | 7 | **Historic Environment** |  |  | 2017-12-15 | 2020-01-09 |  |  |  |  |  |  |  |  |  |  |
| P1EWCC-PWP06-8190 |  | Production and Approval of Project Plans & LS-WSI (non-intrusive surveys) |  | 40d | 2017-12-15 | 2018-02-09 | P1EWCC-PWP05-240 |  |  |  | 1080.12d | 0d |  |  |  | AWH |
| P1EWCC-PWP06-8200 |  | Update of Project Plans and LS-WSI and Approval (intrusive surveys) |  | 40d | 2018-03-09 | 2018-05-04 | P1EWCC-PWP06-8210 |  |  |  | 1080.12d | 0d |  |  |  | AWH |
| P1EWCC-PWP06-11220 |  | Update of Project Plans and LS-WSI and Approval (intrusive surveys) |  | 40d | 2018-06-15 | 2018-08-10 | P1EWCC-PWP06-11210 |  |  |  | 1080.12d | 294d |  |  |  | AWH |
| P1EWCC-PWP06-8220 |  | Report of Findings And Approval (Archaeological Investigation) |  | 35d | 2019-11-21 | 2020-01-09 | P1EWCC-PWP06-8230 |  |  |  | 786.12d |  |  |  |  | AWH |
|  | 4 | **Ecological Mitigation Works** |  |  | 2019-08-01 | 2019-09-26 |  |  |  |  |  |  |  |  |  |  |
|  | 5 | **Translocation of Species** |  |  | 2019-08-01 | 2019-09-26 |  |  |  |  |  |  |  |  |  |  |
| P1EWCC-PWP02-11370 |  | Species Translocation to Habitat Creation (Southam LS122) |  | 57d | 2019-08-01 | 2019-09-26 | P1EWCC-PWP02-6210 SS+150d, P1EWCC-AWP01-8060, P1EWCC-PWP02-14610 |  |  |  | -272d | 0d | start on or after 2019-08-01 | HS2 - 8h x 7d Workweek (No Holidays) |  | AWE1 |
|  | 2 | **Water Resources** |  |  |  |  |  |  |  |  |  |  |  |  |  |  |
|  | 6 | **SOW Completion Dates** |  |  | 2019-09-26 | 2019-09-26 |  |  |  |  |  |  |  |  |  |  |
| P1EWCC-PWP02-11380 |  | Completion of Species Translocation/ exclusion - Bats | milestone | 0d | 2019-09-26 | 2019-09-26 | P1EWCC-PWP02-11370 |  |  |  | -64.88d | 861.12d | finish on 2019-06-28 |  |  | AWE1 |
| P1EWCC-PWP02-11390 |  | Completion of Species Translocation/ exclusion - GCN | milestone | 0d | 2019-09-26 | 2019-09-26 | P1EWCC-PWP02-11370 |  |  |  | -64.88d | 861.12d | finish on 2019-06-28 |  |  | AWE1 |
| P1EWCC-PWP02-11400 |  | Completion of Species Translocation/ exclusion - Otters | milestone | 0d | 2019-09-26 | 2019-09-26 | P1EWCC-PWP02-11370 |  |  |  | -64.88d | 861.12d | finish on 2019-06-28 |  |  | AWE1 |
| P1EWCC-PWP02-11410 |  | Completion of Species Translocation/ exclusion - Water Voles | milestone | 0d | 2019-09-26 | 2019-09-26 | P1EWCC-PWP02-11370 |  |  |  | -64.88d | 861.12d | finish on 2019-06-28 |  |  | AWE1 |
| P1EWCC-PWP02-11420 |  | Completion of Species Translocation/ exclusion - Badgers | milestone | 0d | 2019-09-26 | 2019-09-26 | P1EWCC-PWP02-11370 |  |  |  | -193.88d | 861.12d | finish on 2018-12-31 |  |  | AWE1 |
| P1EWCC-PWP02-11430 |  | Completion of Species Translocation/ exclusion - WCC | milestone | 0d | 2019-09-26 | 2019-09-26 | P1EWCC-PWP02-11370 |  |  |  | -193.88d | 861.12d | finish on 2018-12-31 |  |  | AWE1 |

| ID | WBS | Activity | Type | Duration | Start | Finish | Predecessors | Complete | Planned start | Planned finish | Total float | Free float | Constraint | Calendar | HS2 Filter | Fusion - WPS |
| --- | --- | --- | --- | --- | --- | --- | --- | --- | --- | --- | --- | --- | --- | --- | --- | --- |
|  | 6 | **126-L2 - River Itchen Viaduct** |  |  | 2017-03-20 | 2020-01-09 |  |  |  |  |  |  |  |  |  |  |
|  | 8 | **Land Access** |  |  | 2018-02-09 | 2019-08-01 |  |  |  |  |  |  |  |  |  |  |
|  | 1 | **Survey Work** |  |  | 2018-02-09 | 2018-02-09 |  |  |  |  |  |  |  |  |  |  |
| P1EWCC-AWP01-8080 |  | Land Access Granted for Survey Work (Schedule 2) | milestone | 0d | 2018-02-09 | 2018-02-09 |  |  |  |  | 361d | 0d | as late as possible |  | y | AW1 |
|  | 2 | **Possession** |  |  | 2019-08-01 | 2019-08-01 |  |  |  |  |  |  |  |  |  |  |
| P1EWCC-AWP01-8090 |  | Land Access Possession Granted for Construction (Schedule 16) | milestone | 0d | 2019-08-01 | 2019-08-01 |  |  |  |  | -65d | 0d | as late as possible |  | y | AW1 |
|  | 3 | **Survey Works** |  |  | 2017-03-20 | 2019-11-21 |  |  |  |  |  |  |  |  |  |  |
| P1EWCC-AWP01-8070 |  | Planning Consent & Licensing for Survey Work |  | 10d | 2017-03-20 A | 2017-05-12 A | P1EWCC-AWP01-1230 | 100% | 2017-03-20 | 2017-03-31 |  |  |  |  |  | AW1 |
| P1EWCC-FWP01-4700 |  | Undertake Remaining Ecology & Environmental Surveys |  | 295d | 2017-12-15 | 2019-02-01 | P1EWCC-PWP01-5610 |  |  |  | 276d |  |  |  | y | AWS |
|  | 1 | **Ecological & Environmental Surveys** |  |  |  |  |  |  |  |  |  |  |  |  |  |  |
|  | 2 | **Engineering Surveys** |  |  |  |  |  |  |  |  |  |  |  |  |  |  |
|  | 3 | **Historic Environment** |  |  | 2018-02-09 | 2019-11-21 |  |  |  |  |  |  |  |  |  |  |
| P1EWCC-PWP06-8270 |  | Non-Intrusive Surveys (geophysics) |  | 20d | 2018-02-09 | 2018-03-09 | P1EWCC-PWP06-8250, P1EWCC-AWP01-8080, P1EWCC-PWP05-240 |  |  |  | 361d | 0d |  |  |  | AWH |
| P1EWCC-PWP06-11230 |  | Non-Intrusive Surveys (trial trenching) |  | 30d | 2018-05-04 | 2018-06-15 | P1EWCC-PWP06-8260, P1EWCC-PWP05-240 |  |  |  | 361d | 0d |  |  |  | AWH |
| P1EWCC-PWP06-8290 |  | Intrusive Surveys |  | 40d | 2019-09-26 | 2019-11-21 | P1EWCC-PWP02-11440, P1EWCC-PWP06-11240, P1EWCC-AWP01-8090 |  |  |  | 67d | 0d |  |  |  | AWH |
|  | 7 | **Historic Environment** |  |  | 2017-12-15 | 2020-01-09 |  |  |  |  |  |  |  |  |  |  |
| P1EWCC-PWP06-8250 |  | Production and Approval of Project Plans & LS-WSI (non-intrusive surveys) |  | 40d | 2017-12-15 | 2018-02-09 | P1EWCC-PWP05-240 |  |  |  | 361d | 0d |  |  |  | AWH |
| P1EWCC-PWP06-8260 |  | Update of Project Plans and LS-WSI and Approval (intrusive surveys) |  | 40d | 2018-03-09 | 2018-05-04 | P1EWCC-PWP06-8270 |  |  |  | 361d | 0d |  |  |  | AWH |
| P1EWCC-PWP06-11240 |  | Update of Project Plans and LS-WSI and Approval (intrusive surveys) |  | 40d | 2018-06-15 | 2018-08-10 | P1EWCC-PWP06-11230 |  |  |  | 361d | 294d |  |  |  | AWH |
| P1EWCC-PWP06-8280 |  | Report of Findings And Approval (Archaeological Investigation) |  | 35d | 2019-11-21 | 2020-01-09 | P1EWCC-PWP06-8290 |  |  |  | 786.12d |  |  |  |  | AWH |
|  | 4 | **Ecological Mitigation Works** |  |  | 2019-08-01 | 2019-09-26 |  |  |  |  |  |  |  |  |  |  |
|  | 5 | **Translocation of Species** |  |  | 2019-08-01 | 2019-09-26 |  |  |  |  |  |  |  |  |  |  |
| P1EWCC-PWP02-11440 |  | Species Translocation to Habitat Creation (Southam LS122) |  | 57d | 2019-08-01 | 2019-09-26 | P1EWCC-AWP01-8090, P1EWCC-PWP02-6210 SS+150d, P1EWCC-PWP02-14610 |  |  |  | -91d | 0d | start on or after 2019-08-01 | HS2 - 8h x 7d Workweek (No Holidays) |  | AWE1 |
|  | 2 | **Water Resources** |  |  | 2017-10-13 | 2018-04-26 |  |  |  |  |  |  |  |  |  |  |
| P1EWCC-PWP04-2240 |  | Hydrological Modelling - River Itchen |  | 139d | 2017-10-13 | 2018-04-26 | P1EWCC-PWP02-12060 |  |  |  | 477d |  |  |  | y | AWE3 |

| ID | WBS | Activity | Type | Duration | Start | Finish | Predecessors | Complete | Planned start | Planned finish | Total float | Free float | Constraint | Calendar | HS2 Filter | Fusion - WPS |
| --- | --- | --- | --- | --- | --- | --- | --- | --- | --- | --- | --- | --- | --- | --- | --- | --- |
|  | 6 | **SOW Completion Dates** |  |  | 2019-06-28 | 2019-09-26 |  |  |  |  |  |  |  |  |  |  |
| P1EWCC-FWP07-11500 |  | Completion of Undertake notable species/habitat surveys and subsequent required design | milestone | 0d | 2019-06-28 | 2019-06-28 |  |  |  |  | 0d | 925.38d | finish on 2019-06-28 |  | y | AWE1 |
| P1EWCC-PWP02-11470 |  | Completion of Species Translocation/ exclusion - Otters | milestone | 0d | 2019-09-26 | 2019-09-26 | P1EWCC-PWP02-11440 |  |  |  | -64.88d | 861.12d | finish on 2019-06-28 |  |  | AWE1 |
|  | 7 | **126-L3 - Leamington Road Embankment** |  |  | 2017-03-20 | 2020-01-09 |  |  |  |  |  |  |  |  |  |  |
|  | 8 | **Land Access** |  |  | 2017-05-15 | 2019-08-01 |  |  |  |  |  |  |  |  |  |  |
|  | 1 | **Survey Work** |  |  | 2017-05-15 | 2017-05-15 |  |  |  |  |  |  |  |  |  |  |
| P1EWCC-AWP01-8110 |  | Land Access Granted for Survey Work (Schedule 2) | milestone | 0d | 2017-05-15 A | 2017-05-15 A |  | 100% | 2017-06-26 | 2017-06-26 |  |  | as late as possible |  | y | AW1 |
|  | 2 | **Possession** |  |  | 2019-08-01 | 2019-08-01 |  |  |  |  |  |  |  |  |  |  |
| P1EWCC-AWP01-8120 |  | Land Access Possession Granted for Construction (Schedule 16) | milestone | 0d | 2019-08-01 | 2019-08-01 |  |  |  |  | -65d | 0d | as late as possible |  | y | AW1 |
|  | 3 | **Survey Works** |  |  | 2017-03-20 | 2019-11-21 |  |  |  |  |  |  |  |  |  |  |
| P1EWCC-AWP01-8100 |  | Planning Consent & Licensing for Survey Work |  | 10d | 2017-03-20 A | 2017-05-12 A | P1EWCC-AWP01-1230 | 100% | 2017-03-20 | 2017-03-31 |  |  |  |  |  | AW1 |
|  | 1 | **Ecological & Environmental Surveys** |  |  | 2017-05-15 | 2017-06-30 |  |  |  |  |  |  |  |  |  |  |
| P1EWCC-PWP01-4880 |  | Survey for Badgers, Bats, GCN & Reptiles |  | 25d | 2017-05-15 A | 2017-06-30 A | P1EWCC-AWP01-8100, P1EWCC-AWP01-8110 | 100% | 2017-04-03 | 2017-05-05 |  |  |  |  |  | UW1 |
|  | 2 | **Engineering Surveys** |  |  |  |  |  |  |  |  |  |  |  |  |  |  |
|  | 3 | **Historic Environment** |  |  | 2018-02-09 | 2019-11-21 |  |  |  |  |  |  |  |  |  |  |
| P1EWCC-PWP06-8330 |  | Non-Intrusive Surveys (geophysics) |  | 20d | 2018-02-09 | 2018-03-09 | P1EWCC-PWP06-8310, P1EWCC-AWP01-8110, P1EWCC-PWP05-240 |  |  |  | 361d | 0d |  |  |  | AWH |
| P1EWCC-PWP06-11250 |  | Non-Intrusive Surveys (trial trenching) |  | 30d | 2018-05-04 | 2018-06-15 | P1EWCC-PWP06-8320, P1EWCC-PWP05-240 |  |  |  | 361d | 0d |  |  |  | AWH |
| P1EWCC-PWP06-8350 |  | Intrusive Surveys |  | 40d | 2019-09-26 | 2019-11-21 | P1EWCC-PWP02-11480, P1EWCC-PWP06-8320, P1EWCC-PWP06-11260, P1EWCC-AWP01-8120 |  |  |  | 67d | 0d |  |  |  | AWH |
|  | 7 | **Historic Environment** |  |  | 2017-12-15 | 2020-01-09 |  |  |  |  |  |  |  |  |  |  |
| P1EWCC-PWP06-8310 |  | Production and Approval of Project Plans & LS-WSI (non-intrusive surveys) |  | 40d | 2017-12-15 | 2018-02-09 | P1EWCC-PWP05-240 |  |  |  | 361d | 0d |  |  |  | AWH |
| P1EWCC-PWP06-8320 |  | Update of Project Plans and LS-WSI and Approval (intrusive surveys) |  | 40d | 2018-03-09 | 2018-05-04 | P1EWCC-PWP06-8330 |  |  |  | 361d | 0d |  |  |  | AWH |
| P1EWCC-PWP06-11260 |  | Update of Project Plans and LS-WSI and Approval (intrusive surveys) |  | 40d | 2018-06-15 | 2018-08-10 | P1EWCC-PWP06-11250 |  |  |  | 361d | 294d |  |  |  | AWH |
| P1EWCC-PWP06-8340 |  | Report of Findings And Approval (Archaeological Investigation) |  | 35d | 2019-11-21 | 2020-01-09 | P1EWCC-PWP06-8350 |  |  |  | 786.12d |  |  |  |  | AWH |
|  | 4 | **Ecological Mitigation Works** |  |  | 2019-08-01 | 2019-09-26 |  |  |  |  |  |  |  |  |  |  |
|  | 5 | **Translocation of Species** |  |  | 2019-08-01 | 2019-09-26 |  |  |  |  |  |  |  |  |  |  |
| P1EWCC-PWP02-11480 |  | Species Translocation to Habitat Creation (Southam LS122) |  | 57d | 2019-08-01 | 2019-09-26 | P1EWCC-AWP01-8120, P1EWCC-PWP02-6210 SS+150d, P1EWCC-PWP01-4880, P1EWCC-PWP02-14610 |  |  |  | -91d | 0d | start on or after 2019-08-01 | HS2 - 8h x 7d Workweek (No Holidays) |  | AWE1 |

| ID | WBS | Activity | Type | Duration | Start | Finish | Predecessors | Total float | Free float | Constraint | HS2 Filter | Fusion - WPS |
| --- | --- | --- | --- | --- | --- | --- | --- | --- | --- | --- | --- | --- |
|  | 6 | **SOW Completion Dates** |  |  | 2019-06-28 | 2019-09-26 |  |  |  |  |  |  |
| P1EWCC-FWP07-11510 |  | Completion of Undertake notable species/habitat surveys and subsequent required design | milestone | 0d | 2019-06-28 | 2019-06-28 | P1EWCC-PWP01-4880 | 0d | 925.38d | finish on 2019-06-28 | y | AWE1 |
| P1EWCC-PWP02-11490 |  | Completion of Species Translocation/ exclusion - Bats | milestone | 0d | 2019-09-26 | 2019-09-26 | P1EWCC-PWP02-11480 | -64.88d | 861.12d | finish on 2019-06-28 |  | AWE1 |
| P1EWCC-PWP02-11510 |  | Completion of Species Translocation/ exclusion - Otters | milestone | 0d | 2019-09-26 | 2019-09-26 | P1EWCC-PWP02-11480 | -64.88d | 861.12d | finish on 2019-06-28 |  | AWE1 |
| P1EWCC-PWP02-11520 |  | Completion of Species Translocation/ exclusion - Water Voles | milestone | 0d | 2019-09-26 | 2019-09-26 | P1EWCC-PWP02-11480 | -64.88d | 861.12d | finish on 2019-06-28 |  | AWE1 |

## Activity codes

| Code | Value | Meaning |
| --- | --- | --- |
| Fusion - WPS | AW1 | Area Wide Support Team |
| Fusion - WPS | AW2 | Information Technology & Digital Integration |
| Fusion - WPS | AW4 | Accomodation |
| Fusion - WPS | AWE1 | Habitat Creation & Translocation |
| Fusion - WPS | AWE2 | Landscaping |
| Fusion - WPS | AWE3 | Area Wide Environmental |
| Fusion - WPS | AWE4 | Invasive Species Surveys, Treatment & Control |
| Fusion - WPS | AWE5 | Site Clearance |
| Fusion - WPS | AWE6 | Ground Remediation |
| Fusion - WPS | AWH | Area Wide HERDS |
| Fusion - WPS | AWS | Area Wide Surveys |
| Fusion - WPS | DC1B | TBM Power Supply - Scheme Design |
| Fusion - WPS | DC1D | Highways & Civils Works Scheme Design |
| Fusion - WPS | DC1E | Utilities Scheme Design |
| Fusion - WPS | DC1G | TBM Power Supply DD & Installation |
| Fusion - WPS | DC1I | Highways & Civils DD & Con |
| Fusion - WPS | DC1J | DC1 Utilities DD & Con |
| Fusion - WPS | DC2A | Stoke Mandeville & Princes Risborough S.Design |
| Fusion - WPS | DC2B | Calvert Cutting S.Design |
| Fusion - WPS | DC2C | Highways & Civils Works Scheme Design |
| Fusion - WPS | DC2D | Stoke Mandeville & Princess Rosborough DD & Con |
| Fusion - WPS | DC2E | Calvert Cutting DD & Construction |
| Fusion - WPS | DC2F | Highways & Civils DD & Con |
| Fusion - WPS | DC2G | A413 Roundabout & Haul Road |
| Fusion - WPS | DC3A | S. Design-Chipping Warden, A361 & Sulgrave J Works |
| Fusion - WPS | DC3B | Scheme Design-Wills Pastures Rd |
| Fusion - WPS | DC3C | Scheme Design-M40 J11 |
| Fusion - WPS | DC3D | Utilities Scheme Design |
| Fusion - WPS | DC3E | Turweston Haul Rd Scheme Des |
| Fusion - WPS | DC3F | DD&Con-Chipping Warden, A361 & Sulgrave J Works |
| Fusion - WPS | DC3G | DD&Con-Wills Pastures Rd |
| Fusion - WPS | DC3H | DD&Con-M40 J11 |
| Fusion - WPS | DC3I | Utilities |
| Fusion - WPS | DC3J | Turweston Haul Road |
| Fusion - WPS | DC3K | Demolition Works |
| Fusion - WPS | UW1 | Urgent Works 1 |
| Key Milestones | Key MS | Key Milestones |
| VIEW Y/N | Y | (New Code Value) |
